# Johnson Dev. Hawiian Park Self Storage

How a schedule from MS Project changed from version to version. A marks actual dates.

## Version 1 (saved 2025-11-14, file baseline.mpp)

Note of the change: Add all project schedule files to buckets - 13 projects, MPP+XER, baseline+updates

| ID | WBS | Task | Duration | Start | Finish | Predecessors | Total float | Constraint |
| --- | --- | --- | --- | --- | --- | --- | --- | --- |
| 1 | 1 | **Grading & Building Slab Construction** | 295d | 2025-09-08 | 2026-11-06 |  | 0d |  |
| 2 |  | Commencement Date 9/8/2025 | 1d | 2025-09-08 | 2025-09-08 |  | 0d | start no earlier than 2025-09-08 |
| 3 |  | HBI Mobilization | 8d | 2025-09-09 | 2025-09-18 | 2 | 0d |  |
| 4 |  | Install Temp Fencing & BMP's | 3d | 2025-09-19 | 2025-09-23 | 3 | 0d |  |
| 5 |  | Identify & Cap Existing Utilities to Limits | 3d | 2025-09-19 | 2025-09-23 | 3 | 7d |  |
| 6 |  | Install Fire line Modifications | 7d | 2025-09-24 | 2025-10-02 | 4 | 0d |  |
| 7 |  | Surface Demo Existing Phase II areas | 12d | 2025-10-03 | 2025-10-20 | 5, 6 | 0d |  |
| 8 |  | O/X & Grading for Bldg pad | 12d | 2025-10-21 | 2025-11-05 | 3, 6, 7 | 0d |  |
| 9 |  | Certify Pad / Pad Delivery Date | 2d | 2025-11-06 | 2025-11-07 | 8 | 0d |  |
| 10 |  | Building Permit required | 0d | 2025-11-07 | 2025-11-07 | 9 | 250d |  |
| 11 |  | Underslab Electrical & Plumbing | 6d | 2025-11-10 | 2025-11-17 | 9 | 0d |  |
| 12 |  | Building Foundations & Pre-lim CMU/Forms | 10d | 2025-11-10 | 2025-11-21 | 11SS | 0d |  |
| 13 |  | Elevator Pit Form & Pour | 10d | 2025-11-10 | 2025-11-21 | 9 | 3d |  |
| 14 |  | Slab Base Material Import & Grading | 5d | 2025-11-24 | 2025-12-02 | 12, 13FS-3d | 0d |  |
| 15 |  | Slab Vapor Barrier & Reinforcing | 10d | 2025-12-01 | 2025-12-12 | 14FS-2d | 0d |  |
| 16 |  | Slab on Grade Pour North | 4d | 2025-12-09 | 2025-12-12 | 15FS-4d | 0d |  |
| 17 |  | Slab on Grade Pour South | 4d | 2025-12-15 | 2025-12-18 | 15, 16 | 11d |  |
| 18 | 1.17 | **Site Wet Utilities** | 21d | 2025-11-10 | 2025-12-10 |  | 181d |  |
| 19 |  | Storm Drain Piping & Catch Basins from Phase 1 Stubs | 6d | 2025-11-10 | 2025-11-17 | 9 | 181d |  |
| 20 |  | Extend Sewer Laterals to building | 5d | 2025-11-18 | 2025-11-24 | 19 | 181d |  |
| 21 |  | Extend Fire / Domestic Water Service to Building | 10d | 2025-11-25 | 2025-12-10 | 20 | 181d |  |
| 22 |  | Domestic & Fire Water Services Completion | 0d | 2025-12-10 | 2025-12-10 | 21 | 181d |  |
| 23 | 1.18 | **Site Dry Utilities** | 8d | 2025-11-18 | 2025-12-01 |  | 236d |  |
| 24 |  | Extend Power & Lov Voltage conduits to Bldg from Stubs | 5d | 2025-11-18 | 2025-11-24 | 19 | 236d |  |
| 25 |  | Install Generac & Site lighting Conduits | 3d | 2025-11-25 | 2025-12-01 | 24 | 236d |  |
| 26 | 1.19 | **Onsite improvements For Early Base Pave** | 22d | 2025-12-11 | 2026-01-14 |  | 181d |  |
| 27 |  | Grade for Curb & Gutter | 4d | 2025-12-11 | 2025-12-16 | 22 | 181d |  |
| 28 |  | Install Irrigation Sleeves | 1d | 2025-12-17 | 2025-12-17 | 27 | 181d |  |
| 29 |  | Place Curb & Gutter | 4d | 2025-12-18 | 2025-12-23 | 27, 28 | 181d |  |
| 30 |  | Grade & Pour Walks | 5d | 2025-12-22 | 2025-12-30 | 29FS-2d | 181d |  |
| 31 |  | Agg Base Import & AC Base Paving | 10d | 2025-12-31 | 2026-01-14 | 30 | 181d |  |
| 32 | 1.20 | **Vertical Building Construction** | 211d | 2025-12-15 | 2026-10-15 |  | 0d |  |
| 33 |  | CMU Walls to 14'-8" North | 15d | 2025-12-15 | 2026-01-07 | 16 | 0d |  |
| 34 |  | CMU Walls to 14'-8" South | 15d | 2026-01-08 | 2026-01-28 | 17, 33 | 0d |  |
| 35 |  | Structural Steel Framing & Metal Deck to 2nd floor N. | 7d | 2026-01-08 | 2026-01-16 | 33 | 1d |  |
| 36 |  | Structural Steel Framing & Metal Deck to 2nd floor S. | 7d | 2026-01-23 | 2026-02-02 | 35, 34FS-4d | 0d |  |
| 37 |  | Rebar, Hangars & Deck2 Pour North | 7d | 2026-01-19 | 2026-01-27 | 35 | 1d |  |
| 38 |  | Rebar, Hangars & Deck2 Pour South | 7d | 2026-02-03 | 2026-02-11 | 36 | 0d |  |
| 39 |  | CMU Walls to 25'-4" North | 10d | 2026-01-29 | 2026-02-11 | 37, 34 | 0d |  |
| 40 |  | CMU Walls to 25'-4" South | 10d | 2026-02-12 | 2026-02-26 | 39, 17, 38 | 0d |  |
| 41 |  | 2nd floor Shear walls North @ 15k/week | 12d | 2026-01-29 | 2026-02-13 | 39SS | 0d |  |
| 42 |  | 3rd Floor Decking North @ 5k/day | 7d | 2026-02-10 | 2026-02-19 | 41FS-4d | 0d |  |
| 43 |  | Rebar, Hangars & Deck Pour3 North | 5d | 2026-02-20 | 2026-02-26 | 42 | 0d |  |
| 44 |  | 2nd floor Shear walls South @ 15k/week | 12d | 2026-02-12 | 2026-03-02 | 40SS | 0d |  |
| 45 |  | 3rd Floor Decking South@ 5k/day | 7d | 2026-02-26 | 2026-03-06 | 44FS-3d | 0d |  |
| 46 |  | Rebar, Hangars & Deck3 Pour South | 5d | 2026-03-09 | 2026-03-13 | 45 | 0d |  |
| 47 |  | CMU Walls to 36' North | 10d | 2026-02-27 | 2026-03-12 | 43, 40 | 0d |  |
| 48 |  | CMU Walls to 36' South | 10d | 2026-03-16 | 2026-03-27 | 47, 46 | 0d |  |
| 49 |  | 3rd floor Shear walls North @ 15k/week | 12d | 2026-02-27 | 2026-03-16 | 47SS | 1d |  |
| 50 |  | 4th Floor Decking North @ 5k/day | 7d | 2026-03-13 | 2026-03-23 | 49FS-3d, 47 | 0d |  |
| 51 |  | Rebar, Hangars & Deck Pour4 North | 5d | 2026-03-24 | 2026-03-30 | 50 | 0d |  |
| 52 |  | 3rd floor Shear walls South @ 15k/week | 12d | 2026-03-16 | 2026-03-31 | 48SS | 0d |  |
| 53 |  | 4th Floor Decking South@ 5k/day | 7d | 2026-03-27 | 2026-04-06 | 52FS-3d | 0d |  |
| 54 |  | Rebar, Hangars & Deck4 Pour South | 5d | 2026-04-07 | 2026-04-13 | 53 | 0d |  |
| 55 |  | CMU Walls to 46'-8" North | 10d | 2026-03-31 | 2026-04-13 | 51, 48 | 0d |  |
| 56 |  | CMU Walls to 46'-8" South | 10d | 2026-04-14 | 2026-04-27 | 55, 54 | 0d |  |
| 57 |  | 4th floor Shear walls North @ 15k/week | 12d | 2026-03-31 | 2026-04-15 | 55SS | 0d |  |
| 58 |  | 5th Floor Decking North @ 5k/day | 7d | 2026-04-13 | 2026-04-21 | 57FS-3d | 0d |  |
| 59 |  | Rebar, Hangars & Deck Pour5 North | 5d | 2026-04-22 | 2026-04-28 | 58 | 0d |  |
| 60 |  | 4th floor Shear walls South @ 15k/week | 12d | 2026-04-14 | 2026-04-29 | 56SS | 0d |  |
| 61 |  | 5th Floor Decking South@ 5k/day | 7d | 2026-04-27 | 2026-05-05 | 60FS-3d | 0d |  |
| 62 |  | Rebar, Hangars & Deck5 Pour South | 7d | 2026-05-06 | 2026-05-14 | 61 | 0d |  |
| 63 |  | CMU Walls to 57'-4" North | 10d | 2026-04-29 | 2026-05-12 | 51, 59, 56 | 0d |  |
| 64 |  | CMU Walls to 57'-4" South | 10d | 2026-05-15 | 2026-05-29 | 63, 54, 62 | 0d |  |
| 65 |  | 5th floor Shear walls North @ 15k/week | 14d | 2026-04-29 | 2026-05-18 | 63SS | 0d |  |
| 66 |  | Roof Equipment Structural | 3d | 2026-05-14 | 2026-05-18 | 65FF | 0d |  |
| 67 |  | Roof Decking North @ 5k/day | 7d | 2026-05-19 | 2026-05-28 | 65FS-3d, 66 | 0d |  |
| 68 |  | Roof Drains, Screens & Curbs | 10d | 2026-05-29 | 2026-06-11 | 67 | 0d |  |
| 69 |  | 5th floor Shear walls South @ 15k/week | 12d | 2026-05-15 | 2026-06-02 | 64SS | 0d |  |
| 70 |  | Roof Equipment Structural | 3d | 2026-05-29 | 2026-06-02 | 69FF | 0d |  |

| ID | WBS | Task | Duration | Start | Finish | Predecessors | Total float |
| --- | --- | --- | --- | --- | --- | --- | --- |
| 71 |  | Roof Decking South@ 5k/day | 7d | 2026-06-03 | 2026-06-11 | 69FS-3d, 70 | 0d |
| 72 |  | Roof insulation Crickets & TPO | 7d | 2026-06-12 | 2026-06-22 | 71, 68 | 0d |
| 73 |  | Building Temporarily Water Tight | 0d | 2026-06-22 | 2026-06-22 | 72 | 0d |
| 74 |  | Set rooftop Equipment & hook up | 3d | 2026-06-23 | 2026-06-25 | 72 | 36d |
| 75 |  | Elevator Construction Car #1 | 20d | 2026-06-23 | 2026-07-22 | 73 | 0d |
| 76 |  | CMU infill @ Elevator Openings | 10d | 2026-07-09 | 2026-07-22 | 75FS-10d | 60d |
| 77 |  | Elevator Construction Car #2 | 20d | 2026-07-23 | 2026-08-19 | 75 | 0d |
| 78 |  | CMU infill @ Elevator Openings | 10d | 2026-08-06 | 2026-08-19 | 77FS-10d | 40d |
| 79 |  | Elevator Construction Car #3 | 20d | 2026-08-20 | 2026-09-17 | 77 | 0d |
| 80 |  | CMU infill @ Elevator Openings | 10d | 2026-09-03 | 2026-09-17 | 79FS-10d | 0d |
| 81 |  | State Elevator inspection Lead Time & Approval | 20d | 2026-09-18 | 2026-10-15 | 80 | 0d |
| 82 |  | Remove Man Lift | 2d | 2026-09-18 | 2026-09-21 | 81SS | 4d |
| 83 |  | Infill Framing @ Manlift Landings | 7d | 2026-09-21 | 2026-09-29 | 82FS-1d | 4d |
| 84 |  | Sheathing Lift Leave Out Area | 5d | 2026-09-28 | 2026-10-02 | 83FS-2d | 4d |
| 85 |  | Finishes @ Infilled Landings | 5d | 2026-10-05 | 2026-10-09 | 84 | 4d |
| 86 | 1.21 | **Building Interior** | 194d | 2026-01-28 | 2026-11-02 |  | 4d |
| 87 |  | Layout & Install Overhead Hangars 1st fl | 2d | 2026-01-28 | 2026-01-29 | 37 | 5d |
| 88 |  | Spray Applied Fireproofing - 1st Floor | 10d | 2026-01-30 | 2026-02-12 | 87 | 5d |
| 89 |  | Overhead P, M, & E 1st fl | 15d | 2026-02-10 | 2026-03-03 | 87, 88FS-3d | 5d |
| 90 |  | Unit Partitions / Hallway System & Doors 1st floor | 25d | 2026-02-25 | 2026-03-31 | 88, 89FS-5d | 5d |
| 91 |  | Finish Electrical 1st Fl | 10d | 2026-04-01 | 2026-04-14 | 90, 89 | 109d |
| 92 |  | Instal Generator and Related Systems | 35d | 2026-04-15 | 2026-06-03 | 91 | 109d |
| 93 |  | Overhead M/E/P 2nd Fl | 15d | 2026-03-16 | 2026-04-03 | 89, 46 | 2d |
| 94 |  | Unit Partitions / Hallway System & Doors 2nd Floor | 20d | 2026-04-06 | 2026-05-01 | 90, 93 | 2d |
| 95 |  | Finish Electrical 2nd Fl | 10d | 2026-05-04 | 2026-05-15 | 94, 93 | 121d |
| 96 |  | Overhead M/E/P 3rd Fl | 15d | 2026-04-06 | 2026-04-24 | 51, 93 | 17d |
| 97 |  | Unit partitions /Hallway System & Doors 3rd Floor | 20d | 2026-05-04 | 2026-06-01 | 94 | 2d |
| 98 |  | Finish Electrical 3rd Fl | 10d | 2026-06-02 | 2026-06-15 | 97, 96 | 101d |
| 99 |  | Overhead M/E/P 4th Fl | 15d | 2026-04-29 | 2026-05-19 | 59, 96 | 15d |
| 100 |  | Unit Partitions /Hallway System & Doors 4th Floor | 20d | 2026-06-02 | 2026-06-29 | 97 | 2d |
| 101 |  | Finish Electrical 4th Fl | 5d | 2026-06-30 | 2026-07-08 | 100, 99 | 86d |
| 102 |  | Overhead M/E/P 5th Fl | 15d | 2026-05-29 | 2026-06-18 | 67, 99 | 9d |
| 103 |  | Unit Partitions & Hallway System & Doors 5th Floor | 20d | 2026-06-30 | 2026-07-29 | 102, 100 | 2d |
| 104 |  | Hallway Systems after Scaffold Removal | 5d | 2026-07-30 | 2026-08-05 | 103 | 66d |
| 105 |  | Finish Electrical 5th Fl & Roof Equipment | 11d | 2026-07-23 | 2026-08-06 | 103FS-5d, 74, 102 | 19d |
| 106 |  | Overhead Doors, Liner & Demising Panels Comp. | 0d | 2026-07-29 | 2026-07-29 | 103 | 2d |
| 107 |  | Elev. Lobby Framing | 5d | 2026-07-30 | 2026-08-05 | 106 | 2d |
| 108 |  | Elev. Lobby M/E/P Rough in | 5d | 2026-08-04 | 2026-08-10 | 107FS-2d | 2d |
| 109 |  | Elev. Lobby Drywall | 10d | 2026-08-11 | 2026-08-24 | 108 | 2d |
| 110 |  | Install HM Doors & Hardware | 5d | 2026-08-25 | 2026-08-31 | 109 | 2d |
| 111 |  | Lobby Fixtures & Finishes | 10d | 2026-08-25 | 2026-09-08 | 109 | 41d |
| 112 |  | Finish Painting in Storage areas | 10d | 2026-09-01 | 2026-09-15 | 105, 110 | 2d |
| 113 |  | Building Signage per plan | 5d | 2026-09-16 | 2026-09-22 | 112 | 2d |
| 114 |  | Final Clean up & Seal floors | 20d | 2026-09-23 | 2026-10-20 | 112, 113, 80FS-15d, 78FS-15d, 76FS-15d | 2d |
| 115 |  | Owner Arch. Punch list & Completion | 14d | 2026-10-14 | 2026-11-02 | 114FS-5d, 130 | 2d |
| 116 | 1.22 | **Building Exterior** | 76d | 2026-06-01 | 2026-09-17 |  | 0d |
| 117 |  | Install Scaffolding at Building Perimeter | 3d | 2026-06-01 | 2026-06-03 | 64 | 0d |
| 118 |  | Exterior Metal Frame Sheathing & WRB @ Tower | 10d | 2026-06-04 | 2026-06-17 | 117 | 64d |
| 119 |  | Metal Panel Siding @ Tower | 5d | 2026-06-18 | 2026-06-24 | 118 | 64d |
| 120 |  | Storefront/Curtainwall | 5d | 2026-06-25 | 2026-07-01 | 119 | 64d |
| 121 |  | Glass Lead Time | 10d | 2026-07-02 | 2026-07-17 | 120 | 64d |
| 122 |  | Install Glass | 5d | 2026-07-20 | 2026-07-24 | 121 | 64d |
| 123 |  | Install Auto Sliders & Mapes Canopy | 10d | 2026-09-03 | 2026-09-17 | 120, 126, 122 | 36d |
| 124 |  | EIFS WRB, Foam/Brown & Finish | 50d | 2026-06-04 | 2026-08-14 | 117 | 0d |
| 125 |  | Exterior Sheet metal, Sealants, & Painting | 10d | 2026-08-17 | 2026-08-28 | 124 | 0d |
| 126 |  | Remove Scaffolding | 3d | 2026-08-31 | 2026-09-02 | 125 | 0d |
| 127 | 1.23 | **Onsite improvements** | 26d | 2026-09-03 | 2026-10-09 |  | 0d |
| 128 |  | Grade & Pour Walks | 5d | 2026-09-03 | 2026-09-10 | 126 | 0d |
| 129 |  | Site Fencing & Gates | 5d | 2026-09-11 | 2026-09-17 | 128 | 0d |
| 130 |  | Landscape Irrigation and Planting | 10d | 2026-09-18 | 2026-10-01 | 128, 30, 31FF, 129 | 0d |
| 131 |  | Striping & Signage | 3d | 2026-09-30 | 2026-10-02 | 130FS-2d | 0d |
| 132 |  | Owner Civil Punch list & Completion | 5d | 2026-10-05 | 2026-10-09 | 131 | 0d |
| 133 | 1.24 | **Accumulative Inspections & C of O** | 20d | 2026-10-12 | 2026-11-06 |  | 0d |
| 134 |  | Final Grading Inspections | 2d | 2026-10-12 | 2026-10-13 | 132 | 0d |
| 135 |  | Final Public Works Inspections | 2d | 2026-10-14 | 2026-10-15 | 134 | 0d |
| 136 |  | Life Safety Inspection | 2d | 2026-10-16 | 2026-10-19 | 81 | 0d |
| 137 |  | MEP Final Inspections | 2d | 2026-10-16 | 2026-10-19 | 81 | 0d |
| 138 |  | Final Planning & Zoning Inspection | 2d | 2026-10-16 | 2026-10-19 | 85, 135 | 0d |
| 139 |  | Building Final Inspection | 2d | 2026-10-20 | 2026-10-21 | 136, 137, 134, 135, 138 | 0d |
| 140 |  | Rain Days Included | 10d | 2026-10-22 | 2026-11-04 | 139 | 0d |

| ID | Task | Duration | Start | Finish | Predecessors | Total float | Constraint |
| --- | --- | --- | --- | --- | --- | --- | --- |
| 141 | Certificate Of Occupancy | 2d | 2026-11-05 | 2026-11-06 | 131, 111, 77, 81, 139, 132, 79, 138, 115, 140 | 0d |  |
| 142 | Open Date | 0d | 2026-11-06 | 2026-11-06 | 141 | 0d | start no earlier than 2022-06-25 |

## Version 2 (saved 2025-12-08, file update_1.mpp)

Note of the change: Add all project schedule files to buckets - 13 projects, MPP+XER, baseline+updates

Last finish 2026-11-06 → 2026-12-04 (+28d). Complete tasks 0 → 13.

Added:

| ID | Task | Duration | Start | Finish | Predecessors | Constraint |
| --- | --- | --- | --- | --- | --- | --- |
| 5 | Move Existing Rolling Gate | 5d | 2025-09-22 A | 2025-09-26 A | 4FS-2d |  |
| 7 | AQMD Notification for Transite Fire Water | 10d | 2025-10-16 A | 2025-10-29 A |  | start no earlier than 2025-10-16 |
| 9 | Abate Fire Water Lines per Change Order #2 | 5d | 2025-10-30 A | 2025-11-05 A | 7 |  |
| 10 | Grading Permit Needed | 0d | 2025-10-20 A | 2025-10-20 A | 6 |  |
| 11 | Grading Permit Delay - Actual | 17d | 2025-10-21 A | 2025-11-12 A | 10 |  |
| 12 | Pre-Grade Meeting w/ City | 1d | 2025-11-13 A | 2025-11-13 A | 10, 11 |  |
| 13 | Rain and Mud Delay - Taken from item 147 below | 6d | 2025-11-14 A | 2025-11-21 A | 12 |  |
| 132 | Waterproof Membrane | 10d | 2026-07-10 | 2026-07-23 | 124 |  |
| 133 | EIFS Foam | 15d | 2026-07-24 | 2026-08-13 | 132 |  |
| 134 | EIFS Mesh Coat | 15d | 2026-08-14 | 2026-09-03 | 133 |  |
| 135 | EIFS Top Coat | 10d | 2026-09-04 | 2026-09-18 | 134 |  |
| 154 | Original Contracted Open Date | 0d | 2026-11-06 | 2026-11-06 |  |  |

Changed:

| ID | Task | Start | Finish | Duration | Complete | Total float | Predecessors |
| --- | --- | --- | --- | --- | --- | --- | --- |
| 1 | **Grading & Building Slab Construction** | 2025-09-08 A | 2026-11-06 → 2026-12-04 (+28d) | 295d → 313d | 0% → 7% |  |  |
| 2 | Commencement Date 9/8/2025 | 2025-09-08 A | 2025-09-08 A |  | 0% → 100% | 0d → none |  |
| 3 | HBI Mobilization | 2025-09-09 A | 2025-09-18 A |  | 0% → 100% | 0d → none |  |
| 4 | Install Temp Fencing & BMP's | 2025-09-19 A | 2025-09-23 A |  | 0% → 100% | 0d → none |  |
| 6 | Surface Demo Existing Phase II areas | 2025-10-03 → 2025-09-29 A (-4d) | 2025-10-20 A | 12d → 16d | 0% → 100% | 0d → none | 8, 17 → 5 |
| 8 | Identify & Cap Existing Utilities to Limits | 2025-09-19 → 2025-10-16 A (+27d) | 2025-09-23 → 2025-10-20 A (+27d) |  | 0% → 100% | 7d → none | 3 → 6FS-3d |
| 14 | O/X & Grading for Bldg pad | 2025-10-21 → 2025-11-24 A (+34d) | 2025-11-05 → 2025-12-05 A (+30d) | 12d → 8d | 0% → 100% | 0d → none | 3, 17, 6 → 3, 6, 9, 12, 13 |
| 15 | Certify Pad / Pad Delivery Date | 2025-11-06 → 2025-12-08 (+32d) | 2025-11-07 → 2025-12-09 (+32d) |  |  |  |  |
| 16 | Building Permit required | 2025-11-07 → 2025-12-09 (+32d) | 2025-11-07 → 2025-12-09 (+32d) |  |  | 250d → 12d |  |
| 17 | Install Fire line Modifications | 2025-09-24 → 2025-12-10 (+77d) | 2025-10-02 → 2025-12-18 (+77d) |  |  | 0d → 12d | 4 → 8, 9, 16 |
| 18 | Underslab Electrical & Plumbing | 2025-11-10 → 2025-12-10 (+30d) | 2025-11-17 → 2025-12-17 (+30d) |  |  |  |  |
| 19 | Building Foundations & Pre-lim CMU/Forms | 2025-11-10 → 2025-12-10 (+30d) | 2025-11-21 → 2025-12-23 (+32d) |  |  |  |  |
| 20 | Elevator Pit Form & Pour | 2025-11-10 → 2025-12-10 (+30d) | 2025-11-21 → 2025-12-23 (+32d) |  |  |  |  |
| 21 | Slab Base Material Import & Grading | 2025-11-24 → 2025-12-24 (+30d) | 2025-12-02 → 2026-01-02 (+31d) |  |  |  |  |
| 22 | Slab Vapor Barrier & Reinforcing | 2025-12-01 → 2025-12-31 (+30d) | 2025-12-12 → 2026-01-14 (+33d) |  |  |  |  |
| 23 | Slab on Grade Pour North | 2025-12-09 → 2026-01-09 (+31d) | 2025-12-12 → 2026-01-14 (+33d) |  |  |  | 22FS-4d → 22FS-4d, 17 |
| 24 | Slab on Grade Pour South | 2025-12-15 → 2026-01-15 (+31d) | 2025-12-18 → 2026-01-20 (+33d) |  |  |  |  |
| 25 | **Site Wet Utilities** | 2025-11-10 → 2025-12-10 (+30d) | 2025-12-10 → 2026-01-12 (+33d) |  |  | 181d → 185d |  |
| 26 | Storm Drain Piping & Catch Basins from Phase 1 Stubs | 2025-11-10 → 2025-12-10 (+30d) | 2025-11-17 → 2025-12-17 (+30d) |  |  |  |  |
| 27 | Extend Sewer Laterals to building | 2025-11-18 → 2025-12-18 (+30d) | 2025-11-24 → 2025-12-24 (+30d) |  |  |  |  |
| 28 | Extend Fire / Domestic Water Service to Building | 2025-11-25 → 2025-12-29 (+34d) | 2025-12-10 → 2026-01-12 (+33d) |  |  |  |  |
| 29 | Domestic & Fire Water Services Completion | 2025-12-10 → 2026-01-12 (+33d) | 2025-12-10 → 2026-01-12 (+33d) |  |  |  |  |
| 30 | **Site Dry Utilities** | 2025-11-18 → 2025-12-18 (+30d) | 2025-12-01 → 2025-12-31 (+30d) |  |  | 236d → 234d |  |
| 31 | Extend Power & Lov Voltage conduits to Bldg from Stubs | 2025-11-18 → 2025-12-18 (+30d) | 2025-11-24 → 2025-12-24 (+30d) |  |  | 236d → 230d |  |
| 32 | Install Generac & Site lighting Conduits | 2025-11-25 → 2025-12-29 (+34d) | 2025-12-01 → 2025-12-31 (+30d) |  |  | 236d → 230d |  |
| 33 | **Onsite improvements For Early Base Pave** | 2025-12-11 → 2026-01-13 (+33d) | 2026-01-14 → 2026-02-11 (+28d) |  |  | 181d → 185d |  |
| 34 | Grade for Curb & Gutter | 2025-12-11 → 2026-01-13 (+33d) | 2025-12-16 → 2026-01-16 (+31d) |  |  |  |  |
| 35 | Install Irrigation Sleeves | 2025-12-17 → 2026-01-19 (+33d) | 2025-12-17 → 2026-01-19 (+33d) |  |  |  |  |
| 36 | Place Curb & Gutter | 2025-12-18 → 2026-01-20 (+33d) | 2025-12-23 → 2026-01-23 (+31d) |  |  |  |  |
| 37 | Grade & Pour Walks | 2025-12-22 → 2026-01-22 (+31d) | 2025-12-30 → 2026-01-28 (+29d) |  |  |  |  |
| 38 | Agg Base Import & AC Base Paving | 2025-12-31 → 2026-01-29 (+29d) | 2026-01-14 → 2026-02-11 (+28d) |  |  |  |  |
| 39 | **Vertical Building Construction** | 2025-12-15 → 2026-01-15 (+31d) | 2026-10-15 → 2026-11-18 (+34d) | 211d → 215d |  |  |  |
| 40 | CMU Walls to 14'-8" North | 2025-12-15 → 2026-01-15 (+31d) | 2026-01-07 → 2026-02-04 (+28d) |  |  |  |  |
| 41 | CMU Walls to 14'-8" South | 2026-01-08 → 2026-02-05 (+28d) | 2026-01-28 → 2026-02-26 (+29d) |  |  |  |  |
| 42 | Structural Steel Framing & Metal Deck to 2nd floor N. | 2026-01-08 → 2026-02-05 (+28d) | 2026-01-16 → 2026-02-13 (+28d) |  |  |  |  |
| 43 | Structural Steel Framing & Metal Deck to 2nd floor S. | 2026-01-23 → 2026-02-23 (+31d) | 2026-02-02 → 2026-03-03 (+29d) |  |  | 0d → 2d |  |
| 44 | Rebar, Hangars & Deck2 Pour North | 2026-01-19 → 2026-02-17 (+29d) | 2026-01-27 → 2026-02-25 (+29d) |  |  |  |  |
| 45 | Rebar, Hangars & Deck2 Pour South | 2026-02-03 → 2026-03-04 (+29d) | 2026-02-11 → 2026-03-12 (+29d) |  |  | 0d → 2d |  |
| 46 | CMU Walls to 25'-4" North | 2026-01-29 → 2026-02-27 (+29d) | 2026-02-11 → 2026-03-16 (+33d) | 10d → 12d |  |  |  |
| 47 | CMU Walls to 25'-4" South | 2026-02-12 → 2026-03-17 (+33d) | 2026-02-26 → 2026-04-01 (+34d) | 10d → 12d |  |  |  |
| 48 | 2nd floor Shear walls North @ 15k/week | 2026-01-29 → 2026-02-27 (+29d) | 2026-02-13 → 2026-03-16 (+31d) |  |  | 0d → 4d |  |
| 49 | 3rd Floor Decking North @ 5k/day | 2026-02-10 → 2026-03-11 (+29d) | 2026-02-19 → 2026-03-19 (+28d) |  |  | 0d → 4d |  |
| 50 | Rebar, Hangars & Deck Pour3 North | 2026-02-20 → 2026-03-20 (+28d) | 2026-02-26 → 2026-03-26 (+28d) |  |  | 0d → 4d |  |
| 51 | 2nd floor Shear walls South @ 15k/week | 2026-02-12 → 2026-03-17 (+33d) | 2026-03-02 → 2026-04-01 (+30d) |  |  | 0d → 2d |  |
| 52 | 3rd Floor Decking South@ 5k/day | 2026-02-26 → 2026-03-30 (+32d) | 2026-03-06 → 2026-04-07 (+32d) |  |  | 0d → 2d |  |
| 53 | Rebar, Hangars & Deck3 Pour South | 2026-03-09 → 2026-04-08 (+30d) | 2026-03-13 → 2026-04-14 (+32d) |  |  | 0d → 2d |  |
| 54 | CMU Walls to 36' North | 2026-02-27 → 2026-04-02 (+34d) | 2026-03-12 → 2026-04-15 (+34d) |  |  |  |  |
| 55 | CMU Walls to 36' South | 2026-03-16 → 2026-04-16 (+31d) | 2026-03-27 → 2026-04-29 (+33d) |  |  | 0d → 1d |  |
| 56 | 3rd floor Shear walls North @ 15k/week | 2026-02-27 → 2026-04-02 (+34d) | 2026-03-16 → 2026-04-17 (+32d) |  |  |  |  |
| 57 | 4th Floor Decking North @ 5k/day | 2026-03-13 → 2026-04-16 (+34d) | 2026-03-23 → 2026-04-24 (+32d) |  |  |  |  |
| 58 | Rebar, Hangars & Deck Pour4 North | 2026-03-24 → 2026-04-27 (+34d) | 2026-03-30 → 2026-05-01 (+32d) |  |  |  |  |
| 59 | 3rd floor Shear walls South @ 15k/week | 2026-03-16 → 2026-04-16 (+31d) | 2026-03-31 → 2026-05-01 (+31d) |  |  | 0d → 1d |  |
| 60 | 4th Floor Decking South@ 5k/day | 2026-03-27 → 2026-04-29 (+33d) | 2026-04-06 → 2026-05-07 (+31d) |  |  | 0d → 1d |  |
| 61 | Rebar, Hangars & Deck4 Pour South | 2026-04-07 → 2026-05-08 (+31d) | 2026-04-13 → 2026-05-14 (+31d) |  |  | 0d → 1d |  |
| 62 | CMU Walls to 46'-8" North | 2026-03-31 → 2026-05-04 (+34d) | 2026-04-13 → 2026-05-15 (+32d) |  |  |  |  |
| 63 | CMU Walls to 46'-8" South | 2026-04-14 → 2026-05-18 (+34d) | 2026-04-27 → 2026-06-01 (+35d) |  |  |  |  |
| 64 | 4th floor Shear walls North @ 15k/week | 2026-03-31 → 2026-05-04 (+34d) | 2026-04-15 → 2026-05-19 (+34d) |  |  |  |  |
| 65 | 5th Floor Decking North @ 5k/day | 2026-04-13 → 2026-05-15 (+32d) | 2026-04-21 → 2026-05-26 (+35d) |  |  |  |  |
| 66 | Rebar, Hangars & Deck Pour5 North | 2026-04-22 → 2026-05-27 (+35d) | 2026-04-28 → 2026-06-02 (+35d) |  |  |  |  |
| 67 | 4th floor Shear walls South @ 15k/week | 2026-04-14 → 2026-05-18 (+34d) | 2026-04-29 → 2026-06-03 (+35d) |  |  |  |  |
| 68 | 5th Floor Decking South@ 5k/day | 2026-04-27 → 2026-06-01 (+35d) | 2026-05-05 → 2026-06-09 (+35d) |  |  |  |  |
| 69 | Rebar, Hangars & Deck5 Pour South | 2026-05-06 → 2026-06-10 (+35d) | 2026-05-14 → 2026-06-18 (+35d) |  |  |  |  |
| 70 | CMU Walls to 57'-4" North | 2026-04-29 → 2026-06-03 (+35d) | 2026-05-12 → 2026-06-16 (+35d) |  |  |  |  |
| 71 | CMU Walls to 57'-4" South | 2026-05-15 → 2026-06-19 (+35d) | 2026-05-29 → 2026-07-02 (+34d) |  |  |  |  |
| 72 | 5th floor Shear walls North @ 15k/week | 2026-04-29 → 2026-06-03 (+35d) | 2026-05-18 → 2026-06-22 (+35d) |  |  |  |  |
| 73 | Roof Equipment Structural | 2026-05-14 → 2026-06-18 (+35d) | 2026-05-18 → 2026-06-22 (+35d) |  |  |  |  |
| 74 | Roof Decking North @ 5k/day | 2026-05-19 → 2026-06-23 (+35d) | 2026-05-28 → 2026-07-01 (+34d) |  |  |  |  |
| 75 | Roof Drains, Screens & Curbs | 2026-05-29 → 2026-07-02 (+34d) | 2026-06-11 → 2026-07-17 (+36d) |  |  |  |  |
| 76 | 5th floor Shear walls South @ 15k/week | 2026-05-15 → 2026-06-19 (+35d) | 2026-06-02 → 2026-07-08 (+36d) |  |  |  |  |
| 77 | Roof Equipment Structural | 2026-05-29 → 2026-07-02 (+34d) | 2026-06-02 → 2026-07-08 (+36d) |  |  |  |  |

| ID | Task | Start | Finish | Duration | Total float | Predecessors |
| --- | --- | --- | --- | --- | --- | --- |
| 78 | Roof Decking South@ 5k/day | 2026-06-03 → 2026-07-09 (+36d) | 2026-06-11 → 2026-07-17 (+36d) |  |  |  |
| 79 | Roof insulation Crickets & TPO | 2026-06-12 → 2026-07-20 (+38d) | 2026-06-22 → 2026-07-28 (+36d) |  |  |  |
| 80 | Building Temporarily Water Tight | 2026-06-22 → 2026-07-28 (+36d) | 2026-06-22 → 2026-07-28 (+36d) |  |  |  |
| 81 | Set rooftop Equipment & hook up | 2026-06-23 → 2026-07-29 (+36d) | 2026-06-25 → 2026-07-31 (+36d) |  | 36d → 34d |  |
| 82 | Elevator Construction Car #1 | 2026-06-23 → 2026-07-29 (+36d) | 2026-07-22 → 2026-08-25 (+34d) |  |  |  |
| 83 | CMU infill @ Elevator Openings | 2026-07-09 → 2026-08-12 (+34d) | 2026-07-22 → 2026-08-25 (+34d) |  | 60d → 58d |  |
| 84 | Elevator Construction Car #2 | 2026-07-23 → 2026-08-26 (+34d) | 2026-08-19 → 2026-09-23 (+35d) |  |  |  |
| 85 | CMU infill @ Elevator Openings | 2026-08-06 → 2026-09-10 (+35d) | 2026-08-19 → 2026-09-23 (+35d) |  | 40d → 38d |  |
| 86 | Elevator Construction Car #3 | 2026-08-20 → 2026-09-24 (+35d) | 2026-09-17 → 2026-10-21 (+34d) |  |  |  |
| 87 | CMU infill @ Elevator Openings | 2026-09-03 → 2026-10-08 (+35d) | 2026-09-17 → 2026-10-21 (+34d) |  |  |  |
| 88 | State Elevator inspection Lead Time & Approval | 2026-09-18 → 2026-10-22 (+34d) | 2026-10-15 → 2026-11-18 (+34d) |  |  |  |
| 89 | Remove Man Lift | 2026-09-18 → 2026-10-22 (+34d) | 2026-09-21 → 2026-10-23 (+32d) |  |  |  |
| 90 | Infill Framing @ Manlift Landings | 2026-09-21 → 2026-10-23 (+32d) | 2026-09-29 → 2026-11-02 (+34d) |  |  |  |
| 91 | Sheathing Lift Leave Out Area | 2026-09-28 → 2026-10-30 (+32d) | 2026-10-02 → 2026-11-05 (+34d) |  |  |  |
| 92 | Finishes @ Infilled Landings | 2026-10-05 → 2026-11-06 (+32d) | 2026-10-09 → 2026-11-12 (+34d) |  |  |  |
| 93 | **Building Interior** | 2026-01-28 → 2026-02-26 (+29d) | 2026-11-02 → 2026-11-18 (+16d) | 194d → 186d | 4d → 10d |  |
| 94 | Layout & Install Overhead Hangars 1st fl | 2026-01-28 → 2026-02-26 (+29d) | 2026-01-29 → 2026-02-27 (+29d) |  | 5d → 20d |  |
| 95 | Spray Applied Fireproofing - 1st Floor | 2026-01-30 → 2026-03-02 (+31d) | 2026-02-12 → 2026-03-13 (+29d) |  | 5d → 20d |  |
| 96 | Overhead P, M, & E 1st fl | 2026-02-10 → 2026-03-11 (+29d) | 2026-03-03 → 2026-03-31 (+28d) |  | 5d → 20d |  |
| 97 | Unit Partitions / Hallway System & Doors 1st floor | 2026-02-25 → 2026-03-25 (+28d) | 2026-03-31 → 2026-04-28 (+28d) |  | 5d → 20d |  |
| 98 | Finish Electrical 1st Fl | 2026-04-01 → 2026-04-29 (+28d) | 2026-04-14 → 2026-05-12 (+28d) |  | 109d → 60d |  |
| 99 | Instal Generator and Related Systems | 2026-04-15 → 2026-05-13 (+28d) | 2026-06-03 → 2026-07-01 (+28d) |  | 109d → 103d |  |
| 100 | Overhead M/E/P 2nd Fl | 2026-03-16 → 2026-04-15 (+30d) | 2026-04-03 → 2026-05-05 (+32d) |  | 2d → 19d |  |
| 101 | Unit Partitions / Hallway System & Doors 2nd Floor | 2026-04-06 → 2026-05-06 (+30d) | 2026-05-01 → 2026-06-03 (+33d) |  | 2d → 19d |  |
| 102 | Finish Electrical 2nd Fl | 2026-05-04 → 2026-06-04 (+31d) | 2026-05-15 → 2026-06-17 (+33d) |  | 121d → 49d | 101, 100 → 101, 100, 98 |
| 103 | Overhead M/E/P 3rd Fl | 2026-04-06 → 2026-05-06 (+30d) | 2026-04-24 → 2026-05-27 (+33d) |  | 17d → 34d |  |
| 104 | Unit partitions /Hallway System & Doors 3rd Floor | 2026-05-04 → 2026-06-04 (+31d) | 2026-06-01 → 2026-07-01 (+30d) |  | 2d → 19d |  |
| 105 | Finish Electrical 3rd Fl | 2026-06-02 → 2026-07-02 (+30d) | 2026-06-15 → 2026-07-17 (+32d) |  | 101d → 39d | 104, 103 → 104, 103, 102 |
| 106 | Overhead M/E/P 4th Fl | 2026-04-29 → 2026-06-03 (+35d) | 2026-05-19 → 2026-06-23 (+35d) |  | 15d → 30d |  |
| 107 | Unit Partitions /Hallway System & Doors 4th Floor | 2026-06-02 → 2026-07-02 (+30d) | 2026-06-29 → 2026-07-31 (+32d) |  | 2d → 19d |  |
| 108 | Finish Electrical 4th Fl | 2026-06-30 → 2026-08-03 (+34d) | 2026-07-08 → 2026-08-07 (+30d) |  | 86d → 29d | 107, 106 → 107, 106, 105 |
| 109 | Overhead M/E/P 5th Fl | 2026-05-29 → 2026-07-02 (+34d) | 2026-06-18 → 2026-07-24 (+36d) |  | 9d → 24d |  |
| 110 | Unit Partitions & Hallway System & Doors 5th Floor | 2026-06-30 → 2026-08-03 (+34d) | 2026-07-29 → 2026-08-28 (+30d) |  | 2d → 19d |  |
| 111 | Hallway Systems after Scaffold Removal | 2026-07-30 → 2026-08-31 (+32d) | 2026-08-05 → 2026-09-04 (+30d) |  | 66d → 62d |  |
| 112 | Finish Electrical 5th Fl & Roof Equipment | 2026-07-23 → 2026-08-24 (+32d) | 2026-08-06 → 2026-09-08 (+33d) |  |  | 110FS-5d, 81, 109 → 110FS-5d, 81, 109, 108 |
| 113 | Overhead Doors, Liner & Demising Panels Comp. | 2026-07-29 → 2026-08-28 (+30d) | 2026-07-29 → 2026-08-28 (+30d) |  | 2d → 67d |  |
| 114 | Elev. Lobby Framing | 2026-07-30 → 2026-04-01 (-120d) | 2026-08-05 → 2026-04-07 (-120d) |  | 2d → 103d | 113 → 96 |
| 115 | Elev. Lobby M/E/P Rough in | 2026-08-04 → 2026-04-06 (-120d) | 2026-08-10 → 2026-04-10 (-122d) |  | 2d → 103d |  |
| 116 | Elev. Lobby Drywall | 2026-08-11 → 2026-04-13 (-120d) | 2026-08-24 → 2026-04-24 (-122d) |  | 2d → 103d |  |
| 117 | Install HM Doors & Hardware | 2026-08-25 → 2026-04-29 (-118d) | 2026-08-31 → 2026-05-05 (-118d) |  | 2d → 101d | 116 → 116, 97 |
| 118 | Lobby Fixtures & Finishes | 2026-08-25 → 2026-04-27 (-120d) | 2026-09-08 → 2026-05-08 (-123d) |  | 41d → 138d |  |
| 119 | Finish Painting in Storage areas | 2026-09-01 → 2026-09-09 (+8d) | 2026-09-15 → 2026-09-22 (+7d) |  | 2d → 19d |  |
| 120 | Building Signage per plan | 2026-09-16 → 2026-09-23 (+7d) | 2026-09-22 → 2026-09-29 (+7d) |  | 2d → 19d |  |
| 121 | Final Clean up & Seal floors | 2026-09-23 → 2026-10-01 (+8d) | 2026-10-20 → 2026-10-28 (+8d) |  | 2d → 18d |  |
| 122 | Owner Arch. Punch list & Completion | 2026-10-14 → 2026-11-05 (+22d) | 2026-11-02 → 2026-11-18 (+16d) | 14d → 10d | 2d → 8d |  |
| 123 | **Building Exterior** | 2026-06-01 → 2026-07-07 (+36d) | 2026-09-17 → 2026-10-21 (+34d) |  |  |  |
| 124 | Install Scaffolding at Building Perimeter | 2026-06-01 → 2026-07-07 (+36d) | 2026-06-03 → 2026-07-09 (+36d) |  |  |  |
| 125 | Exterior Metal Frame Sheathing & WRB @ Tower | 2026-06-04 → 2026-07-10 (+36d) | 2026-06-17 → 2026-07-23 (+36d) |  | 64d → 58d |  |
| 126 | Metal Panel Siding @ Tower | 2026-06-18 → 2026-07-24 (+36d) | 2026-06-24 → 2026-07-30 (+36d) |  | 64d → 58d |  |
| 127 | Storefront/Curtainwall | 2026-06-25 → 2026-07-31 (+36d) | 2026-07-01 → 2026-08-06 (+36d) |  | 64d → 58d |  |
| 128 | Glass Lead Time | 2026-07-02 → 2026-08-07 (+36d) | 2026-07-17 → 2026-08-20 (+34d) |  | 64d → 58d |  |
| 129 | Install Glass | 2026-07-20 → 2026-08-21 (+32d) | 2026-07-24 → 2026-08-27 (+34d) |  | 64d → 58d |  |
| 130 | Install Auto Sliders & Mapes Canopy | 2026-09-03 → 2026-10-08 (+35d) | 2026-09-17 → 2026-10-21 (+34d) |  | 36d → 30d |  |
| 131 | **EIFS WRB, Foam/Brown & Finish** | 2026-06-04 → 2026-07-10 (+36d) | 2026-08-14 → 2026-09-18 (+35d) |  |  |  |
| 136 | Exterior Sheet metal, Sealants, & Painting | 2026-08-17 → 2026-09-21 (+35d) | 2026-08-28 → 2026-10-02 (+35d) |  |  | 131 → 131, 135 |
| 137 | Remove Scaffolding | 2026-08-31 → 2026-10-05 (+35d) | 2026-09-02 → 2026-10-07 (+35d) |  |  |  |
| 138 | **Onsite improvements** | 2026-09-03 → 2026-10-08 (+35d) | 2026-10-09 → 2026-11-12 (+34d) |  |  |  |
| 139 | Grade & Pour Walks | 2026-09-03 → 2026-10-08 (+35d) | 2026-09-10 → 2026-10-14 (+34d) |  |  |  |
| 140 | Site Fencing & Gates | 2026-09-11 → 2026-10-15 (+34d) | 2026-09-17 → 2026-10-21 (+34d) |  |  |  |
| 141 | Landscape Irrigation and Planting | 2026-09-18 → 2026-10-22 (+34d) | 2026-10-01 → 2026-11-04 (+34d) |  |  |  |
| 142 | Striping & Signage | 2026-09-30 → 2026-11-03 (+34d) | 2026-10-02 → 2026-11-05 (+34d) |  |  |  |
| 143 | Owner Civil Punch list & Completion | 2026-10-05 → 2026-11-06 (+32d) | 2026-10-09 → 2026-11-12 (+34d) |  |  |  |
| 144 | **Accumulative Inspections & C of O** | 2026-10-12 → 2026-11-06 (+25d) | 2026-11-06 → 2026-12-04 (+28d) | 20d → 19d |  |  |
| 145 | Final Grading Inspections | 2026-10-12 → 2026-11-13 (+32d) | 2026-10-13 → 2026-11-16 (+34d) |  |  |  |
| 146 | Final Public Works Inspections | 2026-10-14 → 2026-11-17 (+34d) | 2026-10-15 → 2026-11-18 (+34d) |  |  |  |
| 147 | Life Safety Inspection | 2026-10-16 → 2026-11-19 (+34d) | 2026-10-19 → 2026-11-20 (+32d) |  |  |  |
| 148 | MEP Final Inspections | 2026-10-16 → 2026-11-19 (+34d) | 2026-10-19 → 2026-11-20 (+32d) |  |  |  |
| 149 | Final Planning & Zoning Inspection | 2026-10-16 → 2026-11-19 (+34d) | 2026-10-19 → 2026-11-20 (+32d) |  |  |  |
| 150 | Building Final Inspection | 2026-10-20 → 2026-11-23 (+34d) | 2026-10-21 → 2026-11-24 (+34d) |  |  |  |
| 151 | Rain Days Included | 2026-10-22 → 2026-11-25 (+34d) | 2026-11-04 → 2026-12-02 (+28d) | 10d → 4d |  |  |

| ID | Task | Start | Finish |
| --- | --- | --- | --- |
| 152 | Certificate Of Occupancy | 2026-11-05 → 2026-12-03 (+28d) | 2026-11-06 → 2026-12-04 (+28d) |
| 153 | Open Date | 2026-11-06 → 2026-12-04 (+28d) | 2026-11-06 → 2026-12-04 (+28d) |
