# CCP 38 BTS Concept Schedule 01.26.2023 Final

How a schedule from MS Project changed from version to version. A marks actual dates.

## Version 1 (saved 2026-02-12, file baseline.mpp)

Note of the change: Add all project schedule files to buckets - 13 projects, MPP+XER, baseline+updates

| ID | WBS | Task | Duration | Start | Finish | Predecessors | Complete | Total float | Constraint |
| --- | --- | --- | --- | --- | --- | --- | --- | --- | --- |
| 1 | 1 | **Overall Project Duration Public Storage - Aventura** | 428d | 2024-10-30 A | 2026-06-19 |  | 71% | 0d |  |
| 2 |  | DEMO PERMIT ISSUED | 0d | 2025-03-11 A | 2025-03-11 A |  | 100% |  | start no earlier than 2024-11-29 |
| 3 |  | BUILDING MASTER PERMIT (ESTIMATED) | 1d | 2025-04-15 A | 2025-04-15 A | 2FS+4w | 100% |  |  |
| 4 |  | Executed Contract | 29d | 2024-10-30 A | 2024-12-09 A |  | 100% |  | start no earlier than 2024-10-30 |
| 5 |  | Release of Subcontractors | 10d | 2024-12-10 A | 2025-03-06 A | 4FS+60d | 100% |  |  |
| 6 | 1.5 | **SUBMITTALS** | 328d | 2024-12-10 A | 2026-03-12 |  | 96% | 71d |  |
| 7 | 1.5.1 | **Fire Sprinkler Shop Drawings** | 68d | 2025-05-13 A | 2025-08-14 A |  | 100% |  |  |
| 8 |  | Request& Receive CAD Files | 7d | 2025-05-13 A | 2025-05-21 A | 5 | 100% |  |  |
| 9 |  | Shop Drawing Submittal | 29d | 2025-05-22 A | 2025-07-01 A | 8 | 100% |  | finish no earlier than 2020-09-14 |
| 10 |  | Approval / AOR | 9d | 2025-07-02 A | 2025-07-14 A | 9 | 100% |  | finish no earlier than 2020-09-30 |
| 11 |  | City Submission& Approval Estimated | 2.2w | 2025-07-30 A | 2025-08-13 A | 2FF+15d, 10 | 100% |  | finish no earlier than 2020-11-20 |
| 12 |  | Fire Sprinkler Permit | 0d | 2025-08-14 A | 2025-08-14 A | 11FS+2d | 100% |  | start no earlier than 2020-12-07 |
| 13 | 1.5.2 | **Structural Steel Shop Drawings** | 125d | 2024-12-10 A | 2025-06-02 A |  | 100% |  |  |
| 14 |  | Structural Steel Shop Drawings Submittal | 63d | 2024-12-10 A | 2025-03-06 A | 5SS | 100% |  |  |
| 15 |  | Approval / AOR | 13d | 2025-03-14 A | 2025-04-01 A | 14FS+5d | 100% |  |  |
| 16 |  | Fabricate and Deliver Steel | 8.4w | 2025-04-04 A | 2025-06-02 A | 15 | 100% |  | finish no earlier than 2020-11-18 |
| 17 | 1.5.3 | **Concrete Submittals / Shop Drawings** | 73d | 2024-12-24 A | 2025-04-03 A |  | 100% |  |  |
| 18 |  | Footing Rebar Submittal | 51d | 2024-12-24 A | 2025-03-04 A | 5 | 100% |  |  |
| 19 |  | Approval AOR | 20d | 2025-03-05 A | 2025-04-01 A | 18 | 100% |  | finish no earlier than 2020-08-19 |
| 20 |  | Concrete mix Submittals | 50d | 2024-12-24 A | 2025-03-03 A | 5 | 100% |  | finish no earlier than 2020-08-19 |
| 21 |  | Approval AOR | 13d | 2025-03-04 A | 2025-03-20 A | 20 | 100% |  |  |
| 22 |  | Release Rebar | 2d | 2025-03-21 A | 2025-04-03 A | 19 | 100% |  |  |
| 23 | 1.5.4 | **Storefront & Window Shop drawings** | 212d | 2025-05-21 A | 2026-03-12 |  | 70% | 46d |  |
| 24 |  | Storefront& Window Submittal | 38d | 2025-05-21 A | 2025-07-11 A | 5 | 100% |  | finish no earlier than 2020-10-09 |
| 25 |  | Approval / AOR | 38d | 2025-07-16 A | 2025-09-05 A | 24 | 100% |  |  |
| 26 |  | Storefront & Window Submittal (Rev 1) per revised detail Rev 4&5 - Cost Rejected by Owner | 21d | 2025-09-08 A | 2025-10-06 A | 25 | 100% |  |  |
| 27 |  | Approval / AOR | 0d | 2025-11-11 A | 2025-11-11 A | 26 | 100% |  |  |
| 28 |  | Storefront & Window Submittal - Per Latest Veneer Window Attachement Detail | 16d | 2025-11-12 A | 2025-12-03 A | 27 | 100% |  |  |
| 29 |  | Approval / AOR | 35d | 2025-12-04 A | 2026-01-21 | 28 | 85% |  |  |
| 30 |  | City Submission& Approval | 20d | 2026-01-23 | 2026-02-19 | 29FS+1d |  | 46d | start no earlier than 2020-11-02 |
| 31 |  | Fabricate and Deliver | 35d | 2026-01-23 | 2026-03-12 | 30SS |  | 46d |  |
| 32 | 1.5.5 | **Roofing** | 258d | 2024-12-24 A | 2025-12-18 A |  | 100% |  |  |
| 33 |  | Roofing Submittal | 114d | 2024-12-24 A | 2025-05-30 A | 5 | 100% |  | start no earlier than 2021-01-18 |
| 34 |  | Approval / AOR | 13d | 2025-08-08 A | 2025-08-26 A | 33FS+5d | 100% |  |  |
| 35 |  | Roofing Material Deliver | 16.4w | 2025-08-27 A | 2025-12-18 A | 34 | 100% |  |  |
| 36 | 1.5.6 | **DIP Water Piping** | 90d | 2025-05-29 A | 2025-10-01 A |  | 100% |  |  |
| 37 |  | DIP Submittals | 6d | 2025-05-29 A | 2025-06-05 A | 5 | 100% |  |  |
| 38 |  | Review & Approval (EOR/AOR) | 10d | 2025-06-06 A | 2025-06-19 A | 37 | 100% |  |  |
| 39 |  | Fabricate and Deliver | 15w | 2025-06-19 A | 2025-10-01 A | 37 | 100% |  |  |
| 40 | 1.5.7 | **Storm Drainage** | 135d | 2025-05-29 A | 2025-12-03 A |  | 100% |  |  |
| 41 |  | Storm Drainage& Sewer System Submittals | 6d | 2025-05-29 A | 2025-06-05 A | 5 | 100% |  |  |
| 42 |  | Review & Approval (EOR/AOR) | 10d | 2025-06-06 A | 2025-06-19 A | 41 | 100% |  |  |
| 43 |  | Fabricate and Deliver Structures | 23.8w | 2025-06-20 A | 2025-12-03 A | 42 | 100% |  |  |
| 44 | 1.5.8 | **HVAC Equipment** | 113d | 2025-05-08 A | 2025-10-13 A |  | 100% |  |  |
| 45 |  | Submittals | 1d | 2025-05-08 A | 2025-05-08 A | 5 | 100% |  |  |
| 46 |  | Review & Approval (EOR/AOR) | 10d | 2025-08-26 A | 2025-09-08 A | 45FS+3w | 100% |  |  |
| 47 |  | (ESTIMATED) Fabricate & Deliver | 5w | 2025-09-09 A | 2025-10-13 A | 46 | 100% |  |  |
| 48 | 1.5.9 | **Switchgear Equipment** | 226d | 2024-12-24 A | 2025-11-04 A |  | 100% |  |  |
| 49 |  | Submittals | 91d | 2024-12-24 A | 2025-04-29 A | 5 | 100% |  | finish no earlier than 2022-04-21 |
| 50 |  | Review & Approval (EOR/AOR) | 10d | 2025-04-30 A | 2025-05-13 A | 49 | 100% |  |  |
| 51 |  | (Estimated) Fabricate & Deliver Switchgear | 25w | 2025-05-14 A | 2025-11-04 A | 50 | 100% |  |  |
| 52 | 1.5.10 | **Elevator Equipment** | 281d | 2024-12-24 A | 2026-01-20 |  | 99% | 108d |  |
| 53 |  | Submittals | 2.8w | 2024-12-24 A | 2025-01-10 A | 5FS+6w | 100% |  | finish no earlier than 2022-04-21 |
| 54 |  | Review & Approval (EOR/AOR) | 23d | 2025-02-19 A | 2025-03-21 A | 53 | 100% |  |  |
| 55 |  | Revised Submittal | 1d | 2025-05-16 A | 2025-05-16 A |  | 100% |  |  |
| 56 |  | Review & Approval (EOR/AOR) | 120d | 2024-12-24 A | 2025-06-08 A |  | 100% |  |  |
| 57 |  | Released for Fabrication & Deliver Elevator Equipment | 66d | 2025-10-21 A | 2026-01-20 | 54 | 95% | 108d |  |
| 59 | 1.6 | **Construction** | 379d | 2025-01-07 A | 2026-06-19 |  | 50% | 0d |  |
| 60 |  | Mobilization | 5d | 2025-03-17 A | 2025-03-21 A | 4FS+28d, 2 | 100% |  | start no earlier than 2025-03-17 |
| 61 | 1.6.2 | **Overall Site Work Construction** | 359d | 2025-01-07 A | 2026-05-22 |  | 36% | 20d |  |
| 62 | 1.6.2.1 | **Site Construction** | 40d | 2025-03-17 A | 2025-05-09 A |  | 100% |  |  |
| 63 |  | Secure / Fence Site | 5d | 2025-03-17 A | 2025-03-21 A | 60SS | 100% |  | start no earlier than 2025-03-17 |
| 64 |  | Locate existing utilities for new tie-in | 5d | 2025-03-31 A | 2025-04-04 A | 63FS+5d | 100% |  |  |
| 65 |  | Building Site Demolition | 30d | 2025-03-19 A | 2025-05-09 A | 64 | 100% |  |  |
| 66 |  | Install protection and erosion control | 12d | 2025-04-04 A | 2025-04-21 A | 63, 64FS-1d | 100% |  |  |
| 67 |  | Site Survey& Layout | 5d | 2025-03-31 A | 2025-04-04 A | 65 | 100% |  |  |
| 68 |  | Construct Building Pad | 15d | 2025-03-31 A | 2025-04-18 A | 65 | 100% |  |  |
| 69 | 1.6.2.2 | **Strom Drainage** | 302d | 2025-01-07 A | 2026-03-04 |  | 55% | 77d |  |
| 70 |  | Install Storm Structures & Well Boxes | 22d | 2025-12-08 A | 2026-01-06 A | 133FS-10d | 100% |  |  |
| 71 |  | Delay - Conflict with Existing Drainage Structures - RFI#064 (On Going) - ESTIMATED | 15d | 2026-01-08 A | 2026-01-28 |  |  | 13d |  |

| ID | WBS | Task | Duration | Start | Finish | Predecessors | Complete | Total float | Constraint |
| --- | --- | --- | --- | --- | --- | --- | --- | --- | --- |
| 72 |  | Install Storm Pipping | 15d | 2025-01-07 A | 2026-03-04 | 70, 71FF+25d | 75% | 13d |  |
| 73 |  | Install Drainage Wells | 3w | 2025-01-09 A | 2026-02-03 | 70FS+5d | 25% | 98d |  |
| 74 | 1.6.2.3 | **Domestic Water Service** | 57d | 2025-12-09 A | 2026-02-25 |  | 17% | 42d |  |
| 75 |  | Potential Delay - Temp Access Permit to be Re-Issued & Precon Scheduled (Estimated) | 35d | 2025-12-09 A | 2026-01-26 |  | 34% | 22d |  |
| 76 |  | Temp Access For Active Building | 2d | 2026-01-27 | 2026-01-28 | 75 |  | 22d |  |
| 77 |  | Water Main installation | 15d | 2026-01-29 | 2026-02-18 | 76 |  | 22d |  |
| 78 |  | Building Water Services | 5d | 2026-02-19 | 2026-02-25 | 77 |  | 22d |  |
| 79 |  | Fire Line Underground w/ DDCV& FDC | 10d | 2026-02-05 | 2026-02-18 | 77FF |  | 42d |  |
| 80 |  | Tie-in to Existing Water Main | 5d | 2026-02-19 | 2026-02-25 | 79 |  | 42d |  |
| 81 | 1.6.2.4 | **Sewer System** | 10d | 2025-10-30 A | 2025-11-12 A |  | 100% |  |  |
| 82 |  | Tie into Existing Stub as required | 5d | 2025-10-30 A | 2025-11-05 A | 70SS-10d | 100% |  |  |
| 83 |  | Install Sanitary Piping | 5d | 2025-11-06 A | 2025-11-12 A | 82 | 100% |  |  |
| 84 | 1.6.2.5 | **Hardscape& Misc. Site Work** | 193d | 2025-08-27 A | 2026-05-22 |  | 10% | 20d |  |
| 85 |  | Primary Electrical Conduit | 5d | 2025-08-27 A | 2025-09-02 A | 127SS-5d | 100% |  |  |
| 86 |  | Site Lighting conduit, brooks boxes,& Fixture Installation | 5d | 2025-09-03 A | 2025-09-09 A | 85SS+5d | 100% |  |  |
| 87 |  | Fill Balance of Site & excavate Retention Areas | 12d | 2026-02-19 | 2026-03-06 | 72FS-10d |  | 13d |  |
| 88 |  | Irrigation and ancillary conduit sleeves | 10d | 2026-02-25 | 2026-03-10 | 87FF+2d |  | 13d |  |
| 89 |  | Sub-base | 5d | 2026-03-11 | 2026-03-17 | 85, 86, 88, 78, 72 |  | 13d |  |
| 90 |  | Base | 8d | 2026-03-18 | 2026-03-27 | 89 |  | 13d |  |
| 91 |  | Concrete Curbs | 5d | 2026-03-25 | 2026-03-31 | 90SS+5d |  | 13d |  |
| 92 |  | Asphalt (first lift) | 4d | 2026-04-02 | 2026-04-07 | 91FF+5d |  | 13d |  |
| 93 |  | Sidewalks | 5d | 2026-04-08 | 2026-04-14 | 92, 91 |  | 20d |  |
| 94 |  | Landscape& Irrigation Installation | 15d | 2026-04-08 | 2026-04-28 | 93SS |  | 20d |  |
| 95 |  | Permanent Fence Install | 15d | 2026-04-16 | 2026-05-06 | 93FS+1d |  | 32d |  |
| 96 |  | Final Lift Asphalt & Restoration | 6d | 2026-05-06 | 2026-05-13 | 94FS+1w |  | 20d |  |
| 97 |  | Pavement Marking & Striping | 6d | 2026-05-12 | 2026-05-19 | 96FF+4d |  | 20d |  |
| 98 |  | Jet Vac | 3d | 2026-05-20 | 2026-05-22 | 97 |  | 20d |  |
| 99 | 1.6.2.6 | **CONVEYANCE PROCESS** | 49d | 2026-03-04 | 2026-05-12 |  |  | 28d |  |
| 100 |  | Water (Flush & Pressure Testing) | 5d | 2026-03-05 | 2026-03-11 | 78, 72 |  | 34d |  |
| 101 |  | Water Asbuilts (Partial HRS) | 0d | 2026-03-04 | 2026-03-04 | 78, 72 |  | 48d |  |
| 102 |  | Sewer (Leakage & Lamping) | 5d | 2026-04-08 | 2026-04-14 | 83, 92 |  | 28d |  |
| 103 |  | Sewer As-Builts | 0d | 2026-03-04 | 2026-03-04 | 101 |  | 57d |  |
| 104 |  | Testing (Bacti Samples / Desity Tests) | 10d | 2026-03-12 | 2026-03-25 | 100 |  | 34d |  |
| 105 |  | Release of Lien | 1d | 2026-03-12 | 2026-03-12 | 101, 104SS |  | 43d |  |
| 106 |  | HRS Certification (Submission) | 4w | 2026-03-26 | 2026-04-22 | 100, 101, 104, 105 |  | 34d |  |
| 107 |  | DERM Certification (Submittion) | 4w | 2026-04-15 | 2026-05-12 | 102, 103, 105 |  | 28d |  |
| 108 |  | Water Meter Installation /Owner | 3d | 2026-04-23 | 2026-04-27 | 106 |  | 34d |  |
| 109 |  | Final Asbuilts (For Close-outs) | 5d | 2026-04-28 | 2026-05-04 | 108 |  | 34d |  |
| 110 | 1.6.3 | **Shell Construction** | 374d | 2025-01-14 A | 2026-06-19 |  | 53% | 0d |  |
| 111 |  | Mobilize | 3d | 2025-04-21 A | 2025-04-24 A | 68 | 100% |  |  |
| 112 | 1.6.3.2 | **CONCRETE SCOPE** | 34d | 2025-04-24 A | 2025-06-10 A |  | 100% |  |  |
| 113 |  | Install Footings & Elevator Pits | 10d | 2025-04-24 A | 2025-05-08 A | 111 | 100% |  |  |
| 114 |  | Plumbing UG | 21d | 2025-04-24 A | 2025-05-22 A |  | 100% |  |  |
| 115 |  | Electrical UG | 10d | 2025-04-30 A | 2025-05-13 A |  | 100% |  |  |
| 116 |  | Elevator Pit Waterproofing | 6d | 2025-05-09 A | 2025-05-16 A |  | 100% |  |  |
| 117 | 1.6.3.2.5 | **Prep and Pour Building Slab With Private Party Inspector** | 17d | 2025-05-19 A | 2025-06-10 A |  | 100% |  |  |
| 118 |  | WEATHER DELAY | 2d | 2025-06-03 A | 2025-06-04 A |  | 100% |  |  |
| 119 |  | PREP & POUR 1 | 12d | 2025-05-19 A | 2025-06-06 A | 118 | 100% |  |  |
| 120 |  | PREP & POUR 2 | 3.8d | 2025-05-30 A | 2025-06-10 A | 119 | 100% |  |  |
| 121 |  | STEEL DELIVERY - Columns | 0d | 2025-06-11 A | 2025-06-11 A | 16 | 100% |  | start no earlier than 2025-06-11 |
| 122 |  | STEEL DELIVERY - Decking | 2d | 2025-06-24 A | 2025-06-25 A |  | 100% |  | start no earlier than 2025-06-24 |
| 123 |  | Steel Core Erection (Roof, 5th, 4th floor, 3rd floor, 2nd Floor) | 22.6w | 2025-06-11 A | 2025-11-14 A | 121, 120 | 100% |  |  |
| 124 |  | CMU Cores | 94d | 2025-06-26 A | 2025-11-05 A | 120SS+10d | 100% |  |  |
| 125 |  | Pour 2nd , 3rd Floor slabs | 19d | 2025-07-21 A | 2025-08-14 A | 123SS | 100% |  | start no earlier than 2025-08-31 |
| 126 |  | X Bracing and Misc Connections | 6d | 2025-07-17 A | 2025-11-26 A | 123 | 100% |  | start no earlier than 2023-11-22 |
| 127 |  | Pour 4th, 5th floor slab and roof deck | 30d | 2025-09-03 A | 2025-10-14 A | 125FS+13d | 100% |  |  |
| 128 |  | Exterior Framing / Sheathing | 56d | 2025-08-08 A | 2026-02-06 | 125 | 75% | 19d | finish no earlier than 2026-02-06 |
| 129 |  | WEATHER DELAY | 1d | 2025-09-10 A | 2025-09-10 A |  | 100% |  |  |
| 130 |  | Fireproofing Steel Members Floors 1 - 4 | 95d | 2025-09-17 A | 2026-01-27 A | 127SS+10d | 100% |  |  |
| 131 |  | WEATHER DELAY | 1d | 2025-09-18 A | 2025-09-18 A |  | 100% |  |  |
| 132 |  | Interior LGF Framing | 16w | 2025-07-24 A | 2026-03-10 | 123 | 95% | 22d | start no earlier than 2024-02-23 |
| 133 |  | Install Roofing | 35d | 2025-12-18 A | 2026-02-04 | 138FS+5d | 50% | 0d |  |
| 134 |  | Fireproofing - 5th Floor Deck & Steel Members | 3w | 2026-02-05 | 2026-02-25 | 133 |  | 67d |  |
| 135 |  | Exterior Paint / Finishes | 50d | 2026-02-10 | 2026-04-20 | 128FS+1d |  | 19d |  |
| 136 |  | Hallway System Material Delivery - 2nd & 3rd Floor | 2d | 2025-01-14 A | 2025-01-15 A |  | 100% |  |  |
| 137 |  | Hallway System (By Owner) | 18w | 2026-01-19 | 2026-05-22 | 123FS+45d |  | 20d |  |
| 138 |  | Fire Sprinkler Overhead | 16d | 2025-08-04 A | 2025-12-12 A | 125 | 100% |  |  |
| 139 |  | HVAC Ductwork | 16w | 2025-11-27 A | 2026-03-18 | 134FF+15d | 70% | 67d |  |
| 140 |  | Install HVAC Units | 15d | 2026-02-05 | 2026-02-25 | 133 |  | 82d |  |
| 141 |  | Install Elevators | 12w | 2026-02-05 | 2026-04-29 | 133 |  | 0d |  |

| ID | WBS | Task | Duration | Start | Finish | Predecessors | Complete | Total float | Constraint |
| --- | --- | --- | --- | --- | --- | --- | --- | --- | --- |
| 142 |  | Exterior Storefront& Windows, & Louvers | 25d | 2026-03-13 | 2026-04-16 | 31 |  | 46d |  |
| 143 |  | Install electrical OH fixtures and power to shell | 30d | 2026-03-11 | 2026-04-21 | 132 |  | 22d |  |
| 144 |  | Install FA System | 35d | 2026-03-18 | 2026-05-05 | 143SS+5d |  | 33d |  |
| 145 |  | Misc. Exterior Items | 25d | 2026-04-21 | 2026-05-25 | 135 |  | 19d |  |
| 146 |  | Delay - FPL Tranformer (On Going) | 80d | 2025-10-01 A | 2026-01-20 |  |  | 52d |  |
| 147 |  | Install Transformer (Owner) | 5d | 2026-01-29 | 2026-02-04 | 85, 146, 71 |  | 46d |  |
| 148 |  | Temp For Test | 5d | 2026-03-11 | 2026-03-17 | 143SS, 147 |  | 22d |  |
| 149 |  | Install Electric Meter | 1d | 2026-03-25 | 2026-03-25 | 148FS+5d |  | 22d |  |
| 150 |  | Shell Completion | 0d | 2026-05-25 | 2026-05-25 | 142, 145, 149, 141 |  | 19d |  |
| 151 | 1.6.3.33 | **Offices** | 169d | 2025-07-30 A | 2026-03-23 |  | 50% | 64d |  |
| 152 |  | Install of HVAC & Fans | 0d | 2026-02-05 | 2026-02-05 | 133FS+1d |  | 73d | start no earlier than 2020-12-14 |
| 153 |  | MEP HookUp HVAC Units | 10d | 2026-02-06 | 2026-02-19 | 152 |  | 73d | finish no earlier than 2021-01-05 |
| 154 |  | Start-Up RTUs | 0d | 2026-03-17 | 2026-03-17 | 148, 153FS+1w |  | 60d |  |
| 155 |  | T&B | 3d | 2026-03-19 | 2026-03-23 | 154FS+1d |  | 60d |  |
| 156 |  | Layout Walls | 0d | 2025-07-30 A | 2025-08-01 A | 123 | 100% |  | start no earlier than 2020-11-25 |
| 157 |  | Trench Slab | 3d | 2025-08-04 A | 2025-08-06 A | 156 | 100% |  |  |
| 158 |  | Plumbing & Electrical UG | 5d | 2025-08-07 A | 2025-08-13 A | 157 | 100% |  |  |
| 159 |  | Trench Pourback | 3d | 2025-08-14 A | 2025-08-18 A | 158 | 100% |  |  |
| 160 |  | Framing | 10d | 2025-08-19 A | 2025-09-01 A | 159, 163SS+1d | 100% |  | finish no earlier than 2020-12-10 |
| 161 |  | Electrical Rough | 5d | 2025-08-26 A | 2025-09-01 A | 160SS+5d | 100% |  |  |
| 162 |  | Rough Plumbing | 5d | 2025-08-26 A | 2025-09-01 A | 160SS+5d | 100% |  |  |
| 163 |  | Overhead MEP Rough | 45d | 2025-08-04 A | 2025-10-24 A | 158SS | 100% |  | finish no earlier than 2020-12-21 |
| 164 |  | MEP In-wall Rough | 5d | 2025-08-04 A | 2025-12-19 A | 160SS+5d | 100% |  | finish no earlier than 2020-12-17 |
| 165 |  | Inwall Inspection | 0d | 2026-01-23 | 2026-01-23 | 164FS+25d |  | 95d | finish no earlier than 2020-12-14 |
| 166 |  | Double Side walls | 10d | 2026-01-26 | 2026-02-06 | 165FF+10d |  | 95d | finish no earlier than 2020-12-28 |
| 167 |  | Tape / Finish Walls | 10d | 2026-02-02 | 2026-02-13 | 166SS+5d |  | 52d |  |
| 168 |  | Install Door Frames | 5d | 2026-02-09 | 2026-02-13 | 167FF |  | 83d | finish no earlier than 2021-01-05 |
| 169 |  | Paint walls (Prime) | 3d | 2026-02-05 | 2026-02-09 | 167SS+3d |  | 52d | finish no earlier than 2021-01-08 |
| 170 |  | Ceiling Grid | 3d | 2026-02-10 | 2026-02-12 | 169 |  | 52d | finish no earlier than 2021-01-12 |
| 171 |  | Final Paint | 3d | 2026-02-13 | 2026-02-17 | 170 |  | 88d | finish no earlier than 2021-02-04 |
| 172 |  | Fire Sprinkler Drops | 5d | 2026-02-13 | 2026-02-19 | 170SS+3d |  | 86d | finish no earlier than 2021-01-18 |
| 173 |  | Install Lights | 5d | 2026-02-13 | 2026-02-19 | 170SS+3d |  | 84d | finish no earlier than 2021-01-19 |
| 174 |  | Drop Ceiling tile | 3d | 2026-02-19 | 2026-02-23 | 173FF+2d |  | 84d | finish no earlier than 2021-01-21 |
| 175 |  | Install Flooring | 7d | 2026-02-16 | 2026-02-24 | 168 |  | 83d | finish no earlier than 2021-01-26 |
| 176 |  | Install Millwork | 3d | 2026-02-18 | 2026-02-20 | 175SS+2d |  | 83d |  |
| 177 |  | Install Plumbing Fixtures | 3d | 2026-02-19 | 2026-02-23 | 176SS+1d |  | 83d | finish no earlier than 2021-01-29 |
| 178 |  | Install Toilet Partitions | 3d | 2026-02-20 | 2026-02-24 | 177FS-2d |  | 83d | finish no earlier than 2021-02-01 |
| 179 |  | MEP Trim Out | 3d | 2026-02-12 | 2026-02-16 | 170FF+2d |  | 52d | finish no earlier than 2021-02-04 |
| 180 |  | Install Doors & Hardware | 3d | 2026-02-19 | 2026-02-23 | 173SS, 175SS+3d |  | 84d | finish no earlier than 2021-02-04 |
| 182 | 1.6.3.34 | **Final Inspections** | 62d | 2026-03-26 | 2026-06-19 |  |  | 0d |  |
| 184 |  | Photometric Inspection / Certification | 3d | 2026-04-08 | 2026-04-10 | 92 |  | 13d |  |
| 185 |  | Final Mechanical | 1d | 2026-03-27 | 2026-03-27 | 155FS+3d |  | 60d |  |
| 186 |  | Fire Pump Certification | 5d | 2026-03-26 | 2026-04-01 | 80, 149 |  | 22d |  |
| 187 |  | Final Sprinkler | 1d | 2026-04-02 | 2026-04-02 | 179, 186 |  | 22d |  |
| 188 |  | Final Plumbing | 1d | 2026-04-28 | 2026-04-28 | 179, 108 |  | 38d |  |
| 189 |  | Final Electrical & Fire Alarm | 3d | 2026-04-30 | 2026-05-04 | 179, 184, 141 |  | 0d |  |
| 190 |  | Final Fire | 1d | 2026-05-05 | 2026-05-05 | 189, 187 |  | 0d |  |
| 191 |  | Final Building | 1d | 2026-05-06 | 2026-05-06 | 190 |  | 0d |  |
| 192 |  | Final Zoning | 1d | 2026-05-07 | 2026-05-07 | 191 |  | 0d |  |
| 193 |  | Public Works Release (DERM) | 1d | 2026-05-07 | 2026-05-07 | 191 |  | 31d |  |
| 194 |  | Obtain Certificate of Completion | 10d | 2026-05-08 | 2026-05-21 | 192 |  | 0d |  |
| 195 |  | PCCO #009 - Veneer Window Attachment Changes | 5d | 2026-05-22 | 2026-05-28 | 194 |  | 16d |  |
| 196 |  | Weather Delay Allowance | 16d | 2026-05-29 | 2026-06-19 | 194FS+5d, 118 |  | 0d |  |

## Version 2 (saved 2026-03-25, file update_1.mpp)

Note of the change: Add all project schedule files to buckets - 13 projects, MPP+XER, baseline+updates

Last finish 2026-06-19 → 2026-07-10 (+21d). Complete tasks 82 → 107.

Added:

| ID | Task | Duration | Start | Finish | Predecessors |
| --- | --- | --- | --- | --- | --- |
| 72 | Cost for additional work per RFI#064 response - Submitted to PS | 9d | 2026-01-19 A | 2026-01-29 A | 71 |
| 73 | Cost Approval Additional Drainage work per RFI #064 - ESTIMATED | 4d | 2026-01-29 A | 2026-02-04 A | 72 |
| 74 | Fabrication of New Structrures EX-20 & Ex-70 | 4w | 2026-02-05 A | 2026-03-04 A | 73 |
| 75 | Remove Old Structures & Install new ones | 6d | 2026-03-05 A | 2026-03-12 A | 74 |
| 80 | Precon Meeting Scheduled (Estimated) | 4d | 2025-01-29 A | 2026-01-29 A | 79 |
| 81 | LCIS approval from FDOT | 3d | 2026-01-30 A | 2026-02-03 A | 80 |
| 82 | Notify Active Building of upcoming work | 5d | 2026-02-04 A | 2026-02-10 A | 81 |
| 84 | Existing 8" Valve Deffective - Potential Delay | 1d | 2026-02-18 A | 2026-02-18 A |  |
| 85 | New Valve Released | 8d | 2026-02-20 A | 2026-03-03 A | 84FS+1d |
| 86 | WASD Invoice for Additional Services - Waiting to be posted in Portal | 5d | 2026-03-04 A | 2026-03-10 A | 85 |
| 87 | WASD Inspector on Site for Installation - PER WASD Availability | 1d | 2026-03-16 A | 2026-03-16 A | 86FS+3d |
| 144 | WEATHER DELAY | 2d | 2026-01-12 A | 2026-01-13 A |  |
| 152 | Schindler Mobilization Delay - Communicated on 02/20 | 5d | 2026-02-23 A | 2026-02-27 A |  |
| 201 | Final Fire Alarm | 1d | 2026-05-11 | 2026-05-11 | 189, 153 |

Changed:

| ID | Task | Start | Finish | Duration | Complete | Total float | Predecessors | Other |
| --- | --- | --- | --- | --- | --- | --- | --- | --- |
| 1 | **Overall Project Duration Public Storage - Aventura** |  | 2026-06-19 → 2026-07-10 (+21d) | 428d → 443d | 71% → 79% |  |  |  |
| 6 | **SUBMITTALS** |  | 2026-03-12 → 2026-04-01 (+20d) | 328d → 342d | 96% → 99% | 71d → 47d |  |  |
| 23 | **Storefront & Window Shop drawings** | 2025-05-21 A → 2025-01-30 A (-111d) | 2026-03-12 → 2026-04-01 (+20d) | 212d → 305d | 70% → 98% | 46d → 47d |  |  |
| 29 | Approval / AOR |  | 2026-01-21 → 2026-01-26 A (+5d) | 35d → 38d | 85% → 100% |  |  |  |
| 30 | City Submission& Approval | 2026-01-23 → 2026-02-10 A (+18d) | 2026-02-19 → 2026-03-11 A (+20d) | 20d → 22d | 0% → 100% | 46d → none | 29FS+1d → 29FS+10d |  |
| 31 | Fabricate and Deliver | 2026-01-23 → 2025-01-30 A (-358d) | 2026-03-12 → 2026-04-01 (+20d) | 35d → 45d | 0% → 90% | 46d → 47d | 30SS → 30SS-8d |  |
| 52 | **Elevator Equipment** |  | 2026-01-20 → 2025-10-20 A (-92d) | 281d → 215d | 99% → 100% | 108d → none |  |  |
| 57 | Released for Fabrication & Deliver Elevator Equipment | 2025-10-21 A → 2025-02-11 A (-252d) | 2026-01-20 → 2025-10-20 A (-92d) | 66d → 0d | 95% → 100% | 108d → none |  |  |
| 59 | **Construction** |  | 2026-06-19 → 2026-07-10 (+21d) | 379d → 394d | 50% → 63% |  |  |  |
| 61 | **Overall Site Work Construction** |  | 2026-05-22 → 2026-06-03 (+12d) | 359d → 367d | 36% → 63% | 20d → 27d |  |  |
| 69 | **Strom Drainage** |  | 2026-03-04 → 2026-03-24 (+20d) | 302d → 316d | 55% → 92% | 77d → 78d |  |  |
| 71 | Delay - Conflict with Existing Drainage Structures - RFI#064 (On Going) - ESTIMATED |  | 2026-01-28 A | 15d → 8d | 0% → 100% | 13d → none |  |  |
| 76 | Complete Install of Storm Pipping |  | 2026-03-04 → 2026-03-24 (+20d) | 15d → 20d | 75% → 95% | 13d → 0.25d | 70, 71FF+25d → 70, 71FF, 75 | was named Install Storm Pipping |
| 77 | Install Drainage Wells |  | 2026-02-03 → 2026-03-24 (+49d) | 3w → 50d | 25% → 80% | 98d → 78d |  |  |
| 78 | **Domestic Water Service** | 2025-12-09 A → 2025-01-29 A (-314d) | 2026-02-25 → 2026-03-30 (+33d) | 57d → 304d | 17% → 82% | 42d → 33d |  |  |
| 79 | Potential Delay - Temp Access Permit to be Re-Issued |  | 2026-01-26 → 2026-01-23 A (-3d) | 35d → 34d | 34% → 100% | 22d → none |  | was named Potential Delay - Temp Access Permit to be Re-Issued & Precon Scheduled (Estimated) |
| 83 | Temp Access For Active Building | 2026-01-27 → 2026-02-11 A (+15d) | 2026-01-28 → 2026-02-13 A (+16d) | 2d → 3d | 0% → 100% | 22d → none | 79 → 82 |  |
| 88 | Water Main installation | 2026-01-29 → 2026-02-16 A (+18d) | 2026-02-18 → 2026-03-20 (+30d) | 15d → 10d | 0% → 30% | 22d → 0d | 83 → 83, 87FF+4d |  |
| 89 | Building Water Services | 2026-02-19 → 2026-03-23 (+32d) | 2026-02-25 → 2026-03-24 (+27d) | 5d → 2d |  | 22d → 0d |  |  |
| 90 | Fire Line Underground w/ DDCV& FDC | 2026-02-05 → 2026-03-25 (+48d) | 2026-02-18 → 2026-03-27 (+37d) | 10d → 3d |  | 42d → 33d | 88FF → 88FF+5d |  |
| 91 | Tie-in to Existing Water Main | 2026-02-19 → 2026-03-26 (+35d) | 2026-02-25 → 2026-03-30 (+33d) | 5d → 3d |  | 42d → 33d | 90 → 90FS-2d |  |
| 95 | **Hardscape& Misc. Site Work** |  |  |  | 10% → 12% | 20d → 35d |  |  |
| 98 | Fill Balance of Site & excavate Retention Areas | 2026-02-19 → 2026-03-24 (+33d) | 2026-03-06 → 2026-03-30 (+24d) | 12d → 5d |  | 13d → 0d | 76FS-10d → 88FF+6d |  |
| 99 | Irrigation and ancillary conduit sleeves | 2026-02-25 → 2026-03-25 (+28d) | 2026-03-10 → 2026-03-30 (+20d) | 10d → 4d |  | 13d → 0d | 98FF+2d → 98FF |  |
| 100 | Sub-base | 2026-03-11 → 2026-03-25 (+14d) | 2026-03-17 → 2026-03-30 (+13d) | 5d → 4d |  | 13d → 0d | 96, 97, 99, 89, 76 → 96, 97, 99FF, 89, 76 |  |
| 101 | Base | 2026-03-18 → 2026-03-30 (+12d) | 2026-03-27 → 2026-04-03 (+7d) | 8d → 5d |  | 13d → 0d | 100 → 100FF+4d |  |
| 102 | Concrete Curbs | 2026-03-25 → 2026-04-02 (+8d) | 2026-03-31 → 2026-04-08 (+8d) |  |  | 13d → 5d | 101SS+5d → 101FF+3d |  |
| 103 | Asphalt (first lift) | 2026-04-02 → 2026-04-10 (+8d) | 2026-04-07 → 2026-04-14 (+7d) | 4d → 3d |  | 13d → 5d | 102FF+5d → 102FF+4d |  |
| 104 | Sidewalks | 2026-04-08 → 2026-04-15 (+7d) | 2026-04-14 → 2026-04-21 (+7d) |  |  | 20d → 5d |  |  |
| 105 | Landscape& Irrigation Installation | 2026-04-08 → 2026-04-15 (+7d) | 2026-04-28 → 2026-05-05 (+7d) |  |  | 20d → 5d |  |  |
| 106 | Permanent Fence Install | 2026-04-16 → 2026-04-23 (+7d) | 2026-05-06 → 2026-05-13 (+7d) |  |  | 32d → 42d |  |  |
| 107 | Final Lift Asphalt & Restoration | 2026-05-06 → 2026-05-12 (+6d) | 2026-05-13 → 2026-05-18 (+5d) | 6d → 5d |  | 20d → 5d | 105FS+1w → 105FS+4d |  |
| 108 | Pavement Marking & Striping | 2026-05-12 → 2026-05-14 (+2d) | 2026-05-19 → 2026-05-20 (+1d) | 6d → 5d |  | 20d → 5d | 107FF+4d → 107FF+2d |  |
| 109 | Jet Vac |  |  |  |  | 20d → 5d | 108 → 108FS-1d |  |
| 110 | **CONVEYANCE PROCESS** | 2026-03-04 → 2026-04-03 (+30d) | 2026-05-12 → 2026-06-03 (+22d) | 49d → 43d |  | 28d → 0d |  |  |
| 111 | Water (Flush & Pressure Testing) | 2026-03-05 → 2026-04-06 (+32d) | 2026-03-11 → 2026-04-10 (+30d) |  |  | 34d → 0d | 89, 76 → 89, 76, 101 |  |
| 112 | Water Asbuilts (Partial HRS) | 2026-03-04 → 2026-04-03 (+30d) | 2026-03-04 → 2026-04-03 (+30d) |  |  | 48d → 14d | 89, 76 → 89, 76, 101 |  |
| 113 | Sewer (Leakage & Lamping) | 2026-04-08 → 2026-04-15 (+7d) | 2026-04-14 → 2026-04-21 (+7d) |  |  | 28d → 38d |  |  |
| 114 | Sewer As-Builts | 2026-03-04 → 2026-04-03 (+30d) | 2026-03-04 → 2026-04-03 (+30d) |  |  | 57d → 50d |  |  |
| 115 | Testing (Bacti Samples / Desity Tests) | 2026-03-12 → 2026-04-13 (+32d) | 2026-03-25 → 2026-04-24 (+30d) |  |  | 34d → 0d |  |  |
| 116 | Release of Lien | 2026-03-12 → 2026-04-13 (+32d) | 2026-03-12 → 2026-04-13 (+32d) |  |  | 43d → 9d |  |  |
| 117 | HRS Certification (Submission) | 2026-03-26 → 2026-04-27 (+32d) | 2026-04-22 → 2026-05-22 (+30d) |  |  | 34d → 0d |  |  |
| 118 | DERM Certification (Submittion) | 2026-04-15 → 2026-04-22 (+7d) | 2026-05-12 → 2026-05-19 (+7d) |  |  | 28d → 38d |  |  |
| 119 | Water Meter Installation /Owner | 2026-04-23 → 2026-05-25 (+32d) | 2026-04-27 → 2026-05-27 (+30d) |  |  | 34d → 0d |  |  |
| 120 | Final Asbuilts (For Close-outs) | 2026-04-28 → 2026-05-28 (+30d) | 2026-05-04 → 2026-06-03 (+30d) |  |  | 34d → 27d |  |  |
| 121 | **Shell Construction** | 2025-01-14 A → 2025-04-21 A (+97d) | 2026-06-19 → 2026-07-10 (+21d) | 374d → 320d | 53% → 63% |  |  |  |
| 139 | Exterior Framing / Sheathing |  | 2026-02-06 → 2026-03-12 A (+34d) | 56d → 80d | 75% → 100% | 19d → none |  |  |
| 143 | Interior LGF Framing |  | 2026-03-10 A |  | 95% → 100% | 22d → none |  |  |
| 145 | Install Roofing |  | 2026-02-04 → 2026-02-06 A (+2d) | 35d → 37d | 50% → 100% | 0d → none |  |  |
| 146 | Fireproofing - 5th Floor Deck & Steel Members | 2026-02-05 → 2026-02-25 A (+20d) | 2026-02-25 → 2026-03-20 (+23d) | 3w → 18d | 0% → 80% | 67d → 65d | 145 → 145FS+10d |  |
| 147 | Exterior Finishes | 2026-02-10 → 2026-03-09 A (+27d) | 2026-04-20 → 2026-05-15 (+25d) |  |  | 19d → 15d | 139FS+1d → 139FS-4d | was named Exterior Paint / Finishes |
| 148 | Hallway System Material Delivery - 2nd & 3rd Floor | 2025-01-14 A → 2026-01-14 A (+365d) | 2025-01-15 A → 2026-01-15 A (+365d) |  |  |  |  |  |
| 149 | Hallway System (By Owner) | 2026-01-19 A |  |  | 0% → 35% | 20d → 35d |  |  |
| 151 | HVAC Ductwork |  | 2026-03-18 → 2026-04-10 (+23d) |  | 70% → 80% | 67d → 65d |  |  |
| 153 | Install Elevators | 2026-02-05 → 2026-03-02 A (+25d) | 2026-04-29 → 2026-05-08 (+9d) | 12w → 10w | 0% → 40% | 0d → 9d | 145 → 145FS+10d, 152 |  |
| 154 | Install electrical OH fixtures | 2026-03-11 A |  |  | 0% → 60% | 22d → 58d |  | was named Install electrical OH fixtures and power to shell |
| 155 | Install Rooftop Units | 2026-02-05 → 2026-03-30 (+53d) | 2026-02-25 → 2026-04-10 (+44d) | 15d → 10d |  | 82d → 65d | 145 → 145FS+8d, 146FS+5d | was named Install HVAC Units |
| 157 | Exterior Storefront& Windows, & Louvers | 2026-03-13 → 2026-04-02 (+20d) | 2026-04-16 → 2026-05-06 (+20d) |  |  | 46d → 47d |  |  |
| 158 | Misc. Exterior Items | 2026-04-21 → 2026-05-18 (+27d) | 2026-05-25 → 2026-06-19 (+25d) |  |  | 19d → 15d |  |  |
| 159 | Delay - FPL Tranformer (On Going) |  | 2026-01-20 → 2026-03-24 (+63d) | 80d → 125d |  | 52d → 16d |  |  |
| 160 | Install Transformer (Owner) | 2026-01-29 → 2026-03-25 (+55d) | 2026-02-04 → 2026-03-31 (+55d) |  |  | 46d → 16d |  |  |
| 161 | Temp For Test | 2026-03-11 → 2026-04-08 (+28d) | 2026-03-17 → 2026-04-14 (+28d) |  |  | 22d → 16d | 154SS, 160 → 154SS, 160FS+5d |  |
| 162 | Install Electric Meter | 2026-03-25 → 2026-04-22 (+28d) | 2026-03-25 → 2026-04-22 (+28d) |  |  | 22d → 16d |  |  |
| 163 | Shell Completion | 2026-05-25 → 2026-06-19 (+25d) | 2026-05-25 → 2026-06-19 (+25d) |  |  | 19d → 15d |  |  |
| 164 | **Offices** |  | 2026-03-23 → 2026-05-07 (+45d) | 169d → 202d | 50% → 53% | 64d → 46d |  |  |
| 165 | Install of HVAC & Fans | 2026-02-05 → 2026-02-09 A (+4d) | 2026-02-05 → 2026-02-09 A (+4d) | 0d → 1d | 0% → 100% | 73d → none |  |  |
| 166 | MEP HookUp HVAC Units | 2026-02-06 → 2026-02-10 A (+4d) | 2026-02-19 → 2026-02-23 A (+4d) |  | 0% → 100% | 73d → none |  |  |
| 167 | Start-Up RTUs | 2026-03-17 → 2026-04-14 (+28d) | 2026-03-17 → 2026-04-14 (+28d) |  |  | 60d → 55d | 161, 166FS+1w → 161, 166FS+2w |  |
| 168 | T&B | 2026-03-19 → 2026-04-16 (+28d) | 2026-03-23 → 2026-04-20 (+28d) |  |  | 60d → 55d |  |  |
| 178 | Inwall Inspection | 2026-01-23 A | 2026-01-23 A | 0d → 1d | 0% → 100% | 95d → none |  |  |

| ID | Task | Start | Finish | Duration | Total float | Predecessors | Other |
| --- | --- | --- | --- | --- | --- | --- | --- |
| 179 | Double Side walls | 2026-01-26 → 2026-03-23 (+56d) | 2026-02-06 → 2026-04-10 (+63d) | 10d → 15d | 95d → 65d | 178FF+10d → 178SS+30d, 146 |  |
| 180 | Tape / Finish Walls | 2026-02-02 → 2026-03-30 (+56d) | 2026-02-13 → 2026-04-17 (+63d) | 10d → 15d | 52d → 21d |  |  |
| 181 | Install Door Frames | 2026-02-09 → 2026-04-13 (+63d) | 2026-02-13 → 2026-04-17 (+63d) |  | 83d → 53d |  |  |
| 182 | Paint walls (Prime) | 2026-02-05 → 2026-04-13 (+67d) | 2026-02-09 → 2026-04-15 (+65d) |  | 52d → 21d | 180SS+3d → 180SS+10d |  |
| 183 | Ceiling Grid | 2026-02-10 → 2026-04-16 (+65d) | 2026-02-12 → 2026-04-20 (+67d) |  | 52d → 21d |  |  |
| 184 | Final Paint | 2026-02-13 → 2026-04-21 (+67d) | 2026-02-17 → 2026-04-23 (+65d) |  | 88d → 56d |  |  |
| 185 | Fire Sprinkler Drops | 2026-02-13 → 2026-04-21 (+67d) | 2026-02-19 → 2026-04-27 (+67d) |  | 86d → 54d |  |  |
| 186 | Install Lights | 2026-02-13 → 2026-04-21 (+67d) | 2026-02-19 → 2026-04-27 (+67d) |  | 84d → 52d |  |  |
| 187 | Flooring | 2026-02-16 → 2026-04-20 (+63d) | 2026-02-24 → 2026-04-28 (+63d) |  | 83d → 53d |  | was named Install Flooring |
| 188 | Install Millwork | 2026-02-18 → 2026-04-22 (+63d) | 2026-02-20 → 2026-04-24 (+63d) |  | 83d → 46d |  |  |
| 189 | MEP Trim Out | 2026-02-12 → 2026-04-20 (+67d) | 2026-02-16 → 2026-04-22 (+65d) |  | 52d → 21d |  |  |
| 190 | Install Plumbing Fixtures | 2026-02-19 → 2026-04-23 (+63d) | 2026-02-23 → 2026-04-27 (+63d) |  | 83d → 46d |  |  |
| 191 | Install Doors & Hardware | 2026-02-19 → 2026-04-23 (+63d) | 2026-02-23 → 2026-04-27 (+63d) |  | 84d → 54d |  |  |
| 192 | Drop Ceiling tile | 2026-02-19 → 2026-04-27 (+67d) | 2026-02-23 → 2026-04-29 (+65d) |  | 84d → 52d |  |  |
| 193 | Install Toilet Partitions | 2026-02-20 → 2026-05-05 (+74d) | 2026-02-24 → 2026-05-07 (+72d) |  | 83d → 46d | 190FS-2d → 190FS+5d |  |
| 195 | **Final Inspections** | 2026-03-26 → 2026-04-15 (+20d) | 2026-06-19 → 2026-07-10 (+21d) | 62d → 63d |  |  |  |
| 197 | Final Mechanical | 2026-03-27 → 2026-04-24 (+28d) | 2026-03-27 → 2026-04-24 (+28d) |  | 60d → 55d |  |  |
| 198 | Photometric Inspection / Certification | 2026-04-08 → 2026-04-15 (+7d) | 2026-04-10 → 2026-04-17 (+7d) |  | 13d → 26d |  |  |
| 199 | Fire Pump Certification | 2026-03-26 → 2026-04-23 (+28d) | 2026-04-01 → 2026-04-29 (+28d) |  | 22d → 16d |  |  |
| 200 | Final Sprinkler | 2026-04-02 → 2026-04-30 (+28d) | 2026-04-02 → 2026-04-30 (+28d) |  | 22d → 16d |  |  |
| 202 | Final Fire | 2026-05-05 → 2026-05-12 (+7d) | 2026-05-05 → 2026-05-12 (+7d) |  | 0d → 9d | 203, 200 → 200, 201 |  |
| 203 | Final Electrical - (Fire Life Safety Approval Requiered) | 2026-04-30 → 2026-05-13 (+13d) | 2026-05-04 → 2026-05-15 (+11d) |  | 0d → 9d | 189, 198, 153 → 189, 198, 153, 131, 202 | was named Final Electrical & Fire Alarm |
| 204 | Final Plumbing | 2026-04-28 → 2026-05-28 (+30d) | 2026-04-28 → 2026-05-28 (+30d) |  | 38d → 0d |  |  |
| 205 | Final Building | 2026-05-06 → 2026-05-29 (+23d) | 2026-05-06 → 2026-05-29 (+23d) |  |  | 202 → 203, 204 |  |
| 206 | Final Zoning | 2026-05-07 → 2026-06-01 (+25d) | 2026-05-07 → 2026-06-01 (+25d) |  |  | 205 → 205, 108 |  |
| 207 | Public Works Release (DERM) | 2026-05-07 → 2026-06-01 (+25d) | 2026-05-07 → 2026-06-01 (+25d) |  | 31d → 0d | 205 → 205, 109 |  |
| 208 | Obtain Certificate of Completion | 2026-05-08 → 2026-06-02 (+25d) | 2026-05-21 → 2026-06-15 (+25d) |  |  | 206 → 206, 207 |  |
| 209 | PCCO #009 - Veneer Window Attachment Changes | 2026-05-22 → 2026-06-16 (+25d) | 2026-05-28 → 2026-06-22 (+25d) |  | 16d → 14d |  |  |
| 210 | Weather Delay Allowance | 2026-05-29 → 2026-06-23 (+25d) | 2026-06-19 → 2026-07-10 (+21d) | 16d → 14d |  |  |  |
