# Public Storage at Marksheffel and Barnes 3/7/25

How a schedule from Primavera P6 changed from version to version. A marks actual dates.

## Version 1 (data date 2025-03-07, saved 2025-11-06, file update_1.xer)

Note of the change: Add all project schedule files to buckets - 13 projects, MPP+XER, baseline+updates

| ID | WBS | Task | Duration | Start | Finish | Predecessors | Complete | Total float | Constraint |
| --- | --- | --- | --- | --- | --- | --- | --- | --- | --- |
|  | 691056193 | **Project Summary** |  | 2024-07-18 | 2026-01-05 |  |  |  |  |
|  | 691056493 | **Contract Milestones** |  | 2024-07-18 | 2026-01-05 |  |  |  |  |
| 33172 |  | Proposals/Bids Due | 0d | 2024-07-18 A | 2024-07-18 A |  | 100% |  | start on 2024-07-18 |
| 33182 |  | Interviews | 0d | 2024-07-22 A | 2024-07-22 A |  | 100% |  | start on 2024-07-22 |
| 33192 |  | Award Contract | 0d | 2024-07-26 A | 2024-07-26 A |  | 100% |  | start on 2024-07-26 |
| NTP |  | Initial Notice to Proceed - Site Not in Compliance Per Contract | 0d | 2025-01-14 A | 2025-01-14 A | 34992 | 100% |  | start on 2025-01-14 |
| SC |  | Project SC - Before Weather Impacts | 0d | 2025-12-03 | 2025-12-03 | 1113 |  | 0d |  |
| PSC |  | Project Substantially Complete - After Weather Impacts | 0d | 2025-12-16 | 2025-12-16 | SC, 1027 |  | 0d |  |
| PSC0001 |  | Operational Setup | 12d | 2025-12-17 | 2026-01-05 | PSC |  | 0d |  |
| PSC0002 |  | Project Open | 0d | 2026-01-05 | 2026-01-05 | PSC0001 |  | 0d |  |
|  | 691056293 | **Construction Milestones** |  | 2025-01-21 | 2025-11-04 |  |  |  |  |
| 1004 |  | Permit Approved | 0d | 2025-01-21 A | 2025-01-21 A | NTP FS+2d | 100% |  | start on 2025-01-21 |
| 1005 |  | Start Construction | 0d | 2025-01-22 A | 2025-01-22 A | NTP, 32932 SS | 100% |  |  |
| 1007 |  | Start of Foundations | 0d | 2025-03-17 | 2025-03-17 | 32932 SS, 35012 SS |  | 204d |  |
| 1012 |  | Stair Cores Complete to Roof | 0d | 2025-05-05 | 2025-05-05 | 35153 |  | 168d |  |
| 1008 |  | Start of Elevated Structure | 0d | 2025-05-09 | 2025-05-09 | 33283 SS |  | 165d |  |
| 1010 |  | Structure Complete | 0d | 2025-07-25 | 2025-07-25 | 1066 |  | 111d |  |
| 1016 |  | Building Dry In | 0d | 2025-08-22 | 2025-08-22 | 1075, 33372, 33412, 33452 |  | 91d |  |
| 1015 |  | Exterior Work Complete | 0d | 2025-11-04 | 2025-11-04 | 1189, 1131 |  | 40d |  |
|  | 691103693 | **Schedule Impacts** |  | 2025-01-14 | 2025-12-16 |  |  |  |  |
|  | 691103793 | **Weather Delays** |  | 2025-12-03 | 2025-12-16 |  |  |  |  |
| 1027 |  | Contract Weather Days - 10 Days | 10d | 2025-12-03 | 2025-12-16 | SC |  | 0d |  |
|  | 691104193 | **Project Impacts** |  | 2025-01-14 | 2025-04-17 |  |  |  |  |
|  | 691105393 | **Owner Scope Impacts** |  | 2025-01-14 | 2025-04-17 |  |  |  |  |
|  | 691105693 | **Pond Construction By Owner** |  | 2025-01-20 | 2025-04-17 |  |  |  |  |
| 35668 |  | Pond Construction Per Owner | 40d | 2025-01-20 A | 2025-03-05 A | 35726 | 100% |  |  |
| 35686 |  | Pond Contractor Permit Pulled | 1d | 2025-03-06 A | 2025-03-06 A | 35668 | 100% |  | start on or after 2025-03-06 |
| 35676 |  | Pond Construction by Owner | 30d | 2025-03-07 | 2025-04-17 | 35686 |  | 180d |  |
|  | 691105793 | **BMP Installation and Certification By Owner** |  | 2025-01-20 | 2025-02-12 |  |  |  |  |
| 35706 |  | Repair and Install BMPS By Owner (not completed by owner) | 25d | 2025-01-20 A | 2025-02-12 A | 35726, 35846 SF | 100% |  |  |
|  | 691108893 | **Impacts Correspondence** |  | 2025-01-14 | 2025-01-30 |  |  |  |  |
| 35926 |  | W.E.O. Notification of Delayed Mobilization Due to Weather | 1d | 2025-01-14 A | 2025-01-14 A |  | 100% |  | start on or after 2025-01-14 |
| 35946 |  | Initial NTP From Owner | 1d | 2025-01-14 A | 2025-01-14 A |  | 100% |  | start on or after 2025-01-14 |
| 35956 |  | W.E.O. Notification of Site Condition Impacting start of work | 1d | 2025-01-22 A | 2025-01-22 A |  | 100% |  | start on or after 2025-01-22 |
| 35966 |  | W.E.O. Notification of Continued Site Impacts | 1d | 2025-01-28 A | 2025-01-28 A |  | 100% |  | start on or after 2025-01-28 |
| 35976 |  | W.E.O. Notification of Erosion Control and Pond Work Impacts | 1d | 2025-01-30 A | 2025-01-30 A |  | 100% |  |  |
|  | 691106093 | **Owner Over-Ex and Pad Certification By Owner** |  | 2025-01-16 | 2025-01-16 |  |  |  |  |
| 35726 |  | Owner Over-Ex Complete and Pad Ceritification Emaiol | 1d | 2025-01-16 A | 2025-01-16 A |  | 100% |  | start on or after 2025-01-08 |
|  | 691060893 | **Pre-Construciton** |  | 2024-07-26 | 2025-04-11 |  |  |  |  |
|  | 691060793 | **Procurement** |  | 2024-07-26 | 2025-04-11 |  |  |  |  |
| 34952 |  | Contracting of Early Trades | 128d | 2024-07-26 A | 2025-01-28 A | 33192 | 100% |  |  |
| 32912 |  | Elevator (By Owner) | 166d | 2024-08-16 A | 2025-04-11 | 34952 | 84% | 117d |  |
| 32922 |  | Electric Room MDP | 165d | 2024-08-16 A | 2025-04-10 | 34952 | 85% | 68d |  |
| 34992 |  | Owner's Enabling Contract Work | 96d | 2024-08-26 A | 2025-01-13 A |  | 100% |  | start on 2024-08-26 |
|  | 691108693 | **Additional Scope Per Owner - Required For Project Start** |  | 2025-02-03 | 2025-03-14 |  |  |  |  |
|  | 691107793 | **W.E. O'Neil BMP Install and Permitting - Owner Approved** |  | 2025-02-13 | 2025-03-14 |  |  |  |  |
| 35846 |  | Owner Approval/Direction To Install Stormwater BMP's (OAC Meeting) | 1d | 2025-02-13 A | 2025-02-13 A | 35976 | 100% |  | start on 2025-02-13 |
| 35856 |  | W.E. O'neil Subcontractor Agreements | 7d | 2025-02-14 A | 2025-02-24 A | 35846 | 100% |  |  |
| 35876 |  | BMP Install | 3d | 2025-02-25 A | 2025-02-27 A | 35856, 35896 | 100% |  |  |
| 35886 |  | CSU Stormwater Permitting | 15d | 2025-02-25 A | 2025-03-14 | 35856 | 60% | 0d |  |
| 35866 |  | CSU Stormwater Inspection | 0d | 2025-03-14 | 2025-03-14 | 35876, 35886, 36016 |  | 0d |  |
|  | 691107893 | **W.E. O'Neil Site Prep - Owner Approved** |  | 2025-02-03 | 2025-02-20 |  |  |  |  |
| 35906 |  | Owner Approval/Direction to Grade Site Per GEC (Email - 2/3) | 1d | 2025-02-03 A | 2025-02-03 A | 35976 | 100% |  | start on or after 2025-02-03 |
| 35896 |  | Grading per GEC Plan | 12d | 2025-02-05 A | 2025-02-10 A | 35906 | 100% |  | start on or after 2025-02-05 |
| 35986 |  | Cold Weather Delay (High below freezing) | 4d | 2025-02-11 A | 2025-02-14 A | 35896 | 100% |  |  |
| 35996 |  | Grading Per GEC Plan Continued | 1d | 2025-02-17 A | 2025-02-17 A | 35986 | 100% |  |  |
| 36006 |  | Cold Weather Delay (High Below Freezing | 2d | 2025-02-18 A | 2025-02-19 A | 35996 | 100% |  |  |
| 36016 |  | Grading Per GEC Plan Continued | 1d | 2025-02-20 A | 2025-02-20 A | 36006 | 100% |  |  |
|  | 691065093 | **Construction** |  | 2025-01-22 | 2025-12-05 |  |  |  |  |
|  | 691080993 | **Mobilization** |  | 2025-01-22 | 2025-01-28 |  |  |  |  |
| 32932 |  | Mobilization and Survey | 5d | 2025-01-22 A | 2025-01-28 A | NTP, 34992, 1004 | 100% |  |  |
|  | 691061993 | **Site Development** |  | 2025-02-17 | 2025-09-08 |  |  |  |  |
|  | 691098893 | **Site Infrastructure** |  | 2025-03-17 | 2025-04-15 |  |  |  |  |
| 35273 |  | Install Sewer | 4d | 2025-03-17 | 2025-03-20 | 32932, 35866 |  | 182d |  |
| 33092 |  | Install Domestic Water and Fire | 5d | 2025-03-21 | 2025-03-27 | 35273 |  | 182d |  |
| 33102 |  | Install Storm Main (Pond to STA: 2+42.32) | 8d | 2025-03-28 | 2025-04-08 | 33092 |  | 182d |  |
| 1050 |  | Install Storm Secondary | 5d | 2025-04-09 | 2025-04-15 | 33102 |  | 182d |  |
|  | 691098993 | **Site Civil** |  | 2025-02-17 | 2025-09-08 |  |  |  |  |
| 1053 |  | Electrical Main Conduit and Transformer Prep (PRECONSTRUCTION) | 1d | 2025-02-17 A | 2025-02-17 A | 32932 | 100% |  | start on or after 2025-02-17 |
| 1055 |  | CSU Electrical Inspection | 1d | 2025-02-18 A | 2025-02-18 A | 1053 | 100% |  |  |

| ID | WBS | Task | Duration | Start | Finish | Predecessors | Complete | Total float |
| --- | --- | --- | --- | --- | --- | --- | --- | --- |
| 35433 |  | Electrical Trench Backfill and Recompaction | 2d | 2025-02-19 A | 2025-02-20 A | 1055 | 100% |  |
| 1054 |  | Transformer Installation (By CSU - Lead Time Scheduling Included) | 12d | 2025-02-21 A | 2025-03-17 | 35433 | 42% | 131d |
| 35283 |  | Electrical Main to Building | 5d | 2025-09-02 | 2025-09-08 | 1054, 33422 |  | 14d |
|  | 691099993 | **Paving** |  | 2025-04-28 | 2025-06-10 |  |  |  |
| 35313 |  | Survey - Trash Enclosure | 1d | 2025-04-28 | 2025-04-28 | 35143 |  | 132d |
| 35323 |  | Excavate - Trash Enclosure | 1d | 2025-04-29 | 2025-04-29 | 35313 |  | 132d |
| 35333 |  | FRPS Footer - Trash Enclosure | 3d | 2025-04-30 | 2025-05-02 | 35323 |  | 132d |
| 35343 |  | FRPS Stem Wall - Trash Enclosure | 3d | 2025-05-05 | 2025-05-07 | 35333 |  | 132d |
| 35353 |  | Backfill and compact - Trash Enclosure | 1d | 2025-05-08 | 2025-05-08 | 35343 |  | 132d |
| 35363 |  | Survey - Grid Line K, South | 1d | 2025-05-09 | 2025-05-09 | 35353 |  | 132d |
| 35373 |  | Finish Grade - Grid Line K, South | 3d | 2025-05-12 | 2025-05-14 | 35363 |  | 132d |
| 35383 |  | FRPS Curb and gutter - Grid Line K, South | 4d | 2025-05-15 | 2025-05-20 | 35373 |  | 132d |
| 35384 |  | FRPS Sidewalk and Ballards - Grid Line K, South | 3d | 2025-05-21 | 2025-05-23 | 35383 |  | 154d |
| 35393 |  | Survey - Grid Line K, North | 1d | 2025-05-21 | 2025-05-21 | 35383 |  | 137d |
| 35403 |  | Finish Grade - Grid Line K, North | 2d | 2025-05-22 | 2025-05-23 | 35393 |  | 137d |
| 35413 |  | FRPS Curb, Gutter and Trash Enclosure Slab - Grid Line K, North | 4d | 2025-05-27 | 2025-05-30 | 35403 |  | 137d |
| 35414 |  | FRPS Sidewalk and Ballards - Grid Line K, North | 3d | 2025-06-02 | 2025-06-04 | 35413 |  | 137d |
| 35423 |  | Asphalt Bottom Mat | 2d | 2025-06-05 | 2025-06-06 | 35413, 35414 |  | 137d |
| 36026 |  | Asphalt Patch and Top Mat | 2d | 2025-06-09 | 2025-06-10 | 35423 |  | 137d |
|  | 691064793 | **Foundation** |  | 2025-03-17 | 2025-05-15 |  |  |  |
| 35012 |  | Excavate Footers | 5d | 2025-03-17 | 2025-03-21 | 32932 SS, 35866 SS |  | 0d |
| 35003 |  | FRPS All Grade Beams and Footers | 5d | 2025-03-20 | 2025-03-26 | 35012 SS+3d |  | 0d |
| 35004 |  | FRPS Stem Walls | 10d | 2025-03-25 | 2025-04-07 | 35003 SS+3d |  | 0d |
| 35263 |  | Underground Plumbing Excavate, Install and Inspect | 5d | 2025-03-27 | 2025-04-02 | 35003 |  | 5d |
| 35493 |  | Fire Sprinkler Riser Excavate, Install and Inspect | 2d | 2025-03-27 | 2025-03-28 | 35003 |  | 8d |
| 35483 |  | Underground Plumbing Backfill and Recompact | 2d | 2025-04-03 | 2025-04-04 | 35263 |  | 5d |
| 35023 |  | Foundation Dampproof and Insulation - SOG Area 1 and 2 | 4d | 2025-04-04 | 2025-04-09 | 35004 FS-2d |  | 0d |
| 1067 |  | Foundation Dampproof and Insulation - SOG Area 3 | 3d | 2025-04-10 | 2025-04-14 | 35023 |  | 10d |
| 35134 |  | Backfill and Ground Prep - SOG Area 1 and 2 | 5d | 2025-04-10 | 2025-04-16 | 35023, 35493, 35483 SS |  | 0d |
| 35183 |  | SOG FRPS - Area 1 | 8d | 2025-04-17 | 2025-04-28 | 35134, 35004 |  | 0d |
| 35243 |  | Ground Prep for SOG - Area 3 | 5d | 2025-04-29 | 2025-05-05 | 35153 FF, 35012 |  | 0d |
| 35253 |  | SOG FRPS - Area 2.SOG FRPS - Area 1 | 8d | 2025-04-29 | 2025-05-08 | 1067, 35183 |  | 0d |
| 35233 |  | SOG FRPS - Area 3.SOG FRPS - Area 1 | 8d | 2025-05-06 | 2025-05-15 | 35243, 35153, 35253 FS-4d |  | 0d |
|  | 691074393 | **Superstructure** |  | 2025-04-10 | 2025-07-25 |  |  |  |
|  | 691074993 | **SOMD** |  | 2025-05-09 | 2025-07-25 |  |  |  |
|  | 691084693 | **Level 2 Deck** |  | 2025-05-09 | 2025-06-10 |  |  |  |
|  | 691087493 | **L2 A2** |  | 2025-05-16 | 2025-06-10 |  |  |  |
| 33492 |  | Layout Walls and Hold Downs | 2d | 2025-05-16 | 2025-05-19 | 33283, 35233 |  | 0d |
| 33502 |  | Erect Bearing Walls and HSS Columns | 5d | 2025-05-21 | 2025-05-28 | 33492 SS+3d, 33292 |  | 0d |
| 33512 |  | Decking | 5d | 2025-05-29 | 2025-06-04 | 33502 SS+5d |  | 0d |
| 33522 |  | Prep Deck for pour | 3d | 2025-06-05 | 2025-06-09 | 33512 SS+5d |  | 0d |
| 33532 |  | Pour Level 2 Deck | 1d | 2025-06-10 | 2025-06-10 | 33522 |  | 0d |
|  | 691087393 | **L2 A1** |  | 2025-05-09 | 2025-06-03 |  |  |  |
| 33283 |  | Layout Walls and Hold Downs | 2d | 2025-05-09 | 2025-05-12 | 35253 |  | 0d |
| 33292 |  | Erect Bearing Walls and HSS Columns | 5d | 2025-05-14 | 2025-05-20 | 1073 SS+8d, 33283 SS+3d |  | 0d |
| 33302 |  | Decking | 5d | 2025-05-21 | 2025-05-28 | 33292 SS+5d |  | 5d |
| 33312 |  | Prep Deck for pour | 3d | 2025-05-29 | 2025-06-02 | 33302 SS+5d |  | 5d |
| 33322 |  | Pour Level 2 Deck | 1d | 2025-06-03 | 2025-06-03 | 33312 |  | 5d |
|  | 691084193 | **Level 3 Deck** |  | 2025-06-11 | 2025-07-10 |  |  |  |
|  | 691088193 | **L3 A2** |  | 2025-06-13 | 2025-07-10 |  |  |  |
| 33562 |  | Layout Walls and Hold Downs | 2d | 2025-06-13 | 2025-06-16 | 33233 |  | 12d |
| 33572 |  | Erect Bearing Walls and HSS Columns | 5d | 2025-06-20 | 2025-06-26 | 33562 SS+2d, 33242 |  | 9d |
| 33582 |  | Decking | 5d | 2025-06-27 | 2025-07-03 | 33572 SS+5d |  | 9d |
| 33592 |  | Prep Deck for pour | 3d | 2025-07-07 | 2025-07-09 | 33582 SS+5d |  | 25d |
| 33602 |  | Pour Level 3 Deck | 1d | 2025-07-10 | 2025-07-10 | 33592 |  | 25d |
|  | 691088093 | **L3 A1** |  | 2025-06-11 | 2025-07-02 |  |  |  |
| 33233 |  | Layout Walls and Hold Downs | 2d | 2025-06-11 | 2025-06-12 | 33322, 33532 |  | 0d |
| 33242 |  | Erect Bearing Walls and HSS Columns | 5d | 2025-06-13 | 2025-06-19 | 33322, 33233 SS+2d, 33502, 33512 |  | 0d |
| 33252 |  | Decking | 5d | 2025-06-20 | 2025-06-26 | 33242 SS+5d |  | 0d |
| 33262 |  | Prep Deck for pour | 3d | 2025-06-27 | 2025-07-01 | 33252 SS+5d |  | 0d |
| 33272 |  | Pour Level 3 Deck | 1d | 2025-07-02 | 2025-07-02 | 33262, 33532 |  | 0d |
|  | 691084093 | **Roof Deck** |  | 2025-07-07 | 2025-07-25 |  |  |  |
| 33212 |  | Erect Bearing Walls and HSS Columns | 10d | 2025-07-07 | 2025-07-18 | 33272, 33582 |  | 9d |
| 1066 |  | Decking | 10d | 2025-07-14 | 2025-07-25 | 33212 SS+5d, 33602 |  | 24d |
|  | 691075793 | **CMU Cores** |  | 2025-04-10 | 2025-05-19 |  |  |  |
| 1073 |  | CMU Elevator Core | 6d | 2025-04-10 | 2025-04-17 | 35023, 35004 |  | 0d |
| 35143 |  | CMU Stair B | 6d | 2025-04-18 | 2025-04-25 | 1073 |  | 0d |
| 35163 |  | Elevator Shaft Hoist beams and Spreader Tubes | 3d | 2025-04-18 | 2025-04-22 | 1073 |  | 177d |
| 35144 |  | Steel Stair Install - Stair B | 8d | 2025-04-28 | 2025-05-07 | 35143 |  | 158d |
| 35153 |  | CMU Stair A | 6d | 2025-04-28 | 2025-05-05 | 35143 |  | 0d |

| ID | WBS | Task | Duration | Start | Finish | Predecessors | Total float |
| --- | --- | --- | --- | --- | --- | --- | --- |
| 35173 |  | Steel Stair Install - Stair A | 8d | 2025-05-08 | 2025-05-19 | 35144, 35153 | 158d |
|  | 691074793 | **Exterior Skin** |  | 2025-05-14 | 2025-10-27 |  |  |
|  | 691099793 | **Roofing** |  | 2025-07-28 | 2025-08-22 |  |  |
| 1075 |  | Roof Install | 20d | 2025-07-28 | 2025-08-22 | 1066 | 24d |
| 1076 |  | Roof Penetrations, All Trades | 3d | 2025-07-28 | 2025-07-30 | 1066 | 108d |
|  | 691086493 | **Level 1** |  | 2025-05-14 | 2025-06-11 |  |  |
| 33442 |  | CFMF A1 | 5d | 2025-05-14 | 2025-05-20 | 33292 SS | 25d |
| 34972 |  | CFMF A2 | 5d | 2025-05-21 | 2025-05-28 | 33442, 33502 SS | 25d |
| 33443 |  | Electrical Rough-in | 5d | 2025-05-29 | 2025-06-04 | 34972 | 147d |
| 33452 |  | Sheathing | 10d | 2025-05-29 | 2025-06-11 | 34972 | 35d |
|  | 691086093 | **Level 3** |  | 2025-07-07 | 2025-08-08 |  |  |
| 33402 |  | CFMF A1 | 10d | 2025-07-07 | 2025-07-18 | 33242 SS, 33363, 33212 SS | 9d |
| 33403 |  | Electrical Rough-In | 5d | 2025-07-21 | 2025-07-25 | 33402 | 14d |
| 34982 |  | CFMF A2 | 5d | 2025-07-21 | 2025-07-25 | 33402, 33572 SS, 33212 SS+6d | 111d |
| 33412 |  | Sheathing | 10d | 2025-07-28 | 2025-08-08 | 33402, 33403, 33372 | 14d |
|  | 691085693 | **Level 2** |  | 2025-06-13 | 2025-07-03 |  |  |
| 33362 |  | CFMF A1 | 5d | 2025-06-13 | 2025-06-19 | 34972, 33242 SS | 14d |
| 33363 |  | CFMF A2 | 5d | 2025-06-20 | 2025-06-26 | 33362, 33572 SS | 14d |
| 33372 |  | Sheathing | 10d | 2025-06-20 | 2025-07-03 | 33362, 33452 | 29d |
| 33404 |  | In-Wall Blocking | 5d | 2025-06-20 | 2025-06-26 | 33372 SS | 131d |
|  | 691091593 | **North Elevation** |  | 2025-08-11 | 2025-08-29 |  |  |
| 33422 |  | Veneer - North | 15d | 2025-08-11 | 2025-08-29 | 33412 | 14d |
|  | 691091693 | **South Elevation** |  | 2025-09-09 | 2025-09-29 |  |  |
| 33462 |  | Veneer - South | 15d | 2025-09-09 | 2025-09-29 | 33332 SS+10d | 31d |
|  | 691091793 | **East Elevation** |  | 2025-09-23 | 2025-10-27 |  |  |
| 33382 |  | Veneer - East | 15d | 2025-09-23 | 2025-10-13 | 33462 SS+10d | 31d |
| 1078 |  | Storefront | 10d | 2025-10-14 | 2025-10-27 | 33382 | 46d |
|  | 691085593 | **West Elevation** |  | 2025-08-25 | 2025-09-29 |  |  |
| 33332 |  | Veneer - West | 15d | 2025-08-25 | 2025-09-15 | 33422 SS+10d | 31d |
| 34802 |  | Storefront | 10d | 2025-09-16 | 2025-09-29 | 33332 | 66d |
|  | 691091593 | **Rough-In** |  | 2025-07-03 | 2025-09-12 |  |  |
|  | 691088793 | **Level 1 - Rough-In Work** |  | 2025-07-03 | 2025-08-14 |  |  |
| 33632 |  | Interior Wall Framing - Level 1 | 5d | 2025-07-03 | 2025-07-10 | 33272 | 0d |
| 33642 |  | Mechanical Rough-In - Level 1 | 7d | 2025-07-11 | 2025-07-21 | 33632, 33272 | 8d |
| 33652 |  | Electrical Rough-In - Level 1 | 15d | 2025-07-11 | 2025-07-31 | 33632, 32922, 33272 | 5d |
| 33692 |  | Fire Suppression - Level 1 | 15d | 2025-07-11 | 2025-07-31 | 33632, 33272 | 0d |
| 33672 |  | Plumbing Rough-In - Level 1 | 5d | 2025-07-22 | 2025-07-28 | 33642, 33642 FF+4d | 23d |
| 33702 |  | Fire Alarm Rough - Level 1 | 10d | 2025-08-01 | 2025-08-14 | 33642, 33692, 33652 SS, 33652 SS+5d | 6d |
|  | 691088893 | **Level 2 - Rough-In Work** |  | 2025-07-22 | 2025-09-02 |  |  |
| 33712 |  | Mechanical Rough-In - Level 2 | 7d | 2025-07-22 | 2025-07-30 | 33402, 33642 | 8d |
| 33732 |  | Plumbing Rough-In - Level 2 | 5d | 2025-07-31 | 2025-08-06 | 33712, 33672 | 21d |
| 33722 |  | Electrical Rough-In - Level 2 | 15d | 2025-08-01 | 2025-08-21 | 33652 | 5d |
| 33742 |  | Fire Suppression - Level 2 | 15d | 2025-08-01 | 2025-08-21 | 33712 SS, 33692 | 0d |
| 33752 |  | Fire Alarm Rough - Level 2 | 7d | 2025-08-22 | 2025-09-02 | 33712, 33742, 33702 | 1d |
|  | 691088993 | **Level 3 - Rough-In Work** |  | 2025-07-31 | 2025-09-12 |  |  |
| 33802 |  | Mechanical Rough-In - Level 3 | 7d | 2025-07-31 | 2025-08-08 | 33362, 33712 | 16d |
| 33792 |  | Plumbing Rough-In - Level 3 | 5d | 2025-08-11 | 2025-08-15 | 33802, 33732 | 19d |
| 33782 |  | Electrical Rough-In - Level 3 | 15d | 2025-08-22 | 2025-09-12 | 33722 | 5d |
| 33812 |  | Fire Suppression - Level 3 | 15d | 2025-08-22 | 2025-09-12 | 33802 SS, 33742 | 0d |
| 33822 |  | Fire Alarm Rough - Level 3 | 7d | 2025-09-03 | 2025-09-11 | 33802, 33752, 33782 SS | 1d |
|  | 691091993 | **Janus Scope** |  | 2025-07-25 | 2025-10-03 |  |  |
| 33842 |  | Level 1 - JS | 15d | 2025-07-25 | 2025-08-14 | 33652 FS-5d | 5d |
| 33852 |  | Level 2 - JS | 15d | 2025-08-15 | 2025-09-05 | 33842, 33722 SS+10d | 5d |
| 33862 |  | Level 3 - JS | 15d | 2025-09-15 | 2025-10-03 | 33852, 33812, 33822, 33792, 33782 SS+10d | 0d |
|  | 691094293 | **Elevators** |  | 2025-09-09 | 2025-10-20 |  |  |
| 33882 |  | Elevator Installation | 30d | 2025-09-09 | 2025-10-20 | 1075, 32912, 35283 | 14d |
|  | 691075093 | **Interiors** |  | 2025-08-15 | 2025-11-07 |  |  |
|  | 691074993 | **Storage Areas** |  | 2025-08-15 | 2025-11-07 |  |  |
|  | 691093393 | **Level 1 - Interiors** |  | 2025-08-15 | 2025-09-19 |  |  |
| 34922 |  | Paint Structure | 10d | 2025-08-15 | 2025-08-28 | 33842 | 15d |
| 34882 |  | Flooring Trim | 10d | 2025-08-29 | 2025-09-12 | 34922 SS+10d | 25d |
| 34892 |  | Lighting Trim | 10d | 2025-08-29 | 2025-09-12 | 34922 SS+10d | 15d |
| 34902 |  | Mechanical Trim | 5d | 2025-09-15 | 2025-09-19 | 34882, 34892 | 25d |
| 34912 |  | Plumbing Trim | 5d | 2025-09-15 | 2025-09-19 | 34882 | 72d |
|  | 691092793 | **Level 2 -Interiors** |  | 2025-09-08 | 2025-10-10 |  |  |
| 34862 |  | Paint Structure | 10d | 2025-09-08 | 2025-09-19 | 34922, 33852 | 10d |
| 34822 |  | Flooring Trim | 10d | 2025-09-22 | 2025-10-03 | 34862 SS+10d | 15d |
| 34832 |  | Lighting Trim | 10d | 2025-09-22 | 2025-10-03 | 34862 SS+10d, 34892 | 10d |
| 34842 |  | Mechanical Trim | 5d | 2025-10-06 | 2025-10-10 | 34832 SS+10d | 15d |
| 34852 |  | Plumbing Trim | 5d | 2025-10-06 | 2025-10-10 | 34822, 34902 | 15d |

| ID | WBS | Task | Duration | Start | Finish | Predecessors | Total float |
| --- | --- | --- | --- | --- | --- | --- | --- |
|  | 691075193 | **Level 3 - Interiors** |  | 2025-10-06 | 2025-11-07 |  |  |
| 1082 |  | Paint Structure | 10d | 2025-10-06 | 2025-10-17 | 34862, 33862 | 0d |
| 1083 |  | Flooring Trim | 10d | 2025-10-20 | 2025-10-31 | 1082 SS+10d | 0d |
| 1084 |  | Lighting Trim | 10d | 2025-10-20 | 2025-10-31 | 1082 SS+10d, 34892, 34832 | 0d |
| 1085 |  | Mechanical Trim | 5d | 2025-11-03 | 2025-11-07 | 1084 SS+10d, 34842 | 0d |
| 1087 |  | Plumbing Trim | 5d | 2025-11-03 | 2025-11-07 | 1083, 34852 | 0d |
|  | 691075293 | **Level 1 Office and Restrooms** |  | 2025-08-15 | 2025-10-27 |  |  |
| 34932 |  | Drywall - Office | 7d | 2025-08-15 | 2025-08-25 | 33842 | 46d |
| 1106 |  | Doors & Hardware - Office | 5d | 2025-08-26 | 2025-09-02 | 34932 | 46d |
| 1095 |  | Millwork - Office | 5d | 2025-09-03 | 2025-09-09 | 34932, 1106 | 46d |
| 1096 |  | Flooring - Office | 5d | 2025-09-10 | 2025-09-16 | 1095 | 46d |
| 1097 |  | Prime & Paint 1st Coat - Office | 5d | 2025-09-17 | 2025-09-23 | 1096 | 46d |
| 1100 |  | Light Fixtures - Office | 5d | 2025-09-24 | 2025-09-30 | 1097 | 65d |
| 1103 |  | Mechanical Trim Out - Office | 5d | 2025-09-24 | 2025-09-30 | 1097 | 65d |
| 1104 |  | Electrical Trim Out - Office | 5d | 2025-09-24 | 2025-09-30 | 1097 | 46d |
| 1105 |  | Plumbing Trim Out - Office | 5d | 2025-10-01 | 2025-10-07 | 1104 | 46d |
| 1107 |  | Final Coat Paint - Office | 5d | 2025-10-08 | 2025-10-14 | 1105 | 46d |
| 1099 |  | Install Appliances - Office | 2d | 2025-10-15 | 2025-10-16 | 1107 | 53d |
| 1108 |  | Final Clean - Office | 5d | 2025-10-15 | 2025-10-21 | 1107 | 46d |
| 1109 |  | Punch List Work - Office | 5d | 2025-10-21 | 2025-10-27 | 1108 FF+4d | 46d |
|  | 691082593 | **Final Sitework** |  | 2025-05-09 | 2025-11-04 |  |  |
|  | 691082693 | **Hardscapes** |  | 2025-06-11 | 2025-11-04 |  |  |
| 1130 |  | Trash Enclosure Gates | 5d | 2025-06-11 | 2025-06-17 | 36026 | 137d |
| 1140 |  | Detention Pond Fencing | 5d | 2025-09-30 | 2025-10-06 | 33462 | 41d |
| 1129 |  | Sidewalks | 5d | 2025-10-14 | 2025-10-20 | 35383, 33332, 33382, 33422, 33462 | 31d |
| 1131 |  | Striping and Signage | 1d | 2025-11-04 | 2025-11-04 | 1189, 1130 | 40d |
|  | 691082793 | **Landscapes** |  | 2025-05-09 | 2025-11-03 |  |  |
| 1180 |  | Irrigation sleeving | 5d | 2025-05-09 | 2025-05-15 | 35353 | 160d |
| 1179 |  | Irrigation Systems | 5d | 2025-10-21 | 2025-10-27 | 33382, 1140, 1129 | 31d |
| 1189 |  | Plantings | 5d | 2025-10-28 | 2025-11-03 | 1179 | 31d |
|  | 691075893 | **Closeout** |  | 2025-11-10 | 2025-12-05 |  |  |
| 1111 |  | Commissioning | 8d | 2025-11-10 | 2025-11-19 | 1085, 1087, 1084, 33882 | 0d |
| 1112 |  | Fire Alarm Programing/Testing | 5d | 2025-11-13 | 2025-11-19 | 1111 FS-5d | 0d |
| 1113 |  | Final Inspections | 7d | 2025-11-20 | 2025-12-02 | 1112, 33172, 33182 | 0d |
| 1114 |  | WEO Overall / Final Punch List Work | 5d | 2025-11-20 | 2025-11-26 | 1112, 1189 | 19d |
| 1115 |  | Develop Owner Punch Lists | 5d | 2025-12-01 | 2025-12-05 | 1114 | 19d |

## Version 2 (data date 2025-05-07, saved 2025-11-06, file update_2.xer)

Note of the change: Add all project schedule files to buckets - 13 projects, MPP+XER, baseline+updates

Last finish 2026-01-05 → 2026-03-17 (+71d). Complete tasks 30 → 65.

Added:

| ID | Task | Duration | Start | Finish | Predecessors | Constraint |
| --- | --- | --- | --- | --- | --- | --- |
| 36286 | Weather Delay 3/19/2025 | 1d | 2025-03-19 A | 2025-03-19 A |  | start on or after 2025-03-19 |
| 36726 | Weather Delay 5/6/2025 | 1d | 2025-05-07 | 2025-05-07 |  | start on or after 2025-05-06 |
| 691105393 | **Owner Added Scope Impacts** |  | 2025-01-14 | 2025-05-23 |  |  |
| 691119193 | **CSU Scheduling Impact** |  | 2025-04-07 | 2025-05-02 |  |  |
| 35708 | CSU Domestic Tap Installation | 20d | 2025-04-07 A | 2025-05-02 A |  |  |
| 691110493 | **Design Impacts** |  | 2025-03-13 | 2025-04-24 |  |  |
| 691110693 | **Bulletin #3** |  | 2025-03-13 | 2025-04-24 |  |  |
| 36047 | Delivery of Bulletin #3 with South Footer Structural | 1d | 2025-03-13 A | 2025-03-13 A |  |  |
| 691110793 | **Structural Design Changes** |  | 2025-03-14 | 2025-04-24 |  |  |
| 36056 | Revised Rebar Shop Submittal (Added and Revised Footers) | 27d | 2025-03-14 A | 2025-03-27 A |  |  |
| 36076 | Revised Structural Steel Submittal (Columns and Canopy Connection) | 28d | 2025-03-14 A | 2025-04-10 A |  |  |
| 36057 | Design Review Rebar Shop Revision | 1d | 2025-04-01 A | 2025-04-08 A | 36056 |  |
| 36058 | Structural Steel Embed Procurement | 5d | 2025-04-11 A | 2025-04-17 A |  |  |
| 36067 | Design Review Steel Submittal | 10d | 2025-04-11 A | 2025-04-24 A | 36076 |  |
| 33103 | Install Fire Connection | 5d | 2025-04-07 A | 2025-04-11 A | 35273 |  |
| 33113 | Install Fire Connection | 2.5d | 2025-04-21 A | 2025-04-23 A | 35134 SS+1d, 33103 |  |
| 33093 | Sewer Camera and Final Connection | 3d | 2025-04-25 A | 2025-04-29 A | 33103 SS+2d, 33113 SS |  |
| 36736 | Discovered unmarked gas, city tap rescheduled | 10d | 2025-05-06 A | 2025-05-19 | 33092 |  |
| 36746 | Install Domestic Water (City Install Domestic Tap - 5/2) | 2d | 2025-05-20 | 2025-05-21 | 36736, 33092 |  |
| 36666 | CSU Meter Install (start of temp power) | 5d | 2025-03-12 A | 2025-03-28 A | 1054 FF+4d |  |
| 35344 | Trash Enclosure Masonry | 5d | 2025-05-22 | 2025-05-29 | 35343 |  |
| 35022 | Excavate Footers | 2.5d | 2025-03-20 A | 2025-03-24 A | 36286, 35012 |  |
| 35013 | FRPS All Grade Beams and Footers | 1d | 2025-04-09 A | 2025-04-09 A | 36057, 35003 |  |
| 35005 | FRPS Stem Walls | 3d | 2025-04-10 A | 2025-04-15 A | 35013, 35004 |  |
| 36706 | Backfill and Ground Prep - SOG Area 2 | 3d | 2025-04-24 A | 2025-04-28 A | 1073 |  |
| 35135 | Backfill and Ground Prep - SOG Area 3 | 5d | 2025-05-27 | 2025-06-02 | 1073, 35676 |  |
| 36716 | SOG FRPS - Area 3 | 8d | 2025-06-03 | 2025-06-12 | 35676, 35243 |  |
| 691074993 | **Structural Metal Framing and Deck** |  | 2025-05-12 | 2025-09-16 |  |  |
| 691084693 | **Level 2 Deck (level 1 Walls)** |  | 2025-05-12 | 2025-07-17 |  |  |
| 36106 | MEP Sleeve Install - L2 A2 | 3d | 2025-06-02 | 2025-06-04 | 33492 |  |
| 36116 | Rebar and Pour Prep - L2 A2 | 3d | 2025-06-05 | 2025-06-09 | 36106 |  |
| 36126 | Concrete Pour, Saw Cut and Strip - L2 A2 | 3d | 2025-06-10 | 2025-06-12 | 36116, 33286 |  |
| 691111193 | **L2 A3** |  | 2025-06-25 | 2025-07-17 |  |  |
| 36096 | Erect Frame and Decking - L2 A3 | 7d | 2025-06-25 | 2025-07-03 | 33492, 35233 |  |
| 36136 | MEP Sleeve Install - L2 A3 | 3d | 2025-07-07 | 2025-07-09 | 36096 |  |
| 36146 | Rebar and Pour Prep - L2 A3 | 3d | 2025-07-10 | 2025-07-14 | 36136 |  |
| 36156 | Concrete Pour, Saw Cut and Strip - L2 A3 | 3d | 2025-07-15 | 2025-07-17 | 36146, 36126 |  |
| 33284 | MEP Sleeve Install - L2 A1 - coordinate vs core driller | 3d | 2025-05-21 | 2025-05-23 | 33283 |  |
| 33285 | Rebar and Pour Prep - L2 A1 | 3d | 2025-05-27 | 2025-05-29 | 33284 |  |
| 33286 | Concrete Pour, Saw Cut and Strip - L2 A1 | 3d | 2025-05-30 | 2025-06-03 | 33285 |  |
| 691084193 | **Level 3 Deck (Level 2 Walls)** |  | 2025-07-07 | 2025-08-15 |  |  |
| 36246 | MEP Sleeve Install - L3 A2 | 3d | 2025-07-25 | 2025-07-29 | 33562 |  |
| 36256 | Rebar and Pour Prep - L3 A2 | 3d | 2025-07-30 | 2025-08-01 | 36246 |  |
| 36266 | Concrete Pour, Saw Cut and Strip - L3 A2 | 3d | 2025-08-04 | 2025-08-06 | 36256 |  |
| 691112293 | **L3 A3** |  | 2025-07-25 | 2025-08-15 |  |  |
| 36176 | Erect Frame and Decking - L3 A3 | 7d | 2025-07-25 | 2025-08-04 | 33562, 36156 |  |
| 36186 | MEP Sleeve Install - L3 A3 | 3d | 2025-08-05 | 2025-08-07 | 36176 |  |
| 36196 | Rebar and Pour Prep - L3 A3 | 3d | 2025-08-08 | 2025-08-12 | 36186 |  |
| 36206 | Concrete Pour, Saw Cut and Strip - L3 A3 | 3d | 2025-08-13 | 2025-08-15 | 36196 |  |
| 36216 | MEP Sleeve Install - L3 A1 | 3d | 2025-07-16 | 2025-07-18 | 33233 |  |
| 36226 | Rebar and Pour Prep - L3 A1 | 3d | 2025-07-21 | 2025-07-23 | 36216 |  |
| 36236 | Concrete Pour, Saw Cut and Strip - L3 A1 | 3d | 2025-07-24 | 2025-07-28 | 36226 |  |
| 691084093 | **Roof Deck (Level 3 Walls)** |  | 2025-08-05 | 2025-09-16 |  |  |
| 691112693 | **Roof Area 2** |  | 2025-08-19 | 2025-09-02 |  |  |
| 36326 | Erect Frame and Decking - RA2 | 5d | 2025-08-19 | 2025-08-25 | 36406 |  |
| 36336 | MEP Sleeve Install - RA2 | 3d | 2025-08-26 | 2025-08-28 | 36326 |  |
| 36346 | Install Curbs and Roof Supports - RA2 | 2d | 2025-08-26 | 2025-08-27 | 36336 SS, 36326 |  |
| 36356 | Decking Closure - RA2 | 2d | 2025-08-29 | 2025-09-02 | 36346, 36336 |  |
| 691113693 | **Roof Area 3** |  | 2025-09-03 | 2025-09-16 |  |  |
| 36426 | Erect Frame and Decking - RA3 | 5d | 2025-09-03 | 2025-09-09 | 36356 |  |
| 36436 | MEP Sleeve Install - RA3 | 3d | 2025-09-10 | 2025-09-12 | 36426 |  |
| 36446 | Install Curbs and Roof Supports - RA3 | 2d | 2025-09-10 | 2025-09-11 | 36436 SS |  |
| 36456 | Decking Closure - RA3 | 2d | 2025-09-15 | 2025-09-16 | 36446, 36436 |  |
| 691113193 | **Roof Area 1** |  | 2025-08-05 | 2025-08-18 |  |  |
| 36376 | Erect Frame and Decking - RA1 | 5d | 2025-08-05 | 2025-08-11 | 36176 |  |
| 36386 | MEP Sleeve Install - RA1 | 3d | 2025-08-12 | 2025-08-14 | 36376 |  |
| 36396 | Install Curbs and Roof Supports - RA1 | 2d | 2025-08-12 | 2025-08-13 | 36386 SS, 36376 |  |
| 36406 | Decking Closure - RA1 | 2d | 2025-08-15 | 2025-08-18 | 36396, 36386 |  |
| 1072 | CMU moblizationa | 5d | 2025-04-07 A | 2025-04-11 A |  |  |
| 34783 | Veneer Stud Framing | 5d | 2025-09-10 | 2025-09-16 | 36426 |  |
| 36486 | Air/Weather Barrier | 2d | 2025-09-24 | 2025-09-25 | 36476 |  |
| 36496 | Masonry Veneer | 15d | 2025-09-26 | 2025-10-16 | 36486 |  |
| 36516 | EIFS | 7d | 2025-10-17 | 2025-10-27 | 36496 |  |
| 36506 | Exterior Metal Panel | 5d | 2025-10-28 | 2025-11-03 | 36516 |  |
| 33433 | Veneer Stud Framing | 5d | 2025-09-24 | 2025-09-30 | 36476 |  |
| 36536 | Air/Weather Barrier | 2d | 2025-10-08 | 2025-10-09 | 36526 |  |
| 36546 | Masonry Veneer | 15d | 2025-10-17 | 2025-11-06 | 36536, 36496 |  |
| 36566 | EIFS | 7d | 2025-11-07 | 2025-11-17 | 36546 |  |
| 36556 | Exterior Metal Panel | 5d | 2025-11-18 | 2025-11-24 | 36566 |  |
| 33424 | Backing, Blocking and Flashing | 5d | 2025-11-25 | 2025-12-03 | 36556 |  |
| 33425 | Storefront Install | 3d | 2025-12-04 | 2025-12-08 | 33424 |  |
| 33426 | Canopy Install | 3d | 2025-12-09 | 2025-12-11 | 33425 |  |
| 36586 | Veneer Stud Framing | 5d | 2025-10-08 | 2025-10-14 | 36526 |  |
| 36606 | Air/Weather Barrier | 2d | 2025-10-22 | 2025-10-23 | 36596 |  |
| 36616 | Masonry Veneer | 15d | 2025-11-07 | 2025-12-01 | 36606, 36546 |  |
| 36636 | EIFS | 7d | 2025-12-02 | 2025-12-10 | 36616 |  |
| 36626 | Exterior Metal Panel | 5d | 2025-12-11 | 2025-12-17 | 36636 |  |
| 36646 | Backing, Blocking and Flashing | 2d | 2025-12-18 | 2025-12-19 | 36626 |  |
| 36676 | Storefront Install | 3d | 2025-12-22 | 2025-12-24 | 36646 |  |
| 36686 | Canopy Install | 3d | 2025-12-26 | 2025-12-30 | 36676 |  |
| 36296 | Sheathing | 5d | 2025-08-12 | 2025-08-18 | 36376 |  |
| 36306 | Air/Weather Barrier and Insulation | 3d | 2025-08-19 | 2025-08-21 | 36296 |  |
| 36466 | Exterior Metal Panel | 5d | 2025-09-24 | 2025-09-30 | 34802 |  |
| 33892 | Elevator Infill and Lobby Finishes (all Levels) | 16d | 2025-12-26 | 2026-01-19 | 33882 |  |

Removed: Owner Scope Impacts; SOMD; Level 2 Deck; 33502 Erect Bearing Walls and HSS Columns; 33512 Decking; 33522 Prep Deck for pour; 33532 Pour Level 2 Deck; 33292 Erect Bearing Walls and HSS Columns; 33302 Decking; 33312 Prep Deck for pour; 33322 Pour Level 2 Deck; Level 3 Deck; 33572 Erect Bearing Walls and HSS Columns; 33582 Decking; 33592 Prep Deck for pour; 33602 Pour Level 3 Deck; 33242 Erect Bearing Walls and HSS Columns; 33252 Decking; 33262 Prep Deck for pour; 33272 Pour Level 3 Deck; Roof Deck; 33212 Erect Bearing Walls and HSS Columns; 1066 Decking; Level 1; 33442 CFMF A1; 34972 CFMF A2; 33443 Electrical Rough-in; Level 3; 33402 CFMF A1; 33403 Electrical Rough-In; 34982 CFMF A2; Level 2; 33362 CFMF A1; 33363 CFMF A2; 33404 In-Wall Blocking; 33422 Veneer - North; 33462 Veneer - South; 33382 Veneer - East; 1078 Storefront; 33702 Fire Alarm Rough - Level 1; 33752 Fire Alarm Rough - Level 2; 33822 Fire Alarm Rough - Level 3

Changed:

| ID | Task | Start | Finish | Duration | Complete | Total float | Predecessors | Other |
| --- | --- | --- | --- | --- | --- | --- | --- | --- |
| 691056193 | **Project Summary** |  | 2026-01-05 → 2026-03-17 (+71d) |  |  |  |  |  |
| 691056493 | **Contract Milestones** |  | 2026-01-05 → 2026-03-17 (+71d) |  |  |  |  |  |
| SC | Project SC - Before Weather Impacts | 2025-12-03 → 2026-02-17 (+76d) | 2025-12-03 → 2026-02-17 (+76d) |  |  |  |  |  |
| PSC | Project Substantially Complete - After Weather Impacts | 2025-12-16 → 2026-02-27 (+73d) | 2025-12-16 → 2026-02-27 (+73d) |  |  |  |  |  |
| PSC0001 | Operational Setup | 2025-12-17 → 2026-03-02 (+75d) | 2026-01-05 → 2026-03-17 (+71d) |  |  |  |  |  |
| PSC0002 | Project Open | 2026-01-05 → 2026-03-17 (+71d) | 2026-01-05 → 2026-03-17 (+71d) |  |  |  |  |  |
| 691056293 | **Construction Milestones** |  | 2025-11-04 → 2025-10-14 (-21d) |  |  |  |  |  |
| 1007 | Start of Foundations | 2025-03-17 A | 2025-03-17 A |  | 0% → 100% | 204d → none |  |  |
| 1008 | Start of Elevated Structure | 2025-05-09 → 2025-05-12 (+3d) | 2025-05-09 → 2025-05-12 (+3d) |  |  | 165d → 215d |  |  |
| 1012 | Stair Cores Complete to Roof | 2025-05-05 → 2025-05-21 (+16d) | 2025-05-05 → 2025-05-21 (+16d) |  |  | 168d → 207d | 35153 → 1073, 35143, 35153 |  |
| 1010 | Structure Complete | 2025-07-25 → 2025-09-16 (+53d) | 2025-07-25 → 2025-09-16 (+53d) |  |  | 111d → 126d | Decking → 36456 |  |
| 1015 | Exterior Work Complete | 2025-11-04 → 2025-10-03 (-32d) | 2025-11-04 → 2025-10-03 (-32d) |  |  | 40d → 113d |  |  |
| 1016 | Building Dry In | 2025-08-22 → 2025-10-14 (+53d) | 2025-08-22 → 2025-10-14 (+53d) |  |  | 91d → 106d | 1075, 36596, 36526, 36476 → 1075 |  |
| 691103693 | **Schedule Impacts** |  | 2025-12-16 → 2026-02-27 (+73d) |  |  |  |  |  |
| 691103793 | **Weather Delays** | 2025-12-03 → 2025-03-19 (-259d) | 2025-12-16 → 2026-02-27 (+73d) |  |  |  |  |  |
| 1027 | Contract Weather Days - 10 Days | 2025-12-03 → 2026-02-17 (+76d) | 2025-12-16 → 2026-02-27 (+73d) | 10d → 9d |  |  |  |  |
| 691104193 | **Project Impacts** |  | 2025-04-17 → 2025-05-23 (+36d) |  |  |  |  |  |
| 691105693 | **Pond Construction By Owner** |  | 2025-04-17 → 2025-05-23 (+36d) |  |  |  |  |  |
| 35676 | Pond Construction by Owner | 2025-03-07 A | 2025-04-17 → 2025-05-23 (+36d) |  | 0% → 57% | 180d → 0d |  |  |
| 35726 | Owner Over-Ex Complete and Pad Ceritification Email |  |  |  |  |  |  | was named Owner Over-Ex Complete and Pad Ceritification Emaiol |
| 691060893 | **Pre-Construciton** |  | 2025-04-11 → 2025-10-01 (+173d) |  |  |  |  |  |
| 691060793 | **Procurement** |  | 2025-04-11 → 2025-10-01 (+173d) |  |  |  |  |  |
| 32912 | Elevator (By Owner) |  | 2025-04-11 → 2025-10-01 (+173d) |  | 84% → 38% | 117d → 28d |  |  |
| 32922 | Electric Room MDP |  | 2025-04-10 → 2025-09-03 (+146d) |  | 85% → 50% | 68d → 135d |  |  |
| 691108693 | **Additional Scope Per Owner - Required For Project Start** |  | 2025-03-14 → 2025-03-17 (+3d) |  |  |  |  |  |
| 691107793 | **W.E. O'Neil BMP Install and Permitting - Owner Approved** |  | 2025-03-14 → 2025-03-17 (+3d) |  |  |  |  |  |
| 35886 | CSU Stormwater Permitting |  | 2025-03-14 A |  | 60% → 100% | 0d → none |  |  |
| 35866 | CSU Stormwater Inspection | 2025-03-14 → 2025-03-17 A (+3d) | 2025-03-14 → 2025-03-17 A (+3d) |  | 0% → 100% | 0d → none |  |  |
| 691065093 | **Construction** |  | 2025-12-05 → 2026-02-16 (+73d) |  |  |  |  |  |
| 691061993 | **Site Development** |  | 2025-09-08 → 2025-11-10 (+63d) |  |  |  |  |  |
| 691098893 | **Site Infrastructure** | 2025-03-17 → 2025-03-25 (+8d) | 2025-04-15 → 2025-06-10 (+56d) |  |  |  |  |  |
| 35273 | Install Sewer | 2025-03-17 → 2025-03-25 A (+8d) | 2025-03-20 → 2025-04-04 A (+15d) |  | 0% → 100% | 182d → none |  |  |
| 33092 | Install Domestic Water (City Install Domestic Tap - 5/2) | 2025-03-21 → 2025-05-02 A (+42d) | 2025-03-27 → 2025-05-05 A (+39d) | 5d → 2d | 0% → 100% | 182d → none | 35273 → 35273, 35708 FF+0.5d | was named Install Domestic Water and Fire; constraint none → start on or after 2025-04-30 |
| 33102 | Install Storm Main (Pond to STA: 2+42.32) | 2025-03-28 → 2025-05-22 (+55d) | 2025-04-08 → 2025-06-03 (+56d) |  |  | 182d → 194d | 33092 → 36746 |  |
| 1050 | Install Storm Secondary | 2025-04-09 → 2025-06-04 (+56d) | 2025-04-15 → 2025-06-10 (+56d) |  |  | 182d → 194d |  |  |
| 691098993 | **Site Civil** |  | 2025-09-08 → 2025-11-10 (+63d) |  |  |  |  |  |
| 1054 | Transformer Installation (By CSU - Lead Time Scheduling Included) |  | 2025-03-17 → 2025-03-11 A (-6d) |  | 42% → 100% | 131d → none |  |  |
| 35283 | Electrical Main to Building | 2025-09-02 → 2025-11-04 (+63d) | 2025-09-08 → 2025-11-10 (+63d) |  |  | 14d → 0d | 1054, Veneer - North → 1054, 36506 |  |
| 691099993 | **Paving** | 2025-04-28 → 2025-05-12 (+14d) | 2025-06-10 → 2025-07-01 (+21d) |  |  |  |  |  |
| 35313 | Survey - Trash Enclosure | 2025-04-28 → 2025-05-12 (+14d) | 2025-04-28 → 2025-05-12 (+14d) |  |  | 132d → 168d |  |  |
| 35323 | Excavate - Trash Enclosure | 2025-04-29 → 2025-05-13 (+14d) | 2025-04-29 → 2025-05-13 (+14d) |  |  | 132d → 168d |  |  |
| 35333 | FRPS Footer - Trash Enclosure | 2025-04-30 → 2025-05-14 (+14d) | 2025-05-02 → 2025-05-16 (+14d) |  |  | 132d → 168d |  |  |
| 35343 | FRPS Stem Wall - Trash Enclosure | 2025-05-05 → 2025-05-19 (+14d) | 2025-05-07 → 2025-05-21 (+14d) |  |  | 132d → 168d |  |  |
| 1130 | Trash Enclosure Gates | 2025-06-11 → 2025-05-30 (-12d) | 2025-06-17 → 2025-06-05 (-12d) |  |  | 137d → 197d | 36026 → 35344 |  |
| 35353 | Backfill and compact - Trash Enclosure | 2025-05-08 → 2025-05-30 (+22d) | 2025-05-08 → 2025-05-30 (+22d) |  |  | 132d → 168d | 35343 → 35344 |  |
| 1180 | Irrigation sleeving | 2025-05-09 → 2025-06-02 (+24d) | 2025-05-15 → 2025-06-04 (+20d) | 5d → 3d |  | 160d → 169d |  |  |
| 35363 | Survey - Grid Line K, South | 2025-05-09 → 2025-06-02 (+24d) | 2025-05-09 → 2025-06-02 (+24d) |  |  | 132d → 168d |  |  |
| 35373 | Finish Grade - Grid Line K, South | 2025-05-12 → 2025-06-03 (+22d) | 2025-05-14 → 2025-06-05 (+22d) |  |  | 132d → 168d |  |  |
| 35383 | FRPS Curb and gutter - Grid Line K, South | 2025-05-15 → 2025-06-06 (+22d) | 2025-05-20 → 2025-06-11 (+22d) |  |  | 132d → 168d | 35373 → 35373, 1180 |  |
| 35384 | FRPS Sidewalk and Ballards - Grid Line K, South | 2025-05-21 → 2025-06-12 (+22d) | 2025-05-23 → 2025-06-16 (+24d) |  |  | 154d → 178d |  |  |
| 35393 | Survey - Grid Line K, North | 2025-05-21 → 2025-06-12 (+22d) | 2025-05-21 → 2025-06-12 (+22d) |  |  | 137d → 178d |  |  |
| 35403 | Finish Grade - Grid Line K, North | 2025-05-22 → 2025-06-13 (+22d) | 2025-05-23 → 2025-06-16 (+24d) |  |  | 137d → 178d |  |  |
| 35413 | FRPS Curb, Gutter and Trash Enclosure Slab - Grid Line K, North | 2025-05-27 → 2025-06-17 (+21d) | 2025-05-30 → 2025-06-20 (+21d) |  |  | 137d → 178d | 35403 → 35403, 35384 |  |
| 35414 | FRPS Sidewalk and Ballards - Grid Line K, North | 2025-06-02 → 2025-06-23 (+21d) | 2025-06-04 → 2025-06-25 (+21d) |  |  | 137d → 178d |  |  |
| 35423 | Asphalt Bottom Mat | 2025-06-05 → 2025-06-26 (+21d) | 2025-06-06 → 2025-06-27 (+21d) |  |  | 137d → 178d |  |  |
| 36026 | Asphalt Patch and Top Mat | 2025-06-09 → 2025-06-30 (+21d) | 2025-06-10 → 2025-07-01 (+21d) |  |  | 137d → 178d |  |  |
| 691064793 | **Foundation** |  | 2025-05-15 → 2025-06-24 (+40d) |  |  |  |  |  |
| 35012 | Excavate Footers | 2025-03-17 A | 2025-03-21 → 2025-03-19 A (-2d) | 5d → 2.5d | 0% → 100% | 0d → none |  |  |
| 35003 | FRPS All Grade Beams and Footers | 2025-03-20 → 2025-03-24 A (+4d) | 2025-03-26 → 2025-03-28 A (+2d) | 5d → 6d | 0% → 100% | 0d → none | 35012 SS+3d → 35022 FS-1d |  |
| 35004 | FRPS Stem Walls | 2025-03-25 → 2025-03-27 A (+2d) | 2025-04-07 → 2025-04-11 A (+4d) |  | 0% → 100% | 0d → none |  |  |
| 35263 | Underground Plumbing Excavate, Install and Inspect | 2025-03-27 → 2025-03-31 A (+4d) | 2025-04-02 → 2025-04-04 A (+2d) |  | 0% → 100% | 5d → none |  |  |
| 35493 | Fire Sprinkler Riser Excavate, Install and Inspect (delayed start due to accessibility) | 2025-03-27 → 2025-04-04 A (+8d) | 2025-03-28 → 2025-04-07 A (+10d) |  | 0% → 100% | 8d → none | 35003 → 35004 SS+1d | was named Fire Sprinkler Riser Excavate, Install and Inspect |
| 35023 | Foundation Dampproof and Insulation - East, North and West | 2025-04-04 → 2025-04-07 A (+3d) | 2025-04-09 → 2025-04-10 A (+1d) |  | 0% → 100% | 0d → none | 35004 FS-2d → 35004 | was named Foundation Dampproof and Insulation - SOG Area 1 and 2 |
| 35483 | Underground Plumbing Backfill and Recompact | 2025-04-03 → 2025-04-07 A (+4d) | 2025-04-04 → 2025-04-08 A (+4d) |  | 0% → 100% | 5d → none |  |  |
| 1067 | Foundation Dampproof and Insulation - South Wall | 2025-04-10 → 2025-04-16 A (+6d) | 2025-04-14 → 2025-04-18 A (+4d) |  | 0% → 100% | 10d → none | 35023 → 35005 | was named Foundation Dampproof and Insulation - SOG Area 3 |
| 35134 | Backfill and Ground Prep - SOG Area 1 | 2025-04-10 → 2025-04-16 A (+6d) | 2025-04-16 → 2025-04-18 A (+2d) |  | 0% → 100% | 0d → none | 35023, 35493, 35483 SS → 35005 | was named Backfill and Ground Prep - SOG Area 1 and 2 |
| 35183 | SOG FRPS - Area 1 | 2025-04-17 → 2025-04-21 A (+4d) | 2025-04-28 → 2025-04-29 A (+1d) |  | 0% → 100% | 0d → none | 35134, 35004 → 35134, 35005 |  |
| 35253 | SOG FRPS - Area 2 .SOG FRPS - Area 1 | 2025-04-29 → 2025-04-30 A (+1d) | 2025-05-08 → 2025-05-09 (+1d) |  | 0% → 62% | 0d → 17d |  | was named SOG FRPS - Area 2.SOG FRPS - Area 1 |
| 35243 | Backfill and Ground Prep - SOG Area 4 | 2025-04-29 → 2025-05-27 (+28d) | 2025-05-05 → 2025-06-02 (+28d) |  |  |  | 35153 FF, 35012 → 35153 FF, 35022, 35263, 35483, 35676 | was named Ground Prep for SOG - Area 3 |
| 35233 | SOG FRPS - Area 4.SOG FRPS - Area 1 | 2025-05-06 → 2025-06-13 (+38d) | 2025-05-15 → 2025-06-24 (+40d) |  |  |  | 35243, 35153, 35253 FS-4d → 35243, 35153, 35253 FS-1d, 36716 | was named SOG FRPS - Area 3.SOG FRPS - Area 1 |

| ID | Task | Start | Finish | Duration | Complete | Total float | Predecessors | Other |
| --- | --- | --- | --- | --- | --- | --- | --- | --- |
| 691074393 | **Superstructure** | 2025-04-10 → 2025-04-07 (-3d) | 2025-07-25 → 2025-09-16 (+53d) |  |  |  |  |  |
| 691087493 | **L2 A2** | 2025-05-16 → 2025-05-21 (+5d) | 2025-06-10 → 2025-06-12 (+2d) |  |  |  |  |  |
| 33492 | Erect Frame and Decking - L2 A2 | 2025-05-16 → 2025-05-21 (+5d) | 2025-05-19 → 2025-05-30 (+11d) | 2d → 7d |  | 0d → 17d | 33283, 35233 → 33283 | was named Layout Walls and Hold Downs |
| 691087393 | **L2 A1** | 2025-05-09 → 2025-05-12 (+3d) |  |  |  |  |  |  |
| 33283 | Erect Frame and Decking - L2 A1 (moblize 2 days prior with material) | 2025-05-09 → 2025-05-12 (+3d) | 2025-05-12 → 2025-05-20 (+8d) | 2d → 7d |  | 0d → 17d | 35253 → 35253, 35143 | was named Layout Walls and Hold Downs |
| 691088193 | **L3 A2** | 2025-06-13 → 2025-07-16 (+33d) | 2025-07-10 → 2025-08-06 (+27d) |  |  |  |  |  |
| 33562 | Erect Frame and Decking - L3 A2 | 2025-06-13 → 2025-07-16 (+33d) | 2025-06-16 → 2025-07-24 (+38d) | 2d → 7d |  | 12d → 0d | 33233 → 33233, 36126 | was named Layout Walls and Hold Downs |
| 691088093 | **L3 A1** | 2025-06-11 → 2025-07-07 (+26d) | 2025-07-02 → 2025-07-28 (+26d) |  |  |  |  |  |
| 33233 | Erect Frame and Decking - L3 A1 | 2025-06-11 → 2025-07-07 (+26d) | 2025-06-12 → 2025-07-15 (+33d) | 2d → 7d |  |  | Pour Level 2 Deck, Pour Level 2 Deck → 36096 | was named Layout Walls and Hold Downs |
| 691075793 | **CMU Cores** | 2025-04-10 → 2025-04-07 (-3d) | 2025-05-19 → 2025-06-03 (+15d) |  |  |  |  |  |
| 1073 | CMU Elevator Core | 2025-04-10 → 2025-04-14 A (+4d) | 2025-04-17 → 2025-04-23 A (+6d) | 6d → 8d | 0% → 100% | 0d → none | 35023, 35004 → 35004, 1072, 35023 |  |
| 35143 | CMU Stair B (additional grouting - 5 days per Bulletin #3.CMU Stair B (Additional days due to SOG resequencing) | 2025-04-18 → 2025-04-24 A (+6d) | 2025-04-25 → 2025-05-09 (+14d) | 6d → 13d | 0% → 77% | 0d → 7d |  | was named CMU Stair B |
| 35163 | Elevator Shaft Hoist beams and Spreader Tubes | 2025-04-18 → 2025-04-25 A (+7d) | 2025-04-22 → 2025-04-29 A (+7d) |  | 0% → 100% | 177d → none |  |  |
| 35144 | Steel Stair Install - Stair B | 2025-04-28 → 2025-05-12 (+14d) | 2025-05-07 → 2025-05-21 (+14d) |  |  | 158d → 199d |  |  |
| 35153 | CMU Stair A | 2025-04-28 → 2025-05-12 (+14d) | 2025-05-05 → 2025-05-21 (+16d) | 6d → 8d |  | 0d → 7d |  |  |
| 35173 | Steel Stair Install - Stair A | 2025-05-08 → 2025-05-22 (+14d) | 2025-05-19 → 2025-06-03 (+15d) |  |  | 158d → 199d |  |  |
| 691074793 | **Exterior Skin** | 2025-05-14 → 2025-08-12 (+90d) | 2025-10-27 → 2025-12-30 (+64d) |  |  |  |  |  |
| 691099793 | **Roofing** | 2025-07-28 → 2025-09-17 (+51d) | 2025-08-22 → 2025-10-14 (+53d) |  |  |  |  |  |
| 1075 | Roof Install | 2025-07-28 → 2025-09-17 (+51d) | 2025-08-22 → 2025-10-14 (+53d) |  |  | 24d → 19d | Decking → 36456 |  |
| 1076 | Backing and Blocking (parapet cap, nailers and signage supports) | 2025-07-28 → 2025-09-17 (+51d) | 2025-07-30 → 2025-09-19 (+51d) |  |  | 108d → 123d | Decking → 36456 | was named Roof Penetrations, All Trades |
| 691091593 | **North Elevation** | 2025-08-11 → 2025-09-10 (+30d) | 2025-08-29 → 2025-11-03 (+66d) |  |  |  |  |  |
| 36476 | Sheathing | 2025-05-29 → 2025-09-17 (+111d) | 2025-06-11 → 2025-09-23 (+104d) | 10d → 5d |  | 35d → 0d | CFMF A2 → 36426, 34783 |  |
| 691091693 | **South Elevation** | 2025-09-09 → 2025-09-24 (+15d) | 2025-09-29 → 2025-12-11 (+73d) |  |  |  |  |  |
| 36526 | Sheathing | 2025-07-28 → 2025-10-01 (+65d) | 2025-08-08 → 2025-10-07 (+60d) | 10d → 5d |  | 14d → 59d | CFMF A1, Electrical Rough-In, 36596 → 33433 |  |
| 691115793 | **East Elevation** | 2025-09-23 → 2025-10-08 (+15d) | 2025-10-27 → 2025-12-30 (+64d) |  |  |  |  |  |
| 36596 | Sheathing | 2025-06-20 → 2025-10-15 (+117d) | 2025-07-03 → 2025-10-21 (+110d) | 10d → 5d |  | 29d → 64d | CFMF A1, 36476 → 36586 |  |
| 691085593 | **West Elevation** | 2025-08-25 → 2025-08-12 (-13d) | 2025-09-29 → 2025-09-30 (+1d) |  |  |  |  |  |
| 33332 | Masonry Veneer | 2025-08-25 → 2025-08-22 (-3d) | 2025-09-15 → 2025-09-12 (-3d) |  |  | 31d → 103d | Veneer - North SS+10d → 36266, 36306 | was named Veneer - West |
| 34802 | EIFS | 2025-09-16 → 2025-09-15 (-1d) | 2025-09-29 → 2025-09-23 (-6d) | 10d → 7d |  | 66d → 116d |  | was named Storefront |
| 691091593 | **Rough-In** | 2025-07-03 → 2025-08-18 (+46d) | 2025-09-12 → 2025-10-27 (+45d) |  |  |  |  |  |
| 691088793 | **Level 1 - Rough-In Work** | 2025-07-03 → 2025-08-18 (+46d) | 2025-08-14 → 2025-09-15 (+32d) |  |  |  |  |  |
| 33632 | Interior Wall Framing - Level 1 | 2025-07-03 → 2025-08-18 (+46d) | 2025-07-10 → 2025-08-22 (+43d) |  |  | 0d → 16d | Pour Level 3 Deck → 36206 |  |
| 33642 | Mechanical Rough-In - Level 1 | 2025-07-11 → 2025-08-25 (+45d) | 2025-07-21 → 2025-09-03 (+44d) |  |  | 8d → 24d | 33632, Pour Level 3 Deck → 33632 |  |
| 33652 | Electrical and Fire Alarm Rough-In - Level 1 | 2025-07-11 → 2025-08-25 (+45d) | 2025-07-31 → 2025-09-15 (+46d) |  |  | 5d → 21d | 33632, 32922, Pour Level 3 Deck → 33632 | was named Electrical Rough-In - Level 1 |
| 33692 | Fire Suppression - Level 1 | 2025-07-11 → 2025-08-25 (+45d) | 2025-07-31 → 2025-09-15 (+46d) |  |  | 0d → 16d | 33632, Pour Level 3 Deck → 33632 |  |
| 33672 | Plumbing Rough-In - Level 1 | 2025-07-22 → 2025-09-04 (+44d) | 2025-07-28 → 2025-09-10 (+44d) |  |  | 23d → 39d | 33642, 33642 FF+4d → 33632, 33642 |  |
| 691088893 | **Level 2 - Rough-In Work** | 2025-07-22 → 2025-09-04 (+44d) | 2025-09-02 → 2025-10-06 (+34d) |  |  |  |  |  |
| 33712 | Mechanical Rough-In - Level 2 | 2025-07-22 → 2025-09-04 (+44d) | 2025-07-30 → 2025-09-12 (+44d) |  |  | 8d → 24d | CFMF A1, 33642 → 33642 |  |
| 33732 | Plumbing Rough-In - Level 2 | 2025-07-31 → 2025-09-15 (+46d) | 2025-08-06 → 2025-09-19 (+44d) |  |  | 21d → 37d |  |  |
| 33722 | Electrical and Fire Alarm Rough-In - Level 2 | 2025-08-01 → 2025-09-16 (+46d) | 2025-08-21 → 2025-10-06 (+46d) |  |  | 5d → 21d |  | was named Electrical Rough-In - Level 2 |
| 33742 | Fire Suppression - Level 2 | 2025-08-01 → 2025-09-16 (+46d) | 2025-08-21 → 2025-10-06 (+46d) |  |  | 0d → 16d |  |  |
| 691088993 | **Level 3 - Rough-In Work** | 2025-07-31 → 2025-09-15 (+46d) | 2025-09-12 → 2025-10-27 (+45d) |  |  |  |  |  |
| 33802 | Mechanical Rough-In - Level 3 | 2025-07-31 → 2025-09-15 (+46d) | 2025-08-08 → 2025-09-23 (+46d) |  |  | 16d → 32d | CFMF A1, 33712 → 33712 |  |
| 33792 | Plumbing Rough-In - Level 3 | 2025-08-11 → 2025-09-24 (+44d) | 2025-08-15 → 2025-09-30 (+46d) |  |  | 19d → 35d |  |  |
| 33782 | Electrical and Fire Alarm Rough-In - Level 3 | 2025-08-22 → 2025-10-07 (+46d) | 2025-09-12 → 2025-10-27 (+45d) |  |  | 5d → 21d |  | was named Electrical Rough-In - Level 3 |
| 33812 | Fire Suppression - Level 3 | 2025-08-22 → 2025-10-07 (+46d) | 2025-09-12 → 2025-10-27 (+45d) |  |  | 0d → 16d |  |  |
| 691091993 | **Janus Scope** | 2025-07-25 → 2025-09-16 (+53d) | 2025-10-03 → 2025-11-17 (+45d) |  |  |  |  |  |
| 33842 | Level 1 - JS | 2025-07-25 → 2025-09-16 (+53d) | 2025-08-14 → 2025-10-06 (+53d) |  |  | 5d → 16d | 33652 FS-5d → 33652 FS-5d, 35493, 33692 |  |
| 33852 | Level 2 - JS | 2025-08-15 → 2025-10-07 (+53d) | 2025-09-05 → 2025-10-27 (+52d) |  |  | 5d → 16d |  |  |
| 33862 | Level 3 - JS | 2025-09-15 → 2025-10-28 (+43d) | 2025-10-03 → 2025-11-17 (+45d) |  |  | 0d → 16d | 33852, 33812, Fire Alarm Rough - Level 3, 33792, 33782 SS+10d → 33852, 33812, 33792, 33782 SS+10d |  |
| 691094293 | **Elevators** | 2025-09-09 → 2025-11-11 (+63d) | 2025-10-20 → 2026-01-19 (+91d) |  |  |  |  |  |
| 33882 | Elevator Installation | 2025-09-09 → 2025-11-11 (+63d) | 2025-10-20 → 2025-12-24 (+65d) |  |  | 14d → 0d |  |  |
| 691075093 | **Interiors** | 2025-08-15 → 2025-10-07 (+53d) | 2025-11-07 → 2025-12-24 (+47d) |  |  |  |  |  |
| 691074993 | **Storage Areas** | 2025-08-15 → 2025-10-07 (+53d) | 2025-11-07 → 2025-12-24 (+47d) |  |  |  |  |  |
| 691093393 | **Level 1 - Interiors** | 2025-08-15 → 2025-10-07 (+53d) | 2025-09-19 → 2025-11-10 (+52d) |  |  |  |  |  |
| 34922 | Paint Structure | 2025-08-15 → 2025-10-07 (+53d) | 2025-08-28 → 2025-10-20 (+53d) |  |  | 15d → 26d |  |  |
| 34882 | Flooring Trim | 2025-08-29 → 2025-10-21 (+53d) | 2025-09-12 → 2025-11-03 (+52d) |  |  | 25d → 36d |  |  |
| 34892 | Lighting Trim | 2025-08-29 → 2025-10-21 (+53d) | 2025-09-12 → 2025-11-03 (+52d) |  |  | 15d → 26d |  |  |
| 34902 | Mechanical Trim | 2025-09-15 → 2025-11-04 (+50d) | 2025-09-19 → 2025-11-10 (+52d) |  |  | 25d → 36d |  |  |
| 34912 | Plumbing Trim | 2025-09-15 → 2025-11-04 (+50d) | 2025-09-19 → 2025-11-10 (+52d) |  |  | 72d → 87d |  |  |
| 691092793 | **Level 2 -Interiors** | 2025-09-08 → 2025-10-28 (+50d) | 2025-10-10 → 2025-12-03 (+54d) |  |  |  |  |  |
| 34862 | Paint Structure | 2025-09-08 → 2025-10-28 (+50d) | 2025-09-19 → 2025-11-10 (+52d) |  |  | 10d → 21d |  |  |
| 34822 | Flooring Trim | 2025-09-22 → 2025-11-11 (+50d) | 2025-10-03 → 2025-11-24 (+52d) |  |  | 15d → 26d |  |  |
| 34832 | Lighting Trim | 2025-09-22 → 2025-11-11 (+50d) | 2025-10-03 → 2025-11-24 (+52d) |  |  | 10d → 21d |  |  |
| 34842 | Mechanical Trim | 2025-10-06 → 2025-11-25 (+50d) | 2025-10-10 → 2025-12-03 (+54d) |  |  | 15d → 26d |  |  |
| 34852 | Plumbing Trim | 2025-10-06 → 2025-11-25 (+50d) | 2025-10-10 → 2025-12-03 (+54d) |  |  | 15d → 26d |  |  |
| 691075193 | **Level 3 - Interiors** | 2025-10-06 → 2025-11-18 (+43d) | 2025-11-07 → 2025-12-24 (+47d) |  |  |  |  |  |
| 1082 | Paint Structure | 2025-10-06 → 2025-11-18 (+43d) | 2025-10-17 → 2025-12-03 (+47d) |  |  | 0d → 16d |  |  |
| 1083 | Flooring Trim | 2025-10-20 → 2025-12-04 (+45d) | 2025-10-31 → 2025-12-17 (+47d) |  |  | 0d → 16d |  |  |
| 1084 | Lighting Trim | 2025-10-20 → 2025-12-04 (+45d) | 2025-10-31 → 2025-12-17 (+47d) |  |  | 0d → 16d |  |  |

| ID | Task | Start | Finish | Duration | Total float | Predecessors |
| --- | --- | --- | --- | --- | --- | --- |
| 1085 | Mechanical Trim | 2025-11-03 → 2025-12-18 (+45d) | 2025-11-07 → 2025-12-24 (+47d) |  | 0d → 16d |  |
| 1087 | Plumbing Trim | 2025-11-03 → 2025-12-18 (+45d) | 2025-11-07 → 2025-12-24 (+47d) |  | 0d → 16d |  |
| 691075293 | **Level 1 Office and Restrooms** | 2025-08-15 → 2025-10-07 (+53d) | 2025-10-27 → 2025-12-18 (+52d) |  |  |  |
| 34932 | Drywall - Office | 2025-08-15 → 2025-10-07 (+53d) | 2025-08-25 → 2025-10-15 (+51d) |  | 46d → 61d |  |
| 1106 | Doors & Hardware - Office | 2025-08-26 → 2025-10-16 (+51d) | 2025-09-02 → 2025-10-22 (+50d) |  | 46d → 61d |  |
| 1095 | Millwork - Office | 2025-09-03 → 2025-10-23 (+50d) | 2025-09-09 → 2025-10-29 (+50d) |  | 46d → 61d |  |
| 1096 | Flooring - Office | 2025-09-10 → 2025-10-30 (+50d) | 2025-09-16 → 2025-11-05 (+50d) |  | 46d → 61d |  |
| 1097 | Prime & Paint 1st Coat - Office | 2025-09-17 → 2025-11-06 (+50d) | 2025-09-23 → 2025-11-12 (+50d) |  | 46d → 61d |  |
| 1100 | Light Fixtures - Office | 2025-09-24 → 2025-11-13 (+50d) | 2025-09-30 → 2025-11-19 (+50d) |  | 65d → 80d |  |
| 1103 | Mechanical Trim Out - Office | 2025-09-24 → 2025-11-13 (+50d) | 2025-09-30 → 2025-11-19 (+50d) |  | 65d → 80d |  |
| 1104 | Electrical Trim Out - Office | 2025-09-24 → 2025-11-13 (+50d) | 2025-09-30 → 2025-11-19 (+50d) |  | 46d → 61d |  |
| 1105 | Plumbing Trim Out - Office | 2025-10-01 → 2025-11-20 (+50d) | 2025-10-07 → 2025-11-26 (+50d) |  | 46d → 61d |  |
| 1107 | Final Coat Paint - Office | 2025-10-08 → 2025-12-01 (+54d) | 2025-10-14 → 2025-12-05 (+52d) |  | 46d → 61d |  |
| 1099 | Install Appliances - Office | 2025-10-15 → 2025-12-08 (+54d) | 2025-10-16 → 2025-12-09 (+54d) |  | 53d → 68d |  |
| 1108 | Final Clean - Office | 2025-10-15 → 2025-12-08 (+54d) | 2025-10-21 → 2025-12-12 (+52d) |  | 46d → 61d |  |
| 1109 | Punch List Work - Office | 2025-10-21 → 2025-12-12 (+52d) | 2025-10-27 → 2025-12-18 (+52d) |  | 46d → 61d |  |
| 691082593 | **Final Sitework** | 2025-05-09 → 2025-05-27 (+18d) | 2025-11-04 → 2025-10-03 (-32d) |  |  |  |
| 691082693 | **Hardscapes** | 2025-06-11 → 2025-05-27 (-15d) | 2025-11-04 → 2025-09-19 (-46d) |  |  |  |
| 1140 | Detention Pond Fencing | 2025-09-30 → 2025-05-27 (-126d) | 2025-10-06 → 2025-05-29 (-130d) | 5d → 3d | 41d → 182d | Veneer - South → 35676 |
| 1131 | Striping and Signage | 2025-11-04 → 2025-07-02 (-125d) | 2025-11-04 → 2025-07-02 (-125d) |  | 40d → 178d | 1189, 1130 → 36026 |
| 1129 | Sidewalks | 2025-10-14 → 2025-09-15 (-29d) | 2025-10-20 → 2025-09-19 (-31d) |  | 31d → 103d | 35383, 33332, Veneer - East, Veneer - North, Veneer - South → 35383, 33332 |
| 691082793 | **Landscapes** | 2025-05-09 → 2025-09-22 (+136d) | 2025-11-03 → 2025-10-03 (-31d) |  |  |  |
| 1179 | Irrigation Systems | 2025-10-21 → 2025-09-22 (-29d) | 2025-10-27 → 2025-09-26 (-31d) |  | 31d → 103d | Veneer - East, 1140, 1129 → 1140, 1129 |
| 1189 | Plantings | 2025-10-28 → 2025-09-29 (-29d) | 2025-11-03 → 2025-10-03 (-31d) |  | 31d → 103d |  |
| 691075893 | **Closeout** | 2025-11-10 → 2026-01-20 (+71d) | 2025-12-05 → 2026-02-16 (+73d) |  |  |  |
| 1111 | Commissioning | 2025-11-10 → 2026-01-20 (+71d) | 2025-11-19 → 2026-02-02 (+75d) | 8d → 10d |  | 1085, 1087, 1084, 33882 → 1085, 1087, 1084, 33882, 33892 |
| 1112 | Fire Alarm Programing/Testing | 2025-11-13 → 2026-01-27 (+75d) | 2025-11-19 → 2026-02-02 (+75d) |  |  |  |
| 1113 | Final Inspections | 2025-11-20 → 2026-02-03 (+75d) | 2025-12-02 → 2026-02-16 (+76d) | 7d → 10d |  |  |
| 1114 | WEO Overall / Final Punch List Work | 2025-11-20 → 2026-02-03 (+75d) | 2025-11-26 → 2026-02-09 (+75d) |  | 19d → 21d |  |
| 1115 | Develop Owner Punch Lists | 2025-12-01 → 2026-02-10 (+71d) | 2025-12-05 → 2026-02-16 (+73d) |  | 19d → 21d |  |

## Version 3 (data date 2025-06-20, saved 2025-06-23, file update_3.xer)

Note of the change: Add all project schedule files to buckets - 13 projects, MPP+XER, baseline+updates

Last finish 2026-03-17 → 2026-04-09 (+23d). Complete tasks 65 → 76.

Added:

| ID | Task | Duration | Start | Finish | Predecessors |
| --- | --- | --- | --- | --- | --- |
| 36796 | Stop Work - Steel Submit Review and Fabrication | 7d | 2025-06-05 A | 2025-06-27 | 33492 |
| 36166 | Resume - Erect Frame and Decking - L2 A2 | 1d | 2025-06-30 | 2025-06-30 | 36796 |
| 1 | **L2 A4** |  | 2025-07-08 | 2025-07-24 |  |
| 36756 | Erect Frame and Decking - L2 A4 | 4d | 2025-07-08 | 2025-07-11 | 35233 |
| 36766 | MEP Sleeve Install - L2 A4 | 3d | 2025-07-14 | 2025-07-16 | 36756 |
| 36776 | Rebar and Pour Prep - L2 A4 | 3d | 2025-07-17 | 2025-07-21 | 36766 |
| 36786 | Concrete Pour, Saw Cut and Strip - L2 A4 | 3d | 2025-07-22 | 2025-07-24 | 36776 |

Changed:

| ID | Task | Start | Finish | Duration | Complete | Total float | Predecessors | Other |
| --- | --- | --- | --- | --- | --- | --- | --- | --- |
| 691056193 | **Project Summary** |  | 2026-03-17 → 2026-04-09 (+23d) |  |  |  |  |  |
| 691056493 | **Contract Milestones** |  | 2026-03-17 → 2026-04-09 (+23d) |  |  |  |  |  |
| 33172 | Proposals/Bids Due |  |  |  |  |  |  | constraint start on 2024-07-18 → none |
| 33182 | Interviews |  |  |  |  |  |  | constraint start on 2024-07-22 → none |
| 33192 | Award Contract |  |  |  |  |  |  | constraint start on 2024-07-26 → none |
| NTP | Initial Notice to Proceed - Site Not in Compliance Per Contract |  |  |  |  |  |  | constraint start on 2025-01-14 → none |
| SC | Project SC - Before Weather Impacts | 2026-02-17 → 2026-03-13 (+24d) | 2026-02-17 → 2026-03-13 (+24d) |  |  |  |  |  |
| PSC | Project Substantially Complete - After Weather Impacts | 2026-02-27 → 2026-03-24 (+25d) | 2026-02-27 → 2026-03-24 (+25d) |  |  |  | SC, 1027 → 36686 FF, 1016 FF, 1027, SC |  |
| PSC0001 | Operational Setup | 2026-03-02 → 2026-03-25 (+23d) | 2026-03-17 → 2026-04-09 (+23d) |  |  |  |  |  |
| PSC0002 | Project Open | 2026-03-17 → 2026-04-09 (+23d) | 2026-03-17 → 2026-04-09 (+23d) |  |  |  | PSC0001 → 1115 FF, PSC0001 |  |
| 691056293 | **Construction Milestones** |  | 2025-10-14 → 2025-11-07 (+24d) |  |  |  |  |  |
| 1004 | Permit Approved |  |  |  |  |  |  | constraint start on 2025-01-21 → none |
| 1008 | Start of Elevated Structure | 2025-05-12 → 2025-05-07 A (-5d) | 2025-05-12 → 2025-05-07 A (-5d) |  | 0% → 100% | 215d → none |  |  |
| 1012 | Stair Cores Complete to Roof | 2025-05-21 → 2025-05-30 A (+9d) | 2025-05-21 → 2025-05-30 A (+9d) |  | 0% → 100% | 207d → none | 1073, 35143, 35153 → 1008 FF, 35153, 35143, 1073 |  |
| 1010 | Structure Complete | 2025-09-16 → 2025-10-10 (+24d) | 2025-09-16 → 2025-10-10 (+24d) |  |  | 126d → 115d | 36456 → 1012 FF, 36456 |  |
| 1015 | Exterior Work Complete | 2025-10-03 → 2025-11-07 (+35d) | 2025-10-03 → 2025-11-07 (+35d) |  |  | 113d → 95d | 1189, 1131 → 1016 FF, 1010 FF, 1131, 1189 |  |
| 1016 | Building Dry In | 2025-10-14 → 2025-11-07 (+24d) | 2025-10-14 → 2025-11-07 (+24d) |  |  | 106d → 93d | 1075 → 1076 FF, 1075 |  |
| 691103693 | **Schedule Impacts** |  | 2026-02-27 → 2026-03-24 (+25d) |  |  |  |  |  |
| 691103793 | **Weather Delays** |  | 2026-02-27 → 2026-03-24 (+25d) |  |  |  |  |  |
| 36286 | Weather Delay 3/19/2025 |  |  |  |  |  |  | constraint start on or after 2025-03-19 → none |
| cmu | Weather Delay 5/6/2025 | 2025-05-07 → 2025-05-06 A (-1d) | 2025-05-07 → 2025-05-06 A (-1d) |  | 0% → 100% | 217d → none |  | constraint start on or after 2025-05-06 → none |
| 1027 | Contract Weather Days - 10 Days | 2026-02-17 → 2026-03-13 (+24d) | 2026-02-27 → 2026-03-24 (+25d) | 9d → 8d |  |  |  |  |
| 691104193 | **Project Impacts** |  | 2025-05-23 → 2025-06-11 (+19d) |  |  |  |  |  |
| 691105393 | **Owner Added Scope Impacts** |  | 2025-05-23 → 2025-06-11 (+19d) |  |  |  |  |  |
| 691105693 | **Pond Construction By Owner** |  | 2025-05-23 → 2025-06-11 (+19d) |  |  |  |  |  |
| 35686 | Pond Contractor Permit Pulled |  |  |  |  |  |  | constraint start on or after 2025-03-06 → none |
| 35676 | North Pond Retaining Wall Completed by Owner |  | 2025-05-23 → 2025-06-11 A (+19d) |  | 57% → 100% | 0d → none | 35686 → none | was named Pond Construction by Owner |
| 35926 | W.E.O. Notification of Delayed Mobilization Due to Weather |  |  |  |  |  |  | constraint start on or after 2025-01-14 → none |
| 35946 | Initial NTP From Owner |  |  |  |  |  |  | constraint start on or after 2025-01-14 → none |
| 35956 | W.E.O. Notification of Site Condition Impacting start of work |  |  |  |  |  |  | constraint start on or after 2025-01-22 → none |
| 35966 | W.E.O. Notification of Continued Site Impacts |  |  |  |  |  |  | constraint start on or after 2025-01-28 → none |
| 35726 | Owner Over-Ex Complete and Pad Certification Email |  |  |  |  |  |  | was named Owner Over-Ex Complete and Pad Ceritification Email; constraint start on or after 2025-01-08 → none |
| 691060893 | **Pre-Construciton** |  | 2025-10-01 → 2025-11-13 (+43d) |  |  |  |  |  |
| 691060793 | **Procurement** |  | 2025-10-01 → 2025-11-13 (+43d) |  |  |  |  |  |
| 32912 | Elevator (By Owner) |  | 2025-10-01 → 2025-11-13 (+43d) |  |  | 28d → 15d |  |  |
| 32922 | Electric Room MDP |  |  |  | 50% → 68% | 135d → 112d |  |  |
| 34992 | Owner's Enabling Contract Work |  |  |  |  |  |  | constraint start on 2024-08-26 → none |
| 35846 | Owner Approval/Direction To Install Stormwater BMP's (OAC Meeting) |  |  |  |  |  |  | constraint start on 2025-02-13 → none |
| 35906 | Owner Approval/Direction to Grade Site Per GEC (Email - 2/3) |  |  |  |  |  |  | constraint start on or after 2025-02-03 → none |
| 35896 | Grading per GEC Plan |  |  |  |  |  |  | constraint start on or after 2025-02-05 → none |
| 691065093 | **Construction** |  | 2026-02-16 → 2026-03-12 (+24d) |  |  |  |  |  |
| 691061993 | **Site Development** |  | 2025-11-10 → 2025-12-08 (+28d) |  |  |  |  |  |
| 691098893 | **Site Infrastructure** |  | 2025-06-10 → 2025-08-19 (+70d) |  |  |  |  |  |
| 36736 | Discovered unmarked gas, city tap rescheduled | 2025-05-06 A → 2025-05-05 A (-1d) | 2025-05-19 → 2025-06-06 A (+18d) |  | 10% → 100% | 194d → none |  |  |
| 36746 | Install Domestic Water (City Install Domestic Tap - 5/2) | 2025-05-20 → 2025-06-06 A (+17d) | 2025-05-21 → 2025-07-31 (+71d) |  |  | 194d → 84d |  |  |
| 33092 | Install Domestic Water (City Install Domestic Tap - 5/2) | 2025-05-02 A → 2025-06-06 A (+35d) | 2025-05-05 A → 2025-06-06 A (+32d) | 2d → 1d |  |  |  | constraint start on or after 2025-04-30 → none |
| 33102 | Install Storm Main (Pond to STA: 2+42.32) | 2025-05-22 → 2025-08-01 (+71d) | 2025-06-03 → 2025-08-12 (+70d) |  |  | 194d → 84d |  |  |
| 1050 | Install Storm Secondary | 2025-06-04 → 2025-08-13 (+70d) | 2025-06-10 → 2025-08-19 (+70d) |  |  | 194d → 147d |  |  |
| 691098993 | **Site Civil** |  | 2025-11-10 → 2025-12-08 (+28d) |  |  |  |  |  |
| 1053 | Electrical Main Conduit and Transformer Prep (PRECONSTRUCTION) |  |  |  |  |  |  | constraint start on or after 2025-02-17 → none |
| 35283 | Electrical Main to Building | 2025-11-04 → 2025-12-02 (+28d) | 2025-11-10 → 2025-12-08 (+28d) |  |  |  |  |  |
| 691099993 | **Paving** | 2025-05-12 → 2025-08-13 (+93d) | 2025-07-01 → 2025-10-02 (+93d) |  |  |  |  |  |
| 35313 | Survey - Trash Enclosure | 2025-05-12 → 2025-08-13 (+93d) | 2025-05-12 → 2025-08-13 (+93d) |  |  | 168d → 84d | 35143 → 33102 |  |
| 35323 | Excavate - Trash Enclosure | 2025-05-13 → 2025-08-14 (+93d) | 2025-05-13 → 2025-08-14 (+93d) |  |  | 168d → 84d |  |  |
| 35333 | FRPS Footer - Trash Enclosure | 2025-05-14 → 2025-08-15 (+93d) | 2025-05-16 → 2025-08-19 (+95d) |  |  | 168d → 84d |  |  |
| 35343 | FRPS Stem Wall - Trash Enclosure | 2025-05-19 → 2025-08-20 (+93d) | 2025-05-21 → 2025-08-22 (+93d) |  |  | 168d → 84d |  |  |
| 35344 | Trash Enclosure Masonry | 2025-05-22 → 2025-08-25 (+95d) | 2025-05-29 → 2025-08-29 (+92d) |  |  | 168d → 84d |  |  |
| 1130 | Trash Enclosure Gates | 2025-05-30 → 2025-09-02 (+95d) | 2025-06-05 → 2025-09-08 (+95d) |  |  | 197d → 84d |  |  |
| 35353 | Backfill and compact - Trash Enclosure | 2025-05-30 → 2025-09-02 (+95d) | 2025-05-30 → 2025-09-02 (+95d) |  |  | 168d → 120d |  |  |
| 1180 | Irrigation sleeving | 2025-06-02 → 2025-09-03 (+93d) | 2025-06-04 → 2025-09-05 (+93d) |  |  | 169d → 121d |  |  |
| 35363 | Survey - Grid Line K, South | 2025-06-02 → 2025-09-03 (+93d) | 2025-06-02 → 2025-09-03 (+93d) |  |  | 168d → 120d |  |  |
| 35373 | Finish Grade - Grid Line K, South | 2025-06-03 → 2025-09-04 (+93d) | 2025-06-05 → 2025-09-08 (+95d) |  |  | 168d → 120d |  |  |
| 35383 | FRPS Curb and gutter - Grid Line K, South | 2025-06-06 → 2025-09-09 (+95d) | 2025-06-11 → 2025-09-12 (+93d) |  |  | 168d → 120d |  |  |
| 35384 | FRPS Sidewalk and Ballards - Grid Line K, South | 2025-06-12 → 2025-09-15 (+95d) | 2025-06-16 → 2025-09-17 (+93d) |  |  | 178d → 120d |  |  |
| 35393 | Survey - Grid Line K, North | 2025-06-12 → 2025-09-15 (+95d) | 2025-06-12 → 2025-09-15 (+95d) |  |  | 178d → 120d |  |  |
| 35403 | Finish Grade - Grid Line K, North | 2025-06-13 → 2025-09-16 (+95d) | 2025-06-16 → 2025-09-17 (+93d) |  |  | 178d → 120d |  |  |
| 35413 | FRPS Curb, Gutter and Trash Enclosure Slab - Grid Line K, North | 2025-06-17 → 2025-09-18 (+93d) | 2025-06-20 → 2025-09-23 (+95d) |  |  | 178d → 120d |  |  |
| 35414 | FRPS Sidewalk and Ballards - Grid Line K, North | 2025-06-23 → 2025-09-24 (+93d) | 2025-06-25 → 2025-09-26 (+93d) |  |  | 178d → 120d |  |  |
| 35423 | Asphalt Bottom Mat | 2025-06-26 → 2025-09-29 (+95d) | 2025-06-27 → 2025-09-30 (+95d) |  |  | 178d → 120d | 35413, 35414 → 1050, 35414, 35413 |  |
| 36026 | Asphalt Patch and Top Mat | 2025-06-30 → 2025-10-01 (+93d) | 2025-07-01 → 2025-10-02 (+93d) |  |  | 178d → 120d |  |  |

| ID | Task | Start | Finish | Duration | Complete | Total float | Predecessors | Other |
| --- | --- | --- | --- | --- | --- | --- | --- | --- |
| 691064793 | **Foundation** |  | 2025-06-24 → 2025-07-07 (+13d) |  |  |  |  |  |
| 35253 | SOG FRPS - Area 2 .SOG FRPS - Area 1 |  | 2025-05-09 A |  | 62% → 100% | 17d → none |  |  |
| 35135 | Backfill and Ground Prep - SOG Area 3 | 2025-05-27 → 2025-06-12 A (+16d) | 2025-06-02 → 2025-06-16 A (+14d) |  | 0% → 100% | 200d → none |  |  |
| 35243 | Backfill and Ground Prep - SOG Area 4 | 2025-05-27 → 2025-06-13 A (+17d) | 2025-06-02 → 2025-06-17 A (+15d) | 5d → 2d | 0% → 100% | 0d → none |  |  |
| 36716 | SOG FRPS - Area 3 | 2025-06-03 → 2025-06-16 A (+13d) | 2025-06-12 → 2025-06-25 (+13d) | 8d → 7d | 0% → 43% | 0d → 2d | 35676, 35243 → 35135 |  |
| 35233 | SOG FRPS - Area 4 | 2025-06-13 → 2025-06-26 (+13d) | 2025-06-24 → 2025-07-07 (+13d) | 8d → 7d |  | 0d → 2d | 35243, 35153, 35253 FS-1d, 36716 → 36716, 35243 | was named SOG FRPS - Area 4.SOG FRPS - Area 1 |
| 691074393 | **Superstructure** |  | 2025-09-16 → 2025-10-10 (+24d) |  |  |  |  |  |
| 691074993 | **Structural Metal Framing and Deck** | 2025-05-12 → 2025-05-13 (+1d) | 2025-09-16 → 2025-10-10 (+24d) |  |  |  |  |  |
| 691084693 | **Level 2 Deck (level 1 Walls)** | 2025-05-12 → 2025-05-13 (+1d) | 2025-07-17 → 2025-07-31 (+14d) |  |  |  |  |  |
| 691087393 | **L2 A1** | 2025-05-12 → 2025-05-13 (+1d) | 2025-06-03 → 2025-07-23 (+50d) |  |  |  |  |  |
| 33283 | Erect Frame and Decking - L2 A1 (moblize 2 days prior with material) | 2025-05-12 → 2025-05-13 A (+1d) | 2025-05-20 → 2025-05-23 A (+3d) |  | 0% → 100% | 17d → none | 35253, 35143 → 35183 |  |
| 33284 | MEP Sleeve Install - L2 A1 - coordinate vs core driller | 2025-05-21 → 2025-07-11 (+51d) | 2025-05-23 → 2025-07-15 (+53d) |  |  | 26d → 0d | 33283 → 33283 FS+32d |  |
| 33285 | Rebar and Pour Prep - L2 A1 | 2025-05-27 → 2025-07-16 (+50d) | 2025-05-29 → 2025-07-18 (+50d) |  |  | 26d → 0d | 33284 → 33284, 36756 |  |
| 33286 | Concrete Pour, Saw Cut and Strip - L2 A1 | 2025-05-30 → 2025-07-21 (+52d) | 2025-06-03 → 2025-07-23 (+50d) |  |  | 26d → 0d |  |  |
| 691087493 | **L2 A2** | 2025-05-21 → 2025-05-13 (-8d) | 2025-06-12 → 2025-07-28 (+46d) |  |  |  |  |  |
| 33492 | Erect Frame and Decking - L2 A2 | 2025-05-21 → 2025-05-13 A (-8d) | 2025-05-30 → 2025-06-05 A (+6d) |  | 0% → 100% | 17d → none |  |  |
| 36106 | MEP Sleeve Install - L2 A2 | 2025-06-02 → 2025-07-01 (+29d) | 2025-06-04 → 2025-07-03 (+29d) |  |  | 22d → 10d | 33492 → 36166 |  |
| 36116 | Rebar and Pour Prep - L2 A2 | 2025-06-05 → 2025-07-07 (+32d) | 2025-06-09 → 2025-07-09 (+30d) |  |  | 22d → 10d |  |  |
| 36126 | Concrete Pour, Saw Cut and Strip - L2 A2 | 2025-06-10 → 2025-07-24 (+44d) | 2025-06-12 → 2025-07-28 (+46d) |  |  | 22d → 0d |  |  |
| 691111193 | **L2 A3** | 2025-06-25 → 2025-07-01 (+6d) | 2025-07-17 → 2025-07-31 (+14d) |  |  |  |  |  |
| 36096 | Erect Frame and Decking - L2 A3 | 2025-06-25 → 2025-07-01 (+6d) | 2025-07-03 → 2025-07-07 (+4d) | 7d → 4d |  | 0d → 13d | 33492, 35233 → 36716 FS+1d, 36166 |  |
| 36136 | MEP Sleeve Install - L2 A3 | 2025-07-07 → 2025-07-08 (+1d) | 2025-07-09 → 2025-07-10 (+1d) |  |  | 5d → 13d |  |  |
| 36146 | Rebar and Pour Prep - L2 A3 | 2025-07-10 → 2025-07-11 (+1d) | 2025-07-14 → 2025-07-15 (+1d) |  |  | 5d → 13d |  |  |
| 36156 | Concrete Pour, Saw Cut and Strip - L2 A3 | 2025-07-15 → 2025-07-29 (+14d) | 2025-07-17 → 2025-07-31 (+14d) |  |  | 5d → 4d |  |  |
| 691084193 | **Level 3 Deck (Level 2 Walls)** | 2025-07-07 → 2025-07-29 (+22d) | 2025-08-15 → 2025-08-28 (+13d) |  |  |  |  |  |
| 691088093 | **L3 A1** | 2025-07-07 → 2025-07-29 (+22d) | 2025-07-28 → 2025-08-19 (+22d) |  |  |  |  |  |
| 33233 | Erect Frame and Decking - L3 A1 | 2025-07-07 → 2025-07-29 (+22d) | 2025-07-15 → 2025-08-06 (+22d) |  |  |  | 36096 → 36126 |  |
| 36216 | MEP Sleeve Install - L3 A1 | 2025-07-16 → 2025-08-07 (+22d) | 2025-07-18 → 2025-08-11 (+24d) |  |  | 161d → 7d |  |  |
| 36226 | Rebar and Pour Prep - L3 A1 | 2025-07-21 → 2025-08-12 (+22d) | 2025-07-23 → 2025-08-14 (+22d) |  |  | 161d → 7d |  |  |
| 36236 | Concrete Pour, Saw Cut and Strip - L3 A1 | 2025-07-24 → 2025-08-15 (+22d) | 2025-07-28 → 2025-08-19 (+22d) |  |  | 161d → 7d |  |  |
| 691088193 | **L3 A2** | 2025-07-16 → 2025-08-07 (+22d) | 2025-08-06 → 2025-08-28 (+22d) |  |  |  |  |  |
| 33562 | Erect Frame and Decking - L3 A2 | 2025-07-16 → 2025-08-07 (+22d) | 2025-07-24 → 2025-08-15 (+22d) |  |  |  |  |  |
| 36246 | MEP Sleeve Install - L3 A2 | 2025-07-25 → 2025-08-18 (+24d) | 2025-07-29 → 2025-08-20 (+22d) |  |  | 114d → 0d |  |  |
| 36256 | Rebar and Pour Prep - L3 A2 | 2025-07-30 → 2025-08-21 (+22d) | 2025-08-01 → 2025-08-25 (+24d) |  |  | 114d → 0d |  |  |
| 36266 | Concrete Pour, Saw Cut and Strip - L3 A2 | 2025-08-04 → 2025-08-26 (+22d) | 2025-08-06 → 2025-08-28 (+22d) |  |  | 114d → 0d |  |  |
| 691112293 | **L3 A3** | 2025-07-25 → 2025-08-01 (+7d) | 2025-08-15 → 2025-08-22 (+7d) |  |  |  |  |  |
| 36176 | Erect Frame and Decking - L3 A3 | 2025-07-25 → 2025-08-01 (+7d) | 2025-08-04 → 2025-08-11 (+7d) |  |  | 0d → 4d | 33562, 36156 → 36156, 36786 |  |
| 36186 | MEP Sleeve Install - L3 A3 | 2025-08-05 → 2025-08-12 (+7d) | 2025-08-07 → 2025-08-14 (+7d) |  |  | 16d → 4d |  |  |
| 36196 | Rebar and Pour Prep - L3 A3 | 2025-08-08 → 2025-08-15 (+7d) | 2025-08-12 → 2025-08-19 (+7d) |  |  | 16d → 4d |  |  |
| 36206 | Concrete Pour, Saw Cut and Strip - L3 A3 | 2025-08-13 → 2025-08-20 (+7d) | 2025-08-15 → 2025-08-22 (+7d) |  |  | 16d → 4d |  |  |
| 691084093 | **Roof Deck (Level 3 Walls)** | 2025-08-05 → 2025-08-29 (+24d) | 2025-09-16 → 2025-10-10 (+24d) |  |  |  |  |  |
| 691113193 | **Roof Area 1** | 2025-08-05 → 2025-08-29 (+24d) | 2025-08-18 → 2025-09-12 (+25d) |  |  |  |  |  |
| 36376 | Erect Frame and Decking - RA1 | 2025-08-05 → 2025-08-29 (+24d) | 2025-08-11 → 2025-09-05 (+25d) |  |  |  | 36176 → 36266, 36236, 36206 |  |
| 36386 | MEP Sleeve Install - RA1 | 2025-08-12 → 2025-09-08 (+27d) | 2025-08-14 → 2025-09-10 (+27d) |  |  |  |  |  |
| 36396 | Install Curbs and Roof Supports - RA1 | 2025-08-12 → 2025-09-08 (+27d) | 2025-08-13 → 2025-09-09 (+27d) |  |  |  |  |  |
| 36406 | Decking Closure - RA1 | 2025-08-15 → 2025-09-11 (+27d) | 2025-08-18 → 2025-09-12 (+25d) |  |  |  |  |  |
| 691112693 | **Roof Area 2** | 2025-08-19 → 2025-09-15 (+27d) | 2025-09-02 → 2025-09-26 (+24d) |  |  |  |  |  |
| 36326 | Erect Frame and Decking - RA2 | 2025-08-19 → 2025-09-15 (+27d) | 2025-08-25 → 2025-09-19 (+25d) |  |  |  |  |  |
| 36336 | MEP Sleeve Install - RA2 | 2025-08-26 → 2025-09-22 (+27d) | 2025-08-28 → 2025-09-24 (+27d) |  |  |  |  |  |
| 36346 | Install Curbs and Roof Supports - RA2 | 2025-08-26 → 2025-09-22 (+27d) | 2025-08-27 → 2025-09-23 (+27d) |  |  |  |  |  |
| 36356 | Decking Closure - RA2 | 2025-08-29 → 2025-09-25 (+27d) | 2025-09-02 → 2025-09-26 (+24d) |  |  |  |  |  |
| 691113693 | **Roof Area 3** | 2025-09-03 → 2025-09-29 (+26d) | 2025-09-16 → 2025-10-10 (+24d) |  |  |  |  |  |
| 36426 | Erect Frame and Decking - RA3 | 2025-09-03 → 2025-09-29 (+26d) | 2025-09-09 → 2025-10-03 (+24d) |  |  |  |  |  |
| 36436 | MEP Sleeve Install - RA3 | 2025-09-10 → 2025-10-06 (+26d) | 2025-09-12 → 2025-10-08 (+26d) |  |  |  |  |  |
| 36446 | Install Curbs and Roof Supports - RA3 | 2025-09-10 → 2025-10-06 (+26d) | 2025-09-11 → 2025-10-07 (+26d) |  |  |  |  |  |
| 36456 | Decking Closure - RA3 | 2025-09-15 → 2025-10-09 (+24d) | 2025-09-16 → 2025-10-10 (+24d) |  |  |  |  |  |
| 691075793 | **CMU Cores** |  | 2025-06-03 → 2025-08-08 (+66d) |  |  |  |  |  |
| 1072 | CMU Mobilization |  |  |  |  |  |  | was named CMU moblizationa |
| 35143 | CMU Stair B (additional grouting - 5 days per Bulletin #3.CMU Stair B (Additional days due to SOG resequencing) |  | 2025-05-09 → 2025-05-23 A (+14d) |  | 77% → 100% | 7d → none |  |  |
| 35153 | CMU Stair A | 2025-05-12 → 2025-05-07 A (-5d) | 2025-05-21 → 2025-05-30 A (+9d) | 8d → 17d | 0% → 100% | 7d → none | 35143 → cmu, 35143 |  |
| 35144 | Steel Stair Install - Stair B | 2025-05-12 → 2025-06-19 A (+38d) | 2025-05-21 → 2025-08-05 (+76d) |  |  | 199d → 83d |  |  |
| 35173 | Steel Stair Install - Stair A | 2025-05-22 → 2025-06-20 (+29d) | 2025-06-03 → 2025-07-01 (+28d) |  |  | 199d → 131d | 35144, 35153 → none |  |
| 35163 | Elevator Shaft Hoist beams and Spreader Tubes | 2025-04-25 A → 2025-08-06 (+103d) | 2025-04-29 A → 2025-08-08 (+101d) |  | 100% → 0% | none → 83d | 1073 → 35144, 1073 |  |
| 691074793 | **Exterior Skin** | 2025-08-12 → 2025-09-08 (+27d) | 2025-12-30 → 2026-01-26 (+27d) |  |  |  |  |  |
| 691099793 | **Roofing** | 2025-09-17 → 2025-10-13 (+26d) | 2025-10-14 → 2025-11-07 (+24d) |  |  |  |  |  |
| 1075 | Roof Install | 2025-09-17 → 2025-10-13 (+26d) | 2025-10-14 → 2025-11-07 (+24d) |  |  |  |  |  |
| 1076 | Backing and Blocking (parapet cap, nailers and signage supports) | 2025-09-17 → 2025-10-13 (+26d) | 2025-09-19 → 2025-10-15 (+26d) |  |  | 123d → 110d |  |  |
| 691091593 | **North Elevation** | 2025-09-10 → 2025-10-06 (+26d) | 2025-11-03 → 2025-12-01 (+28d) |  |  |  |  |  |
| 34783 | Veneer Stud Framing | 2025-09-10 → 2025-10-06 (+26d) | 2025-09-16 → 2025-10-10 (+24d) |  |  |  |  |  |
| 36476 | Sheathing | 2025-09-17 → 2025-10-13 (+26d) | 2025-09-23 → 2025-10-17 (+24d) |  |  |  |  |  |

| ID | Task | Start | Finish | Total float | Predecessors |
| --- | --- | --- | --- | --- | --- |
| 36486 | Air/Weather Barrier | 2025-09-24 → 2025-10-20 (+26d) | 2025-09-25 → 2025-10-21 (+26d) |  |  |
| 36496 | Masonry Veneer | 2025-09-26 → 2025-10-22 (+26d) | 2025-10-16 → 2025-11-11 (+26d) |  |  |
| 36516 | EIFS | 2025-10-17 → 2025-11-12 (+26d) | 2025-10-27 → 2025-11-20 (+24d) |  |  |
| 36506 | Exterior Metal Panel | 2025-10-28 → 2025-11-21 (+24d) | 2025-11-03 → 2025-12-01 (+28d) |  |  |
| 691091693 | **South Elevation** | 2025-09-24 → 2025-10-20 (+26d) | 2025-12-11 → 2026-01-08 (+28d) |  |  |
| 33433 | Veneer Stud Framing | 2025-09-24 → 2025-10-20 (+26d) | 2025-09-30 → 2025-10-24 (+24d) | 59d → 40d |  |
| 36526 | Sheathing | 2025-10-01 → 2025-10-27 (+26d) | 2025-10-07 → 2025-10-31 (+24d) | 59d → 40d |  |
| 36536 | Air/Weather Barrier | 2025-10-08 → 2025-11-03 (+26d) | 2025-10-09 → 2025-11-04 (+26d) | 59d → 40d |  |
| 36546 | Masonry Veneer | 2025-10-17 → 2025-11-12 (+26d) | 2025-11-06 → 2025-12-04 (+28d) | 54d → 35d |  |
| 36566 | EIFS | 2025-11-07 → 2025-12-05 (+28d) | 2025-11-17 → 2025-12-15 (+28d) | 66d → 35d |  |
| 36556 | Exterior Metal Panel | 2025-11-18 → 2025-12-16 (+28d) | 2025-11-24 → 2025-12-22 (+28d) | 66d → 35d |  |
| 33424 | Backing, Blocking and Flashing | 2025-11-25 → 2025-12-23 (+28d) | 2025-12-03 → 2025-12-30 (+27d) | 66d → 35d |  |
| 33425 | Storefront Install | 2025-12-04 → 2025-12-31 (+27d) | 2025-12-08 → 2026-01-05 (+28d) | 66d → 35d |  |
| 33426 | Canopy Install | 2025-12-09 → 2026-01-06 (+28d) | 2025-12-11 → 2026-01-08 (+28d) | 66d → 35d |  |
| 691115793 | **East Elevation** | 2025-10-08 → 2025-11-03 (+26d) | 2025-12-30 → 2026-01-26 (+27d) |  |  |
| 36586 | Veneer Stud Framing | 2025-10-08 → 2025-11-03 (+26d) | 2025-10-14 → 2025-11-07 (+24d) | 64d → 51d |  |
| 36596 | Sheathing | 2025-10-15 → 2025-11-10 (+26d) | 2025-10-21 → 2025-11-14 (+24d) | 64d → 51d |  |
| 36606 | Air/Weather Barrier | 2025-10-22 → 2025-11-17 (+26d) | 2025-10-23 → 2025-11-18 (+26d) | 64d → 51d |  |
| 36616 | Masonry Veneer | 2025-11-07 → 2025-12-05 (+28d) | 2025-12-01 → 2025-12-26 (+25d) | 54d → 41d |  |
| 36636 | EIFS | 2025-12-02 → 2025-12-29 (+27d) | 2025-12-10 → 2026-01-07 (+28d) | 54d → 41d |  |
| 36626 | Exterior Metal Panel | 2025-12-11 → 2026-01-08 (+28d) | 2025-12-17 → 2026-01-14 (+28d) | 54d → 41d |  |
| 36646 | Backing, Blocking and Flashing | 2025-12-18 → 2026-01-15 (+28d) | 2025-12-19 → 2026-01-16 (+28d) | 54d → 41d |  |
| 36676 | Storefront Install | 2025-12-22 → 2026-01-19 (+28d) | 2025-12-24 → 2026-01-21 (+28d) | 54d → 41d |  |
| 36686 | Canopy Install | 2025-12-26 → 2026-01-22 (+27d) | 2025-12-30 → 2026-01-26 (+27d) | 54d → 41d |  |
| 691085593 | **West Elevation** | 2025-08-12 → 2025-09-08 (+27d) | 2025-09-30 → 2025-10-24 (+24d) |  |  |
| 36296 | Sheathing | 2025-08-12 → 2025-09-08 (+27d) | 2025-08-18 → 2025-09-12 (+25d) | 103d → 85d |  |
| 36306 | Air/Weather Barrier and Insulation | 2025-08-19 → 2025-09-15 (+27d) | 2025-08-21 → 2025-09-17 (+27d) | 103d → 85d |  |
| 33332 | Masonry Veneer | 2025-08-22 → 2025-09-18 (+27d) | 2025-09-12 → 2025-10-08 (+26d) | 103d → 85d |  |
| 34802 | EIFS | 2025-09-15 → 2025-10-09 (+24d) | 2025-09-23 → 2025-10-17 (+24d) | 116d → 85d |  |
| 36466 | Exterior Metal Panel | 2025-09-24 → 2025-10-20 (+26d) | 2025-09-30 → 2025-10-24 (+24d) | 116d → 85d |  |
| 691091593 | **Rough-In** | 2025-08-18 → 2025-08-25 (+7d) | 2025-10-27 → 2025-11-03 (+7d) |  |  |
| 691088793 | **Level 1 - Rough-In Work** | 2025-08-18 → 2025-08-25 (+7d) | 2025-09-15 → 2025-09-22 (+7d) |  |  |
| 33632 | Interior Wall Framing - Level 1 | 2025-08-18 → 2025-08-25 (+7d) | 2025-08-22 → 2025-08-29 (+7d) | 16d → 29d |  |
| 33642 | Mechanical Rough-In - Level 1 | 2025-08-25 → 2025-09-02 (+8d) | 2025-09-03 → 2025-09-10 (+7d) | 24d → 37d |  |
| 33652 | Electrical and Fire Alarm Rough-In - Level 1 | 2025-08-25 → 2025-09-02 (+8d) | 2025-09-15 → 2025-09-22 (+7d) | 21d → 34d |  |
| 33692 | Fire Suppression - Level 1 | 2025-08-25 → 2025-09-02 (+8d) | 2025-09-15 → 2025-09-22 (+7d) | 16d → 29d |  |
| 33672 | Plumbing Rough-In - Level 1 | 2025-09-04 → 2025-09-11 (+7d) | 2025-09-10 → 2025-09-17 (+7d) | 39d → 52d |  |
| 691088893 | **Level 2 - Rough-In Work** | 2025-09-04 → 2025-09-11 (+7d) | 2025-10-06 → 2025-10-13 (+7d) |  |  |
| 33712 | Mechanical Rough-In - Level 2 | 2025-09-04 → 2025-09-11 (+7d) | 2025-09-12 → 2025-09-19 (+7d) | 24d → 37d |  |
| 33732 | Plumbing Rough-In - Level 2 | 2025-09-15 → 2025-09-22 (+7d) | 2025-09-19 → 2025-09-26 (+7d) | 37d → 50d |  |
| 33722 | Electrical and Fire Alarm Rough-In - Level 2 | 2025-09-16 → 2025-09-23 (+7d) | 2025-10-06 → 2025-10-13 (+7d) | 21d → 34d |  |
| 33742 | Fire Suppression - Level 2 | 2025-09-16 → 2025-09-23 (+7d) | 2025-10-06 → 2025-10-13 (+7d) | 16d → 29d |  |
| 691088993 | **Level 3 - Rough-In Work** | 2025-09-15 → 2025-09-22 (+7d) | 2025-10-27 → 2025-11-03 (+7d) |  |  |
| 33802 | Mechanical Rough-In - Level 3 | 2025-09-15 → 2025-09-22 (+7d) | 2025-09-23 → 2025-09-30 (+7d) | 32d → 45d |  |
| 33792 | Plumbing Rough-In - Level 3 | 2025-09-24 → 2025-10-01 (+7d) | 2025-09-30 → 2025-10-07 (+7d) | 35d → 48d |  |
| 33782 | Electrical and Fire Alarm Rough-In - Level 3 | 2025-10-07 → 2025-10-14 (+7d) | 2025-10-27 → 2025-11-03 (+7d) | 21d → 34d |  |
| 33812 | Fire Suppression - Level 3 | 2025-10-07 → 2025-10-14 (+7d) | 2025-10-27 → 2025-11-03 (+7d) | 16d → 29d |  |
| 691091993 | **Janus Scope** | 2025-09-16 → 2025-09-23 (+7d) | 2025-11-17 → 2025-11-24 (+7d) |  |  |
| 33842 | Level 1 - JS | 2025-09-16 → 2025-09-23 (+7d) | 2025-10-06 → 2025-10-13 (+7d) | 16d → 29d |  |
| 33852 | Level 2 - JS | 2025-10-07 → 2025-10-14 (+7d) | 2025-10-27 → 2025-11-03 (+7d) | 16d → 29d |  |
| 33862 | Level 3 - JS | 2025-10-28 → 2025-11-04 (+7d) | 2025-11-17 → 2025-11-24 (+7d) | 16d → 29d |  |
| 691094293 | **Elevators** | 2025-11-11 → 2025-12-09 (+28d) | 2026-01-19 → 2026-02-12 (+24d) |  |  |
| 33882 | Elevator Installation | 2025-11-11 → 2025-12-09 (+28d) | 2025-12-24 → 2026-01-21 (+28d) |  | 1075, 32912, 35283 → 35163, 35283, 32912, 1075 |
| 33892 | Elevator Infill and Lobby Finishes (all Levels) | 2025-12-26 → 2026-01-22 (+27d) | 2026-01-19 → 2026-02-12 (+24d) |  |  |
| 691075093 | **Interiors** | 2025-10-07 → 2025-10-14 (+7d) | 2025-12-24 → 2026-01-02 (+9d) |  |  |
| 691074993 | **Storage Areas** | 2025-10-07 → 2025-10-14 (+7d) | 2025-12-24 → 2026-01-02 (+9d) |  |  |
| 691093393 | **Level 1 - Interiors** | 2025-10-07 → 2025-10-14 (+7d) | 2025-11-10 → 2025-11-17 (+7d) |  |  |
| 34922 | Paint Structure | 2025-10-07 → 2025-10-14 (+7d) | 2025-10-20 → 2025-10-27 (+7d) | 26d → 39d |  |
| 34882 | Flooring Trim | 2025-10-21 → 2025-10-28 (+7d) | 2025-11-03 → 2025-11-10 (+7d) | 36d → 49d |  |
| 34892 | Lighting Trim | 2025-10-21 → 2025-10-28 (+7d) | 2025-11-03 → 2025-11-10 (+7d) | 26d → 39d |  |
| 34902 | Mechanical Trim | 2025-11-04 → 2025-11-11 (+7d) | 2025-11-10 → 2025-11-17 (+7d) | 36d → 49d |  |
| 34912 | Plumbing Trim | 2025-11-04 → 2025-11-11 (+7d) | 2025-11-10 → 2025-11-17 (+7d) | 87d → 59d |  |
| 691092793 | **Level 2 -Interiors** | 2025-10-28 → 2025-11-04 (+7d) | 2025-12-03 → 2025-12-10 (+7d) |  |  |
| 34862 | Paint Structure | 2025-10-28 → 2025-11-04 (+7d) | 2025-11-10 → 2025-11-17 (+7d) | 21d → 34d |  |
| 34822 | Flooring Trim | 2025-11-11 → 2025-11-18 (+7d) | 2025-11-24 → 2025-12-03 (+9d) | 26d → 39d |  |
| 34832 | Lighting Trim | 2025-11-11 → 2025-11-18 (+7d) | 2025-11-24 → 2025-12-03 (+9d) | 21d → 34d |  |
| 34842 | Mechanical Trim | 2025-11-25 → 2025-12-04 (+9d) | 2025-12-03 → 2025-12-10 (+7d) | 26d → 39d |  |
| 34852 | Plumbing Trim | 2025-11-25 → 2025-12-04 (+9d) | 2025-12-03 → 2025-12-10 (+7d) | 26d → 39d |  |
| 691075193 | **Level 3 - Interiors** | 2025-11-18 → 2025-11-25 (+7d) | 2025-12-24 → 2026-01-02 (+9d) |  |  |
| 1082 | Paint Structure | 2025-11-18 → 2025-11-25 (+7d) | 2025-12-03 → 2025-12-10 (+7d) | 16d → 29d | 34862, 33862 → 35173, 1130, 33862, 34862 |

| ID | Task | Start | Finish | Total float | Predecessors |
| --- | --- | --- | --- | --- | --- |
| 1083 | Flooring Trim | 2025-12-04 → 2025-12-11 (+7d) | 2025-12-17 → 2025-12-24 (+7d) | 16d → 29d |  |
| 1084 | Lighting Trim | 2025-12-04 → 2025-12-11 (+7d) | 2025-12-17 → 2025-12-24 (+7d) | 16d → 29d |  |
| 1085 | Mechanical Trim | 2025-12-18 → 2025-12-26 (+8d) | 2025-12-24 → 2026-01-02 (+9d) | 16d → 29d |  |
| 1087 | Plumbing Trim | 2025-12-18 → 2025-12-26 (+8d) | 2025-12-24 → 2026-01-02 (+9d) | 16d → 29d |  |
| 691075293 | **Level 1 Office and Restrooms** | 2025-10-07 → 2025-10-14 (+7d) | 2025-12-18 → 2025-12-26 (+8d) |  |  |
| 34932 | Drywall - Office | 2025-10-07 → 2025-10-14 (+7d) | 2025-10-15 → 2025-10-22 (+7d) | 61d → 43d |  |
| 1106 | Doors & Hardware - Office | 2025-10-16 → 2025-10-23 (+7d) | 2025-10-22 → 2025-10-29 (+7d) | 61d → 43d |  |
| 1095 | Millwork - Office | 2025-10-23 → 2025-10-30 (+7d) | 2025-10-29 → 2025-11-05 (+7d) | 61d → 43d |  |
| 1096 | Flooring - Office | 2025-10-30 → 2025-11-06 (+7d) | 2025-11-05 → 2025-11-12 (+7d) | 61d → 43d |  |
| 1097 | Prime & Paint 1st Coat - Office | 2025-11-06 → 2025-11-13 (+7d) | 2025-11-12 → 2025-11-19 (+7d) | 61d → 43d |  |
| 1100 | Light Fixtures - Office | 2025-11-13 → 2025-11-20 (+7d) | 2025-11-19 → 2025-11-26 (+7d) | 80d → 62d |  |
| 1103 | Mechanical Trim Out - Office | 2025-11-13 → 2025-11-20 (+7d) | 2025-11-19 → 2025-11-26 (+7d) | 80d → 62d |  |
| 1104 | Electrical Trim Out - Office | 2025-11-13 → 2025-11-20 (+7d) | 2025-11-19 → 2025-11-26 (+7d) | 61d → 43d |  |
| 1105 | Plumbing Trim Out - Office | 2025-11-20 → 2025-12-01 (+11d) | 2025-11-26 → 2025-12-05 (+9d) | 61d → 43d |  |
| 1107 | Final Coat Paint - Office | 2025-12-01 → 2025-12-08 (+7d) | 2025-12-05 → 2025-12-12 (+7d) | 61d → 43d |  |
| 1099 | Install Appliances - Office | 2025-12-08 → 2025-12-15 (+7d) | 2025-12-09 → 2025-12-16 (+7d) | 68d → 50d |  |
| 1108 | Final Clean - Office | 2025-12-08 → 2025-12-15 (+7d) | 2025-12-12 → 2025-12-19 (+7d) | 61d → 43d |  |
| 1109 | Punch List Work - Office | 2025-12-12 → 2025-12-19 (+7d) | 2025-12-18 → 2025-12-26 (+8d) | 61d → 43d |  |
| 691082593 | **Final Sitework** | 2025-05-27 → 2025-06-20 (+24d) | 2025-10-03 → 2025-10-29 (+26d) |  |  |
| 691082693 | **Hardscapes** | 2025-05-27 → 2025-06-20 (+24d) | 2025-09-19 → 2025-10-15 (+26d) |  |  |
| 1140 | Detention Pond Fencing | 2025-05-27 → 2025-06-20 (+24d) | 2025-05-29 → 2025-06-24 (+26d) | 182d → 201d |  |
| 1131 | Striping and Signage | 2025-07-02 → 2025-10-03 (+93d) | 2025-07-02 → 2025-10-03 (+93d) | 178d → 120d |  |
| 1129 | Sidewalks | 2025-09-15 → 2025-10-09 (+24d) | 2025-09-19 → 2025-10-15 (+26d) | 103d → 102d |  |
| 691082793 | **Landscapes** | 2025-09-22 → 2025-10-16 (+24d) | 2025-10-03 → 2025-10-29 (+26d) |  |  |
| 1179 | Irrigation Systems | 2025-09-22 → 2025-10-16 (+24d) | 2025-09-26 → 2025-10-22 (+26d) | 103d → 102d | 1140, 1129 → 1129 |
| 1189 | Plantings | 2025-09-29 → 2025-10-23 (+24d) | 2025-10-03 → 2025-10-29 (+26d) | 103d → 102d |  |
| 691075893 | **Closeout** | 2026-01-20 → 2026-02-13 (+24d) | 2026-02-16 → 2026-03-12 (+24d) |  |  |
| 1111 | Commissioning | 2026-01-20 → 2026-02-13 (+24d) | 2026-02-02 → 2026-02-26 (+24d) |  | 1085, 1087, 1084, 33882, 33892 → 34912, 32922, 33892, 33882, 1084, 1087, 1085 |
| 1112 | Fire Alarm Programing/Testing | 2026-01-27 → 2026-02-20 (+24d) | 2026-02-02 → 2026-02-26 (+24d) |  |  |
| 1113 | Final Inspections | 2026-02-03 → 2026-02-27 (+24d) | 2026-02-16 → 2026-03-12 (+24d) |  | 1112, 33172, 33182 → 33426, 1109, 1099, 1103, 1100, 36466, 33182, 33172, 1112 |
| 1114 | WEO Overall / Final Punch List Work | 2026-02-03 → 2026-02-27 (+24d) | 2026-02-09 → 2026-03-05 (+24d) | 21d → 20d | 1112, 1189 → 1015, 1189, 1112 |
| 1115 | Develop Owner Punch Lists | 2026-02-10 → 2026-03-06 (+24d) | 2026-02-16 → 2026-03-12 (+24d) | 21d → 20d |  |

## Version 4 (data date 2025-07-10, saved 2025-07-11, file update_4.xer)

Note of the change: Add all project schedule files to buckets - 13 projects, MPP+XER, baseline+updates

Last finish 2026-04-09 → 2026-04-07 (-2d). Complete tasks 76 → 84.

Added:

| ID | Task | Duration | Start | Finish | Predecessors |
| --- | --- | --- | --- | --- | --- |
| A1000 | Erect Frame and Decking - L2 A1 | 5d | 2025-05-15 A | 2025-05-23 A |  |
| A1010 | Erect Frame and Decking - L2 A2 | 5d | 2025-05-27 A | 2025-06-04 A |  |
| 1 | **Level 2 Concrete** |  | 2025-07-11 | 2025-07-28 |  |
| 1 | **Pour 1 (Gridline A-J)** |  | 2025-07-11 | 2025-07-16 |  |
| A1020 | WWF and Pour Prep | 2d | 2025-07-11 | 2025-07-14 | 36756 FS-1d |
| A1040 | Form, Pour, Strip | 2d | 2025-07-15 | 2025-07-16 | A1020 |
| 2 | **Pour 2 (Gridline J-Q)** |  | 2025-07-17 | 2025-07-22 |  |
| A1050 | WWF and Pour Prep | 2d | 2025-07-17 | 2025-07-18 | A1040 |
| A1070 | Form, Pour, Strip | 2d | 2025-07-21 | 2025-07-22 | A1050 |
| 3 | **Pour 3 (Gridline Q-U)** |  | 2025-07-23 | 2025-07-28 |  |
| A1080 | WWF and Pour Prep | 2d | 2025-07-23 | 2025-07-24 | A1070 |
| A1100 | Form, Pour, Strip | 2d | 2025-07-25 | 2025-07-28 | A1080 |
| 2 | **Level 3 Concrete** |  | 2025-08-06 | 2025-08-21 |  |
| 1 | **Pour 1 (Gridline A-J)** |  | 2025-08-06 | 2025-08-11 |  |
| A1110 | Rebar and Pour Prep | 2d | 2025-08-06 | 2025-08-07 | 33562 |
| A1130 | Form, Pour, Strip | 2d | 2025-08-08 | 2025-08-11 | A1110 |
| 2 | **Pour 2 (Gridline J-Q)** |  | 2025-08-12 | 2025-08-15 |  |
| A1140 | Rebar and Pour Prep | 2d | 2025-08-12 | 2025-08-13 | A1130 |
| A1160 | Form, Pour, Strip | 2d | 2025-08-14 | 2025-08-15 | A1140 |
| 3 | **Pour 3 (Gridline Q-U)** |  | 2025-08-18 | 2025-08-21 |  |
| A1170 | Rebar and Pour Prep | 2d | 2025-08-18 | 2025-08-19 | A1160 |
| A1190 | Form, Pour, Strip | 2d | 2025-08-20 | 2025-08-21 | A1170 |
| A1200 | Veneer Stud Framing | 5d | 2025-10-06 | 2025-10-10 | 36596 |

Removed: 33284 MEP Sleeve Install - L2 A1 - coordinate vs core driller; 33285 Rebar and Pour Prep - L2 A1; 33286 Concrete Pour, Saw Cut and Strip - L2 A1; 36106 MEP Sleeve Install - L2 A2; 36116 Rebar and Pour Prep - L2 A2; 36126 Concrete Pour, Saw Cut and Strip - L2 A2; 36136 MEP Sleeve Install - L2 A3; 36146 Rebar and Pour Prep - L2 A3; 36156 Concrete Pour, Saw Cut and Strip - L2 A3; 36766 MEP Sleeve Install - L2 A4; 36776 Rebar and Pour Prep - L2 A4; 36786 Concrete Pour, Saw Cut and Strip - L2 A4; 36216 MEP Sleeve Install - L3 A1; 36226 Rebar and Pour Prep - L3 A1; 36236 Concrete Pour, Saw Cut and Strip - L3 A1; 36246 MEP Sleeve Install - L3 A2; 36256 Rebar and Pour Prep - L3 A2; 36266 Concrete Pour, Saw Cut and Strip - L3 A2; 36186 MEP Sleeve Install - L3 A3; 36196 Rebar and Pour Prep - L3 A3; 36206 Concrete Pour, Saw Cut and Strip - L3 A3; 36386 MEP Sleeve Install - RA1; 36336 MEP Sleeve Install - RA2; 36436 MEP Sleeve Install - RA3

Changed:

| ID | Task | Start | Finish | Complete | Total float | Predecessors |
| --- | --- | --- | --- | --- | --- | --- |
| 691056193 | **Project Summary** |  | 2026-04-09 → 2026-04-07 (-2d) |  |  |  |
| 691056493 | **Contract Milestones** |  | 2026-04-09 → 2026-04-07 (-2d) |  |  |  |
| SC | Project SC - Before Weather Impacts | 2026-03-13 → 2026-03-11 (-2d) | 2026-03-13 → 2026-03-11 (-2d) |  |  |  |
| PSC | Project Substantially Complete - After Weather Impacts | 2026-03-24 → 2026-03-20 (-4d) | 2026-03-24 → 2026-03-20 (-4d) |  |  |  |
| PSC0001 | Operational Setup | 2026-03-25 → 2026-03-23 (-2d) | 2026-04-09 → 2026-04-07 (-2d) |  |  |  |
| PSC0002 | Project Open | 2026-04-09 → 2026-04-07 (-2d) | 2026-04-09 → 2026-04-07 (-2d) |  |  |  |
| 691056293 | **Construction Milestones** |  | 2025-11-07 → 2025-12-05 (+28d) |  |  |  |
| 1010 | Structure Complete | 2025-10-10 → 2025-09-04 (-36d) | 2025-10-10 → 2025-09-04 (-36d) |  | 115d → 139d |  |
| 1016 | Building Dry In | 2025-11-07 → 2025-10-02 (-36d) | 2025-11-07 → 2025-10-02 (-36d) |  | 93d → 117d |  |
| 1015 | Exterior Work Complete | 2025-11-07 → 2025-12-05 (+28d) | 2025-11-07 → 2025-12-05 (+28d) |  | 95d → 75d |  |
| 691103693 | **Schedule Impacts** |  | 2026-03-24 → 2026-03-20 (-4d) |  |  |  |
| 691103793 | **Weather Delays** |  | 2026-03-24 → 2026-03-20 (-4d) |  |  |  |
| 1027 | Contract Weather Days - 10 Days | 2026-03-13 → 2026-03-11 (-2d) | 2026-03-24 → 2026-03-20 (-4d) |  |  |  |
| 691060893 | **Pre-Construciton** |  | 2025-11-13 → 2025-12-04 (+21d) |  |  |  |
| 691060793 | **Procurement** |  | 2025-11-13 → 2025-12-04 (+21d) |  |  |  |
| 32912 | Elevator (By Owner) |  | 2025-11-13 → 2025-12-04 (+21d) |  | 15d → 0d |  |
| 32922 | Electric Room MDP |  |  | 68% → 76% | 112d → 110d |  |
| 691065093 | **Construction** |  | 2026-03-12 → 2026-03-10 (-2d) |  |  |  |
| 691061993 | **Site Development** |  | 2025-12-08 → 2025-11-04 (-34d) |  |  |  |
| 691098893 | **Site Infrastructure** |  | 2025-08-19 → 2025-07-28 (-22d) |  |  |  |
| 36746 | Install Domestic Water (City Install Domestic Tap - 5/2) |  | 2025-07-31 → 2025-07-08 A (-23d) | 0% → 100% | 84d → none |  |
| 33102 | Install Storm Main (Pond to STA: 2+42.32) | 2025-08-01 → 2025-07-10 (-22d) | 2025-08-12 → 2025-07-21 (-22d) |  | 84d → 98d |  |
| 1050 | Install Storm Secondary | 2025-08-13 → 2025-07-22 (-22d) | 2025-08-19 → 2025-07-28 (-22d) |  | 147d → 161d |  |
| 691098993 | **Site Civil** |  | 2025-12-08 → 2025-11-04 (-34d) |  |  |  |
| 35283 | Electrical Main to Building | 2025-12-02 → 2025-10-29 (-34d) | 2025-12-08 → 2025-11-04 (-34d) |  | 0d → 20d |  |
| 691099993 | **Paving** | 2025-08-13 → 2025-07-22 (-22d) | 2025-10-02 → 2025-09-10 (-22d) |  |  |  |
| 35313 | Survey - Trash Enclosure | 2025-08-13 → 2025-07-22 (-22d) | 2025-08-13 → 2025-07-22 (-22d) |  | 84d → 98d |  |
| 35323 | Excavate - Trash Enclosure | 2025-08-14 → 2025-07-23 (-22d) | 2025-08-14 → 2025-07-23 (-22d) |  | 84d → 98d |  |
| 35333 | FRPS Footer - Trash Enclosure | 2025-08-15 → 2025-07-24 (-22d) | 2025-08-19 → 2025-07-28 (-22d) |  | 84d → 98d |  |
| 35343 | FRPS Stem Wall - Trash Enclosure | 2025-08-20 → 2025-07-29 (-22d) | 2025-08-22 → 2025-07-31 (-22d) |  | 84d → 98d |  |
| 35344 | Trash Enclosure Masonry | 2025-08-25 → 2025-08-01 (-24d) | 2025-08-29 → 2025-08-07 (-22d) |  | 84d → 98d |  |
| 1130 | Trash Enclosure Gates | 2025-09-02 → 2025-08-08 (-25d) | 2025-09-08 → 2025-08-14 (-25d) |  | 84d → 98d |  |
| 35353 | Backfill and compact - Trash Enclosure | 2025-09-02 → 2025-08-08 (-25d) | 2025-09-02 → 2025-08-08 (-25d) |  | 120d → 134d |  |
| 1180 | Irrigation sleeving | 2025-09-03 → 2025-08-11 (-23d) | 2025-09-05 → 2025-08-13 (-23d) |  | 121d → 135d |  |
| 35363 | Survey - Grid Line K, South | 2025-09-03 → 2025-08-11 (-23d) | 2025-09-03 → 2025-08-11 (-23d) |  | 120d → 134d |  |
| 35373 | Finish Grade - Grid Line K, South | 2025-09-04 → 2025-08-12 (-23d) | 2025-09-08 → 2025-08-14 (-25d) |  | 120d → 134d |  |
| 35383 | FRPS Curb and gutter - Grid Line K, South | 2025-09-09 → 2025-08-15 (-25d) | 2025-09-12 → 2025-08-20 (-23d) |  | 120d → 134d |  |
| 35384 | FRPS Sidewalk and Ballards - Grid Line K, South | 2025-09-15 → 2025-08-21 (-25d) | 2025-09-17 → 2025-08-25 (-23d) |  | 120d → 134d |  |
| 35393 | Survey - Grid Line K, North | 2025-09-15 → 2025-08-21 (-25d) | 2025-09-15 → 2025-08-21 (-25d) |  | 120d → 134d |  |
| 35403 | Finish Grade - Grid Line K, North | 2025-09-16 → 2025-08-22 (-25d) | 2025-09-17 → 2025-08-25 (-23d) |  | 120d → 134d |  |
| 35413 | FRPS Curb, Gutter and Trash Enclosure Slab - Grid Line K, North | 2025-09-18 → 2025-08-26 (-23d) | 2025-09-23 → 2025-08-29 (-25d) |  | 120d → 134d |  |
| 35414 | FRPS Sidewalk and Ballards - Grid Line K, North | 2025-09-24 → 2025-09-02 (-22d) | 2025-09-26 → 2025-09-04 (-22d) |  | 120d → 134d |  |
| 35423 | Asphalt Bottom Mat | 2025-09-29 → 2025-09-05 (-24d) | 2025-09-30 → 2025-09-08 (-22d) |  | 120d → 134d |  |
| 36026 | Asphalt Patch and Top Mat | 2025-10-01 → 2025-09-09 (-22d) | 2025-10-02 → 2025-09-10 (-22d) |  | 120d → 134d |  |
| 36716 | SOG FRPS - Area 3 |  | 2025-06-25 → 2025-06-23 A (-2d) | 43% → 100% | 2d → none |  |
| 35233 | SOG FRPS - Area 4 | 2025-06-26 → 2025-06-30 A (+4d) | 2025-07-07 A | 0% → 100% | 2d → none |  |
| 691074393 | **Superstructure** |  | 2025-10-10 → 2025-09-05 (-35d) |  |  |  |
| 691074993 | **Structural Metal Framing and Deck** |  | 2025-10-10 → 2025-09-05 (-35d) |  |  |  |
| 691084693 | **Level 2 Deck (level 1 Walls)** |  | 2025-07-31 → 2025-07-11 (-20d) |  |  |  |
| 691087393 | **L2 A1** |  | 2025-07-23 → 2025-05-23 (-61d) |  |  |  |
| 691087493 | **L2 A2** |  | 2025-07-28 → 2025-06-26 (-32d) |  |  |  |
| 36796 | Stop Work - Steel Submit Review and Fabrication |  | 2025-06-27 → 2025-06-26 A (-1d) | 14% → 100% | 10d → none |  |
| 36166 | Resume - Erect Frame and Decking - L2 A2 | 2025-06-30 → 2025-06-26 A (-4d) | 2025-06-30 → 2025-06-26 A (-4d) | 0% → 100% | 10d → none |  |
| 691111193 | **L2 A3** | 2025-07-01 → 2025-06-26 (-5d) | 2025-07-31 → 2025-07-07 (-24d) |  |  |  |
| 36096 | Erect Frame and Decking - L2 A3 | 2025-07-01 → 2025-06-26 A (-5d) | 2025-07-07 A | 0% → 100% | 13d → none |  |
| 1 | **L2 A4** |  | 2025-07-24 → 2025-07-11 (-13d) |  |  |  |
| 36756 | Erect Frame and Decking - L2 A4 | 2025-07-08 A |  | 0% → 50% | 2d → 20d | 35233 → 36096, 35233 |
| 691084193 | **Level 3 Deck (Level 2 Walls)** | 2025-07-29 → 2025-07-17 (-12d) | 2025-08-28 → 2025-08-06 (-22d) |  |  |  |
| 691088093 | **L3 A1** | 2025-07-29 → 2025-07-17 (-12d) | 2025-08-19 → 2025-07-25 (-25d) |  |  |  |
| 33233 | Erect Frame and Decking - L3 A1 | 2025-07-29 → 2025-07-17 (-12d) | 2025-08-06 → 2025-07-25 (-12d) |  | 0d → 20d | Concrete Pour, Saw Cut and Strip - L2 A2 → A1040 |
| 691088193 | **L3 A2** | 2025-08-07 → 2025-07-28 (-10d) | 2025-08-28 → 2025-08-05 (-23d) |  |  |  |
| 33562 | Erect Frame and Decking - L3 A2 | 2025-08-07 → 2025-07-28 (-10d) | 2025-08-15 → 2025-08-05 (-10d) |  | 0d → 20d | Concrete Pour, Saw Cut and Strip - L2 A2, 33233 → 33233, A1070 |
| 691112293 | **L3 A3** | 2025-08-01 → 2025-07-29 (-3d) | 2025-08-22 → 2025-08-06 (-16d) |  |  |  |
| 36176 | Erect Frame and Decking - L3 A3 | 2025-08-01 → 2025-07-29 (-3d) | 2025-08-11 → 2025-08-06 (-5d) |  | 4d → 91d | Concrete Pour, Saw Cut and Strip - L2 A3, Concrete Pour, Saw Cut and Strip - L2 A4 → A1100 |
| 691084093 | **Roof Deck (Level 3 Walls)** | 2025-08-29 → 2025-08-12 (-17d) | 2025-10-10 → 2025-09-05 (-35d) |  |  |  |
| 691113193 | **Roof Area 1** | 2025-08-29 → 2025-08-12 (-17d) | 2025-09-12 → 2025-08-22 (-21d) |  |  |  |
| 36376 | Erect Frame and Decking - RA1 | 2025-08-29 → 2025-08-12 (-17d) | 2025-09-05 → 2025-08-18 (-18d) |  | 0d → 88d | Concrete Pour, Saw Cut and Strip - L3 A2, Concrete Pour, Saw Cut and Strip - L3 A1, Concrete Pour, Saw Cut and Strip - L3 A3 → 36176, A1130 |
| 36396 | Install Curbs and Roof Supports - RA1 | 2025-09-08 → 2025-08-19 (-20d) | 2025-09-09 → 2025-08-20 (-20d) |  | 1d → 148d | 36376, MEP Sleeve Install - RA1 SS → 36376 |
| 36406 | Decking Closure - RA1 | 2025-09-11 → 2025-08-21 (-21d) | 2025-09-12 → 2025-08-22 (-21d) |  | 0d → 148d | MEP Sleeve Install - RA1, 36396 → 36396 |
| 691112693 | **Roof Area 2** | 2025-09-15 → 2025-08-25 (-21d) | 2025-09-26 → 2025-09-05 (-21d) |  |  |  |

| ID | Task | Start | Finish | Duration | Total float | Predecessors |
| --- | --- | --- | --- | --- | --- | --- |
| 36326 | Erect Frame and Decking - RA2 | 2025-09-15 → 2025-08-25 (-21d) | 2025-09-19 → 2025-08-29 (-21d) |  | 0d → 148d | 36406 → A1160, 36406 |
| 36346 | Install Curbs and Roof Supports - RA2 | 2025-09-22 → 2025-09-02 (-20d) | 2025-09-23 → 2025-09-03 (-20d) |  | 1d → 148d | 36326, MEP Sleeve Install - RA2 SS → 36326 |
| 36356 | Decking Closure - RA2 | 2025-09-25 → 2025-09-04 (-21d) | 2025-09-26 → 2025-09-05 (-21d) |  | 0d → 148d | MEP Sleeve Install - RA2, 36346 → 36346 |
| 691113693 | **Roof Area 3** | 2025-09-29 → 2025-08-22 (-38d) | 2025-10-10 → 2025-09-04 (-36d) |  |  |  |
| 36426 | Erect Frame and Decking - RA3 | 2025-09-29 → 2025-08-22 (-38d) | 2025-10-03 → 2025-08-28 (-36d) |  | 0d → 20d | 36356 → A1190 |
| 36446 | Install Curbs and Roof Supports - RA3 | 2025-10-06 → 2025-08-29 (-38d) | 2025-10-07 → 2025-09-02 (-35d) |  | 20d → 29d | MEP Sleeve Install - RA3 SS → 36426 |
| 36456 | Decking Closure - RA3 | 2025-10-09 → 2025-09-03 (-36d) | 2025-10-10 → 2025-09-04 (-36d) |  | 19d → 29d | MEP Sleeve Install - RA3, 36446 → 36446 |
| 691075793 | **CMU Cores** |  | 2025-08-08 → 2025-08-27 (+19d) |  |  |  |
| 35144 | Steel Stair Install - Stair B |  | 2025-08-05 → 2025-08-22 (+17d) |  | 83d → 68d |  |
| 35173 | Steel Stair Install - Stair A | 2025-06-20 → 2025-07-10 (+20d) | 2025-07-01 → 2025-07-21 (+20d) |  | 131d → 116d |  |
| 35163 | Elevator Shaft Hoist beams and Spreader Tubes | 2025-08-06 → 2025-08-25 (+19d) | 2025-08-08 → 2025-08-27 (+19d) |  | 83d → 68d |  |
| 691074793 | **Exterior Skin** | 2025-09-08 → 2025-07-29 (-41d) | 2026-01-26 → 2025-12-23 (-34d) |  |  |  |
| 691099793 | **Roofing** | 2025-10-13 → 2025-09-05 (-38d) | 2025-11-07 → 2025-10-02 (-36d) |  |  |  |
| 1075 | Roof Install | 2025-10-13 → 2025-09-05 (-38d) | 2025-11-07 → 2025-10-02 (-36d) |  | 19d → 43d |  |
| 1076 | Backing and Blocking (parapet cap, nailers and signage supports) | 2025-10-13 → 2025-09-05 (-38d) | 2025-10-15 → 2025-09-09 (-36d) |  | 110d → 134d |  |
| 691091593 | **North Elevation** | 2025-10-06 → 2025-07-29 (-69d) | 2025-12-01 → 2025-10-28 (-34d) |  |  |  |
| 34783 | Veneer Stud Framing | 2025-10-06 → 2025-07-29 (-69d) | 2025-10-10 → 2025-08-04 (-67d) |  | 0d → 38d | 36426 → A1100 |
| 36476 | Sheathing | 2025-10-13 → 2025-08-29 (-45d) | 2025-10-17 → 2025-09-05 (-42d) |  | 0d → 20d |  |
| 36486 | Air/Weather Barrier | 2025-10-20 → 2025-09-08 (-42d) | 2025-10-21 → 2025-09-09 (-42d) |  | 0d → 20d |  |
| 36496 | Masonry Veneer | 2025-10-22 → 2025-09-10 (-42d) | 2025-11-11 → 2025-09-30 (-42d) |  | 0d → 20d |  |
| 36516 | EIFS | 2025-11-12 → 2025-10-01 (-42d) | 2025-11-20 → 2025-10-21 (-30d) | 7d → 15d | 0d → 20d |  |
| 36506 | Exterior Metal Panel | 2025-11-21 → 2025-10-22 (-30d) | 2025-12-01 → 2025-10-28 (-34d) |  | 0d → 20d |  |
| 691091693 | **South Elevation** | 2025-10-20 → 2025-09-08 (-42d) | 2026-01-08 → 2025-12-05 (-34d) |  |  |  |
| 33433 | Veneer Stud Framing | 2025-10-20 → 2025-09-08 (-42d) | 2025-10-24 → 2025-09-12 (-42d) |  | 40d → 50d |  |
| 36526 | Sheathing | 2025-10-27 → 2025-09-15 (-42d) | 2025-10-31 → 2025-09-19 (-42d) |  | 40d → 50d |  |
| 36536 | Air/Weather Barrier | 2025-11-03 → 2025-09-22 (-42d) | 2025-11-04 → 2025-09-23 (-42d) |  | 40d → 60d |  |
| 36546 | Masonry Veneer | 2025-11-12 → 2025-10-01 (-42d) | 2025-12-04 → 2025-10-21 (-44d) |  | 35d → 55d |  |
| 36566 | EIFS | 2025-12-05 → 2025-10-22 (-44d) | 2025-12-15 → 2025-11-11 (-34d) | 7d → 15d | 35d → 55d |  |
| 36556 | Exterior Metal Panel | 2025-12-16 → 2025-11-12 (-34d) | 2025-12-22 → 2025-11-18 (-34d) |  | 35d → 55d |  |
| 33424 | Backing, Blocking and Flashing | 2025-12-23 → 2025-11-19 (-34d) | 2025-12-30 → 2025-11-25 (-35d) |  | 35d → 55d |  |
| 33425 | Storefront Install | 2025-12-31 → 2025-11-26 (-35d) | 2026-01-05 → 2025-12-02 (-34d) |  | 35d → 55d |  |
| 33426 | Canopy Install | 2026-01-06 → 2025-12-03 (-34d) | 2026-01-08 → 2025-12-05 (-34d) |  | 35d → 55d |  |
| 691115793 | **East Elevation** | 2025-11-03 → 2025-09-22 (-42d) | 2026-01-26 → 2025-12-23 (-34d) |  |  |  |
| 36586 | Veneer Stud Framing | 2025-11-03 → 2025-09-22 (-42d) | 2025-11-07 → 2025-09-26 (-42d) |  | 51d → 50d |  |
| 36596 | Sheathing | 2025-11-10 → 2025-09-29 (-42d) | 2025-11-14 → 2025-10-03 (-42d) |  | 51d → 50d |  |
| 36606 | Air/Weather Barrier | 2025-11-17 → 2025-10-06 (-42d) | 2025-11-18 → 2025-10-07 (-42d) |  | 51d → 71d |  |
| 36616 | Masonry Veneer | 2025-12-05 → 2025-10-22 (-44d) | 2025-12-26 → 2025-11-11 (-45d) |  | 41d → 61d |  |
| 36636 | EIFS | 2025-12-29 → 2025-11-12 (-47d) | 2026-01-07 → 2025-12-04 (-34d) | 7d → 15d | 41d → 61d |  |
| 36626 | Exterior Metal Panel | 2026-01-08 → 2025-12-05 (-34d) | 2026-01-14 → 2025-12-11 (-34d) |  | 41d → 61d |  |
| 36646 | Backing, Blocking and Flashing | 2026-01-15 → 2025-12-12 (-34d) | 2026-01-16 → 2025-12-15 (-32d) |  | 41d → 61d |  |
| 36676 | Storefront Install | 2026-01-19 → 2025-12-16 (-34d) | 2026-01-21 → 2025-12-18 (-34d) |  | 41d → 61d |  |
| 36686 | Canopy Install | 2026-01-22 → 2025-12-19 (-34d) | 2026-01-26 → 2025-12-23 (-34d) |  | 41d → 61d |  |
| 691085593 | **West Elevation** | 2025-09-08 → 2025-10-06 (+28d) | 2025-10-24 → 2025-12-12 (+49d) |  |  |  |
| 36296 | Sheathing | 2025-09-08 → 2025-10-13 (+35d) | 2025-09-12 → 2025-10-17 (+35d) |  | 85d → 50d | 36376 → A1200, 36376 |
| 36306 | Air/Weather Barrier and Insulation | 2025-09-15 → 2025-10-20 (+35d) | 2025-09-17 → 2025-10-22 (+35d) |  | 85d → 50d |  |
| 33332 | Masonry Veneer | 2025-09-18 → 2025-10-23 (+35d) | 2025-10-08 → 2025-11-12 (+35d) |  | 85d → 50d | 36306, Concrete Pour, Saw Cut and Strip - L3 A2 → 36306 |
| 34802 | EIFS | 2025-10-09 → 2025-11-13 (+35d) | 2025-10-17 → 2025-12-05 (+49d) | 7d → 15d | 85d → 50d |  |
| 36466 | Exterior Metal Panel | 2025-10-20 → 2025-12-08 (+49d) | 2025-10-24 → 2025-12-12 (+49d) |  | 85d → 50d |  |
| 691091593 | **Rough-In** | 2025-08-25 → 2025-07-29 (-27d) | 2025-11-03 → 2025-11-06 (+3d) |  |  |  |
| 691088793 | **Level 1 - Rough-In Work** | 2025-08-25 → 2025-07-29 (-27d) | 2025-09-22 → 2025-09-25 (+3d) |  |  |  |
| 33692 | Fire Suppression - Level 1 | 2025-09-02 → 2025-07-29 (-35d) | 2025-09-22 → 2025-08-18 (-35d) |  | 29d → 51d | 33632 → A1100 |
| 33632 | Interior Wall Framing - Level 1 | 2025-08-25 → 2025-08-22 (-3d) | 2025-08-29 → 2025-08-28 (-1d) |  |  | Concrete Pour, Saw Cut and Strip - L3 A3 → A1190 |
| 33642 | Mechanical Rough-In - Level 1 | 2025-09-02 → 2025-08-29 (-4d) | 2025-09-10 → 2025-09-09 (-1d) |  | 37d → 29d |  |
| 33652 | Electrical and Fire Alarm Rough-In - Level 1 | 2025-09-02 → 2025-09-05 (+3d) | 2025-09-22 → 2025-09-25 (+3d) |  | 34d → 29d | 33632 → 36456 |
| 33672 | Plumbing Rough-In - Level 1 | 2025-09-11 → 2025-09-10 (-1d) | 2025-09-17 → 2025-09-16 (-1d) |  | 52d → 51d |  |
| 691088893 | **Level 2 - Rough-In Work** | 2025-09-11 → 2025-09-10 (-1d) | 2025-10-13 → 2025-10-16 (+3d) |  |  |  |
| 33712 | Mechanical Rough-In - Level 2 | 2025-09-11 → 2025-09-10 (-1d) | 2025-09-19 → 2025-09-18 (-1d) |  | 37d → 29d |  |
| 33742 | Fire Suppression - Level 2 | 2025-09-23 → 2025-09-10 (-13d) | 2025-10-13 → 2025-09-30 (-13d) |  | 29d → 36d |  |
| 33732 | Plumbing Rough-In - Level 2 | 2025-09-22 → 2025-09-19 (-3d) | 2025-09-26 → 2025-09-25 (-1d) |  | 50d → 49d |  |
| 33722 | Electrical and Fire Alarm Rough-In - Level 2 | 2025-09-23 → 2025-09-26 (+3d) | 2025-10-13 → 2025-10-16 (+3d) |  | 34d → 29d |  |
| 691088993 | **Level 3 - Rough-In Work** | 2025-09-22 → 2025-09-19 (-3d) | 2025-11-03 → 2025-11-06 (+3d) |  |  |  |
| 33802 | Mechanical Rough-In - Level 3 | 2025-09-22 → 2025-09-19 (-3d) | 2025-09-30 → 2025-09-29 (-1d) |  | 45d → 44d |  |
| 33792 | Plumbing Rough-In - Level 3 | 2025-10-01 → 2025-09-30 (-1d) | 2025-10-07 → 2025-10-06 (-1d) |  | 48d → 47d |  |
| 33812 | Fire Suppression - Level 3 | 2025-10-14 → 2025-10-01 (-13d) | 2025-11-03 → 2025-10-21 (-13d) |  | 29d → 36d |  |
| 33782 | Electrical and Fire Alarm Rough-In - Level 3 | 2025-10-14 → 2025-10-17 (+3d) | 2025-11-03 → 2025-11-06 (+3d) |  | 34d → 29d |  |
| 691091993 | **Janus Scope** | 2025-09-23 → 2025-09-19 (-4d) | 2025-11-24 → 2025-11-20 (-4d) |  |  |  |
| 33842 | Level 1 - JS | 2025-09-23 → 2025-09-19 (-4d) | 2025-10-13 → 2025-10-09 (-4d) |  |  | 33692, 35493, 33652 FS-5d → 36456, 33712 |
| 33852 | Level 2 - JS | 2025-10-14 → 2025-10-10 (-4d) | 2025-11-03 → 2025-10-30 (-4d) |  |  |  |
| 33862 | Level 3 - JS | 2025-11-04 → 2025-10-31 (-4d) | 2025-11-24 → 2025-11-20 (-4d) |  |  |  |
| 691094293 | **Elevators** | 2025-12-09 → 2025-12-05 (-4d) | 2026-02-12 → 2026-02-10 (-2d) |  |  |  |

| ID | Task | Start | Finish | Total float | Predecessors |
| --- | --- | --- | --- | --- | --- |
| 33882 | Elevator Installation | 2025-12-09 → 2025-12-05 (-4d) | 2026-01-21 → 2026-01-19 (-2d) |  |  |
| 33892 | Elevator Infill and Lobby Finishes (all Levels) | 2026-01-22 → 2026-01-20 (-2d) | 2026-02-12 → 2026-02-10 (-2d) |  |  |
| 691075093 | **Interiors** | 2025-10-14 → 2025-07-10 (-96d) | 2026-01-02 → 2025-12-30 (-3d) |  |  |
| 691074993 | **Storage Areas** | 2025-10-14 → 2025-07-10 (-96d) | 2026-01-02 → 2025-12-30 (-3d) |  |  |
| 691093393 | **Level 1 - Interiors** | 2025-10-14 → 2025-07-10 (-96d) | 2025-11-17 → 2025-08-13 (-96d) |  |  |
| 34922 | Paint Structure | 2025-10-14 → 2025-07-10 (-96d) | 2025-10-27 → 2025-07-23 (-96d) | 39d → 104d | 33842 → none |
| 34882 | Flooring Trim | 2025-10-28 → 2025-07-24 (-96d) | 2025-11-10 → 2025-08-06 (-96d) | 49d → 114d |  |
| 34892 | Lighting Trim | 2025-10-28 → 2025-07-24 (-96d) | 2025-11-10 → 2025-08-06 (-96d) | 39d → 104d |  |
| 34902 | Mechanical Trim | 2025-11-11 → 2025-08-07 (-96d) | 2025-11-17 → 2025-08-13 (-96d) | 49d → 114d |  |
| 34912 | Plumbing Trim | 2025-11-11 → 2025-08-07 (-96d) | 2025-11-17 → 2025-08-13 (-96d) | 59d → 124d |  |
| 691092793 | **Level 2 -Interiors** | 2025-11-04 → 2025-07-24 (-103d) | 2025-12-10 → 2025-08-27 (-105d) |  |  |
| 34862 | Paint Structure | 2025-11-04 → 2025-07-24 (-103d) | 2025-11-17 → 2025-08-06 (-103d) | 34d → 104d | 33852, 34922 → 34922 |
| 34822 | Flooring Trim | 2025-11-18 → 2025-08-07 (-103d) | 2025-12-03 → 2025-08-20 (-105d) | 39d → 109d |  |
| 34832 | Lighting Trim | 2025-11-18 → 2025-08-07 (-103d) | 2025-12-03 → 2025-08-20 (-105d) | 34d → 104d |  |
| 34842 | Mechanical Trim | 2025-12-04 → 2025-08-21 (-105d) | 2025-12-10 → 2025-08-27 (-105d) | 39d → 109d |  |
| 34852 | Plumbing Trim | 2025-12-04 → 2025-08-21 (-105d) | 2025-12-10 → 2025-08-27 (-105d) | 39d → 109d |  |
| 691075193 | **Level 3 - Interiors** | 2025-11-25 → 2025-11-21 (-4d) | 2026-01-02 → 2025-12-30 (-3d) |  |  |
| 1082 | Paint Structure | 2025-11-25 → 2025-11-21 (-4d) | 2025-12-10 → 2025-12-08 (-2d) |  |  |
| 1083 | Flooring Trim | 2025-12-11 → 2025-12-09 (-2d) | 2025-12-24 → 2025-12-22 (-2d) |  |  |
| 1084 | Lighting Trim | 2025-12-11 → 2025-12-09 (-2d) | 2025-12-24 → 2025-12-22 (-2d) |  |  |
| 1085 | Mechanical Trim | 2025-12-26 → 2025-12-23 (-3d) | 2026-01-02 → 2025-12-30 (-3d) |  |  |
| 1087 | Plumbing Trim | 2025-12-26 → 2025-12-23 (-3d) | 2026-01-02 → 2025-12-30 (-3d) |  |  |
| 691075293 | **Level 1 Office and Restrooms** | 2025-10-14 → 2025-07-10 (-96d) | 2025-12-26 → 2025-09-19 (-98d) |  |  |
| 34932 | Drywall - Office | 2025-10-14 → 2025-07-10 (-96d) | 2025-10-22 → 2025-07-18 (-96d) | 43d → 108d | 33842 → none |
| 1106 | Doors & Hardware - Office | 2025-10-23 → 2025-07-21 (-94d) | 2025-10-29 → 2025-07-25 (-96d) | 43d → 108d |  |
| 1095 | Millwork - Office | 2025-10-30 → 2025-07-28 (-94d) | 2025-11-05 → 2025-08-01 (-96d) | 43d → 108d |  |
| 1096 | Flooring - Office | 2025-11-06 → 2025-08-04 (-94d) | 2025-11-12 → 2025-08-08 (-96d) | 43d → 108d |  |
| 1097 | Prime & Paint 1st Coat - Office | 2025-11-13 → 2025-08-11 (-94d) | 2025-11-19 → 2025-08-15 (-96d) | 43d → 108d |  |
| 1100 | Light Fixtures - Office | 2025-11-20 → 2025-08-18 (-94d) | 2025-11-26 → 2025-08-22 (-96d) | 62d → 127d |  |
| 1103 | Mechanical Trim Out - Office | 2025-11-20 → 2025-08-18 (-94d) | 2025-11-26 → 2025-08-22 (-96d) | 62d → 127d |  |
| 1104 | Electrical Trim Out - Office | 2025-11-20 → 2025-08-18 (-94d) | 2025-11-26 → 2025-08-22 (-96d) | 43d → 108d |  |
| 1105 | Plumbing Trim Out - Office | 2025-12-01 → 2025-08-25 (-98d) | 2025-12-05 → 2025-08-29 (-98d) | 43d → 108d |  |
| 1107 | Final Coat Paint - Office | 2025-12-08 → 2025-09-02 (-97d) | 2025-12-12 → 2025-09-08 (-95d) | 43d → 108d |  |
| 1099 | Install Appliances - Office | 2025-12-15 → 2025-09-09 (-97d) | 2025-12-16 → 2025-09-10 (-97d) | 50d → 115d |  |
| 1108 | Final Clean - Office | 2025-12-15 → 2025-09-09 (-97d) | 2025-12-19 → 2025-09-15 (-95d) | 43d → 108d |  |
| 1109 | Punch List Work - Office | 2025-12-19 → 2025-09-15 (-95d) | 2025-12-26 → 2025-09-19 (-98d) | 43d → 108d |  |
| 691082593 | **Final Sitework** | 2025-06-20 → 2025-07-10 (+20d) | 2025-10-29 → 2025-12-05 (+37d) |  |  |
| 691082693 | **Hardscapes** | 2025-06-20 → 2025-07-10 (+20d) | 2025-10-15 → 2025-11-19 (+35d) |  |  |
| 1140 | Detention Pond Fencing | 2025-06-20 → 2025-07-10 (+20d) | 2025-06-24 → 2025-07-14 (+20d) | 201d → 186d |  |
| 1131 | Striping and Signage | 2025-10-03 → 2025-09-11 (-22d) | 2025-10-03 → 2025-09-11 (-22d) | 120d → 134d |  |
| 1129 | Sidewalks | 2025-10-09 → 2025-11-13 (+35d) | 2025-10-15 → 2025-11-19 (+35d) | 102d → 75d |  |
| 691082793 | **Landscapes** | 2025-10-16 → 2025-11-20 (+35d) | 2025-10-29 → 2025-12-05 (+37d) |  |  |
| 1179 | Irrigation Systems | 2025-10-16 → 2025-11-20 (+35d) | 2025-10-22 → 2025-11-26 (+35d) | 102d → 75d |  |
| 1189 | Plantings | 2025-10-23 → 2025-12-01 (+39d) | 2025-10-29 → 2025-12-05 (+37d) | 102d → 75d |  |
| 691075893 | **Closeout** | 2026-02-13 → 2026-02-11 (-2d) | 2026-03-12 → 2026-03-10 (-2d) |  |  |
| 1111 | Commissioning | 2026-02-13 → 2026-02-11 (-2d) | 2026-02-26 → 2026-02-24 (-2d) |  |  |
| 1112 | Fire Alarm Programing/Testing | 2026-02-20 → 2026-02-18 (-2d) | 2026-02-26 → 2026-02-24 (-2d) |  |  |
| 1113 | Final Inspections | 2026-02-27 → 2026-02-25 (-2d) | 2026-03-12 → 2026-03-10 (-2d) |  |  |
| 1114 | WEO Overall / Final Punch List Work | 2026-02-27 → 2026-02-25 (-2d) | 2026-03-05 → 2026-03-03 (-2d) |  |  |
| 1115 | Develop Owner Punch Lists | 2026-03-06 → 2026-03-04 (-2d) | 2026-03-12 → 2026-03-10 (-2d) |  |  |

## Version 5 (data date 2025-08-01, saved 2025-08-01, file update_5.xer)

Note of the change: Add all project schedule files to buckets - 13 projects, MPP+XER, baseline+updates

Last finish stays 2026-04-07. Complete tasks 84 → 96.

Changed:

| ID | Task | Start | Finish | Duration | Complete | Total float | Predecessors |
| --- | --- | --- | --- | --- | --- | --- | --- |
| 691056293 | **Construction Milestones** |  | 2025-12-05 → 2025-11-26 (-9d) |  |  |  |  |
| 1010 | Structure Complete | 2025-09-04 → 2025-08-27 (-8d) | 2025-09-04 → 2025-08-27 (-8d) |  |  | 139d → 144d |  |
| 1016 | Building Dry In | 2025-10-02 → 2025-09-25 (-7d) | 2025-10-02 → 2025-09-25 (-7d) |  |  | 117d → 122d |  |
| 1015 | Exterior Work Complete | 2025-12-05 → 2025-11-26 (-9d) | 2025-12-05 → 2025-11-26 (-9d) |  |  | 75d → 80d |  |
| 32922 | Electric Room MDP |  |  |  | 76% → 86% |  |  |
| 32912 | Elevator (By Owner) | 2024-08-16 A → 2024-08-29 A (+13d) |  |  | 38% → 48% |  |  |
| 691061993 | **Site Development** |  | 2025-11-04 → 2025-10-21 (-14d) |  |  |  |  |
| 691098893 | **Site Infrastructure** |  | 2025-07-28 → 2025-08-15 (+18d) |  |  |  |  |
| 33102 | Install Storm Main (Pond to STA: 2+42.32) | 2025-07-10 → 2025-08-01 (+22d) | 2025-07-21 → 2025-08-08 (+18d) | 8d → 6d |  | 98d → 84d | 36746 → 36746 FS+18d |
| 1050 | Install Storm Secondary | 2025-07-22 → 2025-08-11 (+20d) | 2025-07-28 → 2025-08-15 (+18d) |  |  | 161d → 147d |  |
| 691098993 | **Site Civil** |  | 2025-11-04 → 2025-10-21 (-14d) |  |  |  |  |
| 35283 | Electrical Main to Building | 2025-10-29 → 2025-10-15 (-14d) | 2025-11-04 → 2025-10-21 (-14d) |  |  | 20d → 30d | 1054, 36506 → 1054, 36506 SS |
| 691099993 | **Paving** | 2025-07-22 → 2025-08-11 (+20d) | 2025-09-10 → 2025-09-30 (+20d) |  |  |  |  |
| 35313 | Survey - Trash Enclosure | 2025-07-22 → 2025-08-11 (+20d) | 2025-07-22 → 2025-08-11 (+20d) |  |  | 98d → 84d |  |
| 35323 | Excavate - Trash Enclosure | 2025-07-23 → 2025-08-12 (+20d) | 2025-07-23 → 2025-08-12 (+20d) |  |  | 98d → 84d |  |
| 35333 | FRPS Footer - Trash Enclosure | 2025-07-24 → 2025-08-13 (+20d) | 2025-07-28 → 2025-08-15 (+18d) |  |  | 98d → 84d |  |
| 35343 | FRPS Stem Wall - Trash Enclosure | 2025-07-29 → 2025-08-18 (+20d) | 2025-07-31 → 2025-08-20 (+20d) |  |  | 98d → 84d |  |
| 35344 | Trash Enclosure Masonry | 2025-08-01 → 2025-08-21 (+20d) | 2025-08-07 → 2025-08-27 (+20d) |  |  | 98d → 84d |  |
| 1130 | Trash Enclosure Gates | 2025-08-08 → 2025-08-28 (+20d) | 2025-08-14 → 2025-09-04 (+21d) |  |  | 98d → 84d |  |
| 35353 | Backfill and compact - Trash Enclosure | 2025-08-08 → 2025-08-28 (+20d) | 2025-08-08 → 2025-08-28 (+20d) |  |  | 134d → 120d |  |
| 1180 | Irrigation sleeving | 2025-08-11 → 2025-08-29 (+18d) | 2025-08-13 → 2025-09-03 (+21d) |  |  | 135d → 121d |  |
| 35363 | Survey - Grid Line K, South | 2025-08-11 → 2025-08-29 (+18d) | 2025-08-11 → 2025-08-29 (+18d) |  |  | 134d → 120d |  |
| 35373 | Finish Grade - Grid Line K, South | 2025-08-12 → 2025-09-02 (+21d) | 2025-08-14 → 2025-09-04 (+21d) |  |  | 134d → 120d |  |
| 35383 | FRPS Curb and gutter - Grid Line K, South | 2025-08-15 → 2025-09-05 (+21d) | 2025-08-20 → 2025-09-10 (+21d) |  |  | 134d → 120d |  |
| 35384 | FRPS Sidewalk and Ballards - Grid Line K, South | 2025-08-21 → 2025-09-11 (+21d) | 2025-08-25 → 2025-09-15 (+21d) |  |  | 134d → 120d |  |
| 35393 | Survey - Grid Line K, North | 2025-08-21 → 2025-09-11 (+21d) | 2025-08-21 → 2025-09-11 (+21d) |  |  | 134d → 120d |  |
| 35403 | Finish Grade - Grid Line K, North | 2025-08-22 → 2025-09-12 (+21d) | 2025-08-25 → 2025-09-15 (+21d) |  |  | 134d → 120d |  |
| 35413 | FRPS Curb, Gutter and Trash Enclosure Slab - Grid Line K, North | 2025-08-26 → 2025-09-16 (+21d) | 2025-08-29 → 2025-09-19 (+21d) |  |  | 134d → 120d |  |
| 35414 | FRPS Sidewalk and Ballards - Grid Line K, North | 2025-09-02 → 2025-09-22 (+20d) | 2025-09-04 → 2025-09-24 (+20d) |  |  | 134d → 120d |  |
| 35423 | Asphalt Bottom Mat | 2025-09-05 → 2025-09-25 (+20d) | 2025-09-08 → 2025-09-26 (+18d) |  |  | 134d → 120d |  |
| 36026 | Asphalt Patch and Top Mat | 2025-09-09 → 2025-09-29 (+20d) | 2025-09-10 → 2025-09-30 (+20d) |  |  | 134d → 120d |  |
| 691074393 | **Superstructure** |  | 2025-09-05 → 2025-09-03 (-2d) |  |  |  |  |
| 691074993 | **Structural Metal Framing and Deck** |  | 2025-09-05 → 2025-09-03 (-2d) |  |  |  |  |
| 691084693 | **Level 2 Deck (level 1 Walls)** |  | 2025-07-11 → 2025-07-21 (+10d) |  |  |  |  |
| 1 | **L2 A4** |  | 2025-07-11 → 2025-07-21 (+10d) |  |  |  |  |
| 36756 | Erect Frame and Decking - L2 A4 |  | 2025-07-11 → 2025-07-21 A (+10d) |  | 50% → 100% | 20d → none |  |
| 1 | **Level 2 Concrete** |  | 2025-07-28 → 2025-07-23 (-5d) |  |  |  |  |
| 1 | **Pour 1 (Gridline A-J)** |  | 2025-07-16 → 2025-07-15 (-1d) |  |  |  |  |
| A1020 | WWF and Pour Prep | 2025-07-11 A | 2025-07-14 → 2025-07-11 A (-3d) |  | 0% → 100% | 20d → none |  |
| A1040 | Form, Pour, Strip | 2025-07-15 → 2025-07-14 A (-1d) | 2025-07-16 → 2025-07-15 A (-1d) |  | 0% → 100% | 20d → none |  |
| 2 | **Pour 2 (Gridline J-Q)** | 2025-07-17 → 2025-07-14 (-3d) | 2025-07-22 → 2025-07-21 (-1d) |  |  |  |  |
| A1050 | WWF and Pour Prep | 2025-07-17 → 2025-07-14 A (-3d) | 2025-07-18 → 2025-07-15 A (-3d) |  | 0% → 100% | 23d → none |  |
| A1070 | Form, Pour, Strip | 2025-07-21 → 2025-07-18 A (-3d) | 2025-07-22 → 2025-07-21 A (-1d) |  | 0% → 100% | 23d → none |  |
| 3 | **Pour 3 (Gridline Q-U)** | 2025-07-23 → 2025-07-21 (-2d) | 2025-07-28 → 2025-07-23 (-5d) |  |  |  |  |
| A1080 | WWF and Pour Prep | 2025-07-23 → 2025-07-21 A (-2d) | 2025-07-24 → 2025-07-21 A (-3d) |  | 0% → 100% | 38d → none |  |
| A1100 | Form, Pour, Strip | 2025-07-25 → 2025-07-22 A (-3d) | 2025-07-28 → 2025-07-23 A (-5d) |  | 0% → 100% | 38d → none |  |
| 691084193 | **Level 3 Deck (Level 2 Walls)** | 2025-07-17 → 2025-07-15 (-2d) | 2025-08-06 → 2025-08-07 (+1d) |  |  |  |  |
| 691088093 | **L3 A1** | 2025-07-17 → 2025-07-15 (-2d) | 2025-07-25 → 2025-07-24 (-1d) |  |  |  |  |
| 33233 | Erect Frame and Decking - L3 A1 | 2025-07-17 → 2025-07-15 A (-2d) | 2025-07-25 → 2025-07-24 A (-1d) |  | 0% → 100% | 20d → none |  |
| 691088193 | **L3 A2** | 2025-07-28 → 2025-07-21 (-7d) | 2025-08-05 → 2025-07-25 (-11d) |  |  |  |  |
| 33562 | Erect Frame and Decking - L3 A2 | 2025-07-28 → 2025-07-21 A (-7d) | 2025-08-05 → 2025-07-25 A (-11d) |  | 0% → 100% | 20d → none |  |
| 691112293 | **L3 A3** | 2025-07-29 → 2025-07-25 (-4d) | 2025-08-06 → 2025-08-07 (+1d) |  |  |  |  |
| 36176 | Erect Frame and Decking - L3 A3 | 2025-07-29 → 2025-07-25 A (-4d) | 2025-08-06 → 2025-08-07 (+1d) | 7d → 5d |  | 91d → 35d |  |
| 2 | **Level 3 Concrete** | 2025-08-06 → 2025-07-31 (-6d) | 2025-08-21 → 2025-08-14 (-7d) |  |  |  |  |
| 1 | **Pour 1 (Gridline A-J)** | 2025-08-06 → 2025-07-31 (-6d) | 2025-08-11 → 2025-08-04 (-7d) |  |  |  |  |
| A1110 | Rebar and Pour Prep | 2025-08-06 → 2025-07-31 A (-6d) | 2025-08-07 → 2025-08-01 A (-6d) |  | 0% → 100% | 20d → none | 33562 → 33562 FS+5d |
| A1130 | Form, Pour, Strip | 2025-08-08 → 2025-08-01 (-7d) | 2025-08-11 → 2025-08-04 (-7d) |  |  | 20d → 30d |  |
| 2 | **Pour 2 (Gridline J-Q)** | 2025-08-12 → 2025-08-05 (-7d) | 2025-08-15 → 2025-08-08 (-7d) |  |  |  |  |
| A1140 | Rebar and Pour Prep | 2025-08-12 → 2025-08-05 (-7d) | 2025-08-13 → 2025-08-06 (-7d) |  |  | 20d → 30d |  |
| A1160 | Form, Pour, Strip | 2025-08-14 → 2025-08-07 (-7d) | 2025-08-15 → 2025-08-08 (-7d) |  |  | 20d → 30d |  |
| 3 | **Pour 3 (Gridline Q-U)** | 2025-08-18 → 2025-08-11 (-7d) | 2025-08-21 → 2025-08-14 (-7d) |  |  |  |  |
| A1170 | Rebar and Pour Prep | 2025-08-18 → 2025-08-11 (-7d) | 2025-08-19 → 2025-08-12 (-7d) |  |  | 20d → 30d |  |
| A1190 | Form, Pour, Strip | 2025-08-20 → 2025-08-13 (-7d) | 2025-08-21 → 2025-08-14 (-7d) |  |  | 20d → 30d |  |
| 691084093 | **Roof Deck (Level 3 Walls)** | 2025-08-12 → 2025-08-08 (-4d) | 2025-09-05 → 2025-09-03 (-2d) |  |  |  |  |
| 691113193 | **Roof Area 1** | 2025-08-12 → 2025-08-08 (-4d) | 2025-08-22 → 2025-08-20 (-2d) |  |  |  |  |
| 36376 | Erect Frame and Decking - RA1 | 2025-08-12 → 2025-08-08 (-4d) | 2025-08-18 → 2025-08-14 (-4d) |  |  | 88d → 90d |  |
| 36396 | Install Curbs and Roof Supports - RA1 | 2025-08-19 → 2025-08-15 (-4d) | 2025-08-20 → 2025-08-18 (-2d) |  |  | 148d → 150d |  |
| 36406 | Decking Closure - RA1 | 2025-08-21 → 2025-08-19 (-2d) | 2025-08-22 → 2025-08-20 (-2d) |  |  | 148d → 150d |  |
| 691112693 | **Roof Area 2** | 2025-08-25 → 2025-08-21 (-4d) | 2025-09-05 → 2025-09-03 (-2d) |  |  |  |  |
| 36326 | Erect Frame and Decking - RA2 | 2025-08-25 → 2025-08-21 (-4d) | 2025-08-29 → 2025-08-27 (-2d) |  |  | 148d → 150d |  |

| ID | Task | Start | Finish | Complete | Total float | Predecessors |
| --- | --- | --- | --- | --- | --- | --- |
| 36346 | Install Curbs and Roof Supports - RA2 | 2025-09-02 → 2025-08-28 (-5d) | 2025-09-03 → 2025-08-29 (-5d) |  | 148d → 150d |  |
| 36356 | Decking Closure - RA2 | 2025-09-04 → 2025-09-02 (-2d) | 2025-09-05 → 2025-09-03 (-2d) |  | 148d → 150d |  |
| 691113693 | **Roof Area 3** | 2025-08-22 → 2025-08-15 (-7d) | 2025-09-04 → 2025-08-27 (-8d) |  |  |  |
| 36426 | Erect Frame and Decking - RA3 | 2025-08-22 → 2025-08-15 (-7d) | 2025-08-28 → 2025-08-21 (-7d) |  | 20d → 30d |  |
| 36446 | Install Curbs and Roof Supports - RA3 | 2025-08-29 → 2025-08-22 (-7d) | 2025-09-02 → 2025-08-25 (-8d) |  | 29d → 34d |  |
| 36456 | Decking Closure - RA3 | 2025-09-03 → 2025-08-26 (-8d) | 2025-09-04 → 2025-08-27 (-8d) |  | 29d → 34d |  |
| 691075793 | **CMU Cores** |  | 2025-08-27 → 2025-08-05 (-22d) |  |  |  |
| 35144 | Steel Stair Install - Stair B |  | 2025-08-22 → 2025-07-11 A (-42d) | 0% → 100% | 68d → none |  |
| 35173 | Steel Stair Install - Stair A | 2025-07-10 → 2025-07-14 A (+4d) | 2025-07-21 → 2025-07-17 A (-4d) | 0% → 100% | 116d → none |  |
| 35163 | Elevator Shaft Hoist beams and Spreader Tubes | 2025-08-25 → 2025-08-01 (-24d) | 2025-08-27 → 2025-08-05 (-22d) |  | 68d → 84d | 1073, 35144 → 35144 FS+14d |
| 691074793 | **Exterior Skin** | 2025-07-29 → 2025-08-08 (+10d) | 2025-12-23 → 2025-12-16 (-7d) |  |  |  |
| 691099793 | **Roofing** | 2025-09-05 → 2025-08-28 (-8d) | 2025-10-02 → 2025-09-25 (-7d) |  |  |  |
| 1075 | Roof Install | 2025-09-05 → 2025-08-28 (-8d) | 2025-10-02 → 2025-09-25 (-7d) |  | 43d → 48d |  |
| 1076 | Backing and Blocking (parapet cap, nailers and signage supports) | 2025-09-05 → 2025-08-28 (-8d) | 2025-09-09 → 2025-09-02 (-7d) |  | 134d → 139d |  |
| 691091593 | **North Elevation** | 2025-07-29 → 2025-08-08 (+10d) | 2025-10-28 → 2025-10-21 (-7d) |  |  |  |
| 34783 | Veneer Stud Framing | 2025-07-29 → 2025-08-08 (+10d) | 2025-08-04 → 2025-08-14 (+10d) |  | 38d → 35d | A1100 → 36176 |
| 36476 | Sheathing | 2025-08-29 → 2025-08-22 (-7d) | 2025-09-05 → 2025-08-28 (-8d) |  | 20d → 30d |  |
| 36486 | Air/Weather Barrier | 2025-09-08 → 2025-08-29 (-10d) | 2025-09-09 → 2025-09-02 (-7d) |  | 20d → 30d |  |
| 36496 | Masonry Veneer | 2025-09-10 → 2025-09-03 (-7d) | 2025-09-30 → 2025-09-23 (-7d) |  | 20d → 30d |  |
| 36516 | EIFS | 2025-10-01 → 2025-09-24 (-7d) | 2025-10-21 → 2025-10-14 (-7d) |  | 20d → 30d |  |
| 36506 | Exterior Metal Panel | 2025-10-22 → 2025-10-15 (-7d) | 2025-10-28 → 2025-10-21 (-7d) |  | 20d → 30d |  |
| 691091693 | **South Elevation** | 2025-09-08 → 2025-08-29 (-10d) | 2025-12-05 → 2025-11-26 (-9d) |  |  |  |
| 33433 | Veneer Stud Framing | 2025-09-08 → 2025-08-29 (-10d) | 2025-09-12 → 2025-09-05 (-7d) |  | 50d → 43d |  |
| 36526 | Sheathing | 2025-09-15 → 2025-09-08 (-7d) | 2025-09-19 → 2025-09-12 (-7d) |  | 50d → 43d |  |
| 36536 | Air/Weather Barrier | 2025-09-22 → 2025-09-15 (-7d) | 2025-09-23 → 2025-09-16 (-7d) |  | 60d → 65d |  |
| 36546 | Masonry Veneer | 2025-10-01 → 2025-09-24 (-7d) | 2025-10-21 → 2025-10-14 (-7d) |  | 55d → 60d |  |
| 36566 | EIFS | 2025-10-22 → 2025-10-15 (-7d) | 2025-11-11 → 2025-11-04 (-7d) |  | 55d → 60d |  |
| 36556 | Exterior Metal Panel | 2025-11-12 → 2025-11-05 (-7d) | 2025-11-18 → 2025-11-11 (-7d) |  | 55d → 60d |  |
| 33424 | Backing, Blocking and Flashing | 2025-11-19 → 2025-11-12 (-7d) | 2025-11-25 → 2025-11-18 (-7d) |  | 55d → 60d |  |
| 33425 | Storefront Install | 2025-11-26 → 2025-11-19 (-7d) | 2025-12-02 → 2025-11-21 (-11d) |  | 55d → 60d |  |
| 33426 | Canopy Install | 2025-12-03 → 2025-11-24 (-9d) | 2025-12-05 → 2025-11-26 (-9d) |  | 55d → 60d |  |
| 691115793 | **East Elevation** | 2025-09-22 → 2025-09-15 (-7d) | 2025-12-23 → 2025-12-16 (-7d) |  |  |  |
| 36586 | Veneer Stud Framing | 2025-09-22 → 2025-09-15 (-7d) | 2025-09-26 → 2025-09-19 (-7d) |  | 50d → 43d |  |
| 36596 | Sheathing | 2025-09-29 → 2025-09-22 (-7d) | 2025-10-03 → 2025-09-26 (-7d) |  | 50d → 43d |  |
| 36606 | Air/Weather Barrier | 2025-10-06 → 2025-09-29 (-7d) | 2025-10-07 → 2025-09-30 (-7d) |  | 71d → 76d |  |
| 36616 | Masonry Veneer | 2025-10-22 → 2025-10-15 (-7d) | 2025-11-11 → 2025-11-04 (-7d) |  | 61d → 66d |  |
| 36636 | EIFS | 2025-11-12 → 2025-11-05 (-7d) | 2025-12-04 → 2025-11-25 (-9d) |  | 61d → 66d |  |
| 36626 | Exterior Metal Panel | 2025-12-05 → 2025-11-26 (-9d) | 2025-12-11 → 2025-12-04 (-7d) |  | 61d → 66d |  |
| 36646 | Backing, Blocking and Flashing | 2025-12-12 → 2025-12-05 (-7d) | 2025-12-15 → 2025-12-08 (-7d) |  | 61d → 66d |  |
| 36676 | Storefront Install | 2025-12-16 → 2025-12-09 (-7d) | 2025-12-18 → 2025-12-11 (-7d) |  | 61d → 66d |  |
| 36686 | Canopy Install | 2025-12-19 → 2025-12-12 (-7d) | 2025-12-23 → 2025-12-16 (-7d) |  | 61d → 66d |  |
| 691085593 | **West Elevation** | 2025-10-06 → 2025-09-29 (-7d) | 2025-12-12 → 2025-12-05 (-7d) |  |  |  |
| A1200 | Veneer Stud Framing | 2025-10-06 → 2025-09-29 (-7d) | 2025-10-10 → 2025-10-03 (-7d) |  | 50d → 43d |  |
| 36296 | Sheathing | 2025-10-13 → 2025-10-06 (-7d) | 2025-10-17 → 2025-10-10 (-7d) |  | 50d → 55d |  |
| 36306 | Air/Weather Barrier and Insulation | 2025-10-20 → 2025-10-13 (-7d) | 2025-10-22 → 2025-10-15 (-7d) |  | 50d → 55d |  |
| 33332 | Masonry Veneer | 2025-10-23 → 2025-10-16 (-7d) | 2025-11-12 → 2025-11-05 (-7d) |  | 50d → 55d |  |
| 34802 | EIFS | 2025-11-13 → 2025-11-06 (-7d) | 2025-12-05 → 2025-11-26 (-9d) |  | 50d → 55d |  |
| 36466 | Exterior Metal Panel | 2025-12-08 → 2025-12-01 (-7d) | 2025-12-12 → 2025-12-05 (-7d) |  | 50d → 55d |  |
| 691091593 | **Rough-In** | 2025-07-29 → 2025-07-21 (-8d) | 2025-11-06 → 2025-10-30 (-7d) |  |  |  |
| 691088793 | **Level 1 - Rough-In Work** | 2025-07-29 → 2025-07-21 (-8d) | 2025-09-25 → 2025-09-18 (-7d) |  |  |  |
| 33642 | Mechanical Rough-In - Level 1 | 2025-08-29 → 2025-07-21 A (-39d) | 2025-09-09 → 2025-09-02 (-7d) |  | 29d → 34d |  |
| 33692 | Fire Suppression - Level 1 | 2025-07-29 → 2025-07-23 A (-6d) | 2025-08-18 → 2025-08-21 (+3d) |  | 51d → 48d |  |
| 33632 | Interior Wall Framing - Level 1 | 2025-08-22 → 2025-08-15 (-7d) | 2025-08-28 → 2025-08-21 (-7d) |  | 29d → 34d |  |
| 33652 | Electrical and Fire Alarm Rough-In - Level 1 | 2025-09-05 → 2025-08-28 (-8d) | 2025-09-25 → 2025-09-18 (-7d) |  | 29d → 34d |  |
| 33672 | Plumbing Rough-In - Level 1 | 2025-09-10 → 2025-09-03 (-7d) | 2025-09-16 → 2025-09-09 (-7d) |  | 51d → 56d |  |
| 691088893 | **Level 2 - Rough-In Work** | 2025-09-10 → 2025-08-01 (-40d) | 2025-10-16 → 2025-10-09 (-7d) |  |  |  |
| 33742 | Fire Suppression - Level 2 | 2025-09-10 → 2025-08-01 A (-40d) | 2025-09-30 → 2025-09-23 (-7d) |  | 36d → 41d |  |
| 33712 | Mechanical Rough-In - Level 2 | 2025-09-10 → 2025-09-03 (-7d) | 2025-09-18 → 2025-09-11 (-7d) |  | 29d → 34d |  |
| 33732 | Plumbing Rough-In - Level 2 | 2025-09-19 → 2025-09-12 (-7d) | 2025-09-25 → 2025-09-18 (-7d) |  | 49d → 54d |  |
| 33722 | Electrical and Fire Alarm Rough-In - Level 2 | 2025-09-26 → 2025-09-19 (-7d) | 2025-10-16 → 2025-10-09 (-7d) |  | 29d → 34d |  |
| 691088993 | **Level 3 - Rough-In Work** | 2025-09-19 → 2025-09-12 (-7d) | 2025-11-06 → 2025-10-30 (-7d) |  |  |  |
| 33802 | Mechanical Rough-In - Level 3 | 2025-09-19 → 2025-09-12 (-7d) | 2025-09-29 → 2025-09-22 (-7d) |  | 44d → 49d |  |
| 33792 | Plumbing Rough-In - Level 3 | 2025-09-30 → 2025-09-23 (-7d) | 2025-10-06 → 2025-09-29 (-7d) |  | 47d → 52d |  |
| 33812 | Fire Suppression - Level 3 | 2025-10-01 → 2025-09-24 (-7d) | 2025-10-21 → 2025-10-14 (-7d) |  | 36d → 41d |  |
| 33782 | Electrical and Fire Alarm Rough-In - Level 3 | 2025-10-17 → 2025-10-10 (-7d) | 2025-11-06 → 2025-10-30 (-7d) |  | 29d → 34d |  |
| 691091993 | **Janus Scope** | 2025-09-19 → 2025-09-12 (-7d) | 2025-11-20 → 2025-11-13 (-7d) |  |  |  |
| 33842 | Level 1 - JS | 2025-09-19 → 2025-09-12 (-7d) | 2025-10-09 → 2025-10-02 (-7d) |  | 29d → 34d |  |
| 33852 | Level 2 - JS | 2025-10-10 → 2025-10-03 (-7d) | 2025-10-30 → 2025-10-23 (-7d) |  | 29d → 34d |  |
| 33862 | Level 3 - JS | 2025-10-31 → 2025-10-24 (-7d) | 2025-11-20 → 2025-11-13 (-7d) |  | 29d → 34d |  |
| 691075093 | **Interiors** | 2025-07-10 → 2025-09-26 (+78d) | 2025-12-30 → 2025-12-22 (-8d) |  |  |  |

| ID | Task | Start | Finish | Total float | Predecessors |
| --- | --- | --- | --- | --- | --- |
| 691074993 | **Storage Areas** | 2025-07-10 → 2025-09-26 (+78d) | 2025-12-30 → 2025-12-22 (-8d) |  |  |
| 691093393 | **Level 1 - Interiors** | 2025-07-10 → 2025-10-06 (+88d) | 2025-08-13 → 2025-11-07 (+86d) |  |  |
| 34922 | Paint Structure | 2025-07-10 → 2025-10-06 (+88d) | 2025-07-23 → 2025-10-17 (+86d) | 104d → 43d | none → A1200 |
| 34882 | Flooring Trim | 2025-07-24 → 2025-10-20 (+88d) | 2025-08-06 → 2025-10-31 (+86d) | 114d → 53d |  |
| 34892 | Lighting Trim | 2025-07-24 → 2025-10-20 (+88d) | 2025-08-06 → 2025-10-31 (+86d) | 104d → 43d |  |
| 34902 | Mechanical Trim | 2025-08-07 → 2025-11-03 (+88d) | 2025-08-13 → 2025-11-07 (+86d) | 114d → 53d |  |
| 34912 | Plumbing Trim | 2025-08-07 → 2025-11-03 (+88d) | 2025-08-13 → 2025-11-07 (+86d) | 124d → 63d |  |
| 691092793 | **Level 2 -Interiors** | 2025-07-24 → 2025-10-20 (+88d) | 2025-08-27 → 2025-11-21 (+86d) |  |  |
| 34862 | Paint Structure | 2025-07-24 → 2025-10-20 (+88d) | 2025-08-06 → 2025-10-31 (+86d) | 104d → 43d |  |
| 34822 | Flooring Trim | 2025-08-07 → 2025-11-03 (+88d) | 2025-08-20 → 2025-11-14 (+86d) | 109d → 48d |  |
| 34832 | Lighting Trim | 2025-08-07 → 2025-11-03 (+88d) | 2025-08-20 → 2025-11-14 (+86d) | 104d → 43d |  |
| 34842 | Mechanical Trim | 2025-08-21 → 2025-11-17 (+88d) | 2025-08-27 → 2025-11-21 (+86d) | 109d → 48d |  |
| 34852 | Plumbing Trim | 2025-08-21 → 2025-11-17 (+88d) | 2025-08-27 → 2025-11-21 (+86d) | 109d → 48d |  |
| 691075193 | **Level 3 - Interiors** | 2025-11-21 → 2025-11-14 (-7d) | 2025-12-30 → 2025-12-22 (-8d) |  |  |
| 1082 | Paint Structure | 2025-11-21 → 2025-11-14 (-7d) | 2025-12-08 → 2025-12-01 (-7d) | 29d → 34d |  |
| 1083 | Flooring Trim | 2025-12-09 → 2025-12-02 (-7d) | 2025-12-22 → 2025-12-15 (-7d) | 29d → 34d |  |
| 1084 | Lighting Trim | 2025-12-09 → 2025-12-02 (-7d) | 2025-12-22 → 2025-12-15 (-7d) | 29d → 34d |  |
| 1085 | Mechanical Trim | 2025-12-23 → 2025-12-16 (-7d) | 2025-12-30 → 2025-12-22 (-8d) | 29d → 34d |  |
| 1087 | Plumbing Trim | 2025-12-23 → 2025-12-16 (-7d) | 2025-12-30 → 2025-12-22 (-8d) | 29d → 34d |  |
| 691075293 | **Level 1 Office and Restrooms** | 2025-07-10 → 2025-09-26 (+78d) | 2025-09-19 → 2025-12-09 (+81d) |  |  |
| 34932 | Drywall - Office | 2025-07-10 → 2025-09-26 (+78d) | 2025-07-18 → 2025-10-06 (+80d) | 108d → 53d | none → 1075 |
| 1106 | Doors & Hardware - Office | 2025-07-21 → 2025-10-07 (+78d) | 2025-07-25 → 2025-10-13 (+80d) | 108d → 53d |  |
| 1095 | Millwork - Office | 2025-07-28 → 2025-10-14 (+78d) | 2025-08-01 → 2025-10-20 (+80d) | 108d → 53d |  |
| 1096 | Flooring - Office | 2025-08-04 → 2025-10-21 (+78d) | 2025-08-08 → 2025-10-27 (+80d) | 108d → 53d |  |
| 1097 | Prime & Paint 1st Coat - Office | 2025-08-11 → 2025-10-28 (+78d) | 2025-08-15 → 2025-11-03 (+80d) | 108d → 53d |  |
| 1100 | Light Fixtures - Office | 2025-08-18 → 2025-11-04 (+78d) | 2025-08-22 → 2025-11-10 (+80d) | 127d → 72d |  |
| 1103 | Mechanical Trim Out - Office | 2025-08-18 → 2025-11-04 (+78d) | 2025-08-22 → 2025-11-10 (+80d) | 127d → 72d |  |
| 1104 | Electrical Trim Out - Office | 2025-08-18 → 2025-11-04 (+78d) | 2025-08-22 → 2025-11-10 (+80d) | 108d → 53d |  |
| 1105 | Plumbing Trim Out - Office | 2025-08-25 → 2025-11-11 (+78d) | 2025-08-29 → 2025-11-17 (+80d) | 108d → 53d |  |
| 1107 | Final Coat Paint - Office | 2025-09-02 → 2025-11-18 (+77d) | 2025-09-08 → 2025-11-24 (+77d) | 108d → 53d |  |
| 1099 | Install Appliances - Office | 2025-09-09 → 2025-11-25 (+77d) | 2025-09-10 → 2025-11-26 (+77d) | 115d → 60d |  |
| 1108 | Final Clean - Office | 2025-09-09 → 2025-11-25 (+77d) | 2025-09-15 → 2025-12-03 (+79d) | 108d → 53d |  |
| 1109 | Punch List Work - Office | 2025-09-15 → 2025-12-03 (+79d) | 2025-09-19 → 2025-12-09 (+81d) | 108d → 53d |  |
| 691082593 | **Final Sitework** | 2025-07-10 → 2025-08-01 (+22d) | 2025-12-05 → 2025-11-26 (-9d) |  |  |
| 691082693 | **Hardscapes** | 2025-07-10 → 2025-08-01 (+22d) | 2025-11-19 → 2025-11-12 (-7d) |  |  |
| 1140 | Detention Pond Fencing | 2025-07-10 → 2025-08-01 (+22d) | 2025-07-14 → 2025-08-05 (+22d) | 186d → 170d |  |
| 1131 | Striping and Signage | 2025-09-11 → 2025-10-01 (+20d) | 2025-09-11 → 2025-10-01 (+20d) | 134d → 120d |  |
| 1129 | Sidewalks | 2025-11-13 → 2025-11-06 (-7d) | 2025-11-19 → 2025-11-12 (-7d) | 75d → 80d |  |
| 691082793 | **Landscapes** | 2025-11-20 → 2025-11-13 (-7d) | 2025-12-05 → 2025-11-26 (-9d) |  |  |
| 1179 | Irrigation Systems | 2025-11-20 → 2025-11-13 (-7d) | 2025-11-26 → 2025-11-19 (-7d) | 75d → 80d |  |
| 1189 | Plantings | 2025-12-01 → 2025-11-20 (-11d) | 2025-12-05 → 2025-11-26 (-9d) | 75d → 80d |  |

## Version 6 (data date 2025-08-29, saved 2025-08-29, file update_6.xer)

Note of the change: Add all project schedule files to buckets - 13 projects, MPP+XER, baseline+updates

Last finish 2026-04-07 → 2026-04-13 (+6d). Complete tasks 96 → 107.

Added:

| ID | Task | Duration | Start | Finish |
| --- | --- | --- | --- | --- |
| A1210 | Weather Delay 8/25/2025 - 8/29/2025 | 5d | 2025-08-25 A | 2025-08-29 A |

Changed:

| ID | Task | Start | Finish | Duration | Complete | Total float | Predecessors | Other |
| --- | --- | --- | --- | --- | --- | --- | --- | --- |
| 691056193 | **Project Summary** |  | 2026-04-07 → 2026-04-13 (+6d) |  |  |  |  |  |
| 691056493 | **Contract Milestones** |  | 2026-04-07 → 2026-04-13 (+6d) |  |  |  |  |  |
| SC | Project SC - Before Weather Impacts | 2026-03-11 → 2026-03-18 (+7d) | 2026-03-11 → 2026-03-18 (+7d) |  |  |  |  |  |
| PSC | Project Substantially Complete - After Weather Impacts | 2026-03-20 → 2026-03-26 (+6d) | 2026-03-20 → 2026-03-26 (+6d) |  |  |  |  |  |
| PSC0001 | Operational Setup | 2026-03-23 → 2026-03-27 (+4d) | 2026-04-07 → 2026-04-13 (+6d) |  |  |  |  |  |
| PSC0002 | Project Open | 2026-04-07 → 2026-04-13 (+6d) | 2026-04-07 → 2026-04-13 (+6d) |  |  |  |  |  |
| 691056293 | **Construction Milestones** |  | 2025-11-26 → 2025-10-30 (-27d) |  |  |  |  |  |
| 1010 | Structure Complete | 2025-08-27 → 2025-09-12 (+16d) | 2025-08-27 → 2025-09-12 (+16d) |  |  | 144d → 137d |  |  |
| 1016 | Building Dry In | 2025-09-25 → 2025-10-10 (+15d) | 2025-09-25 → 2025-10-10 (+15d) |  |  | 122d → 115d |  |  |
| 1015 | Exterior Work Complete | 2025-11-26 → 2025-10-30 (-27d) | 2025-11-26 → 2025-10-30 (-27d) |  |  | 80d → 103d |  |  |
| 691103693 | **Schedule Impacts** |  | 2026-03-20 → 2026-03-26 (+6d) |  |  |  |  |  |
| 691103793 | **Weather Delays** |  | 2026-03-20 → 2026-03-26 (+6d) |  |  |  |  |  |
| 1027 | Contract Weather Days - 10 Days | 2026-03-11 → 2026-03-18 (+7d) | 2026-03-20 → 2026-03-26 (+6d) | 8d → 7d |  |  |  |  |
| 691060893 | **Pre-Construciton** |  | 2025-12-04 → 2025-12-11 (+7d) |  |  |  |  |  |
| 691060793 | **Procurement** |  | 2025-12-04 → 2025-12-11 (+7d) |  |  |  |  |  |
| 32922 | Electric Room MDP |  |  |  | 86% → 98% | 110d → 115d |  |  |
| 32912 | Elevator (By Owner) |  | 2025-12-04 → 2025-12-11 (+7d) |  | 48% → 57% |  |  |  |
| 691065093 | **Construction** |  | 2026-03-10 → 2026-03-17 (+7d) |  |  |  |  |  |
| 691061993 | **Site Development** |  | 2025-10-21 → 2025-11-13 (+23d) |  |  |  |  |  |
| 691098893 | **Site Infrastructure** |  | 2025-08-15 → 2025-09-09 (+25d) |  |  |  |  |  |
| 33102 | Install Storm Main (Pond to STA: 2+42.32) | 2025-08-01 → 2025-08-04 A (+3d) | 2025-08-08 A |  | 0% → 100% | 84d → none |  |  |
| 1050 | Install Storm Secondary | 2025-08-11 → 2025-08-15 A (+4d) | 2025-08-15 → 2025-09-09 (+25d) |  |  | 147d → 18d | 33102 → 33102 FS+2d |  |
| 691098993 | **Site Civil** |  | 2025-10-21 → 2025-11-13 (+23d) |  |  |  |  |  |
| 35283 | Electrical Main to Building | 2025-10-15 → 2025-11-07 (+23d) | 2025-10-21 → 2025-11-13 (+23d) |  |  | 30d → 18d |  |  |
| 691099993 | **Paving** | 2025-08-11 → 2025-09-10 (+30d) | 2025-09-30 → 2025-10-29 (+29d) |  |  |  |  |  |
| 35313 | Survey - Trash Enclosure | 2025-08-11 → 2025-09-10 (+30d) | 2025-08-11 → 2025-09-10 (+30d) |  |  | 84d → 68d | 33102 → 1050 |  |
| 35323 | Excavate - Trash Enclosure | 2025-08-12 → 2025-09-11 (+30d) | 2025-08-12 → 2025-09-11 (+30d) |  |  | 84d → 68d |  |  |
| 35333 | FRPS Footer - Trash Enclosure | 2025-08-13 → 2025-09-12 (+30d) | 2025-08-15 → 2025-09-16 (+32d) |  |  | 84d → 68d |  |  |
| 35343 | FRPS Stem Wall - Trash Enclosure | 2025-08-18 → 2025-09-17 (+30d) | 2025-08-20 → 2025-09-19 (+30d) |  |  | 84d → 68d |  |  |
| 35344 | Trash Enclosure Masonry | 2025-08-21 → 2025-09-22 (+32d) | 2025-08-27 → 2025-09-26 (+30d) |  |  | 84d → 68d |  |  |
| 1130 | Trash Enclosure Gates | 2025-08-28 → 2025-09-29 (+32d) | 2025-09-04 → 2025-10-03 (+29d) |  |  | 84d → 68d |  |  |
| 35353 | Backfill and compact - Trash Enclosure | 2025-08-28 → 2025-09-29 (+32d) | 2025-08-28 → 2025-09-29 (+32d) |  |  | 120d → 103d |  |  |
| 1180 | Irrigation sleeving | 2025-08-29 → 2025-09-30 (+32d) | 2025-09-03 → 2025-10-02 (+29d) |  |  | 121d → 104d |  |  |
| 35363 | Survey - Grid Line K, South | 2025-08-29 → 2025-09-30 (+32d) | 2025-08-29 → 2025-09-30 (+32d) |  |  | 120d → 103d |  |  |
| 35373 | Finish Grade - Grid Line K, South | 2025-09-02 → 2025-10-01 (+29d) | 2025-09-04 → 2025-10-03 (+29d) |  |  | 120d → 103d |  |  |
| 35383 | FRPS Curb and gutter - Grid Line K, South | 2025-09-05 → 2025-10-06 (+31d) | 2025-09-10 → 2025-10-09 (+29d) |  |  | 120d → 103d |  |  |
| 35384 | FRPS Sidewalk and Ballards - Grid Line K, South | 2025-09-11 → 2025-10-10 (+29d) | 2025-09-15 → 2025-10-14 (+29d) |  |  | 120d → 103d |  |  |
| 35393 | Survey - Grid Line K, North | 2025-09-11 → 2025-10-10 (+29d) | 2025-09-11 → 2025-10-10 (+29d) |  |  | 120d → 103d |  |  |
| 35403 | Finish Grade - Grid Line K, North | 2025-09-12 → 2025-10-13 (+31d) | 2025-09-15 → 2025-10-14 (+29d) |  |  | 120d → 103d |  |  |
| 35413 | FRPS Curb, Gutter and Trash Enclosure Slab - Grid Line K, North | 2025-09-16 → 2025-10-15 (+29d) | 2025-09-19 → 2025-10-20 (+31d) |  |  | 120d → 103d |  |  |
| 35414 | FRPS Sidewalk and Ballards - Grid Line K, North | 2025-09-22 → 2025-10-21 (+29d) | 2025-09-24 → 2025-10-23 (+29d) |  |  | 120d → 103d |  |  |
| 35423 | Asphalt Bottom Mat | 2025-09-25 → 2025-10-24 (+29d) | 2025-09-26 → 2025-10-27 (+31d) |  |  | 120d → 103d |  |  |
| 36026 | Asphalt Patch and Top Mat | 2025-09-29 → 2025-10-28 (+29d) | 2025-09-30 → 2025-10-29 (+29d) |  |  | 120d → 103d |  |  |
| 691074393 | **Superstructure** |  | 2025-09-03 → 2025-09-12 (+9d) |  |  |  |  |  |
| 691074993 | **Structural Metal Framing and Deck** |  | 2025-09-03 → 2025-09-12 (+9d) |  |  |  |  |  |
| 691084193 | **Level 3 Deck (Level 2 Walls)** |  | 2025-08-07 → 2025-07-30 (-8d) |  |  |  |  |  |
| 691112293 | **L3 A3** |  | 2025-08-07 → 2025-07-30 (-8d) |  |  |  |  |  |
| 36176 | Erect Frame and Decking - L3 A3 |  | 2025-08-07 → 2025-07-30 A (-8d) |  | 0% → 100% | 35d → none |  |  |
| 2 | **Level 3 Concrete** |  | 2025-08-14 → 2025-08-15 (+1d) |  |  |  |  |  |
| 1 | **Pour 1 (Gridline A-J)** |  | 2025-08-04 → 2025-08-05 (+1d) |  |  |  |  |  |
| A1130 | Form, Pour, Strip | 2025-08-01 → 2025-08-04 A (+3d) | 2025-08-04 → 2025-08-05 A (+1d) |  | 0% → 100% | 30d → none |  |  |
| 2 | **Pour 2 (Gridline J-Q)** | 2025-08-05 → 2025-08-06 (+1d) | 2025-08-08 → 2025-08-13 (+5d) |  |  |  |  |  |
| A1140 | Rebar and Pour Prep | 2025-08-05 → 2025-08-06 A (+1d) | 2025-08-06 → 2025-08-08 A (+2d) |  | 0% → 100% | 30d → none |  |  |
| A1160 | Form, Pour, Strip | 2025-08-07 → 2025-08-11 A (+4d) | 2025-08-08 → 2025-08-13 A (+5d) |  | 0% → 100% | 30d → none | A1140 → A1140 FS+1d |  |
| 3 | **Pour 3 (Gridline Q-U)** | 2025-08-11 → 2025-08-13 (+2d) | 2025-08-14 → 2025-08-15 (+1d) |  |  |  |  |  |
| A1170 | Rebar and Pour Prep | 2025-08-11 → 2025-08-13 A (+2d) | 2025-08-12 → 2025-08-13 A (+1d) |  | 0% → 100% | 30d → none |  |  |
| A1190 | Form, Pour, Strip | 2025-08-13 → 2025-08-14 A (+1d) | 2025-08-14 → 2025-08-15 A (+1d) |  | 0% → 100% | 30d → none |  |  |
| 691084093 | **Roof Deck (Level 3 Walls)** |  | 2025-09-03 → 2025-09-12 (+9d) |  |  |  |  |  |
| 691113193 | **Roof Area 1** |  | 2025-08-20 → 2025-09-04 (+15d) |  |  |  |  |  |
| 36376 | Erect Walls - RA1 | 2025-08-08 A | 2025-08-14 → 2025-08-15 A (+1d) |  | 0% → 100% | 90d → none |  | was named Erect Frame and Decking - RA1 |
| 36396 | Install Curbs and Roof Supports - RA1 | 2025-08-15 → 2025-08-28 A (+13d) | 2025-08-18 → 2025-09-02 (+15d) |  |  | 150d → 28d |  |  |
| 36406 | Decking Closure - RA1 | 2025-08-19 → 2025-09-03 (+15d) | 2025-08-20 → 2025-09-04 (+15d) |  |  | 150d → 28d |  |  |
| 691112693 | **Roof Area 2** | 2025-08-21 → 2025-08-15 (-6d) | 2025-09-03 → 2025-09-10 (+7d) |  |  |  |  |  |
| 36326 | Erect Walls - RA2 | 2025-08-21 → 2025-08-15 A (-6d) | 2025-08-27 → 2025-08-22 A (-5d) |  | 0% → 100% | 150d → none |  | was named Erect Frame and Decking - RA2 |
| 36346 | Install Curbs and Roof Supports - RA2 | 2025-08-28 A | 2025-08-29 → 2025-09-08 (+10d) |  |  | 150d → 28d |  |  |
| 36356 | Decking Closure - RA2 | 2025-09-02 → 2025-09-09 (+7d) | 2025-09-03 → 2025-09-10 (+7d) |  |  | 150d → 28d |  |  |
| 691113693 | **Roof Area 3** | 2025-08-15 → 2025-08-18 (+3d) | 2025-08-27 → 2025-09-12 (+16d) |  |  |  |  |  |
| 36426 | Erect Walls - RA3 | 2025-08-15 → 2025-08-18 A (+3d) | 2025-08-21 → 2025-08-29 A (+8d) |  | 0% → 100% | 30d → none |  | was named Erect Frame and Decking - RA3 |
| 36446 | Install Curbs and Roof Supports - RA3 | 2025-08-22 → 2025-08-28 A (+6d) | 2025-08-25 → 2025-09-02 (+8d) |  |  | 34d → 155d |  |  |
| 36456 | Decking Closure - RA3 | 2025-08-26 → 2025-09-11 (+16d) | 2025-08-27 → 2025-09-12 (+16d) |  |  | 34d → 28d | 36446 → 36356 |  |

| ID | Task | Start | Finish | Total float | Predecessors |
| --- | --- | --- | --- | --- | --- |
| 691075793 | **CMU Cores** |  | 2025-08-05 → 2025-09-03 (+29d) |  |  |
| 35163 | Elevator Shaft Hoist beams and Spreader Tubes | 2025-08-01 → 2025-08-26 A (+25d) | 2025-08-05 → 2025-09-03 (+29d) | 84d → 69d | 35144 FS+14d → 35144 FS+20d |
| 691074793 | **Exterior Skin** | 2025-08-08 → 2025-09-10 (+33d) | 2025-12-16 → 2026-01-12 (+27d) |  |  |
| 691099793 | **Roofing** | 2025-08-28 → 2025-09-15 (+18d) | 2025-09-25 → 2025-10-10 (+15d) |  |  |
| 1075 | Roof Install | 2025-08-28 → 2025-09-15 (+18d) | 2025-09-25 → 2025-10-10 (+15d) | 48d → 42d |  |
| 1076 | Backing and Blocking (parapet cap, nailers and signage supports) | 2025-08-28 → 2025-09-15 (+18d) | 2025-09-02 → 2025-09-17 (+15d) | 139d → 132d |  |
| 691091593 | **West Elevation** | 2025-09-29 → 2025-09-10 (-19d) | 2025-12-05 → 2025-11-13 (-22d) |  |  |
| 34783 | Veneer Stud Framing | 2025-08-08 → 2025-09-10 (+33d) | 2025-08-14 → 2025-09-16 (+33d) | 35d → 18d | 36176 → 1050 |
| 36476 | Sheathing | 2025-08-22 → 2025-09-17 (+26d) | 2025-08-28 → 2025-09-23 (+26d) | 30d → 18d |  |
| 36486 | Air/Weather Barrier | 2025-08-29 → 2025-09-24 (+26d) | 2025-09-02 → 2025-09-25 (+23d) | 30d → 18d |  |
| 36496 | Masonry Veneer | 2025-09-03 → 2025-09-26 (+23d) | 2025-09-23 → 2025-10-16 (+23d) | 30d → 18d |  |
| 36516 | EIFS | 2025-09-24 → 2025-10-17 (+23d) | 2025-10-14 → 2025-11-06 (+23d) | 30d → 18d |  |
| 36506 | Exterior Metal Panel | 2025-10-15 → 2025-11-07 (+23d) | 2025-10-21 → 2025-11-13 (+23d) | 30d → 18d |  |
| 691091693 | **South Elevation** | 2025-08-29 → 2025-09-24 (+26d) | 2025-11-26 → 2025-12-23 (+27d) |  |  |
| 33433 | Veneer Stud Framing | 2025-08-29 → 2025-09-24 (+26d) | 2025-09-05 → 2025-09-30 (+25d) | 43d → 31d |  |
| 36526 | Sheathing | 2025-09-08 → 2025-10-01 (+23d) | 2025-09-12 → 2025-10-07 (+25d) | 43d → 31d |  |
| 36536 | Air/Weather Barrier | 2025-09-15 → 2025-10-08 (+23d) | 2025-09-16 → 2025-10-09 (+23d) | 65d → 53d |  |
| 36546 | Masonry Veneer | 2025-09-24 → 2025-10-17 (+23d) | 2025-10-14 → 2025-11-06 (+23d) | 60d → 48d |  |
| 36566 | EIFS | 2025-10-15 → 2025-11-07 (+23d) | 2025-11-04 → 2025-12-01 (+27d) | 60d → 48d |  |
| 36556 | Exterior Metal Panel | 2025-11-05 → 2025-12-02 (+27d) | 2025-11-11 → 2025-12-08 (+27d) | 60d → 48d |  |
| 33424 | Backing, Blocking and Flashing | 2025-11-12 → 2025-12-09 (+27d) | 2025-11-18 → 2025-12-15 (+27d) | 60d → 48d |  |
| 33425 | Storefront Install | 2025-11-19 → 2025-12-16 (+27d) | 2025-11-21 → 2025-12-18 (+27d) | 60d → 48d |  |
| 33426 | Canopy Install | 2025-11-24 → 2025-12-19 (+25d) | 2025-11-26 → 2025-12-23 (+27d) | 60d → 48d |  |
| 691115793 | **East Elevation** | 2025-09-15 → 2025-10-08 (+23d) | 2025-12-16 → 2026-01-12 (+27d) |  |  |
| 36586 | Veneer Stud Framing | 2025-09-15 → 2025-10-08 (+23d) | 2025-09-19 → 2025-10-14 (+25d) | 43d → 31d |  |
| 36596 | Sheathing | 2025-09-22 → 2025-10-15 (+23d) | 2025-09-26 → 2025-10-21 (+25d) | 43d → 31d |  |
| 36606 | Air/Weather Barrier | 2025-09-29 → 2025-10-22 (+23d) | 2025-09-30 → 2025-10-23 (+23d) | 76d → 63d |  |
| 36616 | Masonry Veneer | 2025-10-15 → 2025-11-07 (+23d) | 2025-11-04 → 2025-12-01 (+27d) | 66d → 53d |  |
| 36636 | EIFS | 2025-11-05 → 2025-12-02 (+27d) | 2025-11-25 → 2025-12-22 (+27d) | 66d → 53d |  |
| 36626 | Exterior Metal Panel | 2025-11-26 → 2025-12-23 (+27d) | 2025-12-04 → 2025-12-30 (+26d) | 66d → 53d |  |
| 36646 | Backing, Blocking and Flashing | 2025-12-05 → 2025-12-31 (+26d) | 2025-12-08 → 2026-01-02 (+25d) | 66d → 53d |  |
| 36676 | Storefront Install | 2025-12-09 → 2026-01-05 (+27d) | 2025-12-11 → 2026-01-07 (+27d) | 66d → 53d |  |
| 36686 | Canopy Install | 2025-12-12 → 2026-01-08 (+27d) | 2025-12-16 → 2026-01-12 (+27d) | 66d → 53d |  |
| 691085593 | **North Elevation** | 2025-08-08 → 2025-10-22 (+75d) | 2025-10-21 → 2025-12-31 (+71d) |  |  |
| A1200 | Veneer Stud Framing | 2025-09-29 → 2025-10-22 (+23d) | 2025-10-03 → 2025-10-28 (+25d) | 43d → 31d |  |
| 36296 | Sheathing | 2025-10-06 → 2025-10-29 (+23d) | 2025-10-10 → 2025-11-04 (+25d) | 55d → 43d |  |
| 36306 | Air/Weather Barrier and Insulation | 2025-10-13 → 2025-11-05 (+23d) | 2025-10-15 → 2025-11-07 (+23d) | 55d → 43d |  |
| 33332 | Masonry Veneer | 2025-10-16 → 2025-11-10 (+25d) | 2025-11-05 → 2025-12-02 (+27d) | 55d → 43d |  |
| 34802 | EIFS | 2025-11-06 → 2025-12-03 (+27d) | 2025-11-26 → 2025-12-23 (+27d) | 55d → 43d |  |
| 36466 | Exterior Metal Panel | 2025-12-01 → 2025-12-24 (+23d) | 2025-12-05 → 2025-12-31 (+26d) | 55d → 43d |  |
| 691091593 | **Rough-In** |  | 2025-10-30 → 2025-11-14 (+15d) |  |  |
| 691088793 | **Level 1 - Rough-In Work** |  | 2025-09-18 → 2025-10-03 (+15d) |  |  |
| 33642 | Mechanical Rough-In - Level 1 |  | 2025-09-02 → 2025-09-16 (+14d) | 34d → 29d |  |
| 33692 | Fire Suppression - Level 1 |  | 2025-08-21 → 2025-09-19 (+29d) | 48d → 33d |  |
| 33632 | Interior Wall Framing - Level 1 | 2025-08-15 → 2025-08-29 (+14d) | 2025-08-21 → 2025-09-05 (+15d) | 34d → 29d |  |
| 33652 | Electrical and Fire Alarm Rough-In - Level 1 | 2025-08-28 → 2025-09-15 (+18d) | 2025-09-18 → 2025-10-03 (+15d) | 34d → 28d |  |
| 33672 | Plumbing Rough-In - Level 1 | 2025-09-03 → 2025-09-17 (+14d) | 2025-09-09 → 2025-09-23 (+14d) | 56d → 51d |  |
| 691088893 | **Level 2 - Rough-In Work** |  | 2025-10-09 → 2025-10-24 (+15d) |  |  |
| 33742 | Fire Suppression - Level 2 |  | 2025-09-23 → 2025-10-10 (+17d) | 41d → 33d |  |
| 33712 | Mechanical Rough-In - Level 2 | 2025-09-03 → 2025-08-11 A (-23d) | 2025-09-11 → 2025-09-25 (+14d) | 34d → 29d |  |
| 33732 | Plumbing Rough-In - Level 2 | 2025-09-12 → 2025-09-26 (+14d) | 2025-09-18 → 2025-10-02 (+14d) | 54d → 49d |  |
| 33722 | Electrical and Fire Alarm Rough-In - Level 2 | 2025-09-19 → 2025-10-06 (+17d) | 2025-10-09 → 2025-10-24 (+15d) | 34d → 28d |  |
| 691088993 | **Level 3 - Rough-In Work** | 2025-09-12 → 2025-09-26 (+14d) | 2025-10-30 → 2025-11-14 (+15d) |  |  |
| 33802 | Mechanical Rough-In - Level 3 | 2025-09-12 → 2025-09-26 (+14d) | 2025-09-22 → 2025-10-06 (+14d) | 49d → 44d |  |
| 33792 | Plumbing Rough-In - Level 3 | 2025-09-23 → 2025-10-07 (+14d) | 2025-09-29 → 2025-10-13 (+14d) | 52d → 47d |  |
| 33812 | Fire Suppression - Level 3 | 2025-09-24 → 2025-10-13 (+19d) | 2025-10-14 → 2025-10-31 (+17d) | 41d → 33d |  |
| 33782 | Electrical and Fire Alarm Rough-In - Level 3 | 2025-10-10 → 2025-10-27 (+17d) | 2025-10-30 → 2025-11-14 (+15d) | 34d → 28d |  |
| 691091993 | **Janus Scope** | 2025-09-12 → 2025-09-26 (+14d) | 2025-11-13 → 2025-12-02 (+19d) |  |  |
| 33842 | Level 1 - JS | 2025-09-12 → 2025-09-26 (+14d) | 2025-10-02 → 2025-10-16 (+14d) | 34d → 29d |  |
| 33852 | Level 2 - JS | 2025-10-03 → 2025-10-20 (+17d) | 2025-10-23 → 2025-11-07 (+15d) | 34d → 28d |  |
| 33862 | Level 3 - JS | 2025-10-24 → 2025-11-10 (+17d) | 2025-11-13 → 2025-12-02 (+19d) | 34d → 28d |  |
| 691094293 | **Elevators** | 2025-12-05 → 2025-12-12 (+7d) | 2026-02-10 → 2026-02-17 (+7d) |  |  |
| 33882 | Elevator Installation | 2025-12-05 → 2025-12-12 (+7d) | 2026-01-19 → 2026-01-26 (+7d) |  |  |
| 33892 | Elevator Infill and Lobby Finishes (all Levels) | 2026-01-20 → 2026-01-27 (+7d) | 2026-02-10 → 2026-02-17 (+7d) |  |  |
| 691075093 | **Interiors** | 2025-09-26 → 2025-10-13 (+17d) | 2025-12-22 → 2026-01-08 (+17d) |  |  |
| 691074993 | **Storage Areas** | 2025-09-26 → 2025-10-13 (+17d) | 2025-12-22 → 2026-01-08 (+17d) |  |  |
| 691093393 | **Level 1 - Interiors** | 2025-10-06 → 2025-10-29 (+23d) | 2025-11-07 → 2025-12-04 (+27d) |  |  |
| 34922 | Paint Structure | 2025-10-06 → 2025-10-29 (+23d) | 2025-10-17 → 2025-11-11 (+25d) | 43d → 31d |  |
| 34882 | Flooring Trim | 2025-10-20 → 2025-11-12 (+23d) | 2025-10-31 → 2025-11-25 (+25d) | 53d → 41d |  |
| 34892 | Lighting Trim | 2025-10-20 → 2025-11-12 (+23d) | 2025-10-31 → 2025-11-25 (+25d) | 43d → 31d |  |

| ID | Task | Start | Finish | Total float | Predecessors |
| --- | --- | --- | --- | --- | --- |
| 34902 | Mechanical Trim | 2025-11-03 → 2025-11-26 (+23d) | 2025-11-07 → 2025-12-04 (+27d) | 53d → 41d |  |
| 34912 | Plumbing Trim | 2025-11-03 → 2025-11-26 (+23d) | 2025-11-07 → 2025-12-04 (+27d) | 63d → 51d |  |
| 691092793 | **Level 2 -Interiors** | 2025-10-20 → 2025-11-12 (+23d) | 2025-11-21 → 2025-12-18 (+27d) |  |  |
| 34862 | Paint Structure | 2025-10-20 → 2025-11-12 (+23d) | 2025-10-31 → 2025-11-25 (+25d) | 43d → 31d |  |
| 34822 | Flooring Trim | 2025-11-03 → 2025-11-26 (+23d) | 2025-11-14 → 2025-12-11 (+27d) | 48d → 36d |  |
| 34832 | Lighting Trim | 2025-11-03 → 2025-11-26 (+23d) | 2025-11-14 → 2025-12-11 (+27d) | 43d → 31d | 34862 SS+10d, 34892 → 34892 |
| 34842 | Mechanical Trim | 2025-11-17 → 2025-12-12 (+25d) | 2025-11-21 → 2025-12-18 (+27d) | 48d → 36d |  |
| 34852 | Plumbing Trim | 2025-11-17 → 2025-12-12 (+25d) | 2025-11-21 → 2025-12-18 (+27d) | 48d → 36d |  |
| 691075193 | **Level 3 - Interiors** | 2025-11-14 → 2025-12-03 (+19d) | 2025-12-22 → 2026-01-08 (+17d) |  |  |
| 1082 | Paint Structure | 2025-11-14 → 2025-12-03 (+19d) | 2025-12-01 → 2025-12-16 (+15d) | 34d → 28d |  |
| 1083 | Flooring Trim | 2025-12-02 → 2025-12-17 (+15d) | 2025-12-15 → 2025-12-31 (+16d) | 34d → 28d |  |
| 1084 | Lighting Trim | 2025-12-02 → 2025-12-17 (+15d) | 2025-12-15 → 2025-12-31 (+16d) | 34d → 28d |  |
| 1085 | Mechanical Trim | 2025-12-16 → 2026-01-02 (+17d) | 2025-12-22 → 2026-01-08 (+17d) | 34d → 28d |  |
| 1087 | Plumbing Trim | 2025-12-16 → 2026-01-02 (+17d) | 2025-12-22 → 2026-01-08 (+17d) | 34d → 28d |  |
| 691075293 | **Level 1 Office and Restrooms** | 2025-09-26 → 2025-10-13 (+17d) | 2025-12-09 → 2025-12-24 (+15d) |  |  |
| 34932 | Drywall - Office | 2025-09-26 → 2025-10-13 (+17d) | 2025-10-06 → 2025-10-21 (+15d) | 53d → 47d |  |
| 1106 | Doors & Hardware - Office | 2025-10-07 → 2025-10-22 (+15d) | 2025-10-13 → 2025-10-28 (+15d) | 53d → 47d |  |
| 1095 | Millwork - Office | 2025-10-14 → 2025-10-29 (+15d) | 2025-10-20 → 2025-11-04 (+15d) | 53d → 47d |  |
| 1096 | Flooring - Office | 2025-10-21 → 2025-11-05 (+15d) | 2025-10-27 → 2025-11-11 (+15d) | 53d → 47d |  |
| 1097 | Prime & Paint 1st Coat - Office | 2025-10-28 → 2025-11-12 (+15d) | 2025-11-03 → 2025-11-18 (+15d) | 53d → 47d |  |
| 1100 | Light Fixtures - Office | 2025-11-04 → 2025-11-19 (+15d) | 2025-11-10 → 2025-11-25 (+15d) | 72d → 66d |  |
| 1103 | Mechanical Trim Out - Office | 2025-11-04 → 2025-11-19 (+15d) | 2025-11-10 → 2025-11-25 (+15d) | 72d → 66d |  |
| 1104 | Electrical Trim Out - Office | 2025-11-04 → 2025-11-19 (+15d) | 2025-11-10 → 2025-11-25 (+15d) | 53d → 47d |  |
| 1105 | Plumbing Trim Out - Office | 2025-11-11 → 2025-11-26 (+15d) | 2025-11-17 → 2025-12-04 (+17d) | 53d → 47d |  |
| 1107 | Final Coat Paint - Office | 2025-11-18 → 2025-12-05 (+17d) | 2025-11-24 → 2025-12-11 (+17d) | 53d → 47d |  |
| 1099 | Install Appliances - Office | 2025-11-25 → 2025-12-12 (+17d) | 2025-11-26 → 2025-12-15 (+19d) | 60d → 54d |  |
| 1108 | Final Clean - Office | 2025-11-25 → 2025-12-12 (+17d) | 2025-12-03 → 2025-12-18 (+15d) | 53d → 47d |  |
| 1109 | Punch List Work - Office | 2025-12-03 → 2025-12-18 (+15d) | 2025-12-09 → 2025-12-24 (+15d) | 53d → 47d |  |
| 691082593 | **Final Sitework** | 2025-08-01 → 2025-08-14 (+13d) | 2025-11-26 → 2025-10-30 (-27d) |  |  |
| 691082693 | **Hardscapes** | 2025-08-01 → 2025-08-14 (+13d) | 2025-11-12 → 2025-10-30 (-13d) |  |  |
| 1140 | Detention Pond Fencing | 2025-08-01 → 2025-08-14 A (+13d) | 2025-08-05 → 2025-09-03 (+29d) | 170d → 154d |  |
| 1129 | Sidewalks | 2025-11-06 → 2025-10-10 (-27d) | 2025-11-12 → 2025-10-16 (-27d) | 80d → 103d | 35383, 33332 → 35383 |
| 1131 | Striping and Signage | 2025-10-01 → 2025-10-30 (+29d) | 2025-10-01 → 2025-10-30 (+29d) | 120d → 103d |  |
| 691082793 | **Landscapes** | 2025-11-13 → 2025-10-17 (-27d) | 2025-11-26 → 2025-10-30 (-27d) |  |  |
| 1179 | Irrigation Systems | 2025-11-13 → 2025-10-17 (-27d) | 2025-11-19 → 2025-10-23 (-27d) | 80d → 103d |  |
| 1189 | Plantings | 2025-11-20 → 2025-10-24 (-27d) | 2025-11-26 → 2025-10-30 (-27d) | 80d → 103d |  |
| 691075893 | **Closeout** | 2026-02-11 → 2026-02-18 (+7d) | 2026-03-10 → 2026-03-17 (+7d) |  |  |
| 1111 | Commissioning | 2026-02-11 → 2026-02-18 (+7d) | 2026-02-24 → 2026-03-03 (+7d) |  |  |
| 1112 | Fire Alarm Programing/Testing | 2026-02-18 → 2026-02-25 (+7d) | 2026-02-24 → 2026-03-03 (+7d) |  |  |
| 1113 | Final Inspections | 2026-02-25 → 2026-03-04 (+7d) | 2026-03-10 → 2026-03-17 (+7d) |  |  |
| 1114 | WEO Overall / Final Punch List Work | 2026-02-25 → 2026-03-04 (+7d) | 2026-03-03 → 2026-03-10 (+7d) | 20d → 19d |  |
| 1115 | Develop Owner Punch Lists | 2026-03-04 → 2026-03-11 (+7d) | 2026-03-10 → 2026-03-17 (+7d) | 20d → 19d |  |

## Version 7 (data date 2025-10-03, saved 2025-11-06, file update_7.xer)

Note of the change: Add all project schedule files to buckets - 13 projects, MPP+XER, baseline+updates

Last finish 2026-04-13 → 2026-03-12 (-32d). Complete tasks 107 → 134.

Added:

| ID | Task | Duration | Start | Finish | Predecessors |
| --- | --- | --- | --- | --- | --- |
| 35443 | FRPS Trash Enclosure Slab | 2d | 2025-10-08 | 2025-10-09 | 35353 FS+8d |
| 33902 | 1st FLR - Elevator Infill and Lobby Finishes | 5d | 2025-12-29 | 2026-01-05 | 33882 |
| 33912 | 2nd FLR - Elevator Infill and Lobby Finishes | 5d | 2026-01-06 | 2026-01-12 | 33902 |

Removed: PSC0001 Operational Setup; 34783 Veneer Stud Framing; 33433 Veneer Stud Framing; 36586 Veneer Stud Framing; A1200 Veneer Stud Framing

Changed:

| ID | Task | Start | Finish | Duration | Complete | Total float | Predecessors | Other |
| --- | --- | --- | --- | --- | --- | --- | --- | --- |
| 691056193 | **Project Summary** |  | 2026-04-13 → 2026-03-12 (-32d) |  |  |  |  |  |
| 691056493 | **Contract Milestones** |  | 2026-04-13 → 2026-03-12 (-32d) |  |  |  |  |  |
| SC | Project SC - Before Weather Impacts | 2026-03-18 → 2026-03-04 (-14d) | 2026-03-18 → 2026-03-04 (-14d) |  |  | 0d → -24d |  |  |
| PSC | Project Substantially Complete - After Weather Impacts | 2026-03-26 → 2026-03-12 (-14d) | 2026-03-26 → 2026-03-12 (-14d) |  |  | 0d → -24d |  | constraint none → finish on or before 2026-02-06 |
| PSC0002 | Project Open | 2026-04-13 → 2026-03-12 (-32d) | 2026-04-13 → 2026-03-12 (-32d) |  |  |  | 1115 FF, Operational Setup → 1115 FF, PSC FF |  |
| 691056293 | **Construction Milestones** |  | 2025-10-30 → 2025-10-23 (-7d) |  |  |  |  |  |
| 1010 | Structure Complete | 2025-09-12 → 2025-10-03 (+21d) | 2025-09-12 → 2025-10-03 (+21d) |  |  | 137d → 101d |  |  |
| 1015 | Exterior Work Complete | 2025-10-30 → 2025-10-23 (-7d) | 2025-10-30 → 2025-10-23 (-7d) |  |  | 103d → 86d |  |  |
| 691103693 | **Schedule Impacts** |  | 2026-03-26 → 2026-03-12 (-14d) |  |  |  |  |  |
| 691103793 | **Weather Delays** |  | 2026-03-26 → 2026-03-12 (-14d) |  |  |  |  |  |
| 1027 | Contract Weather Days - 10 Days | 2026-03-18 → 2026-03-04 (-14d) | 2026-03-26 → 2026-03-12 (-14d) |  |  | 0d → -24d |  |  |
| 691060893 | **Pre-Construciton** |  | 2025-12-11 → 2025-11-11 (-30d) |  |  |  |  |  |
| 691060793 | **Procurement** |  | 2025-12-11 → 2025-11-11 (-30d) |  |  |  |  |  |
| 32922 | Electric Room MDP |  | 2025-09-03 → 2025-10-03 (+30d) |  | 98% → 100% | 115d → 65d |  |  |
| 32912 | Elevator (By Owner) |  | 2025-12-11 → 2025-11-11 (-30d) |  | 57% → 83% | 0d → -8d |  |  |
| 691065093 | **Construction** |  | 2026-03-17 → 2026-03-10 (-7d) |  |  |  |  |  |
| 691061993 | **Site Development** |  | 2025-11-13 → 2025-10-20 (-24d) |  |  |  |  |  |
| 691098893 | **Site Infrastructure** |  | 2025-09-09 → 2025-09-19 (+10d) |  |  |  |  |  |
| 1050 | Install Storm Secondary |  | 2025-09-09 → 2025-09-19 A (+10d) |  | 0% → 100% | 18d → none |  |  |
| 691098993 | **Site Civil** |  | 2025-11-13 → 2025-10-16 (-28d) |  |  |  |  |  |
| 35283 | Electrical Main to Building | 2025-11-07 → 2025-10-10 (-28d) | 2025-11-13 → 2025-10-16 (-28d) |  |  | 18d → 10d | 36506 SS, 1054 → 1054, 36466 |  |
| 691099993 | **Paving** | 2025-09-10 → 2025-09-12 (+2d) | 2025-10-29 → 2025-10-20 (-9d) |  |  |  |  |  |
| 35363 | Survey - Grid Line K, South | 2025-09-30 → 2025-09-12 A (-18d) | 2025-09-30 → 2025-09-12 A (-18d) |  | 0% → 100% | 103d → none | 35353 → none |  |
| 35393 | Survey - Grid Line K, North | 2025-10-10 → 2025-09-12 A (-28d) | 2025-10-10 → 2025-09-12 A (-28d) |  | 0% → 100% | 103d → none | 35383 → 1050 SS |  |
| 1180 | Irrigation sleeving | 2025-09-30 → 2025-09-18 A (-12d) | 2025-10-02 → 2025-09-18 A (-14d) | 3d → 2d | 0% → 100% | 104d → none | 35353 → 35393 FS+1d |  |
| 35313 | Survey - Trash Enclosure | 2025-09-10 → 2025-09-19 A (+9d) | 2025-09-10 → 2025-09-19 A (+9d) |  | 0% → 100% | 68d → none | 1050 → 35383 |  |
| 35323 | Excavate - Trash Enclosure | 2025-09-11 → 2025-09-19 A (+8d) | 2025-09-11 → 2025-09-19 A (+8d) |  | 0% → 100% | 68d → none |  |  |
| 35413 | FRPS Curb, Gutter - Grid Line K, North | 2025-10-15 → 2025-09-22 A (-23d) | 2025-10-20 → 2025-09-23 A (-27d) | 4d → 3d | 0% → 100% | 103d → none | 35384, 35403 → 1050 | was named FRPS Curb, Gutter and Trash Enclosure Slab - Grid Line K, North |
| 35333 | FRPS Footer - Trash Enclosure | 2025-09-12 → 2025-09-23 A (+11d) | 2025-09-16 → 2025-09-24 A (+8d) |  | 0% → 100% | 68d → none |  |  |
| 35383 | FRPS Curb and gutter - Grid Line K, South | 2025-10-06 → 2025-09-23 A (-13d) | 2025-10-09 → 2025-09-23 A (-16d) | 4d → 3d | 0% → 100% | 103d → none | 1180, 35373 → 35413 |  |
| 35343 | FRPS Stem Wall - Trash Enclosure | 2025-09-17 → 2025-09-24 A (+7d) | 2025-09-19 → 2025-09-25 A (+6d) |  | 0% → 100% | 68d → none |  |  |
| 35373 | Finish Grade - Grid Line K, South | 2025-10-01 → 2025-09-25 A (-6d) | 2025-10-03 → 2025-10-10 (+7d) |  | 0% → 100% | 103d → 88d | 35363 → 35403 |  |
| 35403 | Finish Grade - Grid Line K, North | 2025-10-13 → 2025-09-25 A (-18d) | 2025-10-14 → 2025-10-10 (-4d) | 2d → 3d | 0% → 100% | 103d → 88d | 35393 → 35443 |  |
| 35353 | Backfill and compact - Trash Enclosure | 2025-09-29 → 2025-09-26 A (-3d) | 2025-09-29 → 2025-09-26 A (-3d) |  | 0% → 100% | 103d → none | 35344 → 35343 |  |
| 35414 | FRPS Sidewalk and Ballards - Grid Line K, North | 2025-10-21 → 2025-09-30 A (-21d) | 2025-10-23 → 2025-10-01 A (-22d) | 3d → 2d | 0% → 100% | 103d → none | 35413 → 35373 |  |
| 35344 | Trash Enclosure Masonry | 2025-09-22 → 2025-10-03 (+11d) | 2025-09-26 → 2025-10-07 (+11d) | 5d → 3d |  | 68d → 95d |  |  |
| 1130 | Trash Enclosure Gates | 2025-09-29 → 2025-10-08 (+9d) | 2025-10-03 → 2025-10-09 (+6d) | 5d → 2d |  | 68d → 95d | 35344 → 35353, 35344 |  |
| 35384 | FRPS Sidewalk and Ballards - Grid Line K, South |  |  |  |  | 103d → 88d | 35383 → 35414 |  |
| 35423 | Asphalt Bottom Mat | 2025-10-24 → 2025-10-15 (-9d) | 2025-10-27 → 2025-10-16 (-11d) |  |  | 103d → 88d | 1050, 35414, 35413 → 35384 |  |
| 36026 | Asphalt Patch and Top Mat | 2025-10-28 → 2025-10-17 (-11d) | 2025-10-29 → 2025-10-20 (-9d) |  |  | 103d → 88d |  |  |
| 691074393 | **Superstructure** |  | 2025-09-12 → 2025-09-08 (-4d) |  |  |  |  |  |
| 691074993 | **Structural Metal Framing and Deck** |  | 2025-09-12 → 2025-09-08 (-4d) |  |  |  |  |  |
| 691084093 | **Roof Deck (Level 3 Walls)** |  | 2025-09-12 → 2025-09-08 (-4d) |  |  |  |  |  |
| 691113193 | **Roof Area 1** |  | 2025-09-04 → 2025-09-03 (-1d) |  |  |  |  |  |
| 36396 | Install Curbs and Roof Supports - RA1 |  | 2025-09-02 → 2025-08-29 A (-4d) |  | 0% → 100% | 28d → none |  |  |
| 36406 | Decking Closure - RA1 | 2025-09-03 → 2025-09-01 A (-2d) | 2025-09-04 → 2025-09-03 A (-1d) |  | 0% → 100% | 28d → none |  |  |
| 691112693 | **Roof Area 2** |  | 2025-09-10 → 2025-09-05 (-5d) |  |  |  |  |  |
| 36346 | Install Curbs and Roof Supports - RA2 |  | 2025-09-08 → 2025-08-29 A (-10d) |  | 0% → 100% | 28d → none |  |  |
| 36356 | Decking Closure - RA2 | 2025-09-09 → 2025-09-03 A (-6d) | 2025-09-10 → 2025-09-05 A (-5d) |  | 0% → 100% | 28d → none |  |  |
| 691113693 | **Roof Area 3** |  | 2025-09-12 → 2025-09-08 (-4d) |  |  |  |  |  |
| 36446 | Install Curbs and Roof Supports - RA3 | 2025-08-28 A → 2025-08-29 A (+1d) | 2025-09-02 A |  | 0% → 100% | 155d → none |  |  |
| 36456 | Decking Closure - RA3 | 2025-09-11 → 2025-09-05 A (-6d) | 2025-09-12 → 2025-09-08 A (-4d) |  | 0% → 100% | 28d → none |  |  |
| 35163 | Elevator Shaft Hoist beams and Spreader Tubes |  | 2025-09-03 A |  | 0% → 100% | 69d → none |  |  |
| 691074793 | **Exterior Skin** |  | 2026-01-12 → 2025-12-24 (-19d) |  |  |  |  |  |
| 691099793 | **Roofing** | 2025-09-15 → 2025-09-10 (-5d) |  |  |  |  |  |  |
| 1076 | Backing and Blocking (parapet cap, nailers and signage supports) | 2025-09-15 → 2025-09-10 A (-5d) | 2025-09-17 → 2025-09-26 A (+9d) | 3d → 5d | 0% → 100% | 132d → none |  |  |
| 1075 | Roof Install | 2025-09-15 → 2025-09-30 A (+15d) |  | 20d → 5d |  | 42d → 14d | 36456 → 1076 FS+1d |  |
| 691091693 | **South Elevation** | 2025-09-24 → 2025-09-22 (-2d) | 2025-12-23 → 2025-12-08 (-15d) |  |  |  |  |  |
| 36526 | Sheathing | 2025-10-01 → 2025-09-22 A (-9d) | 2025-10-07 → 2025-09-25 A (-12d) | 5d → 4d | 0% → 100% | 31d → none | Veneer Stud Framing → 36456 |  |
| 36556 | Exterior Metal Panel | 2025-12-02 → 2025-09-22 A (-71d) | 2025-12-08 → 2025-11-19 (-19d) |  |  | 48d → 30d |  |  |
| 36536 | Air/Weather Barrier | 2025-10-08 → 2025-09-26 A (-12d) | 2025-10-09 → 2025-10-01 A (-8d) |  | 0% → 100% | 53d → none |  |  |
| 36546 | Masonry Veneer | 2025-10-17 → 2025-10-01 A (-16d) | 2025-11-06 → 2025-10-22 (-15d) |  | 0% → 7% | 48d → 30d | 36496, 36536 → 36536 |  |
| 36566 | EIFS | 2025-11-07 → 2025-10-23 (-15d) | 2025-12-01 → 2025-11-12 (-19d) |  |  | 48d → 30d |  |  |
| 33424 | Backing, Blocking and Flashing | 2025-12-09 → 2025-11-20 (-19d) | 2025-12-15 → 2025-11-26 (-19d) |  |  | 48d → 30d |  |  |
| 33425 | Storefront Install | 2025-12-16 → 2025-12-01 (-15d) | 2025-12-18 → 2025-12-03 (-15d) |  |  | 48d → 30d |  |  |
| 33426 | Canopy Install | 2025-12-19 → 2025-12-04 (-15d) | 2025-12-23 → 2025-12-08 (-15d) |  |  | 48d → 30d |  |  |
| 691091593 | **West Elevation** | 2025-09-10 → 2025-09-26 (+16d) | 2025-11-13 → 2025-11-24 (+11d) |  |  |  |  |  |
| 36476 | Sheathing | 2025-09-17 → 2025-09-26 A (+9d) | 2025-09-23 → 2025-10-03 A (+10d) | 5d → 4d | 0% → 100% | 18d → none | Veneer Stud Framing, 36426 → 36526 |  |
| 36486 | Air/Weather Barrier | 2025-09-24 → 2025-10-03 A (+9d) | 2025-09-25 → 2025-10-06 (+11d) |  |  | 18d → 74d |  |  |
| 36496 | Masonry Veneer | 2025-09-26 → 2025-10-07 (+11d) | 2025-10-16 → 2025-10-27 (+11d) |  |  | 18d → 74d |  |  |

| ID | Task | Start | Finish | Duration | Complete | Total float | Predecessors | Other |
| --- | --- | --- | --- | --- | --- | --- | --- | --- |
| 36516 | EIFS | 2025-10-17 → 2025-10-28 (+11d) | 2025-11-06 → 2025-11-17 (+11d) |  |  | 18d → 74d |  |  |
| 36506 | Exterior Metal Panel | 2025-11-07 → 2025-11-18 (+11d) | 2025-11-13 → 2025-11-24 (+11d) |  |  | 18d → 74d |  |  |
| 691085593 | **North Elevation** | 2025-10-22 → 2025-10-02 (-20d) | 2025-12-31 → 2025-10-31 (-61d) |  |  |  |  |  |
| 36296 | Sheathing | 2025-10-29 → 2025-10-02 A (-27d) | 2025-11-04 → 2025-10-08 (-27d) | 5d → 4d |  | 43d → 34d | 36376, Veneer Stud Framing → 36476 |  |
| 34802 | EIFS | 2025-12-03 → 2025-10-03 (-61d) | 2025-12-23 → 2025-10-23 (-61d) |  |  | 43d → 96d | 33332 → 36476 |  |
| 36466 | Exterior Metal Panel | 2025-12-24 → 2025-10-03 (-82d) | 2025-12-31 → 2025-10-09 (-83d) |  |  | 43d → 10d | 34802 → 36476 |  |
| 36306 | Air/Weather Barrier and Insulation | 2025-11-05 → 2025-10-09 (-27d) | 2025-11-07 → 2025-10-13 (-25d) |  |  | 43d → 90d |  |  |
| 33332 | Masonry Veneer | 2025-11-10 → 2025-10-14 (-27d) | 2025-12-02 → 2025-10-31 (-32d) | 15d → 14d |  | 43d → 90d |  |  |
| 691115793 | **East Elevation** | 2025-10-08 → 2025-10-02 (-6d) | 2026-01-12 → 2025-12-24 (-19d) |  |  |  |  |  |
| 36626 | Exterior Metal Panel | 2025-12-23 → 2025-10-02 A (-82d) | 2025-12-30 → 2025-12-12 (-18d) |  |  | 53d → 30d |  |  |
| 36596 | Sheathing | 2025-10-15 → 2025-10-09 (-6d) | 2025-10-21 → 2025-10-14 (-7d) | 5d → 4d |  | 31d → 34d | Veneer Stud Framing → 36296 |  |
| 36606 | Air/Weather Barrier | 2025-10-22 → 2025-10-15 (-7d) | 2025-10-23 → 2025-10-16 (-7d) |  |  | 63d → 34d |  |  |
| 36616 | Masonry Veneer | 2025-11-07 → 2025-10-23 (-15d) | 2025-12-01 → 2025-11-12 (-19d) |  |  | 53d → 30d |  |  |
| 36636 | EIFS | 2025-12-02 → 2025-11-13 (-19d) | 2025-12-22 → 2025-12-05 (-17d) |  |  | 53d → 30d |  |  |
| 36646 | Backing, Blocking and Flashing | 2025-12-31 → 2025-12-15 (-16d) | 2026-01-02 → 2025-12-16 (-17d) |  |  | 53d → 30d |  |  |
| 36676 | Storefront Install | 2026-01-05 → 2025-12-17 (-19d) | 2026-01-07 → 2025-12-19 (-19d) |  |  | 53d → 30d |  |  |
| 36686 | Canopy Install | 2026-01-08 → 2025-12-22 (-17d) | 2026-01-12 → 2025-12-24 (-19d) |  |  | 53d → 30d |  |  |
| 691091593 | **Rough-In** |  | 2025-11-14 → 2025-12-08 (+24d) |  |  |  |  |  |
| 691088793 | **Level 1 - Rough-In Work** |  | 2025-10-03 → 2025-10-27 (+24d) |  |  |  |  |  |
| 33642 | Mechanical Rough-In - Level 1 |  | 2025-09-16 → 2025-10-20 (+34d) |  |  | 29d → -24d |  |  |
| 33692 | Fire Suppression - Level 1 |  | 2025-09-19 → 2025-10-23 (+34d) |  |  | 33d → -20d |  |  |
| 33632 | Interior Wall Framing - Level 1 | 2025-08-29 → 2025-10-03 (+35d) | 2025-09-05 → 2025-10-09 (+34d) |  |  | 29d → -24d |  |  |
| 33652 | Electrical and Fire Alarm Rough-In - Level 1 | 2025-09-15 → 2025-10-03 (+18d) | 2025-10-03 → 2025-10-23 (+20d) |  |  | 28d → -15d |  |  |
| 33672 | Plumbing Rough-In - Level 1 | 2025-09-17 → 2025-10-21 (+34d) | 2025-09-23 → 2025-10-27 (+34d) |  |  | 51d → -2d |  |  |
| 691088893 | **Level 2 - Rough-In Work** |  | 2025-10-24 → 2025-11-13 (+20d) |  |  |  |  |  |
| 33742 | Fire Suppression - Level 2 |  | 2025-10-10 → 2025-11-13 (+34d) |  |  | 33d → -20d |  |  |
| 33712 | Mechanical Rough-In - Level 2 |  | 2025-09-25 → 2025-10-29 (+34d) |  |  | 29d → -24d |  |  |
| 33722 | Electrical and Fire Alarm Rough-In - Level 2 | 2025-10-06 → 2025-10-24 (+18d) | 2025-10-24 → 2025-11-13 (+20d) |  |  | 28d → -15d |  |  |
| 33732 | Plumbing Rough-In - Level 2 | 2025-09-26 → 2025-10-30 (+34d) | 2025-10-02 → 2025-11-05 (+34d) |  |  | 49d → -4d |  |  |
| 691088993 | **Level 3 - Rough-In Work** | 2025-09-26 → 2025-09-24 (-2d) | 2025-11-14 → 2025-12-08 (+24d) |  |  |  |  |  |
| 33812 | Fire Suppression - Level 3 | 2025-10-13 → 2025-09-24 A (-19d) | 2025-10-31 → 2025-12-08 (+38d) |  |  | 33d → -20d |  |  |
| 33802 | Mechanical Rough-In - Level 3 | 2025-09-26 → 2025-09-25 A (-1d) | 2025-10-06 → 2025-11-07 (+32d) |  |  | 44d → -9d |  |  |
| 33792 | Plumbing Rough-In - Level 3 | 2025-10-07 → 2025-11-10 (+34d) | 2025-10-13 → 2025-11-14 (+32d) |  |  | 47d → -6d |  |  |
| 33782 | Electrical and Fire Alarm Rough-In - Level 3 | 2025-10-27 → 2025-11-14 (+18d) | 2025-11-14 → 2025-12-08 (+24d) |  |  | 28d → -15d |  |  |
| 691091993 | **Janus Scope** | 2025-09-26 → 2025-10-30 (+34d) | 2025-12-02 → 2026-01-06 (+35d) |  |  |  |  |  |
| 33842 | Level 1 - JS | 2025-09-26 → 2025-10-30 (+34d) | 2025-10-16 → 2025-11-19 (+34d) |  |  | 29d → -24d |  |  |
| 33852 | Level 2 - JS | 2025-10-20 → 2025-11-20 (+31d) | 2025-11-07 → 2025-12-12 (+35d) |  |  | 28d → -24d |  |  |
| 33862 | Level 3 - JS | 2025-11-10 → 2025-12-15 (+35d) | 2025-12-02 → 2026-01-06 (+35d) |  |  | 28d → -24d |  |  |
| 691094293 | **Elevators** | 2025-12-12 → 2025-11-12 (-30d) | 2026-02-17 → 2026-01-19 (-29d) |  |  |  |  |  |
| 33882 | Elevator Installation | 2025-12-12 → 2025-11-12 (-30d) | 2026-01-26 → 2025-12-26 (-31d) |  |  | 0d → -8d |  |  |
| 33892 | 3rd FLR - Elevator Infill and Lobby Finishes | 2026-01-27 → 2026-01-13 (-14d) | 2026-02-17 → 2026-01-19 (-29d) | 16d → 5d |  | 0d → -8d | 33882 → 33912 | was named Elevator Infill and Lobby Finishes (all Levels) |
| 691075093 | **Interiors** | 2025-10-13 → 2025-10-03 (-10d) | 2026-01-08 → 2026-02-10 (+33d) |  |  |  |  |  |
| 691074993 | **Storage Areas** | 2025-10-13 → 2025-10-03 (-10d) | 2026-01-08 → 2026-02-10 (+33d) |  |  |  |  |  |
| 691093393 | **Level 1 - Interiors** | 2025-10-29 → 2025-10-03 (-26d) | 2025-12-04 → 2025-11-06 (-28d) |  |  |  |  |  |
| 34922 | Paint Structure | 2025-10-29 → 2025-10-03 (-26d) | 2025-11-11 → 2025-10-16 (-26d) |  |  | 31d → 20d | Veneer Stud Framing → none |  |
| 34882 | Flooring Trim | 2025-11-12 → 2025-10-17 (-26d) | 2025-11-25 → 2025-10-30 (-26d) |  |  | 41d → 30d |  |  |
| 34892 | Lighting Trim | 2025-11-12 → 2025-10-17 (-26d) | 2025-11-25 → 2025-10-30 (-26d) |  |  | 31d → 20d |  |  |
| 34902 | Mechanical Trim | 2025-11-26 → 2025-10-31 (-26d) | 2025-12-04 → 2025-11-06 (-28d) |  |  | 41d → 30d |  |  |
| 34912 | Plumbing Trim | 2025-11-26 → 2025-10-31 (-26d) | 2025-12-04 → 2025-11-06 (-28d) |  |  | 51d → 40d |  |  |
| 691092793 | **Level 2 -Interiors** | 2025-11-12 → 2025-10-17 (-26d) | 2025-12-18 → 2025-11-20 (-28d) |  |  |  |  |  |
| 34862 | Paint Structure | 2025-11-12 → 2025-10-17 (-26d) | 2025-11-25 → 2025-10-30 (-26d) |  |  | 31d → 20d |  |  |
| 34822 | Flooring Trim | 2025-11-26 → 2025-10-31 (-26d) | 2025-12-11 → 2025-11-13 (-28d) |  |  | 36d → 25d |  |  |
| 34832 | Lighting Trim | 2025-11-26 → 2025-10-31 (-26d) | 2025-12-11 → 2025-11-13 (-28d) |  |  | 31d → 20d |  |  |
| 34842 | Mechanical Trim | 2025-12-12 → 2025-11-14 (-28d) | 2025-12-18 → 2025-11-20 (-28d) |  |  | 36d → 25d |  |  |
| 34852 | Plumbing Trim | 2025-12-12 → 2025-11-14 (-28d) | 2025-12-18 → 2025-11-20 (-28d) |  |  | 36d → 25d |  |  |
| 691075193 | **Level 3 - Interiors** | 2025-12-03 → 2026-01-07 (+35d) | 2026-01-08 → 2026-02-10 (+33d) |  |  |  |  |  |
| 1082 | Paint Structure | 2025-12-03 → 2026-01-07 (+35d) | 2025-12-16 → 2026-01-20 (+35d) |  |  | 28d → -24d | 35173, 1130, 33862, 34862 → 35173, 33862, 34862 |  |
| 1083 | Flooring Trim | 2025-12-17 → 2026-01-21 (+35d) | 2025-12-31 → 2026-02-03 (+34d) |  |  | 28d → -24d |  |  |
| 1084 | Lighting Trim | 2025-12-17 → 2026-01-21 (+35d) | 2025-12-31 → 2026-02-03 (+34d) |  |  | 28d → -24d |  |  |
| 1085 | Mechanical Trim | 2026-01-02 → 2026-02-04 (+33d) | 2026-01-08 → 2026-02-10 (+33d) |  |  | 28d → -24d |  |  |
| 1087 | Plumbing Trim | 2026-01-02 → 2026-02-04 (+33d) | 2026-01-08 → 2026-02-10 (+33d) |  |  | 28d → -24d |  |  |
| 691082593 | **Final Sitework** |  | 2025-10-30 → 2025-10-23 (-7d) |  |  |  |  |  |
| 691082693 | **Hardscapes** |  | 2025-10-30 → 2025-10-21 (-9d) |  |  |  |  |  |
| 1140 | Detention Pond Fencing |  | 2025-09-03 → 2025-09-26 A (+23d) |  | 0% → 100% | 154d → none |  |  |
| 1129 | Sidewalks | 2025-10-10 → 2025-09-30 A (-10d) | 2025-10-16 → 2025-10-09 (-7d) |  |  | 103d → 86d | 35383 → none |  |
| 1131 | Striping and Signage | 2025-10-30 → 2025-10-21 (-9d) | 2025-10-30 → 2025-10-21 (-9d) |  |  | 103d → 88d | 36026 → 36026, 1130 |  |
| 691082793 | **Landscapes** | 2025-10-17 → 2025-10-10 (-7d) | 2025-10-30 → 2025-10-23 (-7d) |  |  |  |  |  |
| 1179 | Irrigation Systems | 2025-10-17 → 2025-10-10 (-7d) | 2025-10-23 → 2025-10-16 (-7d) |  |  | 103d → 86d |  |  |
| 1189 | Plantings | 2025-10-24 → 2025-10-17 (-7d) | 2025-10-30 → 2025-10-23 (-7d) |  |  | 103d → 86d |  |  |
| 691075893 | **Closeout** | 2026-02-18 → 2026-02-11 (-7d) | 2026-03-17 → 2026-03-10 (-7d) |  |  |  |  |  |

| ID | Task | Start | Finish | Duration | Total float |
| --- | --- | --- | --- | --- | --- |
| 1111 | Commissioning | 2026-02-18 → 2026-02-11 (-7d) | 2026-03-03 → 2026-02-24 (-7d) |  | 0d → -24d |
| 1112 | Fire Alarm Programing/Testing | 2026-02-25 → 2026-02-18 (-7d) | 2026-03-03 → 2026-02-24 (-7d) |  | 0d → -24d |
| 1113 | Final Inspections | 2026-03-04 → 2026-02-25 (-7d) | 2026-03-17 → 2026-03-03 (-14d) | 10d → 5d | 0d → -24d |
| 1114 | WEO Overall / Final Punch List Work | 2026-03-04 → 2026-02-25 (-7d) | 2026-03-10 → 2026-03-03 (-7d) |  | 19d → 2d |
| 1115 | Develop Owner Punch Lists | 2026-03-11 → 2026-03-04 (-7d) | 2026-03-17 → 2026-03-10 (-7d) |  | 19d → 2d |

## Version 8 (data date 2025-10-31, saved 2025-10-31, file update_8.xer)

Note of the change: Add all project schedule files to buckets - 13 projects, MPP+XER, baseline+updates

Last finish stays 2026-03-12. Complete tasks 134 → 152.

Added:

| ID | Task | Duration | Start | Finish | Predecessors |
| --- | --- | --- | --- | --- | --- |
| 33822 | Interior Wall Framing - Level 3 RR | 5d | 2025-10-28 A | 2025-10-30 A | 36426 SS |
| 2 | **Level 3 Restrooms** |  | 2025-12-09 | 2026-01-13 |  |
| 37036 | Drywall - RR | 7d | 2025-12-09 | 2025-12-17 | 34932 |
| 37006 | Doors & Hardware - RR | 2d | 2025-12-18 | 2025-12-19 | 37036 |
| 36936 | Millwork - RR | 5d | 2025-12-22 | 2025-12-29 | 37006, 37036 |
| 36946 | Flooring - RR | 1d | 2025-12-30 | 2025-12-30 | 36936 |
| 36956 | Prime & Paint 1st Coat - RR | 2d | 2025-12-31 | 2026-01-02 | 36946 |
| 36976 | Light Fixtures - RR | 2d | 2026-01-05 | 2026-01-06 | 36956 |
| 37016 | Electrical Trim Out - RR | 2d | 2026-01-05 | 2026-01-06 | 36956 |
| 37026 | Mechanical Trim Out - RR | 2d | 2026-01-05 | 2026-01-06 | 36956 |
| 36986 | Plumbing Trim Out - RR | 2d | 2026-01-07 | 2026-01-08 | 37016 |
| 36996 | Final Coat Paint - RR | 1d | 2026-01-09 | 2026-01-09 | 36986 |
| 36966 | Install Appliances - RR | 2d | 2026-01-12 | 2026-01-13 | 36996 |
| 691075293 | **Level 1 Office** |  | 2025-11-21 | 2026-01-06 |  |
| 1 | **Level 1 Restroom** |  | 2025-11-25 | 2025-12-31 |  |
| 36926 | Drywall - RR | 7d | 2025-11-25 | 2025-12-05 | 34932 SS+2d |
| 36896 | Doors & Hardware - RR | 2d | 2025-12-08 | 2025-12-09 | 36926 |
| 36806 | Millwork - RR | 5d | 2025-12-10 | 2025-12-16 | 36896, 36926 |
| 36816 | Flooring - RR | 1d | 2025-12-17 | 2025-12-17 | 36806 |
| 36826 | Prime & Paint 1st Coat - RR | 2d | 2025-12-18 | 2025-12-19 | 36816 |
| 36846 | Light Fixtures - RR | 2d | 2025-12-22 | 2025-12-23 | 36826 |
| 36906 | Electrical Trim Out - RR | 2d | 2025-12-22 | 2025-12-23 | 36826 |
| 36916 | Mechanical Trim Out - RR | 2d | 2025-12-22 | 2025-12-23 | 36826 |
| 36856 | Plumbing Trim Out - RR | 2d | 2025-12-24 | 2025-12-26 | 36906 |
| 36866 | Final Coat Paint - RR | 1d | 2025-12-29 | 2025-12-29 | 36856 |
| 36836 | Install Appliances - RR | 2d | 2025-12-30 | 2025-12-31 | 36866 |

Removed: 35423 Asphalt Bottom Mat; 33424 Backing, Blocking and Flashing; 36646 Backing, Blocking and Flashing; Level 1 Office and Restrooms; 1108 Final Clean - Office; 1109 Punch List Work - Office

Changed:

| ID | Task | Start | Finish | Duration | Complete | Total float | Predecessors | Other |
| --- | --- | --- | --- | --- | --- | --- | --- | --- |
| 691056293 | **Construction Milestones** |  | 2025-10-23 → 2025-11-20 (+28d) |  |  |  |  |  |
| 1010 | Structure Complete | 2025-10-03 → 2025-10-31 (+28d) | 2025-10-03 → 2025-10-31 (+28d) |  |  | 101d → 81d |  |  |
| 1016 | Building Dry In | 2025-10-10 → 2025-10-31 (+21d) | 2025-10-10 → 2025-10-31 (+21d) |  |  | 81d → 67d |  |  |
| 1015 | Exterior Work Complete | 2025-10-23 → 2025-11-20 (+28d) | 2025-10-23 → 2025-11-20 (+28d) |  |  | 86d → 66d |  |  |
| 32922 | Electric Room MDP |  | 2025-10-03 → 2025-10-29 A (+26d) | 165d → 434d |  | 65d → none |  |  |
| 32912 | Elevator (By Owner) |  |  |  | 83% → 95% | -8d → 8d |  |  |
| 691065093 | **Construction** |  | 2026-03-10 → 2026-03-06 (-4d) |  |  |  |  |  |
| 691061993 | **Site Development** |  | 2025-10-20 → 2025-12-01 (+42d) |  |  |  |  |  |
| 691098993 | **Site Civil** |  | 2025-10-16 → 2025-12-01 (+46d) |  |  |  |  |  |
| 35283 | Electrical Main to Building | 2025-10-10 → 2025-11-21 (+42d) | 2025-10-16 → 2025-12-01 (+46d) |  |  | 10d → -4d | 1054, 36466 → 33652 |  |
| 691099993 | **Paving** |  | 2025-10-20 → 2025-11-06 (+17d) |  |  |  |  |  |
| 35373 | Finish Grade - Grid Line K, South |  | 2025-10-10 A |  |  | 88d → none |  |  |
| 35403 | Finish Grade - Grid Line K, North |  | 2025-10-10 A |  |  | 88d → none |  |  |
| 35384 | FRPS Sidewalk - Grid Line K, South | 2025-10-10 → 2025-09-29 A (-11d) | 2025-10-14 → 2025-09-30 A (-14d) |  | 0% → 100% | 88d → none | 35414 → 33842 | was named FRPS Sidewalk and Ballards - Grid Line K, South |
| 35443 | FRPS Trash Enclosure Slab | 2025-10-08 → 2025-10-07 A (-1d) | 2025-10-09 A |  | 0% → 100% | 88d → none |  |  |
| 36026 | Asphalt Btm and Top | 2025-10-17 → 2025-10-13 A (-4d) | 2025-10-20 → 2025-10-16 A (-4d) | 2d → 4d | 0% → 100% | 88d → none | Asphalt Bottom Mat → 35373 FS+1d | was named Asphalt Patch and Top Mat |
| 35344 | Trash Enclosure Masonry | 2025-10-03 → 2025-10-31 (+28d) | 2025-10-07 → 2025-11-04 (+28d) |  |  | 95d → 75d | 35343 → 33332 |  |
| 1130 | Trash Enclosure Gates | 2025-10-08 → 2025-11-05 (+28d) | 2025-10-09 → 2025-11-06 (+28d) |  |  | 95d → 75d | 35353, 35344 → 35344 |  |
| 691074793 | **Exterior Skin** |  | 2025-12-24 → 2026-01-09 (+16d) |  |  |  |  |  |
| 1075 | Roof Install |  | 2025-10-10 A |  | 0% → 100% | 14d → none |  |  |
| 691091693 | **South Elevation** |  | 2025-12-08 → 2025-12-10 (+2d) |  |  |  |  |  |
| 36556 | Exterior Metal Panel |  | 2025-11-19 → 2025-10-16 A (-34d) |  | 0% → 100% | 30d → none |  |  |
| 36546 | Masonry Veneer |  | 2025-10-22 → 2025-10-10 A (-12d) |  | 7% → 100% | 30d → none |  |  |
| 36566 | EIFS | 2025-10-23 → 2025-10-21 A (-2d) | 2025-11-12 → 2025-11-14 (+2d) | 15d → 10d |  | 30d → 20d |  |  |
| 33425 | Storefront Install | 2025-12-01 → 2025-12-03 (+2d) | 2025-12-03 → 2025-12-05 (+2d) |  |  | 30d → 26d | Backing, Blocking and Flashing → 36516 |  |
| 33426 | Canopy Install | 2025-12-04 → 2025-12-08 (+4d) | 2025-12-08 → 2025-12-10 (+2d) |  |  | 30d → 26d |  |  |
| 691091593 | **West Elevation** |  | 2025-11-24 → 2025-12-02 (+8d) |  |  |  |  |  |
| 36486 | Air/Weather Barrier |  | 2025-10-06 → 2025-10-10 A (+4d) |  | 0% → 100% | 74d → none |  |  |
| 36496 | Masonry Veneer | 2025-10-07 → 2025-10-10 A (+3d) | 2025-10-27 → 2025-10-21 A (-6d) | 15d → 8d | 0% → 100% | 74d → none |  |  |
| 36506 | Exterior Metal Panel | 2025-11-18 → 2025-10-22 A (-27d) | 2025-11-24 → 2025-11-21 (-3d) |  |  | 74d → 42d | 36516 → 36486, 36556 |  |
| 36516 | EIFS | 2025-10-28 → 2025-10-30 A (+2d) | 2025-11-17 → 2025-12-02 (+15d) | 15d → 10d |  | 74d → 20d | 36496 → 36566 |  |
| 691085593 | **North Elevation** |  | 2025-10-31 → 2025-12-16 (+46d) |  |  |  |  |  |
| 36296 | Sheathing |  | 2025-10-08 → 2025-10-10 A (+2d) |  | 0% → 100% | 34d → none |  |  |
| 36466 | Exterior Metal Panel | 2025-10-03 → 2025-10-14 A (+11d) | 2025-10-09 → 2025-10-22 A (+13d) |  | 0% → 100% | 10d → none | 36476 → 36476, 36506 SS |  |
| 36306 | Air/Weather Barrier and Insulation | 2025-10-09 → 2025-10-21 A (+12d) | 2025-10-13 → 2025-10-23 A (+10d) |  | 0% → 100% | 90d → none | 36296 → 36496 |  |
| 33332 | Masonry Veneer | 2025-10-14 → 2025-10-22 A (+8d) | 2025-10-31 → 2025-10-30 A (-1d) | 14d → 8d | 0% → 100% | 90d → none | 36306 → 36306, 36596 |  |
| 34802 | EIFS | 2025-10-03 → 2025-12-03 (+61d) | 2025-10-23 → 2025-12-16 (+54d) | 15d → 10d |  | 96d → 20d | 36476 → 33332, 36516 |  |
| 691115793 | **East Elevation** |  | 2025-12-24 → 2026-01-09 (+16d) |  |  |  |  |  |
| 36626 | Exterior Metal Panel |  | 2025-12-12 → 2025-10-16 A (-57d) |  | 0% → 100% | 30d → none |  |  |
| 36596 | Sheathing | 2025-10-09 → 2025-10-06 A (-3d) | 2025-10-14 → 2025-10-15 A (+1d) |  | 0% → 100% | 34d → none |  |  |
| 36606 | Air/Weather Barrier | 2025-10-15 → 2025-10-23 A (+8d) | 2025-10-16 → 2025-10-24 A (+8d) |  | 0% → 100% | 34d → none | 36596 → 36306 |  |
| 36616 | Masonry Veneer | 2025-10-23 → 2025-10-30 A (+7d) | 2025-11-12 → 2025-11-11 (-1d) | 15d → 8d |  | 30d → 43d | 36546, 36606 → 36546 |  |
| 36636 | EIFS | 2025-11-13 → 2025-12-17 (+34d) | 2025-12-05 → 2025-12-31 (+26d) | 15d → 10d |  | 30d → 20d | 36616 → 36616, 34802 |  |
| 36676 | Storefront Install | 2025-12-17 → 2026-01-02 (+16d) | 2025-12-19 → 2026-01-06 (+18d) |  |  | 30d → 20d | Backing, Blocking and Flashing → 36636 |  |
| 36686 | Canopy Install | 2025-12-22 → 2026-01-07 (+16d) | 2025-12-24 → 2026-01-09 (+16d) |  |  | 30d → 20d |  |  |
| 691091593 | **Rough-In** |  | 2025-12-08 → 2026-01-07 (+30d) |  |  |  |  |  |
| 691088793 | **Level 1 - Rough-In Work** |  | 2025-10-27 → 2025-11-20 (+24d) |  |  |  |  |  |
| 33642 | Mechanical Rough-In - Level 1 |  | 2025-10-20 → 2025-11-10 (+21d) |  |  | -24d → 54d |  |  |
| 33692 | Fire Suppression - Level 1 |  | 2025-10-23 → 2025-10-30 A (+7d) |  | 0% → 100% | -20d → none |  |  |
| 33632 | Interior Wall Framing - Level 1 | 2025-10-03 → 2025-10-10 A (+7d) | 2025-10-09 → 2025-10-28 A (+19d) |  | 0% → 100% | -24d → none |  |  |
| 33652 | Electrical and Fire Alarm Rough-In - Level 1 | 2025-10-03 → 2025-10-10 A (+7d) | 2025-10-23 → 2025-11-20 (+28d) |  |  | -15d → -24d |  |  |
| 33672 | Plumbing Rough-In - Level 1 | 2025-10-21 → 2025-10-15 A (-6d) | 2025-10-27 → 2025-11-17 (+21d) | 5d → 8d | 0% → 38% | -2d → 69d |  |  |
| 691088893 | **Level 2 - Rough-In Work** |  | 2025-11-13 → 2025-12-15 (+32d) |  |  |  |  |  |
| 33742 | Fire Suppression - Level 2 |  | 2025-11-13 → 2025-12-03 (+20d) |  |  | -20d → 54d |  |  |
| 33712 | Mechanical Rough-In - Level 2 |  | 2025-10-29 → 2025-11-19 (+21d) |  |  | -24d → 54d |  |  |
| 33732 | Plumbing Rough-In - Level 2 | 2025-10-30 → 2025-10-23 A (-7d) | 2025-11-05 → 2025-11-26 (+21d) |  |  | -4d → 67d |  |  |
| 33722 | Electrical and Fire Alarm Rough-In - Level 2 | 2025-10-24 → 2025-10-29 A (+5d) | 2025-11-13 → 2025-12-15 (+32d) |  |  | -15d → 46d |  |  |
| 691088993 | **Level 3 - Rough-In Work** |  | 2025-12-08 → 2026-01-07 (+30d) |  |  |  |  |  |
| 33812 | Fire Suppression - Level 3 |  | 2025-12-08 → 2025-12-24 (+16d) |  |  | -20d → 54d |  |  |
| 33802 | Mechanical Rough-In - Level 3 |  | 2025-11-07 → 2025-12-02 (+25d) |  |  | -9d → 62d |  |  |
| 33792 | Plumbing Rough-In - Level 3 | 2025-11-10 → 2025-10-27 A (-14d) | 2025-11-14 → 2025-12-09 (+25d) |  |  | -6d → 65d |  |  |
| 33782 | Electrical and Fire Alarm Rough-In - Level 3 | 2025-11-14 → 2025-12-16 (+32d) | 2025-12-08 → 2026-01-07 (+30d) |  |  | -15d → 46d | 33722 → 33722, 33822 |  |
| 691091993 | **Janus Scope** | 2025-10-30 → 2025-10-20 (-10d) | 2026-01-06 → 2025-12-30 (-7d) |  |  |  |  |  |
| 33842 | Level 1 - JS | 2025-10-30 → 2025-10-20 A (-10d) | 2025-11-19 → 2025-11-13 (-6d) | 15d → 10d |  | -24d → -14d | 33712, 36456 → 33692 FS+1d |  |
| 33852 | Level 2 - JS | 2025-11-20 → 2025-11-14 (-6d) | 2025-12-12 → 2025-12-08 (-4d) |  |  | -24d → -14d | 33722 SS+10d, 33842 → 33842 |  |
| 33862 | Level 3 - JS | 2025-12-15 → 2025-12-09 (-6d) | 2026-01-06 → 2025-12-30 (-7d) |  |  | -24d → -14d | 33782 SS+10d, 33792, 33812, 33852 → 33852 |  |
| 691094293 | **Elevators** | 2025-11-12 → 2025-12-02 (+20d) | 2026-01-19 → 2026-01-14 (-5d) |  |  |  |  |  |
| 33882 | Elevator Installation | 2025-11-12 → 2025-12-02 (+20d) | 2025-12-26 → 2026-01-14 (+19d) |  |  | -8d → -4d | 35163, 35283, 32912, 1075 → 35283, 32912 |  |
| 33902 | 1st FLR - Elevator Infill and Lobby Finishes | 2025-12-29 → 2025-12-04 (-25d) | 2026-01-05 → 2025-12-05 (-31d) | 5d → 2d |  | -8d → 18d | 33882 → 33882 SS+2d |  |
| 33912 | 2nd FLR - Elevator Infill and Lobby Finishes | 2026-01-06 → 2025-12-08 (-29d) | 2026-01-12 → 2025-12-09 (-34d) | 5d → 2d |  | -8d → 18d |  |  |

| ID | Task | Start | Finish | Duration | Total float | Predecessors | Other |
| --- | --- | --- | --- | --- | --- | --- | --- |
| 33892 | 3rd FLR - Elevator Infill and Lobby Finishes | 2026-01-13 → 2025-12-10 (-34d) | 2026-01-19 → 2025-12-11 (-39d) | 5d → 2d | -8d → 18d |  |  |
| 691075093 | **Interiors** | 2025-10-03 → 2025-11-21 (+49d) | 2026-02-10 → 2026-02-11 (+1d) |  |  |  |  |
| 691074993 | **Storage Areas** | 2025-10-03 → 2025-11-21 (+49d) | 2026-02-10 → 2026-02-11 (+1d) |  |  |  |  |
| 691093393 | **Level 1 - Interiors** | 2025-10-03 → 2025-12-09 (+67d) | 2025-11-06 → 2026-01-14 (+69d) |  |  |  |  |
| 34922 | Paint Deck | 2025-10-03 → 2025-12-09 (+67d) | 2025-10-16 → 2025-12-22 (+67d) |  | 20d → -24d | none → 34932 | was named Paint Structure |
| 34882 | Flooring Trim | 2025-10-17 → 2025-12-23 (+67d) | 2025-10-30 → 2025-12-30 (+61d) | 10d → 5d | 30d → -9d |  |  |
| 34892 | Lighting Trim | 2025-10-17 → 2025-12-23 (+67d) | 2025-10-30 → 2026-01-07 (+69d) |  | 20d → -24d |  |  |
| 34912 | Plumbing Trim | 2025-10-31 → 2025-12-31 (+61d) | 2025-11-06 → 2026-01-07 (+62d) |  | 40d → 1d |  |  |
| 34902 | Mechanical Trim | 2025-10-31 → 2026-01-08 (+69d) | 2025-11-06 → 2026-01-14 (+69d) |  | 30d → -14d |  |  |
| 691092793 | **Level 2 -Interiors** | 2025-10-17 → 2025-12-23 (+67d) | 2025-11-20 → 2026-01-28 (+69d) |  |  |  |  |
| 34862 | Paint Deck | 2025-10-17 → 2025-12-23 (+67d) | 2025-10-30 → 2026-01-07 (+69d) |  | 20d → -19d |  | was named Paint Structure |
| 34822 | Flooring Trim | 2025-10-31 → 2026-01-08 (+69d) | 2025-11-13 → 2026-01-14 (+62d) | 10d → 5d | 25d → -14d |  |  |
| 34832 | Lighting Trim | 2025-10-31 → 2026-01-08 (+69d) | 2025-11-13 → 2026-01-21 (+69d) |  | 20d → -24d |  |  |
| 34852 | Plumbing Trim | 2025-11-14 → 2026-01-15 (+62d) | 2025-11-20 → 2026-01-21 (+62d) |  | 25d → -14d |  |  |
| 34842 | Mechanical Trim | 2025-11-14 → 2026-01-22 (+69d) | 2025-11-20 → 2026-01-28 (+69d) |  | 25d → -19d |  |  |
| 691075193 | **Level 3 - Interiors** | 2026-01-07 → 2026-01-08 (+1d) | 2026-02-10 → 2026-02-11 (+1d) |  |  |  |  |
| 1082 | Paint Deck | 2026-01-07 → 2026-01-08 (+1d) | 2026-01-20 → 2026-01-21 (+1d) |  | -24d → -19d |  | was named Paint Structure |
| 1083 | Flooring Trim | 2026-01-21 → 2026-01-22 (+1d) | 2026-02-03 → 2026-01-28 (-6d) | 10d → 5d | -24d → -19d |  |  |
| 1084 | Lighting Trim | 2026-01-21 → 2026-01-22 (+1d) | 2026-02-03 → 2026-02-04 (+1d) |  |  | 34832, 34892, 1082 SS+10d → 34832, 34892, 1082 SS+5d |  |
| 1087 | Plumbing Trim | 2026-02-04 → 2026-01-29 (-6d) | 2026-02-10 → 2026-02-04 (-6d) |  | -24d → -19d |  |  |
| 1085 | Mechanical Trim | 2026-02-04 → 2026-02-05 (+1d) | 2026-02-10 → 2026-02-11 (+1d) |  |  |  |  |
| 34932 | Drywall - Office | 2025-10-13 → 2025-11-21 (+39d) | 2025-10-21 → 2025-12-08 (+48d) | 7d → 10d | 18d → -24d | 1075 → 33652 |  |
| 1106 | Doors & Hardware - Office | 2025-10-22 → 2025-12-09 (+48d) | 2025-10-28 → 2025-12-10 (+43d) | 5d → 2d | 18d → 9d |  |  |
| 1095 | Millwork - Office | 2025-10-29 → 2025-12-11 (+43d) | 2025-11-04 → 2025-12-17 (+43d) |  | 18d → 9d |  |  |
| 1096 | Flooring - Office | 2025-11-05 → 2025-12-18 (+43d) | 2025-11-11 → 2025-12-19 (+38d) | 5d → 2d | 18d → 9d |  |  |
| 1097 | Prime & Paint 1st Coat - Office | 2025-11-12 → 2025-12-22 (+40d) | 2025-11-18 → 2025-12-23 (+35d) | 5d → 2d | 18d → 9d |  |  |
| 1100 | Light Fixtures - Office | 2025-11-19 → 2025-12-24 (+35d) | 2025-11-25 → 2025-12-26 (+31d) | 5d → 2d | 37d → 15d |  |  |
| 1103 | Mechanical Trim Out - Office | 2025-11-19 → 2025-12-24 (+35d) | 2025-11-25 → 2025-12-26 (+31d) | 5d → 2d | 37d → 15d |  |  |
| 1104 | Electrical Trim Out - Office | 2025-11-19 → 2025-12-24 (+35d) | 2025-11-25 → 2025-12-26 (+31d) | 5d → 2d | 18d → 9d |  |  |
| 1105 | Plumbing Trim Out - Office | 2025-11-26 → 2025-12-29 (+33d) | 2025-12-04 → 2025-12-30 (+26d) | 5d → 2d | 18d → 9d |  |  |
| 1107 | Final Coat Paint - Office | 2025-12-05 → 2025-12-31 (+26d) | 2025-12-11 → 2026-01-02 (+22d) | 5d → 2d | 18d → 9d |  |  |
| 1099 | Install Appliances - Office | 2025-12-12 → 2026-01-05 (+24d) | 2025-12-15 → 2026-01-06 (+22d) |  | 25d → 9d |  |  |
| 691082593 | **Final Sitework** |  | 2025-10-23 → 2025-11-20 (+28d) |  |  |  |  |
| 691082693 | **Hardscapes** |  | 2025-10-21 → 2025-11-14 (+24d) |  |  |  |  |
| 1129 | Sidewalks |  | 2025-10-09 → 2025-11-06 (+28d) |  | 86d → 66d |  |  |
| 1131 | Striping and Signage | 2025-10-21 → 2025-11-14 (+24d) | 2025-10-21 → 2025-11-14 (+24d) |  | 88d → 70d | 36026, 1130 → 36026, 1130, 35384 |  |
| 691082793 | **Landscapes** | 2025-10-10 → 2025-11-07 (+28d) | 2025-10-23 → 2025-11-20 (+28d) |  |  |  |  |
| 1179 | Irrigation Systems | 2025-10-10 → 2025-11-07 (+28d) | 2025-10-16 → 2025-11-13 (+28d) |  | 86d → 66d |  |  |
| 1189 | Plantings | 2025-10-17 → 2025-11-14 (+28d) | 2025-10-23 → 2025-11-20 (+28d) |  | 86d → 66d |  |  |
| 691075893 | **Closeout** | 2026-02-11 → 2026-02-12 (+1d) | 2026-03-10 → 2026-03-06 (-4d) |  |  |  |  |
| 1111 | Commissioning | 2026-02-11 → 2026-02-12 (+1d) | 2026-02-24 → 2026-02-20 (-4d) | 10d → 7d |  |  |  |
| 1112 | Fire Alarm Programing/Testing | 2026-02-18 → 2026-02-16 (-2d) | 2026-02-24 → 2026-02-20 (-4d) |  |  |  |  |
| 1113 | Final Inspections | 2026-02-25 → 2026-02-23 (-2d) |  | 5d → 7d |  | 33426, Punch List Work - Office, 1099, 1103, 1100, 36466, 33182, 33172, 1112 → 33426, 1099, 1103, 1100, 36466, 33182, 33172, 1112 |  |
| 1114 | WEO Overall / Final Punch List Work | 2026-02-25 → 2026-02-23 (-2d) | 2026-03-03 → 2026-02-27 (-4d) |  | 2d → 4d |  |  |
| 1115 | Develop Owner Punch Lists | 2026-03-04 → 2026-03-02 (-2d) | 2026-03-10 → 2026-03-06 (-4d) |  | 2d → 4d |  |  |

## Version 9 (data date 2025-12-05, saved 2025-12-05, file update_9.xer)

Note of the change: Add all project schedule files to buckets - 13 projects, MPP+XER, baseline+updates

Last finish stays 2026-03-12. Complete tasks 152 → 169.

Added:

| ID | Task | Duration | Start | Finish | Predecessors |
| --- | --- | --- | --- | --- | --- |
| 1020 | 1st Floor Partial TCO | 5d | 2026-01-30 | 2026-02-05 | 1151 |
| 33662 | Machine Room RFI - Work stopped (includes RBD review) | 10d | 2025-11-06 A | 2025-11-20 A | 33642 |
| 33682 | Machine Room RFI - Work Commenced | 10d | 2025-11-21 A | 2025-12-11 | 33662 |
| 1121 | Level 1 Inspections | 5d | 2025-12-12 | 2025-12-18 | 1112 |
| 1161 | Level 1 Commissioning | 5d | 2026-01-07 | 2026-01-13 | 36836, 1099, 1121 |
| 1141 | Level 1 WEO Punch List | 5d | 2026-01-16 | 2026-01-22 | 1112, 1103, 36916 |
| 1151 | Level 1 Owner Punch List | 5d | 2026-01-23 | 2026-01-29 | 1141 |

Removed: 34862 Paint Deck; 34822 Flooring Trim; 34852 Plumbing Trim; 1087 Plumbing Trim; 36936 Millwork - RR

Changed:

| ID | Task | Start | Finish | Duration | Complete | Total float | Predecessors |
| --- | --- | --- | --- | --- | --- | --- | --- |
| 691056293 | **Construction Milestones** |  | 2025-11-20 → 2026-02-05 (+77d) |  |  |  |  |
| 1010 | Structure Complete | 2025-10-31 → 2025-12-05 (+35d) | 2025-10-31 → 2025-12-05 (+35d) |  |  | 81d → 55d |  |
| 1016 | Building Dry In | 2025-10-31 → 2025-12-05 (+35d) | 2025-10-31 → 2025-12-05 (+35d) |  |  | 67d → 44d |  |
| 1015 | Exterior Work Complete | 2025-11-20 → 2025-12-22 (+32d) | 2025-11-20 → 2025-12-22 (+32d) |  |  | 66d → 43d | 1016 FF, 1010 FF, 1131, 1189 → 1016 FF, 1010 FF, 1131, 36636 FF |
| 691060893 | **Pre-Construciton** |  | 2025-11-11 → 2025-12-15 (+34d) |  |  |  |  |
| 691060793 | **Procurement** |  | 2025-11-11 → 2025-12-15 (+34d) |  |  |  |  |
| 32912 | Elevator (By Owner) |  | 2025-11-11 → 2025-12-15 (+34d) |  | 95% → 96% | 8d → -13d |  |
| 691065093 | **Construction** |  | 2026-03-06 → 2026-03-03 (-3d) |  |  |  |  |
| 691061993 | **Site Development** |  | 2025-12-01 → 2025-12-23 (+22d) |  |  |  |  |
| 691098993 | **Site Civil** |  | 2025-12-01 → 2025-12-23 (+22d) |  |  |  |  |
| 35283 | Electrical Main to Building | 2025-11-21 → 2025-12-02 A (+11d) | 2025-12-01 → 2025-12-23 (+22d) | 5d → 10d | 0% → 90% | -4d → -19d | 33652 → 33652, 36636 |
| 691099993 | **Paving** |  | 2025-11-06 → 2025-12-08 (+32d) |  |  |  |  |
| 35344 | Trash Enclosure Masonry | 2025-10-31 → 2025-11-10 A (+10d) | 2025-11-04 → 2025-11-11 A (+7d) |  | 0% → 100% | 75d → none | 33332 → 36616 |
| 1130 | Trash Enclosure Gates | 2025-11-05 → 2025-12-05 (+30d) | 2025-11-06 → 2025-12-08 (+32d) |  |  | 75d → 52d | 35344 → 35344 FS+12d |
| 691074793 | **Exterior Skin** |  | 2026-01-09 → 2025-12-22 (-18d) |  |  |  |  |
| 691091693 | **South Elevation** |  | 2025-12-10 → 2025-12-12 (+2d) |  |  |  |  |
| 36566 | EIFS |  | 2025-11-14 → 2025-11-04 A (-10d) |  | 0% → 100% | 20d → none |  |
| 33425 | Storefront Install | 2025-12-03 → 2025-11-11 A (-22d) | 2025-12-05 → 2025-12-09 (+4d) |  |  | 26d → 23d | 36516 → 36516 FS+2d |
| 33426 | Canopy Install | 2025-12-08 → 2025-12-10 (+2d) | 2025-12-10 → 2025-12-12 (+2d) |  |  | 26d → 23d |  |
| 691091593 | **West Elevation** |  | 2025-12-02 → 2025-11-20 (-12d) |  |  |  |  |
| 36506 | Exterior Metal Panel |  | 2025-11-21 → 2025-11-10 A (-11d) |  | 0% → 100% | 42d → none |  |
| 36516 | EIFS |  | 2025-12-02 → 2025-11-20 A (-12d) |  | 0% → 100% | 20d → none |  |
| 691085593 | **North Elevation** |  | 2025-12-16 → 2025-12-10 (-6d) |  |  |  |  |
| 34802 | EIFS | 2025-12-03 → 2025-11-18 A (-15d) | 2025-12-16 → 2025-12-10 (-6d) | 10d → 8d | 0% → 50% | 20d → -19d |  |
| 691115793 | **East Elevation** |  | 2026-01-09 → 2025-12-22 (-18d) |  |  |  |  |
| 36616 | Masonry Veneer |  | 2025-11-11 → 2025-11-07 A (-4d) |  | 0% → 100% | 43d → none |  |
| 36676 | Storefront Install | 2026-01-02 → 2025-11-11 A (-52d) | 2026-01-06 → 2025-12-09 (-28d) |  |  | 20d → 38d | 36636 → 33425 SS |
| 36636 | EIFS | 2025-12-17 → 2025-11-20 A (-27d) | 2025-12-31 → 2025-12-22 (-9d) | 10d → 8d |  | 20d → -19d | 36616, 34802 → 34802 |
| 36686 | Canopy Install | 2026-01-07 → 2025-12-10 (-28d) | 2026-01-09 → 2025-12-12 (-28d) |  |  | 20d → 38d |  |
| 691091593 | **Rough-In** | 2025-07-21 → 2025-07-23 (+2d) | 2026-01-07 → 2026-01-22 (+15d) |  |  |  |  |
| 691088793 | **Level 1 - Rough-In Work** | 2025-07-21 → 2025-07-23 (+2d) | 2025-11-20 → 2025-12-11 (+21d) |  |  |  |  |
| 33642 | Mechanical Rough-In - Level 1 | 2025-07-21 A → 2025-09-02 A (+43d) | 2025-11-10 → 2025-11-06 A (-4d) | 7d → 65d | 0% → 100% | 54d → none |  |
| 33652 | Electrical and Fire Alarm Rough-In - Level 1 |  | 2025-11-20 → 2025-12-11 (+21d) | 15d → 29d | 0% → 83% | -24d → -21d |  |
| 33672 | Plumbing Rough-In - Level 1 |  | 2025-11-17 → 2025-11-19 A (+2d) |  | 38% → 100% | 69d → none | 33632, 33642 → 33632 |
| 691088893 | **Level 2 - Rough-In Work** |  | 2025-12-15 → 2026-01-02 (+18d) |  |  |  |  |
| 33742 | Fire Suppression - Level 2 |  | 2025-12-03 → 2025-11-12 A (-21d) |  | 0% → 100% | 54d → none |  |
| 33712 | Mechanical Rough-In - Level 2 |  | 2025-11-19 → 2025-11-06 A (-13d) |  | 0% → 100% | 54d → none | 33642 → none |
| 33732 | Plumbing Rough-In - Level 2 |  | 2025-11-26 → 2025-11-11 A (-15d) |  | 0% → 100% | 67d → none |  |
| 33722 | Electrical and Fire Alarm Rough-In - Level 2 |  | 2025-12-15 → 2026-01-02 (+18d) |  | 0% → 7% | 46d → 35d |  |
| 691088993 | **Level 3 - Rough-In Work** |  | 2026-01-07 → 2026-01-22 (+15d) |  |  |  |  |
| 33812 | Fire Suppression - Level 3 |  | 2025-12-24 → 2025-11-20 A (-34d) |  | 0% → 100% | 54d → none |  |
| 33802 | Mechanical Rough-In - Level 3 |  | 2025-12-02 → 2025-11-13 A (-19d) |  | 0% → 100% | 62d → none |  |
| 33792 | Plumbing Rough-In - Level 3 |  | 2025-12-09 → 2025-12-01 A (-8d) |  | 0% → 100% | 65d → none |  |
| 33782 | Electrical and Fire Alarm Rough-In - Level 3 | 2025-12-16 → 2026-01-05 (+20d) | 2026-01-07 → 2026-01-22 (+15d) | 15d → 14d |  | 46d → 35d |  |
| 691091993 | **Janus Scope** |  | 2025-12-30 → 2026-01-19 (+20d) |  |  |  |  |
| 33842 | Level 1 - JS |  | 2025-11-13 → 2025-11-12 A (-1d) |  | 0% → 100% | -14d → none |  |
| 33852 | Level 2 - JS | 2025-11-14 → 2025-11-13 A (-1d) | 2025-12-08 → 2025-12-26 (+18d) |  |  | -14d → -24d |  |
| 33862 | Level 3 - JS | 2025-12-09 → 2025-12-29 (+20d) | 2025-12-30 → 2026-01-19 (+20d) |  |  | -14d → -24d |  |
| 691094293 | **Elevators** | 2025-12-02 → 2025-12-24 (+22d) | 2026-01-14 → 2026-02-05 (+22d) |  |  |  |  |
| 33882 | Elevator Installation | 2025-12-02 → 2025-12-24 (+22d) | 2026-01-14 → 2026-02-05 (+22d) |  |  | -4d → -19d |  |
| 33902 | 1st FLR - Elevator Infill and Lobby Finishes | 2025-12-04 → 2025-12-29 (+25d) | 2025-12-05 → 2025-12-30 (+25d) |  |  | 18d → 3d |  |
| 33912 | 2nd FLR - Elevator Infill and Lobby Finishes | 2025-12-08 → 2025-12-31 (+23d) | 2025-12-09 → 2026-01-02 (+24d) |  |  | 18d → 3d |  |
| 33892 | 3rd FLR - Elevator Infill and Lobby Finishes | 2025-12-10 → 2026-01-05 (+26d) | 2025-12-11 → 2026-01-06 (+26d) |  |  | 18d → 3d |  |
| 691075093 | **Interiors** | 2025-11-21 → 2025-12-01 (+10d) | 2026-02-11 → 2026-02-12 (+1d) |  |  |  |  |
| 691074993 | **Storage Areas** | 2025-11-21 → 2025-12-01 (+10d) | 2026-02-11 → 2026-02-12 (+1d) |  |  |  |  |
| 691093393 | **Level 1 - Interiors** | 2025-12-09 → 2025-12-22 (+13d) | 2026-01-14 → 2026-01-22 (+8d) |  |  |  |  |
| 34922 | Paint Deck | 2025-12-09 → 2025-12-22 (+13d) | 2025-12-22 → 2026-01-06 (+15d) |  |  | -24d → -22d |  |
| 34882 | Flooring Trim | 2025-12-23 → 2026-01-07 (+15d) | 2025-12-30 → 2026-01-13 (+14d) |  |  | -9d → -7d |  |
| 34892 | Lighting Trim | 2025-12-23 → 2026-01-07 (+15d) | 2026-01-07 → 2026-01-15 (+8d) | 10d → 7d |  | -24d → -22d |  |
| 34912 | Plumbing Trim | 2025-12-31 → 2026-01-14 (+14d) | 2026-01-07 → 2026-01-20 (+13d) |  |  | 1d → -7d |  |
| 34902 | Mechanical Trim | 2026-01-08 → 2026-01-16 (+8d) | 2026-01-14 → 2026-01-22 (+8d) |  |  | -14d → 35d |  |
| 691092793 | **Level 2 -Interiors** | 2025-12-23 → 2026-01-16 (+24d) | 2026-01-28 → 2026-02-05 (+8d) |  |  |  |  |
| 34832 | Lighting Trim | 2026-01-08 → 2026-01-16 (+8d) | 2026-01-21 → 2026-01-22 (+1d) | 10d → 5d |  | -24d → -22d |  |
| 34842 | Mechanical Trim | 2026-01-22 → 2026-01-30 (+8d) | 2026-01-28 → 2026-02-05 (+8d) |  |  | -19d → -22d |  |
| 691075193 | **Level 3 - Interiors** | 2026-01-08 → 2026-01-20 (+12d) | 2026-02-11 → 2026-02-12 (+1d) |  |  |  |  |
| 1082 | Paint Deck | 2026-01-08 → 2026-01-20 (+12d) | 2026-01-21 → 2026-01-22 (+1d) | 10d → 3d |  | -19d → -24d | 35173, 33862, Paint Deck → 35173, 33862, 34922 |
| 1084 | Lighting Trim | 2026-01-22 → 2026-01-27 (+5d) |  | 10d → 7d |  |  |  |
| 1083 | Flooring Trim | 2026-01-22 → 2026-02-03 (+12d) | 2026-01-28 → 2026-02-04 (+7d) | 5d → 2d |  | -19d → 26d |  |
| 1085 | Mechanical Trim | 2026-02-05 → 2026-02-10 (+5d) | 2026-02-11 → 2026-02-12 (+1d) | 5d → 3d |  |  |  |
| 2 | **Level 3 Restrooms** | 2025-12-09 → 2025-12-22 (+13d) |  |  |  |  |  |

| ID | Task | Start | Finish | Duration | Complete | Total float | Predecessors |
| --- | --- | --- | --- | --- | --- | --- | --- |
| 37036 | Drywall - RR | 2025-12-09 → 2025-12-22 (+13d) | 2025-12-17 → 2025-12-29 (+12d) | 7d → 5d |  | 42d → 3d |  |
| 36946 | Flooring - RR |  |  |  |  | 42d → 3d | Millwork - RR → 37036 |
| 37006 | Doors & Hardware - RR | 2025-12-18 → 2025-12-30 (+12d) | 2025-12-19 → 2025-12-31 (+12d) |  |  | 42d → 50d |  |
| 691075293 | **Level 1 Office** | 2025-11-21 → 2025-12-01 (+10d) | 2026-01-06 → 2026-01-15 (+9d) |  |  |  |  |
| 1096 | Flooring - Office | 2025-12-18 → 2025-12-01 A (-17d) | 2025-12-19 → 2025-12-04 A (-15d) |  | 0% → 100% | 9d → none | 1095 → 33632 |
| 1097 | Prime & Paint 1st Coat - Office | 2025-12-22 → 2025-12-05 (-17d) | 2025-12-23 → 2025-12-08 (-15d) |  |  | 9d → 14d |  |
| 1100 | Light Fixtures - Office | 2025-12-24 → 2025-12-09 (-15d) | 2025-12-26 → 2025-12-10 (-16d) |  |  | 15d → 16d |  |
| 1104 | Electrical Trim Out - Office | 2025-12-24 → 2025-12-09 (-15d) | 2025-12-26 → 2025-12-10 (-16d) |  |  | 9d → 14d |  |
| 1105 | Plumbing Trim Out - Office | 2025-12-29 → 2025-12-11 (-18d) | 2025-12-30 → 2025-12-12 (-18d) |  |  | 9d → 14d |  |
| 34932 | Drywall - Office | 2025-11-21 → 2025-12-15 (+24d) | 2025-12-08 → 2025-12-19 (+11d) | 10d → 5d |  | -24d → -22d | 33652 → 33652, 36926 |
| 1106 | Doors & Hardware - Office | 2025-12-09 → 2025-12-22 (+13d) | 2025-12-10 → 2025-12-23 (+13d) |  |  | 9d → 5d |  |
| 1095 | Millwork - Office | 2025-12-11 → 2025-12-24 (+13d) | 2025-12-17 → 2025-12-26 (+9d) | 5d → 2d |  | 9d → 5d |  |
| 1107 | Final Coat Paint - Office | 2025-12-31 → 2025-12-29 (-2d) | 2026-01-02 → 2025-12-30 (-3d) |  |  | 9d → 5d | 1105 → 1105, 1100, 1095 |
| 1099 | Install Appliances - Office | 2026-01-05 → 2025-12-31 (-5d) | 2026-01-06 → 2026-01-02 (-4d) |  |  | 9d → 5d |  |
| 1103 | Mechanical Trim Out - Office | 2025-12-24 → 2026-01-14 (+21d) | 2025-12-26 → 2026-01-15 (+20d) |  |  | 15d → 25d | 1097 → 36966 |
| 1 | **Level 1 Restroom** | 2025-11-25 → 2025-12-03 (+8d) | 2025-12-31 → 2026-01-06 (+6d) |  |  |  |  |
| 36926 | Drywall - RR | 2025-11-25 → 2025-12-03 A (+8d) | 2025-12-05 → 2025-12-12 (+7d) | 7d → 5d |  | 50d → -22d | 34932 SS+2d → 33692 |
| 36896 | Doors & Hardware - RR | 2025-12-08 → 2025-12-15 (+7d) | 2025-12-09 → 2025-12-16 (+7d) |  |  | 50d → 3d |  |
| 36806 | Millwork - RR | 2025-12-10 → 2025-12-17 (+7d) | 2025-12-16 → 2025-12-19 (+3d) | 5d → 3d |  | 50d → 3d |  |
| 36816 | Flooring - RR | 2025-12-17 → 2025-12-22 (+5d) | 2025-12-17 → 2025-12-22 (+5d) |  |  | 50d → 3d |  |
| 36826 | Prime & Paint 1st Coat - RR | 2025-12-18 → 2025-12-23 (+5d) | 2025-12-19 → 2025-12-24 (+5d) |  |  | 50d → 3d |  |
| 36846 | Light Fixtures - RR | 2025-12-22 → 2025-12-26 (+4d) | 2025-12-23 → 2025-12-29 (+6d) |  |  | 55d → 5d |  |
| 36906 | Electrical Trim Out - RR | 2025-12-22 → 2025-12-26 (+4d) | 2025-12-23 → 2025-12-29 (+6d) |  |  | 50d → 3d |  |
| 36916 | Mechanical Trim Out - RR | 2025-12-22 → 2025-12-26 (+4d) | 2025-12-23 → 2025-12-29 (+6d) |  |  | 55d → 37d |  |
| 36856 | Plumbing Trim Out - RR | 2025-12-24 → 2025-12-30 (+6d) | 2025-12-26 → 2025-12-31 (+5d) |  |  | 50d → 3d |  |
| 36866 | Final Coat Paint - RR | 2025-12-29 → 2026-01-02 (+4d) | 2025-12-29 → 2026-01-02 (+4d) |  |  | 50d → 3d | 36856 → 36856, 36846 |
| 36836 | Install Appliances - RR | 2025-12-30 → 2026-01-05 (+6d) | 2025-12-31 → 2026-01-06 (+6d) |  |  | 50d → 3d |  |
| 691082593 | **Final Sitework** |  | 2025-11-20 → 2026-01-19 (+60d) |  |  |  |  |
| 691082693 | **Hardscapes** |  | 2025-11-14 → 2025-12-09 (+25d) |  |  |  |  |
| 1129 | Sidewalks |  | 2025-11-06 → 2025-11-19 A (+13d) |  | 0% → 100% | 66d → none |  |
| 1131 | Striping and Signage | 2025-11-14 → 2025-12-09 (+25d) | 2025-11-14 → 2025-12-09 (+25d) |  |  | 70d → 52d |  |
| 691082793 | **Landscapes** | 2025-11-07 → 2026-01-06 (+60d) | 2025-11-20 → 2026-01-19 (+60d) |  |  |  |  |
| 1179 | Irrigation Systems | 2025-11-07 → 2026-01-06 (+60d) | 2025-11-13 → 2026-01-12 (+60d) |  |  | 66d → 38d | 1129 → 1129 FS+30d |
| 1189 | Plantings | 2025-11-14 → 2026-01-13 (+60d) | 2025-11-20 → 2026-01-19 (+60d) |  |  | 66d → 38d |  |
| 691075893 | **Closeout** | 2026-02-12 → 2025-12-05 (-69d) | 2026-03-06 → 2026-03-03 (-3d) |  |  |  |  |
| 1112 | Fire Alarm Programing/Testing | 2026-02-16 → 2025-12-05 (-73d) | 2026-02-20 → 2025-12-11 (-71d) |  |  | -24d → 14d | 1111 FS-5d → none |
| 1114 | WEO Overall / Final Punch List Work | 2026-02-23 → 2025-12-23 (-62d) | 2026-02-27 → 2026-01-05 (-53d) | 5d → 8d |  | 4d → 43d | 1015, 1189, 1112 → 1015 |
| 1115 | Develop Owner Punch Lists | 2026-03-02 → 2026-01-06 (-55d) | 2026-03-06 → 2026-01-12 (-53d) |  |  | 4d → 43d |  |
| 1111 | Commissioning | 2026-02-12 → 2026-02-13 (+1d) | 2026-02-20 → 2026-02-19 (-1d) | 7d → 5d |  |  | 34912, 32922, 33892, 33882, 1084, Plumbing Trim, 1085 → 34912, 32922, 33892, 33882, 1084, 1085 |
| 1113 | Final Inspections | 2026-02-23 → 2026-02-20 (-3d) |  | 7d → 8d |  |  | 33426, 1099, 1103, 1100, 36466, 33182, 33172, 1112 → 33426, 36466, 33182, 33172, 36966, 1111, 1161 |

## Version 10 (data date 2026-01-07, saved 2026-01-07, file update_10.xer)

Note of the change: Add all project schedule files to buckets - 13 projects, MPP+XER, baseline+updates

Last finish stays 2026-03-12. Complete tasks 169 → 199.

Added:

| ID | Task | Duration | Start | Finish | Predecessors |
| --- | --- | --- | --- | --- | --- |
| 1 | **Machine Room** |  | 2025-11-06 | 2025-11-20 |  |
| 1 | **Machine Room Redesign** |  | 2025-11-06 | 2025-11-20 |  |
| 37156 | Delay- Machine Room RFI - Work stopped (includes RBD review) | 10d | 2025-11-06 A | 2025-11-20 A | 33762 |
| 33762 | Machine Room Build out | 5d | 2025-11-03 A | 2025-11-06 A | 33652 |
| 33702 | Fire Alarm Rough In - Level 1 | 5d | 2025-11-20 A | 2025-12-22 A | 33632 |
| 33752 | Fire Alarm Rough In - Level 2 | 5d | 2025-11-20 A | 2025-12-22 A | 33702 |
| 33832 | Fire Alarm Rough-In - Level 3 | 5d | 2025-11-20 A | 2025-12-22 A | 33752 |
| 33872 | Level 1 - JS Mesh | 5d | 2026-01-07 | 2026-01-13 | 33862 |
| 33922 | Level 2 - JS Mesh | 5d | 2026-01-14 | 2026-01-20 | 33872 |
| 33932 | Level 3 - JS Mesh | 5d | 2026-01-21 | 2026-01-27 | 33922 |
| 34942 | Electrical Pulls | 5d | 2025-12-22 A | 2025-12-22 A | 33782 |
| 34852 | Electrical Pulls | 5d | 2025-12-22 A | 2025-12-22 A | 34942 |
| 34862 | Flooring | 2d | 2026-01-07 A | 2026-01-23 | 34852 |
| 1092 | Electrical Pulls | 5d | 2025-12-30 A | 2026-01-23 | 34852 |
| 3 | **DAS Equipment Room** |  | 2025-12-10 | 2026-01-19 |  |
| 37136 | Drywall | 10d | 2025-12-10 A | 2025-12-19 A | 37046 |
| 37046 | Doors & Hardware | 2d | 2025-12-18 A | 2025-12-22 A | A1000, 36896 |
| 37076 | Prime & Paint 1st Coat | 2d | 2025-12-24 A | 2025-12-26 A | 37146 |
| 37126 | Final Coat Paint | 1d | 2026-01-02 A | 2026-01-05 A | 37086 |
| 37146 | Hard lid Ceiling Install | 5d | 2026-01-09 | 2026-01-15 | 37136 |
| 37086 | Light Fixtures | 2d | 2026-01-16 | 2026-01-19 | 37076 |
| 37096 | Electrical Trim Out | 2d | 2026-01-16 | 2026-01-19 | 37076 |
| 37106 | Mechanical Trim Out | 2d | 2026-01-16 | 2026-01-19 | 37076 |

Removed: 33662 Machine Room RFI - Work stopped (includes RBD review); 1082 Paint Deck; 36806 Millwork - RR; 1121 Level 1 Inspections; 1161 Level 1 Commissioning; 1141 Level 1 WEO Punch List; 1151 Level 1 Owner Punch List

Changed:

| ID | Task | Start | Finish | Duration | Complete | Total float | Predecessors | Other |
| --- | --- | --- | --- | --- | --- | --- | --- | --- |
| 691056293 | **Construction Milestones** |  | 2026-02-05 → 2026-01-26 (-10d) |  |  |  |  |  |
| 1010 | Structure Complete | 2025-12-05 → 2026-01-07 (+33d) | 2025-12-05 → 2026-01-07 (+33d) |  |  | 55d → 37d |  |  |
| 1016 | Building Dry In | 2025-12-05 → 2026-01-07 (+33d) | 2025-12-05 → 2026-01-07 (+33d) |  |  | 44d → 23d |  |  |
| 1015 | Exterior Work Complete | 2025-12-22 → 2026-01-12 (+21d) | 2025-12-22 → 2026-01-12 (+21d) |  |  | 43d → 33d |  |  |
| 1020 | DAS Room Completion | 2026-01-30 → 2026-01-20 (-10d) | 2026-02-05 → 2026-01-26 (-10d) |  |  | 25d → 23d | Level 1 Owner Punch List → 37126 | was named 1st Floor Partial TCO |
| 691104193 | **Project Impacts** |  | 2025-06-11 → 2025-11-20 (+162d) |  |  |  |  |  |
| 691110493 | **Design Impacts** |  | 2025-04-24 → 2025-11-20 (+210d) |  |  |  |  |  |
| 691060893 | **Pre-Construciton** |  | 2025-12-15 → 2026-01-12 (+28d) |  |  |  |  |  |
| 691060793 | **Procurement** |  | 2025-12-15 → 2026-01-12 (+28d) |  |  |  |  |  |
| 32912 | Elevator (By Owner) |  | 2025-12-15 → 2026-01-12 (+28d) |  | 96% → 98% | -13d → -16d |  |  |
| 691061993 | **Site Development** |  | 2025-12-23 → 2026-01-12 (+20d) |  |  |  |  |  |
| 691098993 | **Site Civil** |  | 2025-12-23 → 2025-12-11 (-12d) |  |  |  |  |  |
| 35283 | Electrical Main to Building |  | 2025-12-23 → 2025-12-11 A (-12d) |  | 90% → 100% | -19d → none | 33652, 36636 → 36636 |  |
| 691099993 | **Paving** |  | 2025-12-08 → 2026-01-12 (+35d) |  |  |  |  |  |
| 35344 | Trash Enclosure Masonry |  | 2025-11-11 A → 2025-12-19 A (+38d) |  |  |  |  |  |
| 1130 | Trash Enclosure Gates | 2025-12-05 → 2026-01-09 (+35d) | 2025-12-08 → 2026-01-12 (+35d) |  |  | 52d → 33d | 35344 FS+12d → 35344 FS+13d |  |
| 691074793 | **Exterior Skin** |  | 2025-12-22 → 2026-01-19 (+28d) |  |  |  |  |  |
| 691091693 | **South Elevation** |  | 2025-12-12 → 2026-01-19 (+38d) |  |  |  |  |  |
| 33425 | Storefront Install |  | 2025-12-09 → 2026-01-14 (+36d) |  |  | 23d → 2d |  |  |
| 33426 | Canopy Install | 2025-12-10 → 2026-01-06 A (+27d) | 2025-12-12 → 2026-01-19 (+38d) |  |  | 23d → 2d |  |  |
| 34802 | EIFS |  | 2025-12-10 A |  | 50% → 100% | -19d → none |  |  |
| 691115793 | **East Elevation** |  | 2025-12-22 → 2026-01-14 (+23d) |  |  |  |  |  |
| 36676 | Storefront Install |  | 2025-12-09 → 2026-01-09 (+31d) |  |  | 38d → 17d |  |  |
| 36636 | EIFS |  | 2025-12-22 → 2025-12-15 A (-7d) |  | 0% → 100% | -19d → none |  |  |
| 36686 | Canopy Install | 2025-12-10 → 2026-01-12 (+33d) | 2025-12-12 → 2026-01-14 (+33d) |  |  | 38d → 17d |  |  |
| 691091593 | **Rough-In** |  | 2026-01-22 → 2026-01-16 (-6d) |  |  |  |  |  |
| 691088793 | **Level 1 - Rough-In Work** |  | 2025-12-11 → 2025-12-31 (+20d) |  |  |  |  |  |
| 33652 | Electrical Rough In - Level 1 |  | 2025-12-11 → 2025-12-22 A (+11d) |  | 83% → 100% | -21d → none |  | was named Electrical and Fire Alarm Rough-In - Level 1 |
| 33682 | Machine Room RFI - Work Commenced |  | 2025-12-11 → 2025-12-31 A (+20d) |  | 50% → 100% | 63d → none | Machine Room RFI - Work stopped (includes RBD review) → 37156 |  |
| 691088893 | **Level 2 - Rough-In Work** |  | 2026-01-02 → 2025-12-22 (-11d) |  |  |  |  |  |
| 33722 | Electrical Rough-In - Level 2 |  | 2026-01-02 → 2025-12-22 A (-11d) |  | 7% → 100% | 35d → none |  | was named Electrical and Fire Alarm Rough-In - Level 2 |
| 691088993 | **Level 3 - Rough-In Work** |  | 2026-01-22 → 2026-01-16 (-6d) |  |  |  |  |  |
| 33782 | Electrical Rough-In - Level 3 | 2026-01-05 → 2025-12-18 A (-18d) | 2026-01-22 → 2026-01-16 (-6d) | 14d → 21d | 0% → 62% | 35d → -24d |  | was named Electrical and Fire Alarm Rough-In - Level 3 |
| 691091993 | **Janus Scope** |  | 2026-01-19 → 2026-01-27 (+8d) |  |  |  |  |  |
| 33852 | Level 2 - JS |  | 2025-12-26 → 2025-12-17 A (-9d) |  | 0% → 100% | -24d → none |  |  |
| 33862 | Level 3 - JS | 2025-12-29 → 2025-12-15 A (-14d) | 2026-01-19 → 2026-01-07 A (-12d) |  | 0% → 100% | -24d → none |  |  |
| 691094293 | **Elevators** | 2025-12-24 → 2026-01-13 (+20d) | 2026-02-05 → 2026-02-09 (+4d) |  |  |  |  |  |
| 33882 | Elevator Installation | 2025-12-24 → 2026-01-13 (+20d) | 2026-02-05 → 2026-02-09 (+4d) | 30d → 20d |  | -19d → -16d | 35283, 32912 → 35283, 32912, 33682 |  |
| 33902 | 1st FLR - Elevator Infill and Lobby Finishes | 2025-12-29 → 2026-01-15 (+17d) | 2025-12-30 → 2026-01-16 (+17d) |  |  | 3d → -4d |  |  |
| 33912 | 2nd FLR - Elevator Infill and Lobby Finishes | 2025-12-31 → 2026-01-19 (+19d) | 2026-01-02 → 2026-01-20 (+18d) |  |  | 3d → -4d |  |  |
| 33892 | 3rd FLR - Elevator Infill and Lobby Finishes | 2026-01-05 → 2026-01-21 (+16d) | 2026-01-06 → 2026-01-22 (+16d) |  |  | 3d → -4d |  |  |
| 691075093 | **Interiors** |  | 2026-02-12 → 2026-02-19 (+7d) |  |  |  |  |  |
| 691074993 | **Storage Areas** |  | 2026-02-12 → 2026-02-19 (+7d) |  |  |  |  |  |
| 691093393 | **Level 1 - Interiors** |  | 2026-01-22 → 2026-01-30 (+8d) |  |  |  |  |  |
| 34922 | Paint Deck | 2025-12-22 → 2025-12-23 A (+1d) | 2026-01-06 → 2025-12-31 A (-6d) | 10d → 5d | 0% → 100% | -22d → none |  |  |
| 34902 | Mechanical Trim | 2026-01-16 → 2025-12-29 A (-18d) | 2026-01-22 → 2026-01-06 A (-16d) | 5d → 2d | 0% → 100% | 35d → none |  |  |
| 34892 | Lighting Trim | 2026-01-07 → 2026-01-05 A (-2d) | 2026-01-15 → 2026-01-30 (+15d) | 7d → 5d |  | -22d → -24d | 34922 SS+10d → 34922 SS+10d, 1092 |  |
| 34882 | Flooring | 2026-01-07 → 2026-01-08 (+1d) | 2026-01-13 → 2026-01-09 (-4d) | 5d → 2d |  | -7d → 0d |  | was named Flooring Trim |
| 34912 | Plumbing Trim | 2026-01-14 → 2026-01-12 (-2d) | 2026-01-20 → 2026-01-16 (-4d) |  |  | -7d → 0d |  |  |
| 691092793 | **Level 2 -Interiors** | 2026-01-16 → 2025-12-22 (-25d) | 2026-02-05 → 2026-02-17 (+12d) |  |  |  |  |  |
| 34832 | Lighting Trim | 2026-01-16 → 2026-02-02 (+17d) | 2026-01-22 → 2026-02-04 (+13d) | 5d → 3d |  | -22d → -24d |  |  |
| 34842 | Mechanical Trim | 2026-01-30 → 2026-02-16 (+17d) | 2026-02-05 → 2026-02-17 (+12d) | 5d → 2d |  | -22d → -24d |  |  |
| 691075193 | **Level 3 - Interiors** | 2026-01-20 → 2025-12-30 (-21d) | 2026-02-12 → 2026-02-19 (+7d) |  |  |  |  |  |
| 1083 | Flooring | 2026-02-03 → 2026-01-28 (-6d) | 2026-02-04 → 2026-01-29 (-6d) |  |  | 26d → 19d | Paint Deck SS+10d → 33932, 34862 | was named Flooring Trim |
| 1084 | Lighting Trim | 2026-01-27 → 2026-02-05 (+9d) | 2026-02-04 → 2026-02-09 (+5d) | 7d → 3d |  | -24d → -16d | 34832, 34892, Paint Deck SS+5d → 34832, 34892 |  |
| 1085 | Mechanical Trim | 2026-02-10 → 2026-02-18 (+8d) | 2026-02-12 → 2026-02-19 (+7d) | 3d → 2d |  |  | 34842, 1084 SS+10d → 34842 |  |
| 2 | **Level 3 Restrooms** | 2025-12-22 → 2025-12-16 (-6d) | 2026-01-13 → 2026-01-23 (+10d) |  |  |  |  |  |
| 37036 | Drywall - RR | 2025-12-22 → 2025-12-16 A (-6d) | 2025-12-29 → 2026-01-06 A (+8d) | 5d → 13d | 0% → 100% | 3d → none |  |  |
| 37006 | Doors & Hardware - RR | 2025-12-30 → 2025-12-19 A (-11d) | 2025-12-31 → 2026-01-08 (+8d) |  |  | 50d → -2d |  |  |
| 36946 | Flooring - RR | 2025-12-30 → 2026-01-07 (+8d) | 2025-12-30 → 2026-01-07 (+8d) |  |  | 3d → -1d |  |  |
| 36956 | Prime & Paint 1st Coat - RR | 2025-12-31 → 2026-01-09 (+9d) | 2026-01-02 → 2026-01-12 (+10d) |  |  | 3d → -2d | 36946 → 36946, 37006 |  |
| 36976 | Light Fixtures - RR | 2026-01-05 → 2026-01-13 (+8d) | 2026-01-06 → 2026-01-14 (+8d) |  |  | 47d → -2d |  |  |
| 37026 | Mechanical Trim Out - RR | 2026-01-05 → 2026-01-13 (+8d) | 2026-01-06 → 2026-01-15 (+9d) | 2d → 3d |  | 47d → 1d |  |  |
| 37016 | Electrical Trim Out - RR | 2026-01-05 → 2026-01-15 (+10d) | 2026-01-06 → 2026-01-16 (+10d) |  |  | 3d → -2d | 36956 → 36956, 36976 |  |
| 36986 | Plumbing Trim Out - RR | 2026-01-07 → 2026-01-19 (+12d) | 2026-01-08 → 2026-01-20 (+12d) |  |  | 3d → -2d |  |  |
| 36996 | Final Coat Paint - RR | 2026-01-09 → 2026-01-21 (+12d) | 2026-01-09 → 2026-01-21 (+12d) |  |  | 3d → -2d | 36986 → 36986, 37026 |  |
| 36966 | Install Appliances - RR | 2026-01-12 → 2026-01-22 (+10d) | 2026-01-13 → 2026-01-23 (+10d) |  |  | 3d → -2d |  |  |
| 691075293 | **Level 1 Office** |  | 2026-01-15 → 2026-01-27 (+12d) |  |  |  |  |  |
| 34932 | Drywall - Office | 2025-12-15 → 2025-12-10 A (-5d) | 2025-12-19 A | 5d → 10d | 0% → 100% | -22d → none | 33652, 36926 → 36926 |  |
| 1106 | Doors & Hardware - Office | 2025-12-22 → 2025-12-19 A (-3d) | 2025-12-23 → 2026-01-08 (+16d) |  |  | 5d → 34d |  |  |

| ID | Task | Start | Finish | Duration | Complete | Total float | Predecessors |
| --- | --- | --- | --- | --- | --- | --- | --- |
| 1097 | Prime & Paint 1st Coat - Office | 2025-12-05 → 2025-12-23 A (+18d) | 2025-12-08 → 2025-12-29 A (+21d) |  | 0% → 100% | 14d → none | 1096 → 34932 |
| 1107 | Final Coat Paint - Office | 2025-12-29 → 2025-12-30 A (+1d) | 2025-12-30 → 2025-12-31 A (+1d) |  | 0% → 100% | 5d → none |  |
| 1095 | Millwork - Office | 2025-12-24 → 2026-01-02 A (+9d) | 2025-12-26 → 2026-01-02 A (+7d) |  | 0% → 100% | 5d → none |  |
| 1100 | Light Fixtures - Office | 2025-12-09 → 2026-01-05 A (+27d) | 2025-12-10 → 2026-01-08 (+29d) |  |  | 16d → 34d |  |
| 1104 | Electrical Trim Out - Office | 2025-12-09 → 2026-01-07 (+29d) | 2025-12-10 → 2026-01-08 (+29d) |  |  | 14d → 32d |  |
| 1105 | Plumbing Trim Out - Office | 2025-12-11 → 2026-01-09 (+29d) | 2025-12-12 → 2026-01-12 (+31d) |  |  | 14d → 32d |  |
| 1099 | Install Appliances - Office | 2025-12-31 → 2026-01-13 (+13d) | 2026-01-02 → 2026-01-13 (+11d) | 2d → 1d |  | 5d → 32d |  |
| 1103 | Mechanical Trim Out - Office | 2026-01-14 → 2026-01-26 (+12d) | 2026-01-15 → 2026-01-27 (+12d) |  |  | 25d → 22d |  |
| 1 | **Level 1 Restroom** |  | 2026-01-06 → 2026-01-30 (+24d) |  |  |  |  |
| 36926 | Drywall - RR |  | 2025-12-12 A | 5d → 8d | 0% → 100% | -22d → none |  |
| 36896 | Doors & Hardware - RR | 2025-12-15 → 2025-12-18 A (+3d) | 2025-12-16 → 2026-01-08 (+23d) |  |  | 3d → 23d |  |
| 36826 | Prime & Paint 1st Coat - RR | 2025-12-23 A | 2025-12-24 → 2025-12-29 A (+5d) |  | 0% → 100% | 3d → none | 36816 → none |
| 36866 | Final Coat Paint - RR | 2026-01-02 → 2025-12-30 A (-3d) | 2026-01-02 → 2025-12-31 A (-2d) |  | 0% → 100% | 3d → none |  |
| 36846 | Light Fixtures - RR | 2025-12-26 → 2026-01-05 A (+10d) | 2025-12-29 → 2026-01-06 A (+8d) |  | 0% → 100% | 5d → none |  |
| 36906 | Electrical Trim Out - RR | 2025-12-26 → 2026-01-06 A (+11d) | 2025-12-29 → 2026-01-08 (+10d) |  |  | 3d → 31d |  |
| 36916 | Mechanical Trim Out - RR | 2025-12-26 → 2026-01-07 (+12d) | 2025-12-29 → 2026-01-08 (+10d) |  |  | 37d → 35d |  |
| 36856 | Plumbing Trim Out - RR | 2025-12-30 → 2026-01-09 (+10d) | 2025-12-31 → 2026-01-12 (+12d) |  |  | 3d → 31d |  |
| 36836 | Install Appliances - RR | 2026-01-05 → 2026-01-13 (+8d) | 2026-01-06 → 2026-01-14 (+8d) |  |  | 3d → 31d |  |
| 36816 | Flooring - RR | 2025-12-22 → 2026-01-30 (+39d) | 2025-12-22 → 2026-01-30 (+39d) |  |  | 3d → 19d | Millwork - RR → 1083 |
| 691082593 | **Final Sitework** |  | 2026-01-19 → 2026-01-20 (+1d) |  |  |  |  |
| 691082693 | **Hardscapes** |  | 2025-12-09 → 2025-12-11 (+2d) |  |  |  |  |
| 1131 | Striping and Signage | 2025-12-09 → 2025-12-11 A (+2d) | 2025-12-09 → 2025-12-11 A (+2d) |  | 0% → 100% | 52d → none |  |
| 691082793 | **Landscapes** | 2026-01-06 → 2026-01-07 (+1d) | 2026-01-19 → 2026-01-20 (+1d) |  |  |  |  |
| 1179 | Irrigation Systems | 2026-01-06 → 2026-01-07 (+1d) | 2026-01-12 → 2026-01-13 (+1d) |  |  | 38d → 37d |  |
| 1189 | Plantings | 2026-01-13 → 2026-01-14 (+1d) | 2026-01-19 → 2026-01-20 (+1d) |  |  | 38d → 37d |  |
| 691075893 | **Closeout** | 2025-12-05 → 2026-01-19 (+45d) |  |  |  |  |  |
| 1112 | Fire Alarm Programing/Testing | 2025-12-05 → 2026-01-19 (+45d) | 2025-12-11 → 2026-01-23 (+43d) |  |  | 14d → 34d | none → 37016 |
| 1114 | WEO Overall / Final Punch List Work | 2025-12-23 → 2026-02-02 (+41d) | 2026-01-05 → 2026-02-06 (+32d) | 8d → 5d |  | 43d → 19d | 1015 → 1015, 1020, 33932, 34902, 1083, 1099, 1103, 36916, 36836, 37096, 37106, 36816 |
| 1115 | Develop Owner Punch Lists | 2026-01-06 → 2026-02-09 (+34d) | 2026-01-12 → 2026-02-13 (+32d) |  |  | 43d → 19d |  |
| 1111 | Commissioning | 2026-02-13 → 2026-02-20 (+7d) | 2026-02-19 → 2026-02-24 (+5d) | 5d → 3d |  |  |  |
| 1113 | Final Inspections | 2026-02-20 → 2026-02-25 (+5d) |  | 8d → 5d |  |  | 33426, 36466, 33182, 33172, 36966, 1111, Level 1 Commissioning → 33426, 36466, 33182, 33172, 36966, 1111 |

## Version 11 (data date 2026-01-30, saved 2026-01-30, file update_11.xer)

Note of the change: Add all project schedule files to buckets - 13 projects, MPP+XER, baseline+updates

Last finish 2026-03-12 → 2026-03-05 (-7d). Complete tasks 199 → 232.

Added:

| ID | Task | Duration | Start | Finish | Predecessors |
| --- | --- | --- | --- | --- | --- |
| 2 | **Delay Trash Enclosure Gates** |  | 2026-01-16 | 2026-02-11 |  |
| A1220 | RFI 94 - Trash Enclosure Gate Delay w/ Shops and Procurement | 6d | 2026-01-16 A | 2026-02-11 | 35344 |
| 36576 | Canopy Install - West | 5d | 2026-01-15 A | 2026-02-13 | 33426 |
| 1123 | Elevator Commisioning | 5d | 2026-02-12 | 2026-02-18 | 33892 |
| 1133 | Elevator Final Inspections | 5d | 2026-02-19 | 2026-02-25 | 1123 |

Removed: 1105 Plumbing Trim Out - Office

Changed:

| ID | Task | Start | Finish | Duration | Complete | Total float | Predecessors | Other |
| --- | --- | --- | --- | --- | --- | --- | --- | --- |
| 691056193 | **Project Summary** |  | 2026-03-12 → 2026-03-02 (-10d) |  |  |  |  |  |
| 691056493 | **Contract Milestones** |  | 2026-03-12 → 2026-03-02 (-10d) |  |  |  |  |  |
| SC | Project SC - Before Weather Impacts | 2026-03-04 → 2026-02-20 (-12d) | 2026-03-04 → 2026-02-20 (-12d) |  |  | -24d → -16d |  |  |
| PSC | Project Substantially Complete - After Weather Impacts | 2026-03-12 → 2026-03-02 (-10d) | 2026-03-12 → 2026-03-02 (-10d) |  |  | -24d → -16d |  |  |
| PSC0002 | Project Open | 2026-03-12 → 2026-03-02 (-10d) | 2026-03-12 → 2026-03-02 (-10d) |  |  | 0d → 3d |  |  |
| 691056293 | **Construction Milestones** |  | 2026-01-26 → 2026-02-13 (+18d) |  |  |  |  |  |
| 1010 | Structure Complete | 2026-01-07 → 2026-01-30 (+23d) | 2026-01-07 → 2026-01-30 (+23d) |  |  | 37d → 15d |  |  |
| 1016 | Building Dry In | 2026-01-07 → 2026-01-30 (+23d) | 2026-01-07 → 2026-01-30 (+23d) |  |  | 23d → 6d |  |  |
| 1020 | DAS Room Completion | 2026-01-20 → 2026-01-30 (+10d) | 2026-01-26 → 2026-02-05 (+10d) |  |  | 23d → 10d |  |  |
| 1015 | Exterior Work Complete | 2026-01-12 → 2026-02-13 (+32d) | 2026-01-12 → 2026-02-13 (+32d) |  |  | 33d → 4d |  |  |
| 691103693 | **Schedule Impacts** |  | 2026-03-12 → 2026-03-02 (-10d) |  |  |  |  |  |
| 691103793 | **Weather Delays** |  | 2026-03-12 → 2026-03-02 (-10d) |  |  |  |  |  |
| 1027 | Contract Weather Days - 10 Days | 2026-03-04 → 2026-02-20 (-12d) | 2026-03-12 → 2026-03-02 (-10d) |  |  | -24d → -16d |  |  |
| 691104193 | **Project Impacts** |  | 2025-11-20 → 2026-02-11 (+83d) |  |  |  |  |  |
| 691110493 | **Design Impacts** |  | 2025-11-20 → 2026-02-11 (+83d) |  |  |  |  |  |
| 691060893 | **Pre-Construciton** |  | 2026-01-12 → 2026-01-28 (+16d) |  |  |  |  |  |
| 691060793 | **Procurement** |  | 2026-01-12 → 2026-01-28 (+16d) |  |  |  |  |  |
| 32912 | Elevator (By Owner) |  | 2026-01-12 → 2026-01-28 A (+16d) |  | 98% → 100% | -16d → none |  |  |
| 691065093 | **Construction** |  | 2026-03-03 → 2026-03-05 (+2d) |  |  |  |  |  |
| 691061993 | **Site Development** |  | 2026-01-12 → 2026-02-13 (+32d) |  |  |  |  |  |
| 691099993 | **Paving** |  | 2026-01-12 → 2026-02-13 (+32d) |  |  |  |  |  |
| 1130 | Trash Enclosure Gates | 2026-01-09 → 2026-02-12 (+34d) | 2026-01-12 → 2026-02-13 (+32d) |  |  | 33d → 4d | 35344 FS+13d → A1220 |  |
| 691074793 | **Exterior Skin** |  | 2026-01-19 → 2026-02-20 (+32d) |  |  |  |  |  |
| 691091693 | **South Elevation** |  | 2026-01-19 → 2026-02-06 (+18d) |  |  |  |  |  |
| 33425 | Storefront Install |  | 2026-01-14 → 2026-01-22 A (+8d) |  | 0% → 100% | 2d → none |  |  |
| 33426 | Canopy Install - South |  | 2026-01-19 → 2026-02-06 (+18d) |  |  | 2d → -12d |  | was named Canopy Install |
| 691091593 | **West Elevation** |  | 2025-11-20 → 2026-02-13 (+85d) |  |  |  |  |  |
| 691115793 | **East Elevation** |  | 2026-01-14 → 2026-02-20 (+37d) |  |  |  |  |  |
| 36676 | Storefront Install |  | 2026-01-09 → 2026-01-22 A (+13d) |  | 0% → 100% | 17d → none |  |  |
| 36686 | Two Canopy Install - East | 2026-01-12 → 2026-01-14 A (+2d) | 2026-01-14 → 2026-02-20 (+37d) |  |  | 17d → -10d |  | was named Canopy Install |
| 691091593 | **Rough-In** |  | 2026-01-16 → 2026-01-29 (+13d) |  |  |  |  |  |
| 691088993 | **Level 3 - Rough-In Work** |  | 2026-01-16 → 2026-01-29 (+13d) |  |  |  |  |  |
| 33782 | Electrical Rough-In - Level 3 |  | 2026-01-16 → 2026-01-29 A (+13d) |  | 62% → 100% | -24d → none |  |  |
| 691091993 | **Janus Scope** |  | 2026-01-27 → 2026-01-22 (-5d) |  |  |  |  |  |
| 33872 | Level 1 - JS Mesh | 2026-01-07 → 2026-01-06 A (-1d) | 2026-01-13 → 2026-01-12 A (-1d) |  | 0% → 100% | 19d → none |  |  |
| 33922 | Level 2 - JS Mesh | 2026-01-14 → 2026-01-13 A (-1d) | 2026-01-20 → 2026-01-19 A (-1d) |  | 0% → 100% | 19d → none |  |  |
| 33932 | Level 3 - JS Mesh | 2026-01-21 → 2026-01-19 A (-2d) | 2026-01-27 → 2026-01-22 A (-5d) |  | 0% → 100% | 19d → none |  |  |
| 691094293 | **Elevators** | 2026-01-13 → 2026-02-02 (+20d) | 2026-02-09 → 2026-02-27 (+18d) |  |  |  |  |  |
| 33882 | Elevator Installation | 2026-01-13 → 2026-02-02 (+20d) | 2026-02-09 → 2026-02-27 (+18d) |  |  | -16d → 4d | 35283, 32912, 33682 → 35283, 32912 FS+3d, 33682 |  |
| 33902 | 1st FLR - Elevator Infill and Lobby Finishes | 2026-01-15 → 2026-02-04 (+20d) | 2026-01-16 → 2026-02-05 (+20d) |  |  | -4d → 6d |  |  |
| 33912 | 2nd FLR - Elevator Infill and Lobby Finishes | 2026-01-19 → 2026-02-06 (+18d) | 2026-01-20 → 2026-02-09 (+20d) |  |  | -4d → 6d |  |  |
| 33892 | 3rd FLR - Elevator Infill and Lobby Finishes | 2026-01-21 → 2026-02-10 (+20d) | 2026-01-22 → 2026-02-11 (+20d) |  |  | -4d → 6d |  |  |
| 691075093 | **Interiors** |  | 2026-02-19 → 2026-02-06 (-13d) |  |  |  |  |  |
| 691074993 | **Storage Areas** |  | 2026-02-19 → 2026-02-06 (-13d) |  |  |  |  |  |
| 691093393 | **Level 1 - Interiors** |  | 2026-01-30 → 2026-02-05 (+6d) |  |  |  |  |  |
| 34892 | Lighting Trim |  | 2026-01-30 → 2026-01-06 A (-24d) |  | 0% → 100% | -24d → none |  |  |
| 34882 | Flooring | 2026-01-08 → 2026-01-15 A (+7d) | 2026-01-09 → 2026-01-22 A (+13d) |  | 0% → 100% | 0d → none |  |  |
| 34912 | Plumbing Trim | 2026-01-12 → 2026-01-28 A (+16d) | 2026-01-16 → 2026-02-05 (+20d) |  |  | 0d → -16d |  |  |
| 691092793 | **Level 2 -Interiors** |  | 2026-02-17 → 2026-01-14 (-34d) |  |  |  |  |  |
| 34842 | Mechanical Trim | 2026-02-16 → 2026-01-05 A (-42d) | 2026-02-17 → 2026-01-07 A (-41d) |  | 0% → 100% | -24d → none |  |  |
| 34862 | Flooring | 2026-01-07 A → 2026-01-08 A (+1d) | 2026-01-23 → 2026-01-12 A (-11d) | 2d → 3d | 0% → 100% | 21d → none |  |  |
| 34832 | Lighting Trim | 2026-02-02 → 2026-01-12 A (-21d) | 2026-02-04 → 2026-01-14 A (-21d) |  | 0% → 100% | -24d → none |  |  |
| 691075193 | **Level 3 - Interiors** |  | 2026-02-19 → 2026-01-30 (-20d) |  |  |  |  |  |
| 1092 | Electrical Pulls |  | 2026-01-23 → 2026-01-29 A (+6d) |  | 0% → 100% | -24d → none |  |  |
| 1085 | Mechanical Trim | 2026-02-18 → 2026-01-05 A (-44d) | 2026-02-19 → 2026-01-07 A (-43d) |  | 0% → 100% | -24d → none |  |  |
| 1084 | Lighting Trim | 2026-02-05 → 2026-01-09 A (-27d) | 2026-02-09 → 2026-01-30 (-10d) |  | 0% → 100% | -16d → -11d |  |  |
| 1083 | Flooring | 2026-01-28 → 2026-01-13 A (-15d) | 2026-01-29 → 2026-01-16 A (-13d) | 2d → 3d | 0% → 100% | 19d → none | 33932, 34862 → 33932, 34882, 34862 |  |
| 2 | **Level 3 Restrooms** |  | 2026-01-23 → 2026-02-06 (+14d) |  |  |  |  |  |
| 37006 | Doors & Hardware - RR |  | 2026-01-08 → 2026-01-16 A (+8d) |  | 0% → 100% | -2d → none |  |  |
| 36956 | Prime & Paint 1st Coat - RR | 2026-01-09 → 2026-01-05 A (-4d) | 2026-01-12 → 2026-01-07 A (-5d) |  | 0% → 100% | -2d → none |  |  |
| 36996 | Final Coat Paint - RR | 2026-01-21 → 2026-01-08 A (-13d) | 2026-01-21 → 2026-01-08 A (-13d) |  | 0% → 100% | -2d → none |  |  |
| 36976 | Light Fixtures - RR | 2026-01-13 → 2026-01-12 A (-1d) | 2026-01-14 A |  | 0% → 100% | -2d → none |  |  |
| 37016 | Electrical Trim Out - RR | 2026-01-15 → 2026-01-12 A (-3d) | 2026-01-16 → 2026-01-14 A (-2d) |  | 0% → 100% | -2d → none |  |  |
| 36946 | Flooring - RR | 2026-01-07 → 2026-01-30 (+23d) | 2026-01-07 → 2026-01-30 (+23d) |  |  | -1d → -12d | 37036 → 1083 SS |  |
| 36986 | Plumbing Trim Out - RR | 2026-01-19 → 2026-02-02 (+14d) | 2026-01-20 → 2026-02-03 (+14d) |  |  | -2d → -11d |  |  |
| 37026 | Mechanical Trim Out - RR | 2026-01-13 → 2026-02-02 (+20d) | 2026-01-15 → 2026-02-04 (+20d) |  |  | 1d → -12d |  |  |
| 36966 | Install Appliances - RR | 2026-01-22 → 2026-02-05 (+14d) | 2026-01-23 → 2026-02-06 (+14d) |  |  | -2d → -12d |  |  |
| 691075293 | **Level 1 Office** |  | 2026-01-27 → 2026-01-30 (+3d) |  |  |  |  |  |
| 1106 | Doors & Hardware - Office |  | 2026-01-08 → 2026-01-14 A (+6d) |  | 0% → 100% | 34d → none |  |  |
| 1107 | Final Coat Paint - Office |  |  |  |  |  | Plumbing Trim Out - Office, 1100, 1095 → 1100, 1095 |  |

| ID | Task | Start | Finish | Duration | Complete | Total float | Predecessors | Other |
| --- | --- | --- | --- | --- | --- | --- | --- | --- |
| 1100 | Light Fixtures - Office |  | 2026-01-08 → 2026-01-13 A (+5d) |  | 0% → 100% | 34d → none |  |  |
| 1104 | Electrical Trim Out - Office | 2026-01-07 → 2026-01-14 A (+7d) | 2026-01-08 → 2026-01-15 A (+7d) |  | 0% → 100% | 32d → none |  |  |
| 1103 | Mechanical Trim Out - Office | 2026-01-26 A | 2026-01-27 → 2026-01-28 A (+1d) |  | 0% → 100% | 22d → none |  |  |
| 1099 | Install Appliances - Office | 2026-01-13 → 2026-01-30 (+17d) | 2026-01-13 → 2026-01-30 (+17d) |  |  | 32d → 14d | 1107 → 1107, 1104 |  |
| 1 | **Level 1 Restroom** |  | 2026-01-30 → 2026-02-04 (+5d) |  |  |  |  |  |
| 36896 | Doors & Hardware - RR |  | 2026-01-08 → 2026-01-21 A (+13d) |  | 0% → 100% | 23d → none |  |  |
| 36906 | Electrical Trim Out - RR |  | 2026-01-08 → 2026-01-07 A (-1d) |  | 0% → 100% | 31d → none |  |  |
| 36916 | Mechanical Trim Out - RR | 2026-01-07 → 2026-01-14 A (+7d) | 2026-01-08 → 2026-01-16 A (+8d) |  | 0% → 100% | 35d → none |  |  |
| 36816 | Flooring - RR | 2026-01-30 → 2026-01-15 A (-15d) | 2026-01-30 → 2026-01-16 A (-14d) |  | 0% → 100% | 19d → none | 1083 → none |  |
| 36856 | Plumbing Trim Out - RR | 2026-01-09 → 2026-01-28 A (+19d) | 2026-01-12 → 2026-02-02 (+21d) |  |  | 31d → 11d |  |  |
| 36836 | Install Appliances - RR | 2026-01-13 → 2026-02-03 (+21d) | 2026-01-14 → 2026-02-04 (+21d) |  |  | 31d → 11d |  |  |
| 3 | **DAS Equipment Room** |  | 2026-01-19 → 2026-01-21 (+2d) |  |  |  |  |  |
| 37086 | Light Fixtures | 2026-01-16 → 2026-01-06 A (-10d) | 2026-01-19 → 2026-01-07 A (-12d) |  | 0% → 100% | 23d → none |  |  |
| 37096 | Electrical Trim Out | 2026-01-16 → 2026-01-12 A (-4d) | 2026-01-19 → 2026-01-14 A (-5d) |  | 0% → 100% | 28d → none |  |  |
| 37106 | Mechanical Trim Out | 2026-01-16 → 2026-01-14 A (-2d) | 2026-01-19 → 2026-01-15 A (-4d) |  | 0% → 100% | 28d → none |  |  |
| 37146 | Ceiling monocoat fire spray | 2026-01-09 → 2026-01-21 A (+12d) | 2026-01-15 → 2026-01-21 A (+6d) | 5d → 2d | 0% → 100% | 23d → none |  | was named Hard lid Ceiling Install |
| 691082593 | **Final Sitework** |  | 2026-01-20 → 2026-03-05 (+44d) |  |  |  |  |  |
| 691082793 | **Landscapes** | 2026-01-07 → 2026-01-19 (+12d) | 2026-01-20 → 2026-03-05 (+44d) |  |  |  |  |  |
| 1179 | Irrigation Systems | 2026-01-07 → 2026-01-19 A (+12d) | 2026-01-13 → 2026-02-26 (+44d) |  |  | 37d → 0d | 1129 FS+30d → 1113 |  |
| 1189 | Plantings | 2026-01-14 → 2026-02-27 (+44d) | 2026-01-20 → 2026-03-05 (+44d) |  |  | 37d → 0d |  |  |
| 691075893 | **Closeout** | 2026-01-19 → 2026-01-28 (+9d) | 2026-03-03 → 2026-02-27 (-4d) |  |  |  |  |  |
| 1112 | Fire Alarm Programing/Testing | 2026-01-19 → 2026-01-28 A (+9d) | 2026-01-23 → 2026-02-06 (+14d) |  |  | 34d → 19d |  |  |
| 1111 | Project Commissioning | 2026-02-20 → 2026-02-06 (-14d) | 2026-02-24 → 2026-02-12 (-12d) | 3d → 5d |  | -24d → -16d | 34912, 32922, 33892, 33882, 1084, 1085 → 34912, 32922, 1084, 1085 | was named Commissioning |
| 1113 | Final Inspections | 2026-02-25 → 2026-02-13 (-12d) | 2026-03-03 → 2026-02-19 (-12d) |  |  | -24d → -16d |  |  |
| 1114 | WEO Overall / Final Punch List Work | 2026-02-02 → 2026-02-16 (+14d) | 2026-02-06 → 2026-02-20 (+14d) |  |  | 19d → 4d | 1015, 1020, 33932, 34902, 1083, 1099, 1103, 36916, 36836, 37096, 37106, 36816 → 1015, 1020, 33932, 34902, 1083, 1099, 1103, 36916, 36836, 37096, 37106, 36816, 36576 |  |
| 1115 | Develop Owner Punch Lists | 2026-02-09 → 2026-02-23 (+14d) | 2026-02-13 → 2026-02-27 (+14d) |  |  | 19d → 4d |  |  |

## Version 12 (data date 2026-04-01, saved 2026-04-01, file update_12.xer)

Note of the change: Add all project schedule files to buckets - 13 projects, MPP+XER, baseline+updates

Last finish 2026-03-05 → 2026-05-21 (+77d). Complete tasks 232 → 253.

Added:

| ID | Task | Duration | Start | Finish | Predecessors |
| --- | --- | --- | --- | --- | --- |
| 3 | **Shunt Trip - Updated Drawings** |  | 2026-02-20 | 2026-03-31 |  |
| A1240 | Shunt Trip RFI-96 | 5d | 2026-02-20 A | 2026-03-31 A | 33952 SS |
| 1 | **Landscape delay due to frozen ground** |  | 2026-02-06 | 2026-05-07 |  |
| A1230 | Delay - North and West Frozen Ground | 16d | 2026-02-06 A | 2026-05-07 | 1179 |
| 33942 | Block Infill Level 1 | 2d | 2026-02-23 A | 2026-02-24 A | 33882 |
| 33952 | Elevator GC Secondary Checklist | 2d | 2026-02-24 A | 2026-03-16 A | 33942 SS, 37176 |
| 37166 | Block Infill Level 2 | 2d | 2026-02-24 A | 2026-02-25 A | 33942 SS+1d |
| 37176 | Block Infill Level 3 | 2d | 2026-02-26 A | 2026-02-27 A | 37166 SS+1d |
| 33962 | Schindler Adjuster - Final corrections w/ schedule 2 week lead time | 11d | 2026-04-06 | 2026-04-20 | A1240 FS+4d |
| 1199 | Irrigation Systems North and West | 5d | 2026-03-10 A | 2026-05-14 | 1179 FS+30d, A1230 |

Changed:

| ID | Task | Start | Finish | Duration | Complete | Total float | Predecessors | Other |
| --- | --- | --- | --- | --- | --- | --- | --- | --- |
| 691056193 | **Project Summary** |  | 2026-03-02 → 2026-05-07 (+66d) |  |  |  |  |  |
| 691056493 | **Contract Milestones** |  | 2026-03-02 → 2026-04-23 (+52d) |  |  |  |  |  |
| SC | Project SC - Before Weather Impacts | 2026-02-20 → 2026-04-15 (+54d) | 2026-02-20 → 2026-04-15 (+54d) |  |  | -16d → -54d |  |  |
| PSC | Project Substantially Complete - After Weather Impacts | 2026-03-02 → 2026-04-23 (+52d) | 2026-03-02 → 2026-04-23 (+52d) |  |  | -16d → -54d |  |  |
| PSC0002 | Project Open | 2026-03-02 → 2026-04-23 (+52d) | 2026-03-02 → 2026-04-23 (+52d) |  |  | 3d → 20d |  |  |
| 691056293 | **Construction Milestones** |  | 2026-02-13 → 2026-04-01 (+47d) |  |  |  |  |  |
| 1020 | DAS Room Completion | 2026-01-30 → 2026-03-12 A (+41d) | 2026-02-05 → 2026-03-12 A (+35d) |  | 0% → 100% | 10d → none |  |  |
| 1010 | Structure Complete | 2026-01-30 → 2026-04-01 (+61d) | 2026-01-30 → 2026-04-01 (+61d) |  |  | 15d → 27d |  |  |
| 1015 | Exterior Work Complete | 2026-02-13 → 2026-04-01 (+47d) | 2026-02-13 → 2026-04-01 (+47d) |  |  | 4d → 27d |  |  |
| 1016 | Building Dry In | 2026-01-30 → 2026-04-01 (+61d) | 2026-01-30 → 2026-04-01 (+61d) |  |  | 6d → -37d |  |  |
| 691103693 | **Schedule Impacts** |  | 2026-03-02 → 2026-05-07 (+66d) |  |  |  |  |  |
| 691103793 | **Weather Delays** |  | 2026-03-02 → 2026-04-23 (+52d) |  |  |  |  |  |
| 1027 | Contract Weather Days - 10 Days | 2026-02-20 → 2026-04-15 (+54d) | 2026-03-02 → 2026-04-23 (+52d) |  |  | -16d → -54d |  |  |
| 691104193 | **Project Impacts** |  | 2026-02-11 → 2026-05-07 (+85d) |  |  |  |  |  |
| 691110493 | **Design Impacts** |  | 2026-02-11 → 2026-03-31 (+48d) |  |  |  |  |  |
| 2 | **Delay Trash Enclosure Gates** |  | 2026-02-11 → 2026-02-20 (+9d) |  |  |  |  |  |
| A1220 | RFI 94 - Trash Enclosure Gate Delay w/ Shops and Procurement |  | 2026-02-11 → 2026-02-20 A (+9d) |  | 0% → 100% | 4d → none |  |  |
| 691065093 | **Construction** |  | 2026-03-05 → 2026-05-21 (+77d) |  |  |  |  |  |
| 691061993 | **Site Development** |  | 2026-02-13 → 2026-02-27 (+14d) |  |  |  |  |  |
| 691099993 | **Paving** |  | 2026-02-13 → 2026-02-27 (+14d) |  |  |  |  |  |
| 1130 | Trash Enclosure Gates | 2026-02-12 → 2026-02-26 A (+14d) | 2026-02-13 → 2026-02-27 A (+14d) |  | 0% → 100% | 4d → none |  |  |
| 691074793 | **Exterior Skin** |  | 2026-02-20 → 2026-02-12 (-8d) |  |  |  |  |  |
| 691091693 | **South Elevation** |  | 2026-02-06 → 2026-02-05 (-1d) |  |  |  |  |  |
| 33426 | Canopy Install - South |  | 2026-02-06 → 2026-02-05 A (-1d) |  | 0% → 100% | -12d → none |  |  |
| 691091593 | **West Elevation** |  | 2026-02-13 → 2026-02-12 (-1d) |  |  |  |  |  |
| 36576 | Canopy Install - West |  | 2026-02-13 → 2026-02-12 A (-1d) |  | 0% → 100% | 4d → none |  |  |
| 691115793 | **East Elevation** |  | 2026-02-20 → 2026-02-06 (-14d) |  |  |  |  |  |
| 36686 | Two Canopy Install - East |  | 2026-02-20 → 2026-02-06 A (-14d) |  | 0% → 100% | -10d → none |  |  |
| 691094293 | **Elevators** |  | 2026-02-27 → 2026-04-20 (+52d) |  |  |  |  |  |
| 33882 | Elevator Rough Installation | 2026-02-02 A | 2026-02-27 → 2026-02-20 A (-7d) | 20d → 13d | 0% → 100% | 4d → none |  | was named Elevator Installation |
| 33902 | Schindler Fronts/Finshes Level 1 | 2026-02-04 → 2026-04-06 (+61d) | 2026-02-05 → 2026-04-07 (+61d) |  |  | 6d → 18d | 33882 SS+2d → 33962 SS | was named 1st FLR - Elevator Infill and Lobby Finishes |
| 33912 | Schindler Fronts/Finshes Level 2 | 2026-02-06 → 2026-04-08 (+61d) | 2026-02-09 → 2026-04-09 (+59d) |  |  | 6d → 18d | 33902 → 33902, 33962 SF | was named 2nd FLR - Elevator Infill and Lobby Finishes |
| 33892 | Schindler Fronts/Finshes Level 3 | 2026-02-10 → 2026-04-10 (+59d) | 2026-02-11 → 2026-04-13 (+61d) |  |  | 6d → 18d | 33912 → 33912, 33962 SF | was named 3rd FLR - Elevator Infill and Lobby Finishes |
| 691075093 | **Interiors** |  | 2026-02-06 → 2026-02-13 (+7d) |  |  |  |  |  |
| 691074993 | **Storage Areas** |  | 2026-02-06 → 2026-02-13 (+7d) |  |  |  |  |  |
| 691093393 | **Level 1 - Interiors** |  | 2026-02-05 → 2026-02-04 (-1d) |  |  |  |  |  |
| 34912 | Plumbing Trim |  | 2026-02-05 → 2026-02-04 A (-1d) |  | 0% → 100% | -16d → none |  |  |
| 691075193 | **Level 3 - Interiors** |  | 2026-01-30 → 2026-02-04 (+5d) |  |  |  |  |  |
| 1084 | Lighting Trim |  | 2026-01-30 → 2026-02-04 A (+5d) |  |  | -11d → none |  |  |
| 2 | **Level 3 Restrooms** |  | 2026-02-06 → 2026-02-13 (+7d) |  |  |  |  |  |
| 36966 | Install Appliances - RR | 2026-02-05 → 2026-01-28 A (-8d) | 2026-02-06 → 2026-02-04 A (-2d) |  | 0% → 100% | -12d → none |  |  |
| 36986 | Plumbing Trim Out - RR | 2026-02-02 → 2026-01-28 A (-5d) | 2026-02-03 → 2026-02-04 A (+1d) |  | 0% → 100% | -11d → none |  |  |
| 37026 | Mechanical Trim Out - RR | 2026-02-02 A | 2026-02-04 A |  | 0% → 100% | -12d → none |  |  |
| 36946 | Flooring - RR | 2026-01-30 → 2026-02-11 A (+12d) | 2026-01-30 → 2026-02-13 A (+14d) |  | 0% → 100% | -12d → none |  |  |
| 691075293 | **Level 1 Office** |  | 2026-01-30 → 2026-02-04 (+5d) |  |  |  |  |  |
| 1099 | Install Appliances - Office | 2026-01-30 → 2026-02-03 A (+4d) | 2026-01-30 → 2026-02-04 A (+5d) |  | 0% → 100% | 14d → none |  |  |
| 1 | **Level 1 Restroom** |  | 2026-02-04 → 2026-02-06 (+2d) |  |  |  |  |  |
| 36856 | Plumbing Trim Out - RR |  | 2026-02-02 → 2026-02-03 A (+1d) |  | 0% → 100% | 11d → none |  |  |
| 36836 | Install Appliances - RR | 2026-02-03 → 2026-02-04 A (+1d) | 2026-02-04 → 2026-02-06 A (+2d) |  | 0% → 100% | 11d → none |  |  |
| 691082593 | **Final Sitework** |  | 2026-03-05 → 2026-05-21 (+77d) |  |  |  |  |  |
| 691082793 | **Landscapes** |  | 2026-03-05 → 2026-05-21 (+77d) |  |  |  |  |  |
| 1179 | Irrigation Systems East and South |  | 2026-02-26 → 2026-02-06 A (-20d) |  | 0% → 100% | 0d → none |  | was named Irrigation Systems |
| 1189 | Plantings | 2026-02-27 → 2026-05-15 (+77d) | 2026-03-05 → 2026-05-21 (+77d) |  |  |  | 1179 → 1199 |  |
| 691075893 | **Closeout** |  | 2026-02-27 → 2026-04-27 (+59d) |  |  |  |  |  |
| 1112 | Fire Alarm Programing/Testing |  | 2026-02-06 → 2026-04-07 (+60d) |  |  | 19d → 32d |  |  |
| 1111 | Project Commissioning | 2026-02-06 → 2026-04-01 (+54d) | 2026-02-12 → 2026-04-07 (+54d) |  |  | -16d → -54d |  |  |
| 1114 | WEO Overall / Final Punch List Work | 2026-02-16 → 2026-04-01 (+44d) | 2026-02-20 → 2026-04-07 (+46d) |  |  | 4d → 27d |  |  |
| 1113 | Final Inspections | 2026-02-13 → 2026-04-08 (+54d) | 2026-02-19 → 2026-04-14 (+54d) |  |  | -16d → -54d |  |  |
| 1115 | Develop Owner Punch Lists | 2026-02-23 → 2026-04-08 (+44d) | 2026-02-27 → 2026-04-14 (+46d) |  |  | 4d → 27d |  |  |
| 1123 | Elevator Commisioning | 2026-02-12 → 2026-04-14 (+61d) | 2026-02-18 → 2026-04-20 (+61d) |  |  | 6d → 18d |  |  |
| 1133 | Elevator Final Inspections | 2026-02-19 → 2026-04-21 (+61d) | 2026-02-25 → 2026-04-27 (+61d) |  |  | 6d → 18d |  |  |
