# Overall Construction Schedule

How a schedule from MS Project changed from version to version. A marks actual dates.

## Version 1 (data date 2026-03-02, saved 2026-03-03, file update_1.mpp)

Note of the change: Add all project schedule files to buckets - 13 projects, MPP+XER, baseline+updates

| ID | WBS | Task | Duration | Start | Finish | Predecessors | Complete | Total float | Constraint |
| --- | --- | --- | --- | --- | --- | --- | --- | --- | --- |
| 1 | 1 | **Contract Administration** | 40d | 2025-07-09 A | 2025-09-02 A |  | 100% |  |  |
| 2 |  | Notice to Proceed | 34d | 2025-07-09 A | 2025-08-25 A |  | 100% |  |  |
| 3 |  | Mobilization | 1d | 2025-08-26 A | 2025-09-02 A | 2 | 100% |  |  |
| 4 | 2 | **Procurement** | 291d | 2025-08-07 A | 2026-09-17 |  | 18% | 31d |  |
| 5 |  | 033000 - CIP - Product Data/Material Certificates, Submittal | 1d | 2025-08-11 A | 2025-08-13 A | 2 | 100% |  |  |
| 6 |  | 033000 - CIP - Design Mixtures for Concrete, Submittal | 0d | 2025-08-07 A | 2025-08-08 A | 2 | 100% |  |  |
| 7 |  | 033000 - CIP - Rebar Shop Drawings, Submittal | 0d | 2025-08-07 A | 2025-08-08 A | 2 | 100% |  | finish no earlier than 2025-08-08 |
| 8 |  | 033000 - CIP - Construction Joint Layout, Submittal | 10d | 2026-03-03 | 2026-03-16 | 2 |  | 149d | start no earlier than 2026-03-02 |
| 9 |  | 033000 - CIP - Slab on Grade Control Joint Layout, Submittal | 10d | 2026-03-03 | 2026-03-16 | 2 |  | 149d | start no earlier than 2026-03-02 |
| 10 |  | 033000 - CIP - Product Data/Material Certificates, Review/Approval | 15d | 2026-03-03 | 2026-03-23 | 5 |  | 159d | start no earlier than 2026-03-02 |
| 11 |  | 033000 - CIP - Design Mixtures for Concrete, Review/Approval | 2d | 2025-08-08 A | 2025-08-25 A | 6 | 100% |  |  |
| 12 |  | 033000 - CIP - Rebar Shop Drawings, Review/Approval | 31d | 2025-08-08 A | 2025-09-22 A | 7 | 100% |  | start no earlier than 2025-10-20 |
| 13 |  | 033000 - CIP - Construction Joint Layout, Review/Approval | 15d | 2026-03-17 | 2026-04-06 | 8 |  | 149d | start no earlier than 2026-03-02 |
| 14 |  | 033000 - CIP - Slab on Grade Control Joint Layout, Review/Approval | 15d | 2026-03-17 | 2026-04-06 | 9 |  | 149d | start no earlier than 2026-03-02 |
| 15 |  | 033300 - Concrete Sealing, Product Data, F-01 Finish, Submittals | 2d | 2026-01-27 A | 2026-01-28 A | 2 | 100% |  | start no earlier than 2026-01-26 |
| 16 |  | 033300 - Concrete Polishing, Product Data FF-02, Submittals | 2d | 2026-01-27 A | 2026-01-28 A | 2 | 100% |  | start no earlier than 2026-01-26 |
| 17 |  | 033300 - Concrete Sealing, Product Data, F-01 Finish, Review/Approval | 15d | 2026-03-03 | 2026-03-23 | 15 |  | 122d | start no earlier than 2026-03-02 |
| 18 |  | 033300 - Concrete Polishing, Product Data FF-02, Review/Approval | 15d | 2026-03-03 | 2026-03-23 | 16 |  | 122d | start no earlier than 2026-03-02 |
| 19 |  | 042000 - Unit Masonry, Product Data, Masonry Accessories, Submittal | 0d | 2025-08-07 A | 2025-08-08 A | 2 | 100% |  |  |
| 20 |  | 042000 - Unit Masonry, Product Data, Masonry Accessories, Review/Approval | 0d | 2025-08-14 A | 2025-09-10 A | 19 | 100% |  |  |
| 21 |  | 042000 Unit Masonry, Grout Mix, Submittal | 0d | 2025-08-07 A | 2025-08-08 A | 2 | 100% |  |  |
| 22 |  | 042000 Unit Masonry, Grout Mix, Review/Approval | 0d | 2025-10-07 A | 2025-10-10 A | 21 | 100% |  |  |
| 23 |  | 051200 - Structural Steel Framing, Shop Drawings, Submittal | 1d | 2025-09-26 A | 2025-09-26 A | 2 | 100% |  | start no earlier than 2025-10-20 |
| 24 |  | 051200 - Structural Steel Framing, Shop Drawings, Review/Approval | 15d | 2025-09-29 A | 2025-10-17 A | 23 | 100% |  | start no earlier than 2025-10-20 |
| 25 |  | 054000 - Cold Formed Metal Framing, Product Data, Submittal | 2d | 2025-09-23 A | 2025-09-24 A | 2 | 100% |  | start no earlier than 2026-01-26 |
| 26 |  | 054000 - Cold Formed Metal Framing, Product Data, Review/Approval | 0d | 2025-09-25 A | 2025-09-26 A | 25 | 100% |  | start no earlier than 2025-11-10 |
| 27 |  | 054000 - Cold Formed Metal Framing, Shop Drawings, Submittal | 2d | 2025-09-25 A | 2025-09-26 A | 2 | 100% |  | start no earlier than 2026-01-26 |
| 28 |  | 054000 - Cold Formed Metal Framing, Shop Drawings, Review/Approval | 0d | 2025-09-29 A | 2025-10-17 A | 27 | 100% |  | start no earlier than 2025-10-20 |
| 29 |  | 055000 - Metal Fabricators, Shop Drawings, Submittal | 20d | 2025-09-01 A | 2025-09-28 A | 2 | 100% |  |  |
| 30 |  | 055000 - Metal Fabricators, Shop Drawings, Review/Approval | 14d | 2025-09-29 A | 2025-10-16 A | 29 | 100% |  |  |
| 31 |  | 055000 - Metal Fabricators, Fabrication/Delivery | 57d | 2025-10-17 A | 2026-01-05 A | 30 | 100% |  |  |
| 32 |  | 055100/055116 - Metal Stair, Shop Drawings, Submittal | 2d | 2025-10-30 A | 2025-10-31 A | 2 | 100% |  | start no earlier than 2025-11-21 |
| 33 |  | 055100/055116 - Metal Stair, Shop Drawings, Review/Approval | 0d | 2025-11-03 A | 2025-12-11 A | 32 | 100% |  |  |
| 34 |  | 055100/055116 - Metal Stair, Shop Drawings, Fabrication/Delivery | 25d | 2025-12-15 A | 2026-04-06 | 33 |  | 1d | start no earlier than 2026-03-02 |
| 35 |  | 055110 - Aluminum Diamond Plate Wainscot, Product Data/Shop Drawings, Submittal | 25d | 2026-03-03 | 2026-04-06 | 2 |  | 61d | start no earlier than 2026-03-02 |
| 36 |  | 055110 - Aluminum Diamond Plate Wainscot, Product Data/Shop Drawings, Review/Approval | 15d | 2026-04-07 | 2026-04-27 | 35 |  | 61d | start no earlier than 2026-01-26 |
| 37 |  | 055213 - Pipe and Tube Railings, Shop Drawings, Submittal | 2d | 2025-10-30 A | 2025-10-31 A | 2 | 100% |  | start no earlier than 2025-11-21 |
| 38 |  | 055213 - Pipe and Tube Railings, Shop Drawings, Review/Approval | 0d | 2025-11-03 A | 2025-12-11 A | 37 | 100% |  | start no earlier than 2025-10-20 |
| 39 |  | 055213 - Pipe and Tube Railings, Shop Drawings, Fabrication/Delivery | 25d | 2026-03-03 | 2026-04-06 | 38 |  | 1d | start no earlier than 2026-03-02 |
| 40 |  | 061000 - Rough Carpentry, Product Data Submittals | 10d | 2026-03-03 | 2026-03-16 | 2 |  | 8d | start no earlier than 2026-03-02 |
| 41 |  | 061000 - Rough Carpentry, Product Data Approval | 15d | 2026-03-17 | 2026-04-06 | 40 |  | 8d | start no earlier than 2026-03-02 |
| 42 |  | 061600 - Sheathing, Product Data Submittals | 2d | 2026-02-02 A | 2026-02-03 A | 2 | 100% |  | start no earlier than 2026-01-26 |
| 43 |  | 061600 - Sheathing, Product Data Review/Approval | 15d | 2026-02-04 A | 2026-03-23 | 42 |  | 18d | start no earlier than 2026-01-26 |
| 44 |  | 064116 - Plastic Laminate Casework, Product Data, Submittals | 20d | 2026-03-03 | 2026-03-30 | 2 |  | 27d | start no earlier than 2026-03-02 |
| 45 |  | 064116 - Plastic Laminate Casework, Shop Drawings, Submittal | 20d | 2026-03-03 | 2026-03-30 | 2 |  | 27d | start no earlier than 2026-03-02 |
| 46 |  | 064116 - Plastic Laminate Casework, Color Samples | 20d | 2026-03-03 | 2026-03-30 | 2 |  | 27d | start no earlier than 2026-03-02 |
| 47 |  | 064116 - Plastic Laminate Casework, Product Data, Review/Approval | 15d | 2026-03-31 | 2026-04-20 | 44 |  | 27d | start no earlier than 2026-03-02 |
| 48 |  | 064116 - Plastic Laminate Casework, Shop Drawings, Review/Approval | 15d | 2026-03-31 | 2026-04-20 | 45 |  | 27d | start no earlier than 2026-03-02 |
| 49 |  | 064116 - Plastic Laminate Casework, Color Samples, Review/Approval | 15d | 2026-03-31 | 2026-04-20 | 46 |  | 27d | start no earlier than 2026-03-02 |
| 50 |  | 064116 - Plastic Laminate Casework, Fabrication/Delivery | 25d | 2026-04-21 | 2026-05-25 | 47, 48, 49 |  | 27d |  |
| 51 |  | 066400 - FRP Submittals | 25d | 2026-03-03 | 2026-04-06 | 2 |  | 47d | start no earlier than 2026-03-02 |
| 52 |  | 066400 - FRP - Review/Approval | 15d | 2026-04-07 | 2026-04-27 | 51 |  | 47d | start no earlier than 2026-01-26 |
| 53 |  | 071113 - Bituminous Waterproofing, Product Data Submittals | 10d | 2026-03-03 | 2026-03-16 | 2 |  | 149d | start no earlier than 2026-03-02 |
| 54 |  | 071113 - Bituminous Waterproofing, Review/Approval | 15d | 2026-03-17 | 2026-04-06 | 53 |  | 149d | start no earlier than 2026-03-02 |
| 55 |  | 071326 - Self-Adhering Sheet Waterproofing, Product Data Submittal | 1d | 2025-09-17 A | 2025-09-17 A | 2 | 100% |  | start no earlier than 2025-10-20 |
| 56 |  | 071326 - Self-Adhering Sheet Waterproofing, Product Data Review/Approval | 6d | 2025-09-24 A | 2025-10-01 A | 55 | 100% |  | start no earlier than 2025-10-20 |
| 57 |  | 071326 - Self-Adhering Sheet Waterproofing, Shop Drawings, Submittal | 10d | 2026-03-03 | 2026-03-16 | 2 |  | 149d | start no earlier than 2026-03-02 |
| 58 |  | 071326 - Self-Adhering Sheet Waterproofing, Shop Drawings, Review/Approval | 15d | 2026-03-17 | 2026-04-06 | 57 |  | 149d | start no earlier than 2026-03-02 |
| 59 |  | 071326 - Self-Adhering Sheet Waterproofing, Samples, Submittal | 10d | 2026-03-03 | 2026-03-16 | 2 |  | 149d | start no earlier than 2026-03-02 |
| 60 |  | 071326 - Self-Adhering Sheet Waterproofing, Samples, Review/Approval | 15d | 2026-03-17 | 2026-04-06 | 59 |  | 149d | start no earlier than 2026-03-02 |
| 61 |  | 071416 - Cold Fluid Applied Waterproofing, Product Data Submittals | 10d | 2026-03-03 | 2026-03-16 | 2 |  | 34d | start no earlier than 2026-03-02 |
| 62 |  | 071416 - Cold Fluid Applied Waterproofing, Shop Drawings, Submittal | 20d | 2026-03-03 | 2026-03-30 | 2 |  | 24d | start no earlier than 2026-03-02 |
| 63 |  | 071416 - Cold Fluid Applied Waterproofing, Product Data, Review/Approval | 15d | 2026-03-17 | 2026-04-06 | 61 |  | 34d | start no earlier than 2026-03-02 |
| 64 |  | 071416 - Cold Fluid Applied Waterproofing, Shop Drawings, Review/Approval | 15d | 2026-03-31 | 2026-04-20 | 62 |  | 24d | start no earlier than 2026-03-02 |
| 65 |  | 072100 - Thermal Insulation, Product Data Submittals | 2d | 2026-02-02 A | 2026-02-03 A | 2 | 100% |  | start no earlier than 2026-01-26 |
| 66 |  | 072100 - Thermal Insulation, Product Data, Review/Approval | 15d | 2026-03-03 | 2026-03-23 | 65 |  | 9d | start no earlier than 2026-03-02 |
| 67 |  | 072410 - Stucco System, Product Data, Submittals | 6d | 2025-11-17 A | 2025-11-24 A | 2 | 100% |  | start no earlier than 2025-11-21 |
| 68 |  | 072410 - Stucco System, Manufacturers Standard Warranty, Submittal | 6d | 2025-11-17 A | 2025-11-24 A | 2 | 100% |  | start no earlier than 2025-11-21 |
| 69 |  | 072410 - Stucco System, Color Samples for Architect Approval | 15d | 2026-03-03 | 2026-03-23 | 2 |  | 29d | start no earlier than 2026-03-02 |
| 70 |  | 072410 - Stucco System, Shop Drawings for Approval | 15d | 2026-03-03 | 2026-03-23 | 2 |  | 29d | start no earlier than 2026-03-02 |

| ID | Task | Duration | Start | Finish | Predecessors | Complete | Total float | Constraint |
| --- | --- | --- | --- | --- | --- | --- | --- | --- |
| 71 | 072410 - Stucco System, Product Data, Review/Approval | 15d | 2026-03-03 | 2026-03-23 | 67 |  | 44d | start no earlier than 2026-03-02 |
| 72 | 072410 - Stucco System, Manufacturers Standard Warranty, Review/Approval | 15d | 2026-03-03 | 2026-03-23 | 68 |  | 44d | start no earlier than 2026-03-02 |
| 73 | 072410 - Stucco System, Color Samples, Review/Approval | 15d | 2026-03-24 | 2026-04-13 | 69 |  | 29d | start no earlier than 2026-03-02 |
| 74 | 072410 - Stucco System, Shop Drawings, Review/Approval | 15d | 2026-03-24 | 2026-04-13 | 70 |  | 29d | start no earlier than 2026-03-02 |
| 75 | 072500 - Weather Barriers, Product Data, Submittal | 10d | 2026-03-03 | 2026-03-16 | 2 |  | 149d | start no earlier than 2026-03-02 |
| 76 | 072500 - Weather Barriers, Product Data, Review/Approval | 15d | 2026-03-17 | 2026-04-06 | 75 |  | 149d | start no earlier than 2026-03-02 |
| 77 | 072500 - Weather Barriers, Shop Drawings, Submittal | 10d | 2026-03-03 | 2026-03-16 | 2 |  | 149d | start no earlier than 2026-03-02 |
| 78 | 072500 - Weather Barriers, Shop Drawing, Review/Approval | 15d | 2026-03-17 | 2026-04-06 | 77 |  | 149d | start no earlier than 2026-03-02 |
| 79 | 072713 - Modified Bituminous Sheet Air Barriers, Product Data, Submittals | 10d | 2026-03-03 | 2026-03-16 | 2 |  | 149d | start no earlier than 2026-03-02 |
| 80 | 072713 - Modified Bituminous Sheet Air Barriers, Shop Drawing, Submittals | 20d | 2026-03-03 | 2026-03-30 | 2 |  | 139d | start no earlier than 2026-03-02 |
| 81 | 072713 - Modified Bituminous Sheet Air Barriers, Product Data, Review/Approval | 15d | 2026-03-17 | 2026-04-06 | 79 |  | 149d | start no earlier than 2026-03-02 |
| 82 | 072713 - Modified Bituminous Sheet Air Barriers, Shop Drawing, Review/Approval | 15d | 2026-03-31 | 2026-04-20 | 80 |  | 139d | start no earlier than 2026-03-02 |
| 83 | 075423 - TPO Roofing, Product Data, Submittals | 3d | 2025-11-12 A | 2025-11-14 A | 2 | 100% |  | start no earlier than 2025-11-21 |
| 84 | 075423 - TPO Roofing, Shop Drawing, Submittals | 20d | 2026-03-03 | 2026-03-30 | 2 |  | 22d | start no earlier than 2026-03-02 |
| 85 | 075423 - TPO Roofing, Product Data, Review/Approval | 1d | 2025-11-17 A | 2026-01-27 A | 83 | 100% |  | start no earlier than 2025-11-10 |
| 86 | 075423 - TPO Roofing, Shop Drawing, Review/Approval | 15d | 2026-03-31 | 2026-04-20 | 84 |  | 22d | start no earlier than 2026-03-02 |
| 87 | 075423 - TPO Roofing, Sample Warranty, Submittal | 10d | 2026-03-03 | 2026-03-16 | 2 |  | 32d | start no earlier than 2026-03-02 |
| 88 | 075423- TPO Roofing, Sample Warranty, Review/Approval | 15d | 2026-03-17 | 2026-04-06 | 87 |  | 32d | start no earlier than 2026-03-02 |
| 89 | 075423 - TPO Roofing, Closeout Submittal, Maintenance Data | 20d | 2026-06-01 | 2026-06-26 | 375 |  | 89d |  |
| 90 | 075423 - TPO Roofing, Closeout Submittal, Roof Warranty | 20d | 2026-06-01 | 2026-06-26 | 375 |  | 89d |  |
| 91 | 075423 - TPO Roofing, Closeout Submittal, Record Drawings | 20d | 2026-06-01 | 2026-06-26 | 375 |  | 89d |  |
| 92 | 076200 - Sheet Metal Flashing and Trim, Product Data, Submittals | 10d | 2026-03-03 | 2026-03-16 | 2 |  | 37d | start no earlier than 2026-03-02 |
| 93 | 076200 - Sheet Metal Flashing and Trim, Shop Drawings, Submittals | 20d | 2026-03-03 | 2026-03-30 | 2 |  | 17d | start no earlier than 2026-03-02 |
| 94 | 076200 - Sheet Metal Flashing and Trim, Samples, Submittals | 20d | 2026-03-03 | 2026-03-30 | 2 |  | 17d | start no earlier than 2026-03-02 |
| 95 | 076200 - Sheet Metal Flashing and Trim, Product Data, Review/Approval | 10d | 2026-03-17 | 2026-03-30 | 2, 92 |  | 37d | start no earlier than 2026-03-02 |
| 96 | 076200 - Sheet Metal Flashing and Trim, Shop Drawings, Review/Approval | 20d | 2026-03-31 | 2026-04-27 | 2, 93 |  | 17d | start no earlier than 2026-03-02 |
| 97 | 076200 - Sheet Metal Flashing and Trim, Samples, Review/Approval | 20d | 2026-03-31 | 2026-04-27 | 2, 94 |  | 17d | start no earlier than 2026-03-02 |
| 98 | 077100 - Roof Specialties, Product Data, Submittals | 20d | 2026-03-03 | 2026-03-30 | 2 |  | 22d | start no earlier than 2026-03-02 |
| 99 | 077100 - Roof Specialties, Shop Drawing, Submittals | 20d | 2026-03-03 | 2026-03-30 | 2 |  | 22d | start no earlier than 2026-03-02 |
| 100 | 077100 - Roof Specialties, Product Data, Review/Approval | 15d | 2026-03-31 | 2026-04-20 | 98 |  | 22d | start no earlier than 2026-03-02 |
| 101 | 077100 - Roof Specialties, Shop Drawing, Review/Approval | 15d | 2026-03-31 | 2026-04-20 | 99 |  | 22d | start no earlier than 2026-03-02 |
| 102 | 077200 - Roof Accessories, Product Data, Submittals | 15d | 2026-03-03 | 2026-03-23 | 2 |  | 3d | start no earlier than 2026-03-02 |
| 103 | 077200 - Roof Accessories, Shop Drawings, Submittal | 15d | 2026-03-03 | 2026-03-23 | 2 |  | 3d | start no earlier than 2026-03-02 |
| 104 | 077200 - Roof Accessories, Design Certifications, Submittal | 15d | 2026-03-03 | 2026-03-23 | 2 |  | 3d | start no earlier than 2026-03-02 |
| 105 | 077200 - Roof Accessories, Product Data, Review/Approval | 15d | 2026-03-24 | 2026-04-13 | 102 |  | 3d | start no earlier than 2026-03-02 |
| 106 | 077200 - Roof Accessories, Shop Drawings, Review/Approval | 15d | 2026-03-24 | 2026-04-13 | 103 |  | 3d | start no earlier than 2026-03-02 |
| 107 | 077200 - Roof Accessories, Design Certifications, Review/Approval | 15d | 2026-03-24 | 2026-04-13 | 104 |  | 3d | start no earlier than 2026-03-02 |
| 108 | 078413 - Penetration Firestopping, Product Data, Submittals | 2d | 2025-10-20 A | 2025-10-21 A | 2 | 100% |  | start no earlier than 2026-01-26 |
| 109 | 078413 - Penetration Firestopping, Product Data, Review/Approval | 11d | 2025-10-22 A | 2025-11-05 A | 2, 108 | 100% |  | start no earlier than 2026-01-26 |
| 110 | 079200 - Joint Sealants, Product Data, Submittal | 2d | 2025-10-21 A | 2025-10-22 A | 2 | 100% |  | start no earlier than 2025-11-21 |
| 111 | 079200 - Joint Sealants, Initial Samples for Selection | 10d | 2026-03-03 | 2026-03-16 | 2 |  | 44d | start no earlier than 2026-03-02 |
| 112 | 079200 - Joint Sealants, Samples for Verificiation | 20d | 2026-03-31 | 2026-04-27 | 114 |  | 44d | start no earlier than 2026-03-02 |
| 113 | 079200 - Joint Sealants, Product Data, Review/Approval | 15d | 2025-10-23 A | 2025-11-12 A | 110 | 100% |  | start no earlier than 2025-11-10 |
| 114 | 079200 - Joint Sealants, Initial Samples for Selection, Review/Approval | 10d | 2026-03-17 | 2026-03-30 | 111 |  | 44d | start no earlier than 2026-03-02 |
| 115 | 079200 - Joint Sealants, Samples for Verificiation, Review/Approval | 20d | 2026-04-28 | 2026-05-25 | 114, 112 |  | 44d |  |
| 116 | 081113 - Hollow Metal Doors and Frames, Product Data Submittal | 6d | 2025-08-25 A | 2025-09-02 A | 2 | 100% |  | start no earlier than 2025-10-20 |
| 117 | 081113 - Hollow Metal Doors and Frames, Shop Drawings, Submittal | 6d | 2025-08-25 A | 2025-09-02 A | 2 | 100% |  | start no earlier than 2025-10-20 |
| 118 | 081113 - Hollow Metal Doors and Frames, Product Data, Review/Approval | 0d | 2025-09-03 A | 2025-10-09 A | 116 | 100% |  | start no earlier than 2025-10-20 |
| 119 | 081113 - Hollow Metal Doors and Frames, Shop Drawings, Review/Approval | 15d | 2026-03-03 | 2026-03-23 | 117 |  | 158d | start no earlier than 2026-03-02 |
| 120 | 083113 - Access Doors and Frames, Product Data, Submittal | 10d | 2026-03-03 | 2026-03-16 | 2 |  | 62d | start no earlier than 2026-03-02 |
| 121 | 083113 - Access Doors and Frames, Product Data, Review/Approval | 15d | 2026-03-17 | 2026-04-06 | 120 |  | 62d | start no earlier than 2026-03-02 |
| 122 | 084113 - Aluminum Framed Entrances and Storefronts, Product Data, Submittal | 84d | 2025-09-15 A | 2026-01-08 A | 2 | 100% |  | start no earlier than 2025-12-19 |
| 123 | 084113 - Aluminum Framed Entrances/Storefronts, Shop Drawings, Submittal | 84d | 2025-09-15 A | 2026-01-08 A | 2 | 100% |  | start no earlier than 2025-10-20 |
| 124 | 084113 - Aluminum Framing Samples, for review | 20d | 2026-03-03 | 2026-03-30 | 2 |  | 0d | start no earlier than 2026-03-02 |
| 125 | 084113 - Aluminum Framed Entrances and Storefronts, Product Data, Review/Approval | 3d | 2026-01-08 A | 2026-03-04 | 2, 122 | 50% | 23.5d | start no earlier than 2025-10-20 |
| 126 | 084113 - Aluminum Framed Entrances/Storefronts, Shop Drawings, Review/Approval | 0d | 2026-01-08 A | 2026-01-29 A | 2, 123 | 100% |  | start no earlier than 2025-10-20 |
| 127 | 084113 - Aluminum Framing Samples, Review/Approval | 5d | 2026-03-31 | 2026-04-06 | 2, 124 |  | 0d | start no earlier than 2026-03-02 |
| 128 | 084113 - Aluminum Entrances/Storefront Fabrication/Delivery | 40d | 2026-04-08 | 2026-06-02 | 319 |  | 0d |  |
| 129 | 084329 - Sliding Automatic Storm Entrances, Shop Drawing, Submittals | 0d | 2026-01-06 A | 2026-01-07 A | 2 | 100% |  |  |
| 130 | 084329 - Sliding Automatic Storm Entrance, Color Sample, for Approval | 10d | 2026-03-03 | 2026-03-16 | 2 |  | 40d | start no earlier than 2026-03-02 |
| 131 | 084329 - Sliding Automatic Storm Entrances, Shop Drawing, Review/Approval | 16d | 2026-01-08 A | 2026-03-12 | 129 | 50% | 57d |  |
| 132 | 084329 - Sliding Automatic Storm Entrance, Color Sample, Review/Approval | 15d | 2026-03-17 | 2026-04-06 | 130 |  | 40d | start no earlier than 2026-03-02 |
| 133 | 087111 - Door Hardware, Product Data, Submittal | 6d | 2025-08-25 A | 2025-09-02 A | 2 | 100% |  | start no earlier than 2025-08-25 |
| 134 | 087111 - Door Hardware Schedule for Approval | 9.5d | 2025-09-03 A | 2026-03-04 | 2 | 79% | 137d | start no earlier than 2025-10-20 |
| 135 | 087111 - Door Hardware, Maintenance Data for Closeout | 10d | 2026-03-03 | 2026-03-16 | 353 |  | 163d | start no earlier than 2026-03-02 |
| 136 | 087111 - Door Hardware, Warranties | 10d | 2026-03-03 | 2026-03-16 | 353 |  | 163d | start no earlier than 2026-03-02 |
| 137 | 087111 - Door Hardware, Product Data, Review/Approval | 38d | 2025-09-03 A | 2026-03-04 | 2, 133 | 95% | 152.1d | start no earlier than 2025-10-20 |
| 138 | 087111 - Door Hardware Schedule, Review/Approval | 15d | 2026-03-05 | 2026-03-25 | 2, 134 |  | 137d | start no earlier than 2026-03-02 |
| 139 | 087111 - Door Hardware, Qualification Data, Review/Approval | 15d | 2026-03-03 | 2026-03-23 | 2 |  | 159d | start no earlier than 2026-03-02 |
| 140 | 087111 - Door Hardware, Fabrication/Delivery | 20d | 2026-03-26 | 2026-04-22 | 137, 138 |  | 137d | start no earlier than 2026-03-02 |

| ID | Task | Duration | Start | Finish | Predecessors | Complete | Total float | Constraint |
| --- | --- | --- | --- | --- | --- | --- | --- | --- |
| 141 | 088000 - Glazing, Product Data and Glazing Schedule, Submittal | 2d | 2026-01-07 A | 2026-01-08 A | 2 | 100% |  | start no earlier than 2026-01-26 |
| 142 | 088000 - Glazing, Product Data and Glazing Schedule, Review/Approval | 15d | 2026-01-09 A | 2026-03-12 | 141 | 50% | 18.5d | start no earlier than 2026-01-26 |
| 143 | 088000 - Glazing Fabrication/Delivery | 60d | 2026-04-08 | 2026-06-30 | 142, 319 |  | 0d |  |
| 144 | 089516 - Wall Vents, Product Data, Submittal | 20d | 2026-03-03 | 2026-03-30 | 2 |  | 61d | start no earlier than 2026-03-02 |
| 145 | 089516 - Wall Vents, Metal Samples of Vents, for Approval | 20d | 2026-03-03 | 2026-03-30 | 2 |  | 61d | start no earlier than 2026-03-02 |
| 146 | 089516 - Wall Vents, Product Data, Review/Approval | 15d | 2026-03-31 | 2026-04-20 | 144 |  | 61d | start no earlier than 2026-03-02 |
| 147 | 089516 - Wall Vents, Metal Samples of Vents, Review/Approval | 15d | 2026-03-31 | 2026-04-20 | 145 |  | 61d | start no earlier than 2026-03-02 |
| 148 | 092216 - Non-Structural Metal Framing, Product Data, Submittals | 10d | 2026-03-03 | 2026-03-16 | 2 |  | 62d | start no earlier than 2026-03-02 |
| 149 | 092216 - Non-Structural Metal Framing, Product Data, Review/Approval | 15d | 2026-03-17 | 2026-04-06 | 148 |  | 62d | start no earlier than 2026-03-02 |
| 150 | 092900 - Gypsum Board, Product Data, Submittals | 1d | 2026-02-01 A | 2026-02-02 A | 2 | 100% |  | start no earlier than 2026-01-26 |
| 151 | 092900 - Gypsum Board, Product Data, Review/Approval | 15d | 2026-02-03 A | 2026-03-23 | 150 |  | 72d | start no earlier than 2026-01-26 |
| 152 | 095113 - Acoustical Panel Ceilings, Product Data, Submittals | 1d | 2026-02-01 A | 2026-02-02 A | 2 | 100% |  | start no earlier than 2026-01-26 |
| 153 | 095113 - Acoustical Panel Ceilings, Product Data, Review/Approval | 15d | 2026-02-03 A | 2026-03-23 | 152 |  | 72d | start no earlier than 2026-01-26 |
| 154 | 096513 - Resilient Base and Accessories, Product Data, Submittals | 2d | 2026-01-26 A | 2026-01-27 A | 2 | 100% |  | start no earlier than 2026-01-26 |
| 155 | 096513 - Resilient Base and Accessories, Product Data, Review/Approval | 15d | 2026-01-28 A | 2026-03-23 | 154 |  | -23d | start no earlier than 2026-01-26 |
| 156 | 099100 - Painting, Product Data, Submittals | 10d | 2026-03-03 | 2026-03-16 | 2 |  | -33d | start no earlier than 2026-03-02 |
| 157 | 099100 - Painting, Product Data, Review/Approval | 15d | 2026-03-17 | 2026-04-06 | 156 |  | -33d | start no earlier than 2026-03-02 |
| 158 | 099100 - Painting, Samples for Initial Selection | 10d | 2026-03-03 | 2026-03-16 | 2 |  | 77d | start no earlier than 2026-03-02 |
| 159 | 099100- Painting, Initial Paint Selection, Approval | 15d | 2026-03-17 | 2026-04-06 | 158 |  | 77d | start no earlier than 2026-03-02 |
| 160 | 099100 - Painting, Samples for Verificiation, submittal to Architect | 10d | 2026-04-07 | 2026-04-20 | 159 |  | 77d | start no earlier than 2026-01-26 |
| 161 | 099100 - Painting, Samples for Verificaiton, Review/Approval | 15d | 2026-04-21 | 2026-05-11 | 160 |  | 77d |  |
| 162 | 101423 - Interior Signage, Product Data/Shop Drawings, Submittal | 20d | 2026-03-03 | 2026-03-30 | 2 |  | 85d | start no earlier than 2026-03-02 |
| 163 | 101423 - Interior Signage, Samples for approval | 20d | 2026-03-03 | 2026-03-30 | 2 |  | 85d | start no earlier than 2026-03-02 |
| 164 | 101423 - Interior Signage, Product Data/Shop Drawings, Review/Approval | 15d | 2026-03-31 | 2026-04-20 | 162 |  | 85d | start no earlier than 2026-03-02 |
| 165 | 101423 - Interior Signage, Samples, Review/Approval | 15d | 2026-03-31 | 2026-04-20 | 163 |  | 85d | start no earlier than 2026-03-02 |
| 166 | 101423 - Interior Signage, Fabrication/Delivery | 15d | 2026-04-21 | 2026-05-11 | 165, 164 |  | 85d |  |
| 167 | 102800 - Toilet Accessories, Product Data/Equipment Schedule, Submittal | 2d | 2026-01-26 A | 2026-01-27 A | 2 | 100% |  | start no earlier than 2026-01-26 |
| 168 | 102800 - Toilet Accessories, Product Data, Review/Approval | 15d | 2026-01-28 A | 2026-03-23 | 167 |  | 72d | start no earlier than 2026-01-26 |
| 169 | 104413 - Fire Extinquishers/Cabinets, Product Data/Shop Drawings, Submittal | 25d | 2026-03-03 | 2026-04-06 | 2 |  | 87d | start no earlier than 2026-03-02 |
| 170 | 104413 - Fire Extinquishers/Cabinets, Product Data/Shop Drawings, Review/Approval | 15d | 2026-04-07 | 2026-04-27 | 169 |  | 87d | start no earlier than 2026-01-26 |
| 171 | 107316 - Metal Canopies, Product Data, Submittal | 2d | 2026-01-19 A | 2026-01-20 A | 2 | 100% |  | start no earlier than 2026-01-26 |
| 172 | 107316 - Metal Canopies, Shop Drawings, for Approval | 2d | 2026-01-19 A | 2026-01-20 A | 2 | 100% |  | start no earlier than 2025-10-20 |
| 173 | 107316 - Metal Canopies, Color Samples | 5d | 2026-03-03 | 2026-03-09 | 2 |  | 17d | start no earlier than 2026-03-02 |
| 174 | 107316 - Metal Canopies, Product Data, Review/Approval | 12d | 2026-01-21 A | 2026-02-05 A | 171 | 100% |  | start no earlier than 2026-01-26 |
| 175 | 107316 - Metal Canopies, Shop Drawings, Review/Approval | 12d | 2026-01-21 A | 2026-03-18 | 172 |  | 26d |  |
| 176 | 107316 - Metal Canopies, Color Samples, Review/Approval | 15d | 2026-03-10 | 2026-03-30 | 173 |  | 17d | start no earlier than 2026-03-02 |
| 177 | 107316 - Metal Canopies, Fabrication/Delivery | 50d | 2026-04-01 | 2026-06-09 | 176, 174, 175, 320 |  | 17d |  |
| 178 | 113100 - Office Appliances, Product Data, Submittal | 30d | 2026-03-03 | 2026-04-13 | 2 |  | 91d | start no earlier than 2026-03-02 |
| 179 | 113100 - Office Appliances, Product Data, Review/Approval | 15d | 2026-04-14 | 2026-05-04 | 2, 178 |  | 91d | start no earlier than 2025-10-20 |
| 180 | 142123 - Hydraulic Passenger Elevators, Product Data, Submittal | 3d | 2025-08-18 A | 2025-08-20 A | 2 | 100% |  |  |
| 181 | 142123 - Hydraulic Elevator, Shop Drawings, Submittal | 3d | 2025-08-18 A | 2025-08-20 A | 2 | 100% |  |  |
| 182 | 142123 - Hydraulic Elevator, Color Chart/Samples, for approval | 3d | 2025-08-18 A | 2025-08-20 A | 2 | 100% |  |  |
| 183 | 142123 - Hydraulic Passenger Elevators, Product Data, Review/Approval | 4d | 2025-08-21 A | 2025-08-26 A | 180 | 100% |  |  |
| 184 | 142123 - Hydraulic Elevator, Shop Drawings, Review/Approval | 4d | 2025-08-21 A | 2025-08-26 A | 181 | 100% |  |  |
| 185 | 142123 - Hydraulic Elevator, Color Chart/Samples, Review/Approval | 4d | 2025-08-21 A | 2025-08-26 A | 182 | 100% |  |  |
| 186 | 142123 - Hydraulic Elevators, Fabrication/Delivery | 80d | 2025-08-27 A | 2026-06-22 | 185 |  | 13d |  |
| 187 | 211000 - Wet Pipe Fire Protection System, Product Data, Submittals | 2d | 2025-10-30 A | 2025-10-31 A | 2 | 100% |  | start no earlier than 2025-11-21 |
| 188 | 211000 - Wet Pipe Fire Protection, Sprinkler Shop Drawings, for Approval | 2d | 2025-10-30 A | 2025-10-31 A | 2 | 100% |  | start no earlier than 2025-11-21 |
| 189 | 211000 - Wet Pipe Fire Protection System, Product Data, Review/Approval | 12d | 2025-11-03 A | 2025-11-18 A | 187 | 100% |  | start no earlier than 2025-10-20 |
| 190 | 211000 - Wet Pipe Fire Protection, Sprinkler Shop Drawings, Review/Approval | 12d | 2025-11-03 A | 2025-11-18 A | 188 | 100% |  | start no earlier than 2025-10-20 |
| 191 | 220000 - Plumbing Submittals, Product Data, Submittals | 2d | 2025-09-19 A | 2025-09-22 A | 2 | 100% |  | start no earlier than 2025-11-21 |
| 192 | 220000 - Plumbing Submittals, Product Data, Review/Approval | 37d | 2025-09-23 A | 2025-11-12 A | 191 | 100% |  | start no earlier than 2025-10-20 |
| 193 | 221429 - Sump Pumps, Product Data, Submittals | 1d | 2025-09-19 A | 2025-09-19 A | 2 | 100% |  | start no earlier than 2025-10-20 |
| 194 | 221429 - Sump Pumps, Product Data, Review/Approval | 13d | 2025-09-22 A | 2025-10-08 A | 193 | 100% |  | start no earlier than 2025-10-20 |
| 195 | 223300 - Electric Domestic Water Heaters, Product Data/Shop Drawing, Submittal | 1d | 2025-09-19 A | 2025-09-19 A | 2 | 100% |  | start no earlier than 2025-10-20 |
| 196 | 223300 - Electric Domestic Water Heaters, Product Data/Shop Drawing, Review/Approval | 13d | 2025-09-22 A | 2025-10-08 A | 195 | 100% |  | start no earlier than 2025-10-20 |
| 197 | 224000 - Public Plumbing Fixtures, Product Data, Submittal | 1d | 2025-09-19 A | 2025-09-19 A | 2 | 100% |  | start no earlier than 2025-10-20 |
| 198 | 224000 - Public Plumbing Fixtures, Product Data, Review/Approval | 12.5d | 2025-09-22 A | 2025-11-12 A | 197 | 100% |  | start no earlier than 2025-10-20 |
| 199 | 224700 - Drinking Fountain and Water Coolers, Product Data, Submittal | 2d | 2025-09-19 A | 2025-09-22 A | 2 | 100% |  | start no earlier than 2025-11-21 |
| 200 | 224700 - Drinking Fountain and Water Coolers, Product Data, Review/Approval | 37d | 2025-09-23 A | 2025-11-12 A | 199 | 100% |  | start no earlier than 2025-10-20 |
| 201 | 230553 - ID for HVAC Piping & Equipment, Product Data, Submittals | 20d | 2026-03-03 | 2026-03-30 | 2 |  | 103d | start no earlier than 2026-03-02 |
| 202 | 230553 - ID for HVAC Piping & Equipment, Product Data, Review/Approve | 15d | 2026-03-31 | 2026-04-20 | 201 |  | 103d | start no earlier than 2026-03-02 |
| 203 | 230593 - Testing and Balancing, Qualifications Data for TAB Firm | 20d | 2026-03-03 | 2026-03-30 | 2 |  | 134d | start no earlier than 2026-03-02 |
| 204 | 230593 - Testing and Balancing, TAB agenda | 20d | 2026-03-03 | 2026-03-30 | 2 |  | 134d | start no earlier than 2026-03-02 |
| 205 | 230593 - Testing and Balancing, Qualifications Data, Review/Approval | 20d | 2026-03-31 | 2026-04-27 | 2, 203 |  | 134d | start no earlier than 2026-03-02 |
| 206 | 230593 - Testing and Balancing, TAB agenda, Review/Approval | 20d | 2026-03-31 | 2026-04-27 | 2, 204 |  | 134d | start no earlier than 2026-03-02 |
| 207 | 230593 - Testing and Balancing, Final TAB Report | 10d | 2026-09-04 | 2026-09-17 | 428 |  | 30d |  |
| 208 | 230713 - Duct Insulation, Product Data, Submittals | 15d | 2026-03-03 | 2026-03-23 | 2 |  | 0d | start no earlier than 2026-03-02 |
| 209 | 230713 - Duct Insulation, Product Data, Review/Approval | 15d | 2026-03-24 | 2026-04-13 | 208 |  | 0d | start no earlier than 2026-03-02 |
| 210 | 230719 - HVAC Piping Insulation, Product Data, Submittals | 15d | 2026-03-03 | 2026-03-23 | 2 |  | 0d | start no earlier than 2026-03-02 |

| ID | Task | Duration | Start | Finish | Predecessors | Complete | Total float | Constraint |
| --- | --- | --- | --- | --- | --- | --- | --- | --- |
| 211 | 230719 - HVAC Piping Insulation, Product Data, Review/Approval | 15d | 2026-03-24 | 2026-04-13 | 210 |  | 0d | start no earlier than 2026-03-02 |
| 212 | 232300 - Refrigerant Piping, Product Data, Submittals | 15d | 2026-03-03 | 2026-03-23 | 2 |  | 0d | start no earlier than 2026-03-02 |
| 213 | 232300 - Refrigerant Piping, Shop Drawings, Submittals | 15d | 2026-03-03 | 2026-03-23 | 2 |  | 0d | start no earlier than 2026-03-02 |
| 214 | 232300 - Refrigerant Piping, Product Data, Review/Approvals | 15d | 2026-03-24 | 2026-04-13 | 212 |  | 0d | start no earlier than 2026-03-02 |
| 215 | 232300 - Refrigerant Piping, Shop Drawings, Review/Approvals | 15d | 2026-03-24 | 2026-04-13 | 213 |  | 0d | start no earlier than 2026-03-02 |
| 216 | 233113 - Metal Ducts, Shop Drawings, Submittal | 15d | 2026-03-03 | 2026-03-23 | 2 |  | 0d | start no earlier than 2026-03-02 |
| 217 | 233113 - Metal Ducts, Shop Drawings, Review/Approval | 15d | 2026-03-24 | 2026-04-13 | 216 |  | 0d | start no earlier than 2026-03-02 |
| 218 | 233300 - Air Duct Accessories, Product Data, Submittals | 2d | 2025-10-20 A | 2025-10-21 A | 2 | 100% |  | start no earlier than 2026-01-26 |
| 219 | 233300 - Air Duct Accessories, Shop Drawings, Submittal | 15d | 2026-03-03 | 2026-03-23 | 2 |  | 0d | start no earlier than 2026-03-02 |
| 220 | 233300 - Air Duct Accessories, Product Data, Review/Approval | 13d | 2025-10-22 A | 2025-11-07 A | 218 | 100% |  | start no earlier than 2026-01-26 |
| 221 | 233300 - Air Duct Accessories, Shop Drawings, Review/Approval | 15d | 2026-03-24 | 2026-04-13 | 219 |  | 0d | start no earlier than 2026-03-02 |
| 222 | 233713 - Diffusers, Registers and Grilles, Product Data, Submittals | 2d | 2026-02-20 A | 2026-02-23 A | 2 | 100% |  | start no earlier than 2026-01-26 |
| 223 | 233713 - Diffusers, Registers and Grilles, Product Data, Review/Approval | 15d | 2026-02-24 A | 2026-03-23 | 222 |  | 15d | start no earlier than 2026-01-26 |
| 224 | 238126 - Split System Air-Conditioners, Product Data, Submittals | 2d | 2025-12-11 A | 2025-12-12 A | 2 | 100% |  | start no earlier than 2026-01-26 |
| 225 | 238126 - Split System Air-Conditioners, Shop Drawings, Submittal | 15d | 2026-03-03 | 2026-03-23 | 2 |  | 0d | start no earlier than 2026-03-02 |
| 226 | 238126 - Split System Air-Conditioners, Product Data, Review/Approval | 32d | 2025-12-15 A | 2026-01-27 A | 224 | 100% |  | start no earlier than 2026-01-26 |
| 227 | 238126 - Split System Air-Conditioners, Shop Drawings, Review/Approval | 15d | 2026-03-24 | 2026-04-13 | 225 |  | 0d | start no earlier than 2026-03-02 |
| 228 | 238136 - VRF System, Product Data, Submittals | 2d | 2026-03-03 | 2026-03-04 | 2 |  | 13d | start no earlier than 2026-03-02 |
| 229 | 238136 - VRF System, Shop Drawing, Review/Approval | 15d | 2026-03-05 | 2026-03-25 | 228 |  | 13d | start no earlier than 2026-03-02 |
| 230 | 238239 - Decentralized HVAC Equipment, Product Data, Submittal | 15d | 2026-03-03 | 2026-03-23 | 2 |  | 0d | start no earlier than 2026-03-02 |
| 231 | 238239 - Decentralized HVAC Equipment, Product Data, Review/Approval | 15d | 2026-03-24 | 2026-04-13 | 230 |  | 0d | start no earlier than 2026-03-02 |
| 232 | 260519 - Low-Voltage Power Conductors & Cables, Product Data, Submittals | 10d | 2026-03-03 | 2026-03-16 | 2 |  | 149d | start no earlier than 2026-03-02 |
| 233 | 260519 - Low-Voltage Power Conductors & Cables, Product Data, Review/Approvals | 15d | 2026-03-17 | 2026-04-06 | 232 |  | 149d | start no earlier than 2026-03-02 |
| 234 | 260526 - Grounding and Bonding for Electrical, Product Data, Submittal | 10d | 2026-03-03 | 2026-03-16 | 2 |  | 149d | start no earlier than 2026-03-02 |
| 235 | 260526 - Grounding and Bonding for Electrical, Product Data, Review/Approval | 15d | 2026-03-17 | 2026-04-06 | 234 |  | 149d | start no earlier than 2026-03-02 |
| 236 | 260553 - ID for Electrical Systems, Product Data/ID Schedule, Submittal | 20d | 2026-03-03 | 2026-03-30 | 2 |  | 103d | start no earlier than 2026-03-02 |
| 237 | 260553 - ID for Electrical Systems, Product Data/ID Schedule, Review/Approval | 15d | 2026-03-31 | 2026-04-20 | 236 |  | 103d | start no earlier than 2026-03-02 |
| 238 | 260923 - Lighting Control Devices, Product Data, Submital | 1d | 2025-09-19 A | 2025-09-19 A | 2 | 100% |  | start no earlier than 2025-10-20 |
| 239 | 260923 - Lighting Control Devices, Product Data, Review/Approval | 15d | 2025-09-22 A | 2025-10-10 A | 238 | 100% |  | start no earlier than 2025-10-20 |
| 240 | 260923 - Lighting Control Devices, Shop Drawings, Submital | 10d | 2026-03-03 | 2026-03-16 | 2 |  | 20d | start no earlier than 2026-03-02 |
| 241 | 260923 - Lighting Control Devices, Shop Drawings, Review/Approval | 15d | 2026-03-17 | 2026-04-06 | 240 |  | 20d | start no earlier than 2026-03-02 |
| 242 | 262200 - Low Voltage Transformers, Product Data, Submital | 10d | 2026-03-03 | 2026-03-16 | 2 |  | 20d | start no earlier than 2026-03-02 |
| 243 | 262200 - Low Voltage Transformers, Product Data, Review/Approval | 15d | 2026-03-17 | 2026-04-06 | 242 |  | 20d | start no earlier than 2026-03-02 |
| 244 | 262200 - Low Voltage Transformers, Shop Drawings, Submital | 10d | 2026-03-03 | 2026-03-16 | 2 |  | 20d | start no earlier than 2026-03-02 |
| 245 | 262200 - Low Voltage Transformers, Shop Drawings, Review/Approval | 15d | 2026-03-17 | 2026-04-06 | 244 |  | 20d | start no earlier than 2026-03-02 |
| 246 | 262416 - Panelboards, Product Data, Submittal | 1d | 2025-09-19 A | 2025-09-19 A | 2 | 100% |  | start no earlier than 2025-10-20 |
| 247 | 262416 - Panelboard, Product Data, Review/Approval | 14d | 2025-09-22 A | 2025-10-09 A | 246 | 100% |  | start no earlier than 2025-10-20 |
| 248 | 262416 - Panelboard, Shop Drawings/Schedules, Submittal | 2d | 2025-10-24 A | 2025-10-27 A | 2 | 100% |  | start no earlier than 2025-11-21 |
| 249 | 262416 - Panelboard, Shop Drawings/Schedules, Review/Approal | 17d | 2025-10-28 A | 2025-11-19 A | 248 | 100% |  | start no earlier than 2025-11-10 |
| 250 | 262416 - Panelboard, Release for Fabrication | 3d | 2025-11-20 A | 2026-03-05 | 247, 249 |  | 171d | start no earlier than 2026-01-26 |
| 251 | 262726 - Wiring Devices, Product Data, Submittal | 10d | 2026-03-03 | 2026-03-16 | 2 |  | 20d | start no earlier than 2026-03-02 |
| 252 | 262726 - Wiring Devices, Product Data, Review/Approval | 15d | 2026-03-17 | 2026-04-06 | 251 |  | 20d | start no earlier than 2026-03-02 |
| 253 | 262813 - Fuses, Product Data, Submittal | 2d | 2025-10-24 A | 2025-10-27 A | 2 | 100% |  | start no earlier than 2026-01-26 |
| 254 | 262813 -Fuses, Product Data, Review/Approval | 17d | 2025-10-28 A | 2025-11-19 A | 253 | 100% |  | start no earlier than 2026-01-26 |
| 255 | 262816 - Enclosed Switches & Circuit Breakers, Product Data, Submittal | 2d | 2025-10-24 A | 2025-10-27 A | 2 | 100% |  | start no earlier than 2026-01-26 |
| 256 | 262816 - Enclosed Switches & Circuit Breakers, Product Data, Review/Approval | 17d | 2025-10-28 A | 2025-11-19 A | 255 | 100% |  | start no earlier than 2026-01-26 |
| 257 | 262913 - Enclosed Controllers, Product Data/Shop Drawing, Submittal | 10d | 2026-03-03 | 2026-03-16 | 2 |  | 20d | start no earlier than 2026-03-02 |
| 258 | 262913 - Enclosed Controllers, Product Data/Shop Drawing, Review/Approval | 15d | 2026-03-17 | 2026-04-06 | 257 |  | 20d | start no earlier than 2026-03-02 |
| 259 | 265100 - LED Interior Lighting, Product Data, Submittal | 1d | 2025-09-19 A | 2025-09-19 A | 2 | 100% |  | start no earlier than 2025-10-20 |
| 260 | 265100 - LED Interior Lighting, Product Data, Review/Approval | 0d | 2025-09-22 A | 2025-11-07 A | 259 | 100% |  | start no earlier than 2025-10-20 |
| 261 | 265100 - LED Interior Lighting, Fabrication/Delivery | 80d | 2026-03-03 | 2026-06-22 | 260 |  | 33d | start no earlier than 2026-03-02 |
| 262 | 265600 - Exterior Lighting, Product Data, Submittal | 1d | 2025-09-19 A | 2025-09-19 A | 2 | 100% |  | start no earlier than 2025-10-20 |
| 263 | 265600 - Exterior Lighting, Product Data, Review/Approval | 0d | 2025-09-22 A | 2025-11-07 A | 262 | 100% |  | start no earlier than 2025-10-20 |
| 264 | 265600 - Exterior Lighting, Fabrication/Delivery | 80d | 2026-03-03 | 2026-06-22 | 263 |  | 17d | start no earlier than 2026-03-02 |
| 265 | 275123 - Intercommunications & PA Systems, Shop Drawings/Product Data, Submittal | 20d | 2026-03-03 | 2026-03-30 | 2 |  | 10d | start no earlier than 2026-03-02 |
| 266 | 275123 - Intercommunications & PA Systems, Shop Drawings/Product Data, Review/Approval | 15d | 2026-03-31 | 2026-04-20 | 265 |  | 10d | start no earlier than 2026-03-02 |
| 267 | 281300 - Access Control System, Shop Drawings, Submittal | 20d | 2026-03-03 | 2026-03-30 | 2 |  | 10d | start no earlier than 2026-03-02 |
| 268 | 281300 - Access Control System, Shop Drawings, Review/Approval | 15d | 2026-03-31 | 2026-04-20 | 267 |  | 10d | start no earlier than 2026-03-02 |
| 269 | 282300 - Video Surveillance, Product Data, Submittal | 20d | 2026-03-03 | 2026-03-30 | 2 |  | 10d | start no earlier than 2026-03-02 |
| 270 | 282300 - Video Surveillance, Product Data, Review/Approval | 15d | 2026-03-31 | 2026-04-20 | 269 |  | 10d | start no earlier than 2026-03-02 |
| 271 | 282300 - Video Surveillance, Shop Drawings, Submittal | 20d | 2026-03-03 | 2026-03-30 | 2 |  | 10d | start no earlier than 2026-03-02 |
| 272 | 282300 - Video Surveillance, Shop Drawings, Review/Approval | 15d | 2026-03-31 | 2026-04-20 | 271 |  | 10d | start no earlier than 2026-03-02 |
| 273 | 283111 - Digital, Addressable Fire Alarm System, Product Data, to EOR | 0d | 2026-01-05 A | 2026-02-11 A | 276, 278 | 100% |  |  |
| 274 | 283111 - Digital, Addressable Fire Alarm System, Shop Drawings, to EOR Review/Approval | 4d | 2026-02-11 A | 2026-03-06 |  |  | 41d |  |
| 275 | 283111 - Digital, Addressable Fire Alarm System, Product Data, Submittal to AHJ | 20d | 2026-03-03 | 2026-03-30 | 2 |  | 94d | start no earlier than 2026-03-02 |
| 276 | 283111 - Digital, Addressable Fire Alarm System, Product Data, Review/Approval by AHJ | 60d | 2026-03-31 | 2026-06-22 | 275 |  | 94d | start no earlier than 2026-03-02 |
| 277 | 283111 - Digital, Addressable Fire Alarm System, Shop Drawings, Submittal to AHJ | 20d | 2026-03-03 | 2026-03-30 | 2 |  | 94d | start no earlier than 2026-03-02 |
| 278 | 283111 - Digital, Addressable Fire Alarm System, Shop Drawings, AHJ Review/Approval | 60d | 2026-03-31 | 2026-06-22 | 277 |  | 94d | start no earlier than 2026-03-02 |
| 279 | 321216 - Asphalt Paving, Design Mix, Submittal | 2d | 2026-02-17 A | 2026-02-18 A | 2 | 100% |  | start no earlier than 2026-01-26 |
| 280 | 321216 - Asphalt Paving, Design Mix, Review/Approval | 1d | 2026-02-19 A | 2026-02-19 A | 279 | 100% |  | start no earlier than 2026-01-26 |

| ID | WBS | Task | Duration | Start | Finish | Predecessors | Complete | Total float | Constraint |
| --- | --- | --- | --- | --- | --- | --- | --- | --- | --- |
| 281 |  | 321313 - Concrete Paving, Design Mixes, Submittal | 15d | 2026-03-03 | 2026-03-23 | 2 |  | 94d | start no earlier than 2026-03-02 |
| 282 |  | 321313 - Concrete Paving, Design Mixes, Review/Approval | 15d | 2026-03-24 | 2026-04-13 | 281 |  | 94d | start no earlier than 2026-03-02 |
| 283 |  | 321313 - Concrete Paving, Product Data, Submittals | 15d | 2026-03-03 | 2026-03-23 | 2 |  | 94d | start no earlier than 2026-03-02 |
| 284 |  | 321313 - Concrete Paving, Product Data, Review/Approval | 15d | 2026-03-24 | 2026-04-13 | 283 |  | 94d | start no earlier than 2026-03-02 |
| 285 |  | 321713 - Parking Bumpers and Bollards, Product Data, Submittal | 25d | 2026-03-03 | 2026-04-06 | 2FS+10d |  | 84d | start no earlier than 2026-03-02 |
| 286 |  | 321713 - Parking Bumpers and Bollards, Product Data, Review/Approval | 15d | 2026-04-07 | 2026-04-27 | 285 |  | 84d | start no earlier than 2026-01-26 |
| 287 |  | 321723 - Pavement Markings, Product Data, Submittal | 25d | 2026-03-03 | 2026-04-06 | 2FS+10d |  | 84d | start no earlier than 2026-03-02 |
| 288 |  | 321723 - Pavement Markings, Product Data, Review/Approval | 15d | 2026-04-07 | 2026-04-27 | 287 |  | 84d | start no earlier than 2026-01-26 |
| 289 |  | 321726 - Tactile Warning Surfacing, Product Data, Submittal | 25d | 2026-03-03 | 2026-04-06 | 2FS+10d |  | 57d | start no earlier than 2026-03-02 |
| 290 |  | 321726 - Tactile Warning Surfacing, Product Data, Review/Approval | 15d | 2026-04-07 | 2026-04-27 | 289 |  | 57d | start no earlier than 2026-01-26 |
| 291 |  | 321726 - Tactile Warning Surfacing, Color Sample Chart, Submittal | 25d | 2026-03-03 | 2026-04-06 | 2FS+10d |  | 57d | start no earlier than 2026-03-02 |
| 292 |  | 321726 - Tactile Warning Surfacing, Color Sample Chart, Review/Approval | 15d | 2026-04-07 | 2026-04-27 | 291 |  | 57d | start no earlier than 2026-01-26 |
| 293 |  | 323113 - Chain Link Fence, Product Data, Submittal | 25d | 2026-03-03 | 2026-04-06 | 2FS+15d |  | 87d | start no earlier than 2026-03-02 |
| 294 |  | 323113 - Chain Link Fence, Product Data, Review/Approval | 15d | 2026-04-07 | 2026-04-27 | 293 |  | 87d | start no earlier than 2026-01-26 |
| 295 |  | 323113 - Chain Link Fence, Shop Drawings, Submittal | 25d | 2026-03-03 | 2026-04-06 | 2FS+15d |  | 87d | start no earlier than 2026-03-02 |
| 296 |  | 323113 - Chain Link Fence, Shop Drawings, Review/Approval | 15d | 2026-04-07 | 2026-04-27 | 295 |  | 87d | start no earlier than 2026-01-26 |
| 297 |  | 323113 - Chain Link Fence, Samples, Submittal | 25d | 2026-03-03 | 2026-04-06 | 2FS+15d |  | 87d | start no earlier than 2026-03-02 |
| 298 |  | 323113 - Chain Link Fence, Samples, Review/Approval | 15d | 2026-04-07 | 2026-04-27 | 297 |  | 87d | start no earlier than 2026-01-26 |
| 299 |  | 323114 - Security Wire Mesh Fences/Gates, Product Data, Submittals | 25d | 2026-03-03 | 2026-04-06 | 2 |  | 87d | start no earlier than 2026-03-02 |
| 300 |  | 323114 - Security Wire Mesh Fences/Gates, Product Data, Review/Approval | 15d | 2026-04-07 | 2026-04-27 | 299 |  | 87d | start no earlier than 2026-01-26 |
| 301 |  | 323114 - Security Wire Mesh Fences/Gates, Shop Drawings, Submittals | 25d | 2026-03-03 | 2026-04-06 | 2 |  | 87d | start no earlier than 2026-03-02 |
| 302 |  | 323114 - Security Wire Mesh Fences/Gates, Shop Drawings, Review/Approval | 15d | 2026-04-07 | 2026-04-27 | 301 |  | 87d | start no earlier than 2026-01-26 |
| 303 |  | 323119 - Decorative Metal Fences & Gates, Product Data, Submittal | 3d | 2025-10-13 A | 2025-10-15 A | 2 | 100% |  | start no earlier than 2025-11-21 |
| 304 |  | 323119 - Decorative Metal Fences & Gates, Product Data, Review/Approval | 15d | 2025-10-15 A | 2026-03-23 | 303 |  | 112d | start no earlier than 2025-10-20 |
| 305 |  | 323119 - Decorative Metal Fences & Gates, Shop Drawings, Submittal | 1d | 2025-10-13 A | 2025-10-13 A | 2 | 100% |  | start no earlier than 2025-10-20 |
| 306 |  | 323119 - Decorative Metal Fences & Gates, Shop Drawings, Review/Approval | 15d | 2025-10-15 A | 2026-03-23 | 305 |  | 112d | start no earlier than 2025-10-20 |
| 307 |  | 328400 - Planting Irrigation, Product Data/Shop Drawings, Submittal | 25d | 2026-03-03 | 2026-04-06 | 2 |  | 64d | start no earlier than 2026-03-02 |
| 308 |  | 328400 - Planting Irrigation, Product Data/Shop Drawings, Review/Approval | 15d | 2026-04-07 | 2026-04-27 | 307 |  | 64d | start no earlier than 2026-01-26 |
| 309 |  | 329200 - Turf and Grasses, Product Data, Submittal | 25d | 2026-03-03 | 2026-04-06 | 2 |  | 64d | start no earlier than 2026-03-02 |
| 310 |  | 329200 - Turf and Grasses, Product Data, Review/Approval | 15d | 2026-04-07 | 2026-04-27 | 309 |  | 64d | start no earlier than 2026-01-26 |
| 311 |  | 329300 - Plants, Product Data, Submittal | 25d | 2026-03-03 | 2026-04-06 | 2 |  | 64d | start no earlier than 2026-03-02 |
| 312 |  | 329300 - Plants, Product Data, Review/Approval | 15d | 2026-04-07 | 2026-04-27 | 311 |  | 64d | start no earlier than 2026-01-26 |
| 313 | 3 | **Pre-Installation Meetings** | 157d | 2025-09-23 A | 2026-04-29 |  | 8% | 132d |  |
| 314 |  | Preinstallation Meeting for CIP Concrete | 0d | 2025-09-23 A | 2025-10-23 A | 10, 6, 14, 13, 12, 11 | 100% |  | start no earlier than 2025-10-20 |
| 315 |  | Preinstallation Meeting, Cold Formed Metal Framing | 1d | 2025-12-16 A | 2025-12-16 A | 26, 28 | 100% |  | start no earlier than 2025-11-21 |
| 316 |  | Preinstallation Meeting, Bituminous and Self-Adhering Waterproofing | 0d | 2025-09-23 A | 2025-09-23 A | 54, 60, 58, 56, 81, 82 | 100% |  |  |
| 317 |  | Preinstallation Meeting, Cold Fluid Applied Waterproofing | 1d | 2026-04-21 | 2026-04-21 | 63, 64 |  | 24d |  |
| 318 |  | Preinstallation Meeting, Hollow Metal Doors and Frames | 1d | 2026-03-24 | 2026-03-24 | 118, 119, 134 |  | 183d |  |
| 319 |  | Preinstallation Meeting, Aluminum Frames and Storefronts | 1d | 2026-04-07 | 2026-04-07 | 125, 126, 127 |  | 0d |  |
| 320 |  | Preinstallation Meeting, Metal Canopies | 1d | 2026-03-31 | 2026-03-31 | 176 |  | 17d |  |
| 321 |  | Preinstallation Meeting, Hydraulic Passenger Elevator | 1d | 2026-03-03 | 2026-03-03 | 183, 184, 185 |  | 23d | start no earlier than 2026-03-02 |
| 322 |  | Preinstallation Meeting, Fencing | 1d | 2026-04-28 | 2026-04-28 | 294, 296, 298 |  | 87d |  |
| 323 |  | Preinstallation Meeting, Security Wire Mesh Fence and Gates | 1d | 2026-04-28 | 2026-04-28 | 302, 300 |  | 87d |  |
| 324 |  | Preinstallation Meeting, Decorative Metal Fences and Gates | 1d | 2026-03-24 | 2026-03-24 | 306, 304 |  | 112d | start no earlier than 2026-03-02 |
| 325 |  | Preinstallation Meeting, TPO Roofing/Sheet Metal Flashing & Trim | 1d | 2026-04-28 | 2026-04-28 | 85, 86, 88, 95, 96, 97, 100, 101 |  | 17d |  |
| 326 |  | Preinstallation Meeting, Stucco System | 1d | 2026-04-29 | 2026-04-29 | 71, 72, 73, 74, 325 |  | 18d |  |
| 327 |  | Preinstallation Meeting, Architectural Concrete Sealing & Polishing | 1d | 2026-03-25 | 2026-03-25 | 17, 18, 324 |  | 121d | start no earlier than 2026-03-02 |
| 328 | 4 | **Sitework** | 164d | 2025-07-24 A | 2026-03-10 |  | 70% | 89d |  |
| 329 |  | Complete Erosion Control Install | 4d | 2025-07-24 A | 2025-09-08 A | 1, 2 | 100% |  | start no earlier than 2025-10-20 |
| 330 |  | Silt Fence Inspection | 1d | 2025-09-09 A | 2025-09-09 A | 329 | 100% |  | start no earlier than 2025-10-20 |
| 331 |  | Clear and Grub | 0d | 2025-09-03 A | 2025-09-18 A | 330 | 100% |  | finish no earlier than 2025-09-22 |
| 332 |  | Install Temporary Fencing | 1d | 2025-10-03 A | 2025-10-03 A | 330, 331 | 100% |  | start no earlier than 2025-10-20 |
| 333 |  | Mass Grade Site | 14d | 2025-09-16 A | 2025-10-08 A | 331 | 100% |  | start no earlier than 2025-10-20 |
| 334 |  | Construct Retention Pond | 3d | 2025-10-10 A | 2026-03-05 | 333FS-5d |  | 92d | start no earlier than 2025-10-20 |
| 335 |  | Storm Sewer | 0d | 2025-11-14 A | 2026-02-27 A | 333 | 100% |  |  |
| 336 |  | Sanitary Sewer, Fire Line and domestic water | 6d | 2025-11-14 A | 2026-03-10 | 335SS, 333 |  | 89d | start no earlier than 2025-11-21 |
| 337 |  | Grade for building pad | 1d | 2025-10-01 A | 2025-10-08 A | 333FS-1d | 100% |  | start no earlier than 2025-10-20 |
| 338 | 5 | **Building Pad Construction** | 43d | 2025-10-09 A | 2025-12-08 A |  | 100% |  |  |
| 339 |  | Survey and Form Perimeter Walls of Building | 10d | 2025-10-09 A | 2025-10-22 A | 337 | 100% |  | start no earlier than 2025-10-20 |
| 340 |  | Concrete Footings for Columns | 10d | 2025-10-28 A | 2025-12-05 A | 339FS-1d, 314, 6 | 100% |  |  |
| 341 |  | Excavation for Elevator Pits | 0d | 2025-10-28 A | 2025-11-07 A | 340SS+1d, 339, 332 | 100% |  |  |
| 342 |  | Waterproofing of Below Elevator Pit Floors | 3d | 2025-11-06 A | 2025-11-10 A | 341 | 100% |  |  |
| 343 |  | Construct Concrete Elevator Pit Floors and Sump Pits | 0d | 2025-11-06 A | 2025-11-07 A | 339SS+3d, 316, 342 | 100% |  |  |
| 344 |  | Form and Pour Elevator Pit Walls | 2d | 2025-11-06 A | 2025-11-07 A | 343FS-2d | 100% |  |  |
| 345 |  | Underslab Plumbing Rough | 0d | 2025-11-11 A | 2025-11-21 A | 340SS | 100% |  | start no earlier than 2025-11-21 |
| 346 |  | Fine Grade SOG-Place Stone | 0d | 2025-11-20 A | 2025-11-24 A | 345FS-2d, 347, 343, 344 | 100% |  |  |
| 347 |  | Underslab Electrical Rough | 0d | 2025-10-30 A | 2025-12-05 A | 340 | 100% |  |  |
| 348 |  | Vapor Barrier/Rebar for Slab on Grade | 9d | 2025-11-11 A | 2025-12-05 A | 346 | 100% |  |  |
| 349 |  | Pour First Half of Slab on Grade | 0d | 2025-11-22 A | 2025-11-22 A | 348 | 100% |  |  |
| 350 |  | Pour Second Half of Slab on Grade | 0d | 2025-12-06 A | 2025-12-06 A | 349 | 100% |  | must start on 2025-12-06 |

| ID | WBS | Task | Duration | Start | Finish | Predecessors | Complete | Total float | Constraint |
| --- | --- | --- | --- | --- | --- | --- | --- | --- | --- |
| 351 |  | Backfill Around Slab on Grade | 1d | 2025-12-08 A | 2025-12-08 A | 349, 350FS-2d | 100% |  |  |
| 352 | 6 | **Building Construction** | 179d | 2025-12-10 A | 2026-08-17 | 350 | 7% | 13d |  |
| 353 |  | Hollow metal frames to job site for CMU | 0d | 2025-12-10 A | 2025-12-10 A | 318, 140, 139, 349SS | 100% |  |  |
| 354 |  | Construct First Lift of Elevators/Stair Tower CMU | 0d | 2025-12-11 A | 2025-12-31 A | 349 | 100% |  |  |
| 355 |  | Construct Exterior CMU Walls - SOG to 2nd Floor | 0d | 2025-12-11 A | 2026-01-15 A | 349, 20, 22, 354SS, 351 | 100% |  |  |
| 356 |  | Install Hollow Metal Frames in CMU - 1st Floor | 1d | 2025-12-10 A | 2025-12-10 A | 354SS | 100% |  |  |
| 357 |  | Grout First Lift of CMU at Elevators/Stair Towers | 1d | 2025-12-31 A | 2025-12-31 A | 356 | 100% |  | start no earlier than 2026-01-26 |
| 358 |  | Construct Second Lift of Elevators/Stair Tower CMU | 8d | 2026-01-15 A | 2026-03-12 | 357 |  | 8d |  |
| 359 |  | Install Hollow Metal Frames in Stair Towers - 2nd Floor | 1d | 2026-02-25 A | 2026-02-25 A | 358SS | 100% |  |  |
| 360 |  | Grout Second Lift of CMU at Elevators/Stair Towers | 1d | 2026-02-19 A | 2026-02-26 A | 359 | 100% |  | start no earlier than 2026-03-02 |
| 361 |  | Construct Final Lift of Elevators/Stair Tower CMU | 8d | 2026-03-03 | 2026-03-12 | 360 |  | 23d | start no earlier than 2026-03-02 |
| 362 |  | Install Hollow Metal Frame in Stair Towers - 3rd Floor | 1d | 2026-03-03 | 2026-03-03 | 361SS |  | 23d | start no earlier than 2026-03-02 |
| 363 |  | Grout Final Lift of CMU at Elevators/Stair Towers | 2d | 2026-03-24 | 2026-03-25 | 343FS+5d, 349FS+5d, 20, 22, 31, 66, 109, 321, 362 |  | 9d |  |
| 364 |  | 1st floor structure erection/decking | 5d | 2026-01-07 A | 2026-02-12 A | 348, 349FS+5d, 355, 24, 28, 315 | 100% |  |  |
| 365 |  | 2nd floor SOD-Prep/wire install/Pour | 8d | 2026-01-21 A | 2026-02-21 A | 364FS-2d, 353 | 100% |  |  |
| 366 |  | 2nd floor SOD-Pour Completed | 0d | 2026-02-21 A | 2026-02-21 A | 365 | 100% |  |  |
| 367 |  | Construct Exterior CMU Walls - 2nd to 3rd floor | 10d | 2026-01-15 A | 2026-03-16 | 365FS+5d |  | 20d |  |
| 368 |  | 2nd floor-structure erection | 12d | 2026-02-16 A | 2026-03-18 | 366FS+5d, 367SS+3d |  | 4d |  |
| 369 |  | 3rd floor-SOD prep/wire install/Pour | 7d | 2026-03-19 | 2026-03-27 | 368, 367SS+5d, 358 |  | 4d |  |
| 370 |  | 3rd floor-SOD Pour Completed | 0d | 2026-03-27 | 2026-03-27 | 369 |  | 4d |  |
| 371 |  | Install stairs in stair towers | 7d | 2026-04-07 | 2026-04-15 | 348, 363, 349FS+5d, 34, 39 |  | 1d |  |
| 372 |  | Install Railings | 8d | 2026-04-16 | 2026-04-27 | 371, 39 |  | 18d |  |
| 373 |  | 3rd Floor - Construct CMU walls from 3rd Floor to Roof | 15d | 2026-04-06 | 2026-04-24 | 369FS+5d, 370FS+5d |  | 4d |  |
| 374 |  | 3rd floor structure erection & Roof | 25d | 2026-04-16 | 2026-05-20 | 370FS+5d, 373SS+5d, 41, 43, 105, 106, 107, 371 |  | 1d |  |
| 375 |  | Install TPO Roofing | 7d | 2026-05-21 | 2026-05-29 | 374, 373, 41, 43, 325, 372 |  | 1d |  |
| 376 |  | Roofing Complete - Building Dry-In | 0d | 2026-06-01 | 2026-06-01 | 375, 380 |  | 1d |  |
| 377 |  | EIFS/Stucco | 35d | 2026-05-21 | 2026-07-08 | 373, 374, 317, 326 |  | 3d |  |
| 378 |  | Storefront Frames Install | 10d | 2026-06-03 | 2026-06-16 | 376, 373, 374, 317, 319, 128 |  | 0d |  |
| 379 |  | Storefront Glass Installed | 10d | 2026-07-01 | 2026-07-14 | 378FS+10d, 143 |  | 0d |  |
| 380 |  | Stanley Sliding Door Install | 1d | 2026-06-01 | 2026-06-01 | 375, 131, 132 |  | 1d |  |
| 381 |  | Canopies | 8d | 2026-06-18 | 2026-06-29 | 377SS+20d, 380, 177 |  | 11d |  |
| 382 |  | Install Metal Coping/Downspouts/Trim | 6d | 2026-07-15 | 2026-07-22 | 375, 377, 381, 379, 146, 147 |  | 0d |  |
| 383 |  | Exterior Building Caulking | 5d | 2026-07-23 | 2026-07-29 | 382, 378, 377, 115, 113 |  | 2d |  |
| 384 |  | Exterior Building Punchlist | 5d | 2026-07-30 | 2026-08-05 | 383, 382, 433 |  | 2d |  |
| 385 |  | Light gauge office framing | 5d | 2026-05-21 | 2026-05-27 | 366, 364, 374 |  | 13d |  |
| 386 |  | Elevator #1 Install | 20d | 2026-06-23 | 2026-07-20 | 412, 376, 186, 194 |  | 13d |  |
| 387 |  | Elevator #2 install | 20d | 2026-07-21 | 2026-08-17 | 386, 186, 194 |  | 13d |  |
| 388 |  | Building Façade Complete | 0d | 2026-07-22 | 2026-07-22 | 382, 379 |  | 0d |  |
| 389 | 7 | **Site Utlities/As-Builts** | 216d | 2025-11-20 A | 2026-09-17 |  | 16% | 0d |  |
| 390 |  | Electrical Gear Procurement | 0d | 2025-11-20 A | 2026-01-30 A | 1FS+20d, 250 | 100% |  | start no earlier than 2026-01-26 |
| 391 |  | Procure Transformer | 60d | 2026-02-18 A | 2026-05-25 | 1 |  | 16d |  |
| 392 |  | Install Primary Power Conduits to Transformer | 17d | 2026-01-23 A | 2026-02-16 A | 337, 235 | 100% |  |  |
| 393 |  | Install Secondary Power Conduits from Building to Transfomer | 0d | 2026-01-05 A | 2026-02-02 A | 392, 390, 411 | 100% |  |  |
| 394 |  | Set Transformer | 5d | 2026-05-26 | 2026-06-01 | 391, 337 |  | 16d |  |
| 395 |  | Permanent Power to Building | 10d | 2026-06-02 | 2026-06-15 | 393, 394 |  | 16d |  |
| 396 |  | As-Built Drawings for Sanitary and Storm Water | 12d | 2026-09-02 | 2026-09-17 | 335, 336, 440FS-3d |  | 0d | finish no earlier than 2026-09-16 |
| 397 | 8 | **Rough-ins and Finishes** | 161d | 2026-02-19 A | 2026-10-01 | 155, 157 |  | 5d |  |
| 398 |  | 1st Floor Electrical/Fire Alarm Rough In | 15d | 2026-02-19 A | 2026-05-25 | 364, 366, 399, 239FS+2d, 241, 243, 245, 252, 254, 256, 258, 266, 268, 270, 272, 273, 274, 400FS-5d |  | 5d |  |
| 399 |  | 1st Floor HVAC Rough In | 15d | 2026-02-24 A | 2026-05-04 | 366, 209, 229, 231, 227, 226, 211, 214, 215, 217, 220, 221, 223, 367, 370 |  | 0d |  |
| 400 |  | 1st Floor Sprinkler Rough-in/riser room-1st floor | 12d | 2026-03-03 A | 2026-04-22 | 366, 190, 189, 399SS+10d |  | 13d |  |
| 401 |  | 1st Floor HVAC Trim/Line Set | 10d | 2026-05-26 | 2026-06-08 | 399, 400, 398 |  | 5d |  |
| 402 |  | 1st Floor Plumbing rough walls | 5d | 2026-06-09 | 2026-06-15 | 385, 401, 400 |  | 5d |  |
| 403 |  | 1st Floor Hallway System- by Janus | 20d | 2026-06-16 | 2026-07-13 | 370, 399, 398, 400, 401, 402 |  | 5d |  |
| 404 |  | 1st Floor Electrical Trim/FA/Hang Lights | 7d | 2026-07-14 | 2026-07-22 | 403, 261, 398 |  | 18d |  |
| 405 |  | 2nd Floor HVAC Rough In | 15d | 2026-05-21 | 2026-06-10 | 370, 209, 226, 227, 229, 231, 211, 214, 215, 217, 220, 221, 223, 374 |  | 13d |  |
| 406 |  | 2nd Floor Electrical/Fire Alarm Rough In | 15d | 2026-06-11 | 2026-07-01 | 368, 405, 407FS-5d, 273, 274 |  | 13d |  |
| 407 |  | 2nd Floor Sprinkler Rough-in | 7d | 2026-06-04 | 2026-06-12 | 370, 405FS-5d, 400 |  | 16d |  |
| 408 |  | 2nd Floor HVAC Trim/Line Sets | 10d | 2026-06-15 | 2026-06-26 | 405, 407 |  | 16d |  |
| 409 |  | 2nd Floor Hallway System - by Janus | 20d | 2026-07-14 | 2026-08-10 | 406, 403, 407, 408 |  | 5d |  |
| 410 |  | 2nd Floor Electrical Trim/FA/Hang Light-2nd Floor | 7d | 2026-08-11 | 2026-08-19 | 404, 409 |  | 5d |  |
| 411 |  | Install Gear in Electrical Room | 10d | 2026-06-01 | 2026-06-12 | 398, 375, 390, 256 |  | 13d |  |
| 412 |  | Power to elevator machine rooms | 2d | 2026-06-16 | 2026-06-17 | 375, 395, 411 |  | 16d |  |
| 413 |  | 3rd Floor HVAC Rough In | 15d | 2026-05-26 | 2026-06-15 | 375SS+3d, 209, 229, 231, 227, 226, 211, 214, 215, 217, 220, 221, 223 |  | 6d |  |
| 414 |  | 3rd Floor Electrical/Fire Alarm Rough In | 15d | 2026-06-05 | 2026-06-25 | 375, 413SS+8d, 273, 274 |  | 6d |  |
| 415 |  | 3rd Floor Sprinkler Rough-in | 5d | 2026-06-26 | 2026-07-02 | 375, 413, 374, 414 |  | 6d |  |
| 416 |  | 3rd Floor HVAC Trim/Line Sets | 10d | 2026-07-03 | 2026-07-16 | 413, 415 |  | 6d |  |
| 417 |  | 3rd Floor Hallway System-by Janus | 20d | 2026-07-17 | 2026-08-13 | 414, 416, 415, 413 |  | 6d |  |
| 418 |  | 3rd Floor Electrical Trim/FA/Hang Lights | 7d | 2026-08-14 | 2026-08-24 | 417, 416 |  | 6d |  |
| 419 |  | Install Aluminum Wainscot at Elevator Lobbies | 5d | 2026-08-14 | 2026-08-20 | 36, 403, 409, 417, 429 |  | 8d |  |
| 420 |  | Office Buildout | 40d | 2026-06-17 | 2026-08-11 | 378, 402, 385, 41, 50, 52, 121, 149, 151, 153, 168, 411 |  | 11d |  |

| ID | WBS | Task | Duration | Start | Finish | Predecessors | Total float | Constraint |
| --- | --- | --- | --- | --- | --- | --- | --- | --- |
| 421 |  | Initial BDA System Requirement Testing | 1d | 2026-08-14 | 2026-08-14 | 417 | 18d |  |
| 422 |  | Install BDA System | 10d | 2026-08-31 | 2026-09-11 | 421FS+10d | 18d |  |
| 423 |  | 1st Floor Punchlist Repairs | 5d | 2026-08-12 | 2026-08-18 | 429, 420, 404, 401, 403 | 15d |  |
| 424 |  | 2nd Floor Punchlist Repairs | 5d | 2026-08-21 | 2026-08-27 | 408, 406, 410, 419, 409 | 8d |  |
| 425 |  | 3rd Floor Punchlist Repairs | 5d | 2026-08-25 | 2026-08-31 | 418, 419, 416, 417 | 6d |  |
| 426 |  | Complete Interior Punchlist Work - All Floors | 2d | 2026-09-01 | 2026-09-02 | 430, 434, 179, 418, 419, 424, 425, 423 | 6d |  |
| 427 |  | Final Clean/Floor Sealer | 20d | 2026-09-04 | 2026-10-01 | 387, 420, 327, 418, 372, 432, 430, 431, 429, 200, 202, 428, 237, 424, 426 | 5d |  |
| 428 |  | HVAC Startup | 6d | 2026-08-27 | 2026-09-03 | 416, 420, 408, 401, 432 | 5d |  |
| 429 |  | Install Plumbing Fixtures and Water Heaters | 4d | 2026-07-17 | 2026-07-22 | 416, 196, 198, 200, 402 | 24d |  |
| 430 |  | Install Interior Signage | 1d | 2026-08-27 | 2026-08-27 | 417, 419, 420, 166, 432 | 8d |  |
| 431 |  | Install Fire Extinguishers and Cabinets | 1d | 2026-08-14 | 2026-08-14 | 417, 420, 409, 403, 170 | 9d |  |
| 432 |  | Final Painting, Stairs/Railings/Doors | 5d | 2026-08-20 | 2026-08-26 | 161, 417, 372, 429, 433, 410, 431FS-1d | 5d |  |
| 433 |  | Wall Packs | 3d | 2026-07-09 | 2026-07-13 | 377, 36 | 9d |  |
| 434 |  | Elevator Trim out by Subs | 3d | 2026-08-21 | 2026-08-25 | 387, 386, 417, 409, 403, 419 | 10d |  |
| 435 | 9 | **Finsh Sitework - Dumpster/Sidewalks/Paving/Landscaping** | 76d | 2026-07-09 | 2026-10-22 |  | 0d |  |
| 436 |  | Rough grade for landscaping | 2d | 2026-07-09 | 2026-07-10 | 377, 394, 336, 334 | 3d |  |
| 437 |  | Install Exterior Lighting in Parking Area | 5d | 2026-07-13 | 2026-07-17 | 436, 264, 290, 292 | 3d |  |
| 438 |  | Form and Pour Sidewalks | 5d | 2026-07-23 | 2026-07-29 | 436, 437, 388 | 0d |  |
| 439 |  | Landscaping and Irrigation Installation | 20d | 2026-07-27 | 2026-08-21 | 436FS-1d, 308, 310, 312, 433, 438FS-3d, 384FF+10d, 392 | 0d |  |
| 440 |  | Curb/Asphalt Paving | 10d | 2026-08-24 | 2026-09-04 | 436, 438, 280, 282, 284, 286, 288, 439 | 0d |  |
| 441 |  | Install Fencing | 5d | 2026-07-30 | 2026-08-05 | 438, 294, 296, 298, 322, 323, 324 | 21d |  |
| 442 |  | Striping | 1d | 2026-09-07 | 2026-09-07 | 440, 439SS+10d | 16d |  |
| 443 |  | Landscaping As-Built Drawings | 10d | 2026-08-24 | 2026-09-04 | 439, 441 | 9d |  |
| 444 |  | Developer's Letter of Dedication | 10d | 2026-09-07 | 2026-09-18 | 443 | 9d |  |
| 445 |  | Engineer's Certificate of Completion | 5d | 2026-09-07 | 2026-09-11 | 443 | 14d |  |
| 446 |  | Contractor's Letter of Completion | 2d | 2026-09-08 | 2026-09-09 | 439, 426, 433, 383, 384, 442 | 16d |  |
| 447 |  | Satisfaction Letter/Email from FDOT and City for Infrastructure | 10d | 2026-09-07 | 2026-09-18 | 443 | 9d |  |
| 448 |  | SOV for Site Utilites, Water, Wastewater, Reclaimed Water | 10d | 2026-09-18 | 2026-10-01 | 396 | 0d |  |
| 449 |  | Polk County Final Walkthrough Request | 5d | 2026-10-02 | 2026-10-08 | 443, 440, 444, 445, 446, 447, 448 | 0d |  |
| 450 |  | Polk County Approval of Site | 10d | 2026-10-09 | 2026-10-22 | 449 | 0d |  |
| 451 | 10 | **Final Building Sign-Offs** | 37d | 2026-08-26 | 2026-10-15 |  | 11d |  |
| 452 |  | Pre Closeout Meeting with AHJ | 1d | 2026-10-02 | 2026-10-02 | 388, 427, 453, 89, 90, 91, 135, 136, 431, 207, 426, 454 | 20d |  |
| 453 |  | Final BDA Test | 1d | 2026-09-14 | 2026-09-14 | 417SS+10d, 422 | 18d |  |
| 454 |  | Elevator Ready for State Inspection | 1d | 2026-08-26 | 2026-08-26 | 434, 395 | 31d |  |
| 455 |  | Final Building Inspections | 5d | 2026-10-09 | 2026-10-15 | 442, 427, 454, 443FS-1d, 453, 430, 179, 450SS | 0d |  |
| 456 |  | Weather Days per Contract (20 Calendar Days) | 15d | 2026-10-12 | 2026-10-30 | 455SS+1d | 0d |  |
| 457 |  | Substantial Completion | 0d | 2026-10-30 | 2026-10-30 | 455, 456, 426 | 0d | finish no later than 2026-10-30 |

## Version 2 (data date 2026-04-20, saved 2026-04-22, file update_2.mpp)

Note of the change: feat: add Davenport Update #2 files

Last finish stays 2026-10-30. Complete tasks 134 → 230.

Changed:

| ID | Task | Start | Finish | Duration | Complete | Total float | Other |
| --- | --- | --- | --- | --- | --- | --- | --- |
| 4 | **Procurement** |  | 2026-09-17 → 2026-09-11 (-6d) | 291d → 287d | 18% → 62% | 31d → 35d |  |
| 8 | 033000 - CIP - Construction Joint Layout, Submittal | 2026-03-03 → 2026-03-26 A (+23d) | 2026-03-16 → 2026-04-08 A (+23d) |  | 0% → 100% | 149d → none | constraint start no earlier than 2026-03-02 → start no earlier than 2026-03-25 |
| 9 | 033000 - CIP - Slab on Grade Control Joint Layout, Submittal | 2026-03-03 → 2026-03-26 A (+23d) | 2026-03-16 → 2026-04-08 A (+23d) |  | 0% → 100% | 149d → none | constraint start no earlier than 2026-03-02 → start no earlier than 2026-03-25 |
| 10 | 033000 - CIP - Product Data/Material Certificates, Review/Approval | 2026-03-03 → 2026-03-26 A (+23d) | 2026-03-23 → 2026-04-15 A (+23d) |  | 0% → 100% | 159d → none | constraint start no earlier than 2026-03-02 → start no earlier than 2026-03-25 |
| 13 | 033000 - CIP - Construction Joint Layout, Review/Approval | 2026-03-17 → 2026-04-09 A (+23d) | 2026-04-06 → 2026-04-29 (+23d) |  | 0% → 53% | 149d → 132d | constraint start no earlier than 2026-03-02 → start no earlier than 2026-03-25 |
| 14 | 033000 - CIP - Slab on Grade Control Joint Layout, Review/Approval | 2026-03-17 → 2026-04-09 A (+23d) | 2026-04-06 → 2026-04-29 (+23d) |  | 0% → 53% | 149d → 132d | constraint start no earlier than 2026-03-02 → start no earlier than 2026-03-25 |
| 17 | 033300 - Concrete Sealing, Product Data, F-01 Finish, Review/Approval | 2026-03-03 → 2026-03-26 A (+23d) | 2026-03-23 → 2026-04-15 A (+23d) |  | 0% → 100% | 122d → none | constraint start no earlier than 2026-03-02 → start no earlier than 2026-03-25 |
| 18 | 033300 - Concrete Polishing, Product Data FF-02, Review/Approval | 2026-03-03 → 2026-03-26 A (+23d) | 2026-03-23 → 2026-04-15 A (+23d) |  | 0% → 100% | 122d → none | constraint start no earlier than 2026-03-02 → start no earlier than 2026-03-25 |
| 34 | 055100/055116 - Metal Stair, Shop Drawings, Fabrication/Delivery |  | 2026-04-06 → 2026-04-08 A (+2d) | 25d → 10d | 0% → 100% | 1d → none |  |
| 35 | 055110 - Aluminum Diamond Plate Wainscot, Product Data/Shop Drawings, Submittal | 2026-03-03 → 2026-03-26 A (+23d) | 2026-04-06 → 2026-04-29 (+23d) |  | 0% → 72% | 61d → 51d | constraint start no earlier than 2026-03-02 → start no earlier than 2026-03-25 |
| 36 | 055110 - Aluminum Diamond Plate Wainscot, Product Data/Shop Drawings, Review/Approval | 2026-04-07 → 2026-04-30 (+23d) | 2026-04-27 → 2026-05-20 (+23d) |  |  | 61d → 51d |  |
| 39 | 055213 - Pipe and Tube Railings, Shop Drawings, Fabrication/Delivery | 2026-03-03 → 2025-12-15 A (-78d) | 2026-04-06 → 2026-04-01 A (-5d) | 25d → 5d | 0% → 100% | 1d → none | constraint start no earlier than 2026-03-02 → none |
| 40 | 061000 - Rough Carpentry, Product Data Submittals | 2026-03-03 → 2026-03-26 A (+23d) | 2026-03-16 → 2026-04-08 A (+23d) |  | 0% → 100% | 8d → none | constraint start no earlier than 2026-03-02 → start no earlier than 2026-03-25 |
| 41 | 061000 - Rough Carpentry, Product Data Approval | 2026-03-17 → 2026-04-09 A (+23d) | 2026-04-06 → 2026-04-29 (+23d) |  | 0% → 53% | 8d → 1d | constraint start no earlier than 2026-03-02 → start no earlier than 2026-03-25 |
| 42 | 061600 - Sheathing, Product Data Submittals |  |  |  |  |  | constraint start no earlier than 2026-01-26 → none |
| 43 | 061600 - Sheathing, Product Data Review/Approval |  | 2026-03-23 → 2026-03-04 A (-19d) | 15d → 0d | 0% → 100% | 18d → none |  |
| 44 | 064116 - Plastic Laminate Casework, Product Data, Submittals | 2026-03-03 → 2026-03-26 A (+23d) | 2026-03-30 → 2026-04-22 (+23d) |  | 0% → 90% | 27d → 6d | constraint start no earlier than 2026-03-02 → start no earlier than 2026-03-25 |
| 45 | 064116 - Plastic Laminate Casework, Shop Drawings, Submittal | 2026-03-03 → 2026-03-26 A (+23d) | 2026-03-30 → 2026-04-22 (+23d) |  | 0% → 90% | 27d → 6d | constraint start no earlier than 2026-03-02 → start no earlier than 2026-03-25 |
| 46 | 064116 - Plastic Laminate Casework, Color Samples | 2026-03-03 → 2026-03-26 A (+23d) | 2026-03-30 → 2026-04-22 (+23d) |  | 0% → 90% | 27d → 6d | constraint start no earlier than 2026-03-02 → start no earlier than 2026-03-25 |
| 47 | 064116 - Plastic Laminate Casework, Product Data, Review/Approval | 2026-03-31 → 2026-04-23 (+23d) | 2026-04-20 → 2026-05-13 (+23d) |  |  | 27d → 6d |  |
| 48 | 064116 - Plastic Laminate Casework, Shop Drawings, Review/Approval | 2026-03-31 → 2026-04-23 (+23d) | 2026-04-20 → 2026-05-13 (+23d) |  |  | 27d → 6d |  |
| 49 | 064116 - Plastic Laminate Casework, Color Samples, Review/Approval | 2026-03-31 → 2026-04-23 (+23d) | 2026-04-20 → 2026-05-13 (+23d) |  |  | 27d → 6d |  |
| 50 | 064116 - Plastic Laminate Casework, Fabrication/Delivery | 2026-04-21 → 2026-05-14 (+23d) | 2026-05-25 → 2026-06-17 (+23d) |  |  | 27d → 6d |  |
| 51 | 066400 - FRP Submittals | 2026-03-03 → 2026-03-26 A (+23d) | 2026-04-06 → 2026-04-29 (+23d) |  | 0% → 72% | 47d → 26d | constraint start no earlier than 2026-03-02 → start no earlier than 2026-03-25 |
| 52 | 066400 - FRP - Review/Approval | 2026-04-07 → 2026-04-30 (+23d) | 2026-04-27 → 2026-05-20 (+23d) |  |  | 47d → 26d |  |
| 53 | 071113 - Bituminous Waterproofing, Product Data Submittals | 2026-03-03 → 2026-03-26 A (+23d) | 2026-03-16 → 2026-04-08 A (+23d) |  | 0% → 100% | 149d → none | constraint start no earlier than 2026-03-02 → start no earlier than 2026-03-25 |
| 54 | 071113 - Bituminous Waterproofing, Review/Approval | 2026-03-17 → 2026-04-09 A (+23d) | 2026-04-06 → 2026-04-29 (+23d) |  | 0% → 53% | 149d → 132d | constraint start no earlier than 2026-03-02 → start no earlier than 2026-03-25 |
| 57 | 071326 - Self-Adhering Sheet Waterproofing, Shop Drawings, Submittal | 2026-03-03 → 2026-03-26 A (+23d) | 2026-03-16 → 2026-04-08 A (+23d) |  | 0% → 100% | 149d → none | constraint start no earlier than 2026-03-02 → start no earlier than 2026-03-25 |
| 58 | 071326 - Self-Adhering Sheet Waterproofing, Shop Drawings, Review/Approval | 2026-03-17 → 2026-04-09 A (+23d) | 2026-04-06 → 2026-04-29 (+23d) |  | 0% → 53% | 149d → 132d | constraint start no earlier than 2026-03-02 → start no earlier than 2026-03-25 |
| 59 | 071326 - Self-Adhering Sheet Waterproofing, Samples, Submittal | 2026-03-03 → 2026-03-26 A (+23d) | 2026-03-16 → 2026-04-08 A (+23d) |  | 0% → 100% | 149d → none | constraint start no earlier than 2026-03-02 → start no earlier than 2026-03-25 |
| 60 | 071326 - Self-Adhering Sheet Waterproofing, Samples, Review/Approval | 2026-03-17 → 2026-04-09 A (+23d) | 2026-04-06 → 2026-04-29 (+23d) |  | 0% → 53% | 149d → 132d | constraint start no earlier than 2026-03-02 → start no earlier than 2026-03-25 |
| 61 | 071416 - Cold Fluid Applied Waterproofing, Product Data Submittals | 2026-03-03 → 2026-03-26 A (+23d) | 2026-03-16 → 2026-04-08 A (+23d) |  | 0% → 100% | 34d → none | constraint start no earlier than 2026-03-02 → start no earlier than 2026-03-25 |
| 62 | 071416 - Cold Fluid Applied Waterproofing, Shop Drawings, Submittal | 2026-03-03 → 2026-03-26 A (+23d) | 2026-03-30 → 2026-04-22 (+23d) |  | 0% → 90% | 24d → 14d | constraint start no earlier than 2026-03-02 → start no earlier than 2026-03-25 |
| 63 | 071416 - Cold Fluid Applied Waterproofing, Product Data, Review/Approval | 2026-03-17 → 2026-04-09 A (+23d) | 2026-04-06 → 2026-04-29 (+23d) |  | 0% → 53% | 34d → 24d | constraint start no earlier than 2026-03-02 → start no earlier than 2026-03-25 |
| 64 | 071416 - Cold Fluid Applied Waterproofing, Shop Drawings, Review/Approval | 2026-03-31 → 2026-04-23 (+23d) | 2026-04-20 → 2026-05-13 (+23d) |  |  | 24d → 14d |  |
| 66 | 072100 - Thermal Insulation, Product Data, Review/Approval | 2026-03-03 → 2026-02-04 A (-27d) | 2026-03-23 → 2026-03-04 A (-19d) | 15d → 21d | 0% → 100% | 9d → none | constraint start no earlier than 2026-03-02 → none |
| 69 | 072410 - Stucco System, Color Samples for Architect Approval | 2026-03-03 → 2026-03-26 A (+23d) | 2026-03-23 → 2026-04-15 A (+23d) |  | 0% → 100% | 29d → none | constraint start no earlier than 2026-03-02 → start no earlier than 2026-03-25 |
| 70 | 072410 - Stucco System, Shop Drawings for Approval | 2026-03-03 → 2026-03-26 A (+23d) | 2026-03-23 → 2026-04-15 A (+23d) |  | 0% → 100% | 29d → none | constraint start no earlier than 2026-03-02 → start no earlier than 2026-03-25 |
| 71 | 072410 - Stucco System, Product Data, Review/Approval | 2026-03-03 → 2026-03-26 A (+23d) | 2026-03-23 → 2026-04-15 A (+23d) |  | 0% → 100% | 44d → none | constraint start no earlier than 2026-03-02 → start no earlier than 2026-03-25 |
| 72 | 072410 - Stucco System, Manufacturers Standard Warranty, Review/Approval | 2026-03-03 → 2026-03-26 A (+23d) | 2026-03-23 → 2026-04-15 A (+23d) |  | 0% → 100% | 44d → none | constraint start no earlier than 2026-03-02 → start no earlier than 2026-03-25 |
| 73 | 072410 - Stucco System, Color Samples, Review/Approval | 2026-03-24 → 2026-04-16 A (+23d) | 2026-04-13 → 2026-05-06 (+23d) |  | 0% → 20% | 29d → 19d | constraint start no earlier than 2026-03-02 → start no earlier than 2026-03-25 |
| 74 | 072410 - Stucco System, Shop Drawings, Review/Approval | 2026-03-24 → 2026-04-16 A (+23d) | 2026-04-13 → 2026-05-06 (+23d) |  | 0% → 20% | 29d → 19d | constraint start no earlier than 2026-03-02 → start no earlier than 2026-03-25 |
| 75 | 072500 - Weather Barriers, Product Data, Submittal | 2026-03-03 → 2026-03-26 A (+23d) | 2026-03-16 → 2026-04-08 A (+23d) |  | 0% → 100% | 149d → none | constraint start no earlier than 2026-03-02 → start no earlier than 2026-03-25 |
| 76 | 072500 - Weather Barriers, Product Data, Review/Approval | 2026-03-17 → 2026-04-09 A (+23d) | 2026-04-06 → 2026-04-29 (+23d) |  | 0% → 53% | 149d → 132d | constraint start no earlier than 2026-03-02 → start no earlier than 2026-03-25 |
| 77 | 072500 - Weather Barriers, Shop Drawings, Submittal | 2026-03-03 → 2026-03-26 A (+23d) | 2026-03-16 → 2026-04-08 A (+23d) |  | 0% → 100% | 149d → none | constraint start no earlier than 2026-03-02 → start no earlier than 2026-03-25 |
| 78 | 072500 - Weather Barriers, Shop Drawing, Review/Approval | 2026-03-17 → 2026-04-09 A (+23d) | 2026-04-06 → 2026-04-29 (+23d) |  | 0% → 53% | 149d → 132d | constraint start no earlier than 2026-03-02 → start no earlier than 2026-03-25 |
| 79 | 072713 - Modified Bituminous Sheet Air Barriers, Product Data, Submittals | 2026-03-03 → 2026-03-26 A (+23d) | 2026-03-16 → 2026-04-08 A (+23d) |  | 0% → 100% | 149d → none | constraint start no earlier than 2026-03-02 → start no earlier than 2026-03-25 |
| 80 | 072713 - Modified Bituminous Sheet Air Barriers, Shop Drawing, Submittals | 2026-03-03 → 2026-03-26 A (+23d) | 2026-03-30 → 2026-04-22 (+23d) |  | 0% → 90% | 139d → 122d | constraint start no earlier than 2026-03-02 → start no earlier than 2026-03-25 |
| 81 | 072713 - Modified Bituminous Sheet Air Barriers, Product Data, Review/Approval | 2026-03-17 → 2026-04-09 A (+23d) | 2026-04-06 → 2026-04-29 (+23d) |  | 0% → 53% | 149d → 132d | constraint start no earlier than 2026-03-02 → start no earlier than 2026-03-25 |
| 82 | 072713 - Modified Bituminous Sheet Air Barriers, Shop Drawing, Review/Approval | 2026-03-31 → 2026-04-23 (+23d) | 2026-04-20 → 2026-05-13 (+23d) |  |  | 139d → 122d | constraint start no earlier than 2026-03-02 → none |
| 83 | 075423 - TPO Roofing, Product Data, Submittals |  |  |  |  |  | constraint start no earlier than 2025-11-21 → none |
| 84 | 075423 - TPO Roofing, Shop Drawing, Submittals | 2026-03-03 → 2025-11-12 A (-111d) | 2026-03-30 → 2025-11-14 A (-136d) | 20d → 3d | 0% → 100% | 22d → none | constraint start no earlier than 2026-03-02 → start no earlier than 2026-03-25 |
| 85 | 075423 - TPO Roofing, Product Data, Review/Approval | 2025-11-17 A → 2026-03-23 A (+126d) | 2026-01-27 A → 2026-04-28 (+91d) | 1d → 6d | 100% → 0% | none → 133d | constraint start no earlier than 2025-11-10 → none |
| 86 | 075423 - TPO Roofing, Shop Drawing, Review/Approval | 2026-03-31 → 2026-02-23 A (-36d) | 2026-04-20 → 2026-04-22 (+2d) | 15d → 20d | 0% → 90% | 22d → 137d | constraint start no earlier than 2026-03-02 → none |
| 87 | 075423 - TPO Roofing, Sample Warranty, Submittal | 2026-03-03 → 2026-03-26 A (+23d) | 2026-03-16 → 2026-04-08 A (+23d) |  | 0% → 100% | 32d → none | constraint start no earlier than 2026-03-02 → start no earlier than 2026-03-25 |
| 88 | 075423- TPO Roofing, Sample Warranty, Review/Approval | 2026-03-17 → 2026-04-09 A (+23d) | 2026-04-06 → 2026-04-29 (+23d) |  | 0% → 53% | 32d → 132d | constraint start no earlier than 2026-03-02 → start no earlier than 2026-03-25 |
| 89 | 075423 - TPO Roofing, Closeout Submittal, Maintenance Data | 2026-06-01 → 2026-05-12 (-20d) | 2026-06-26 → 2026-06-08 (-18d) |  |  | 89d → 103d |  |
| 90 | 075423 - TPO Roofing, Closeout Submittal, Roof Warranty | 2026-06-01 → 2026-05-12 (-20d) | 2026-06-26 → 2026-06-08 (-18d) |  |  | 89d → 103d |  |
| 91 | 075423 - TPO Roofing, Closeout Submittal, Record Drawings | 2026-06-01 → 2026-05-12 (-20d) | 2026-06-26 → 2026-06-08 (-18d) |  |  | 89d → 103d |  |
| 92 | 076200 - Sheet Metal Flashing and Trim, Product Data, Submittals | 2026-03-03 → 2026-03-26 A (+23d) | 2026-03-16 → 2026-04-08 A (+23d) |  | 0% → 100% | 37d → none | constraint start no earlier than 2026-03-02 → start no earlier than 2026-03-25 |
| 93 | 076200 - Sheet Metal Flashing and Trim, Shop Drawings, Submittals | 2026-03-03 → 2026-03-26 A (+23d) | 2026-03-30 → 2026-04-22 (+23d) |  | 0% → 90% | 17d → 6d | constraint start no earlier than 2026-03-02 → start no earlier than 2026-03-25 |
| 94 | 076200 - Sheet Metal Flashing and Trim, Samples, Submittals | 2026-03-03 → 2026-03-26 A (+23d) | 2026-03-30 → 2026-04-22 (+23d) |  | 0% → 90% | 17d → 6d | constraint start no earlier than 2026-03-02 → start no earlier than 2026-03-25 |
| 95 | 076200 - Sheet Metal Flashing and Trim, Product Data, Review/Approval | 2026-03-17 → 2026-04-09 A (+23d) | 2026-03-30 → 2026-04-22 (+23d) |  | 0% → 80% | 37d → 137d | constraint start no earlier than 2026-03-02 → none |
| 96 | 076200 - Sheet Metal Flashing and Trim, Shop Drawings, Review/Approval | 2026-03-31 → 2026-04-23 (+23d) | 2026-04-27 → 2026-05-06 (+9d) | 20d → 10d |  | 17d → 6d |  |
| 97 | 076200 - Sheet Metal Flashing and Trim, Samples, Review/Approval | 2026-03-31 → 2026-04-23 (+23d) | 2026-04-27 → 2026-05-06 (+9d) | 20d → 10d |  | 17d → 6d |  |
| 98 | 077100 - Roof Specialties, Product Data, Submittals | 2026-03-03 → 2026-03-26 A (+23d) | 2026-03-30 → 2026-04-22 (+23d) |  | 0% → 90% | 22d → 6d | constraint start no earlier than 2026-03-02 → start no earlier than 2026-03-25 |
| 99 | 077100 - Roof Specialties, Shop Drawing, Submittals | 2026-03-03 → 2026-03-26 A (+23d) | 2026-03-30 → 2026-04-22 (+23d) |  | 0% → 90% | 22d → 6d | constraint start no earlier than 2026-03-02 → start no earlier than 2026-03-25 |
| 100 | 077100 - Roof Specialties, Product Data, Review/Approval | 2026-03-31 → 2026-04-23 (+23d) | 2026-04-20 → 2026-05-13 (+23d) |  |  | 22d → 6d |  |
| 101 | 077100 - Roof Specialties, Shop Drawing, Review/Approval | 2026-03-31 → 2026-04-23 (+23d) | 2026-04-20 → 2026-05-13 (+23d) |  |  | 22d → 6d |  |
| 102 | 077200 - Roof Accessories, Product Data, Submittals | 2026-03-03 → 2026-03-26 A (+23d) | 2026-03-23 → 2026-04-15 A (+23d) |  | 0% → 100% | 3d → none | constraint start no earlier than 2026-03-02 → start no earlier than 2026-03-25 |

| ID | Task | Start | Finish | Duration | Complete | Total float | Other |
| --- | --- | --- | --- | --- | --- | --- | --- |
| 103 | 077200 - Roof Accessories, Shop Drawings, Submittal | 2026-03-03 → 2026-03-26 A (+23d) | 2026-03-23 → 2026-04-15 A (+23d) |  | 0% → 100% | 3d → none | constraint start no earlier than 2026-03-02 → start no earlier than 2026-03-25 |
| 104 | 077200 - Roof Accessories, Design Certifications, Submittal | 2026-03-03 → 2026-03-26 A (+23d) | 2026-03-23 → 2026-04-15 A (+23d) |  | 0% → 100% | 3d → none | constraint start no earlier than 2026-03-02 → start no earlier than 2026-03-25 |
| 105 | 077200 - Roof Accessories, Product Data, Review/Approval | 2026-03-24 → 2026-04-16 A (+23d) | 2026-04-13 → 2026-05-06 (+23d) |  | 0% → 20% | 3d → 127d | constraint start no earlier than 2026-03-02 → start no earlier than 2026-03-25 |
| 106 | 077200 - Roof Accessories, Shop Drawings, Review/Approval | 2026-03-24 → 2026-04-16 A (+23d) | 2026-04-13 → 2026-05-06 (+23d) |  | 0% → 20% | 3d → 127d | constraint start no earlier than 2026-03-02 → start no earlier than 2026-03-25 |
| 107 | 077200 - Roof Accessories, Design Certifications, Review/Approval | 2026-03-24 → 2026-04-16 A (+23d) | 2026-04-13 → 2026-05-06 (+23d) |  | 0% → 20% | 3d → 127d | constraint start no earlier than 2026-03-02 → start no earlier than 2026-03-25 |
| 111 | 079200 - Joint Sealants, Initial Samples for Selection | 2026-03-03 → 2026-03-26 A (+23d) | 2026-03-16 → 2026-04-08 A (+23d) |  | 0% → 100% | 44d → none | constraint start no earlier than 2026-03-02 → start no earlier than 2026-03-25 |
| 112 | 079200 - Joint Sealants, Samples for Verificiation | 2026-03-31 → 2026-04-23 (+23d) | 2026-04-27 → 2026-05-20 (+23d) |  |  | 44d → 34d |  |
| 114 | 079200 - Joint Sealants, Initial Samples for Selection, Review/Approval | 2026-03-17 → 2026-04-09 A (+23d) | 2026-03-30 → 2026-04-22 (+23d) |  | 0% → 80% | 44d → 34d | constraint start no earlier than 2026-03-02 → start no earlier than 2026-03-25 |
| 115 | 079200 - Joint Sealants, Samples for Verificiation, Review/Approval | 2026-04-28 → 2026-05-21 (+23d) | 2026-05-25 → 2026-06-17 (+23d) |  |  | 44d → 34d |  |
| 119 | 081113 - Hollow Metal Doors and Frames, Shop Drawings, Review/Approval | 2026-03-03 → 2026-03-26 A (+23d) | 2026-03-23 → 2026-04-15 A (+23d) |  | 0% → 100% | 158d → none | constraint start no earlier than 2026-03-02 → start no earlier than 2026-03-25 |
| 120 | 083113 - Access Doors and Frames, Product Data, Submittal | 2026-03-03 → 2026-03-26 A (+23d) | 2026-03-16 → 2026-04-08 A (+23d) |  | 0% → 100% | 62d → none | constraint start no earlier than 2026-03-02 → start no earlier than 2026-03-25 |
| 121 | 083113 - Access Doors and Frames, Product Data, Review/Approval | 2026-03-17 → 2026-04-09 A (+23d) | 2026-04-06 → 2026-04-29 (+23d) |  | 0% → 53% | 62d → 41d | constraint start no earlier than 2026-03-02 → start no earlier than 2026-03-25 |
| 124 | 084113 - Aluminum Framing Samples, for review | 2026-03-03 → 2026-03-26 A (+23d) | 2026-03-30 → 2026-04-08 A (+9d) | 20d → 10d | 0% → 100% | 0d → none | constraint start no earlier than 2026-03-02 → start no earlier than 2026-03-25 |
| 125 | 084113 - Aluminum Framed Entrances and Storefronts, Product Data, Review/Approval |  | 2026-03-04 → 2026-03-27 A (+23d) |  | 50% → 100% | 23.5d → none |  |
| 127 | 084113 - Aluminum Framing Samples, Review/Approval | 2026-03-31 → 2026-04-09 A (+9d) | 2026-04-06 → 2026-04-15 A (+9d) |  | 0% → 100% | 0d → none |  |
| 128 | 084113 - Aluminum Entrances/Storefront Fabrication/Delivery | 2026-04-08 → 2026-04-17 A (+9d) | 2026-06-02 → 2026-06-11 (+9d) |  | 0% → 5% |  |  |
| 130 | 084329 - Sliding Automatic Storm Entrance, Color Sample, for Approval | 2026-03-03 → 2026-03-26 A (+23d) | 2026-03-16 → 2026-04-08 A (+23d) |  | 0% → 100% | 40d → none | constraint start no earlier than 2026-03-02 → start no earlier than 2026-03-25 |
| 131 | 084329 - Sliding Automatic Storm Entrances, Shop Drawing, Review/Approval |  | 2026-03-12 → 2026-04-06 A (+25d) |  | 50% → 100% | 57d → none |  |
| 132 | 084329 - Sliding Automatic Storm Entrance, Color Sample, Review/Approval | 2026-03-17 → 2026-04-09 A (+23d) | 2026-04-06 → 2026-04-29 (+23d) |  | 0% → 53% | 40d → 30d | constraint start no earlier than 2026-03-02 → start no earlier than 2026-03-25 |
| 134 | 087111 - Door Hardware Schedule for Approval |  | 2026-03-04 → 2026-03-27 A (+23d) |  | 79% → 100% | 137d → none |  |
| 135 | 087111 - Door Hardware, Maintenance Data for Closeout | 2026-03-03 → 2026-03-26 A (+23d) | 2026-03-16 → 2026-04-08 A (+23d) |  | 0% → 100% | 163d → none | constraint start no earlier than 2026-03-02 → start no earlier than 2026-03-25 |
| 136 | 087111 - Door Hardware, Warranties | 2026-03-03 → 2026-03-26 A (+23d) | 2026-03-16 → 2026-04-08 A (+23d) |  | 0% → 100% | 163d → none | constraint start no earlier than 2026-03-02 → start no earlier than 2026-03-25 |
| 137 | 087111 - Door Hardware, Product Data, Review/Approval |  | 2026-03-04 → 2026-03-27 A (+23d) |  | 95% → 100% | 152.1d → none |  |
| 138 | 087111 - Door Hardware Schedule, Review/Approval | 2026-03-05 → 2026-03-30 A (+25d) | 2026-03-25 → 2026-04-17 A (+23d) |  | 0% → 100% | 137d → none | constraint start no earlier than 2026-03-02 → start no earlier than 2026-03-25 |
| 139 | 087111 - Door Hardware, Qualification Data, Review/Approval | 2026-03-03 → 2026-03-26 A (+23d) | 2026-03-23 → 2026-04-15 A (+23d) |  | 0% → 100% | 159d → none | constraint start no earlier than 2026-03-02 → start no earlier than 2026-03-25 |
| 140 | 087111 - Door Hardware, Fabrication/Delivery | 2026-03-26 → 2026-04-20 A (+25d) | 2026-04-22 → 2026-05-15 (+23d) |  | 0% → 5% | 137d → 120d |  |
| 142 | 088000 - Glazing, Product Data and Glazing Schedule, Review/Approval |  | 2026-03-12 → 2026-04-06 A (+25d) |  | 50% → 100% | 18.5d → none |  |
| 143 | 088000 - Glazing Fabrication/Delivery | 2026-04-08 → 2026-04-17 A (+9d) | 2026-06-30 → 2026-07-09 (+9d) |  | 0% → 3% |  |  |
| 144 | 089516 - Wall Vents, Product Data, Submittal | 2026-03-03 → 2026-03-26 A (+23d) | 2026-03-30 → 2026-04-22 (+23d) |  | 0% → 90% | 61d → 51d | constraint start no earlier than 2026-03-02 → start no earlier than 2026-03-25 |
| 145 | 089516 - Wall Vents, Metal Samples of Vents, for Approval | 2026-03-03 → 2026-03-26 A (+23d) | 2026-03-30 → 2026-04-22 (+23d) |  | 0% → 90% | 61d → 51d | constraint start no earlier than 2026-03-02 → start no earlier than 2026-03-25 |
| 146 | 089516 - Wall Vents, Product Data, Review/Approval | 2026-03-31 → 2026-04-23 (+23d) | 2026-04-20 → 2026-05-13 (+23d) |  |  | 61d → 51d |  |
| 147 | 089516 - Wall Vents, Metal Samples of Vents, Review/Approval | 2026-03-31 → 2026-04-23 (+23d) | 2026-04-20 → 2026-05-13 (+23d) |  |  | 61d → 51d |  |
| 148 | 092216 - Non-Structural Metal Framing, Product Data, Submittals | 2026-03-03 → 2026-03-26 A (+23d) | 2026-03-16 → 2026-04-08 A (+23d) |  | 0% → 100% | 62d → none | constraint start no earlier than 2026-03-02 → start no earlier than 2026-03-25 |
| 149 | 092216 - Non-Structural Metal Framing, Product Data, Review/Approval | 2026-03-17 → 2026-04-09 A (+23d) | 2026-04-06 → 2026-04-29 (+23d) |  | 0% → 53% | 62d → 41d | constraint start no earlier than 2026-03-02 → start no earlier than 2026-03-25 |
| 151 | 092900 - Gypsum Board, Product Data, Review/Approval |  | 2026-03-23 → 2026-04-15 A (+23d) |  | 0% → 100% | 72d → none |  |
| 153 | 095113 - Acoustical Panel Ceilings, Product Data, Review/Approval |  | 2026-03-23 → 2026-04-15 A (+23d) |  | 0% → 100% | 72d → none |  |
| 155 | 096513 - Resilient Base and Accessories, Product Data, Review/Approval |  | 2026-03-23 → 2026-04-15 A (+23d) |  | 0% → 100% | -23d → none |  |
| 156 | 099100 - Painting, Product Data, Submittals | 2026-03-03 → 2026-03-26 A (+23d) | 2026-03-16 → 2026-04-08 A (+23d) |  | 0% → 100% | -33d → none | constraint start no earlier than 2026-03-02 → start no earlier than 2026-03-25 |
| 157 | 099100 - Painting, Product Data, Review/Approval | 2026-03-17 → 2026-04-09 A (+23d) | 2026-04-06 → 2026-04-29 (+23d) |  | 0% → 53% | -33d → -50d | constraint start no earlier than 2026-03-02 → start no earlier than 2026-03-25 |
| 158 | 099100 - Painting, Samples for Initial Selection | 2026-03-03 → 2026-03-26 A (+23d) | 2026-03-16 → 2026-04-08 A (+23d) |  | 0% → 100% | 77d → none | constraint start no earlier than 2026-03-02 → start no earlier than 2026-03-25 |
| 159 | 099100- Painting, Initial Paint Selection, Approval | 2026-03-17 → 2026-04-09 A (+23d) | 2026-04-06 → 2026-04-29 (+23d) |  | 0% → 53% | 77d → 59d | constraint start no earlier than 2026-03-02 → start no earlier than 2026-03-25 |
| 160 | 099100 - Painting, Samples for Verificiation, submittal to Architect | 2026-04-07 → 2026-04-30 (+23d) | 2026-04-20 → 2026-05-13 (+23d) |  |  | 77d → 59d |  |
| 161 | 099100 - Painting, Samples for Verificaiton, Review/Approval | 2026-04-21 → 2026-05-14 (+23d) | 2026-05-11 → 2026-06-03 (+23d) |  |  | 77d → 59d |  |
| 162 | 101423 - Interior Signage, Product Data/Shop Drawings, Submittal | 2026-03-03 → 2026-03-26 A (+23d) | 2026-03-30 → 2026-04-22 (+23d) |  | 0% → 90% | 85d → 67d | constraint start no earlier than 2026-03-02 → start no earlier than 2026-03-25 |
| 163 | 101423 - Interior Signage, Samples for approval | 2026-03-03 → 2026-03-26 A (+23d) | 2026-03-30 → 2026-04-22 (+23d) |  | 0% → 90% | 85d → 67d | constraint start no earlier than 2026-03-02 → start no earlier than 2026-03-25 |
| 164 | 101423 - Interior Signage, Product Data/Shop Drawings, Review/Approval | 2026-03-31 → 2026-04-23 (+23d) | 2026-04-20 → 2026-05-13 (+23d) |  |  | 85d → 67d |  |
| 165 | 101423 - Interior Signage, Samples, Review/Approval | 2026-03-31 → 2026-04-23 (+23d) | 2026-04-20 → 2026-05-13 (+23d) |  |  | 85d → 67d |  |
| 166 | 101423 - Interior Signage, Fabrication/Delivery | 2026-04-21 → 2026-05-14 (+23d) | 2026-05-11 → 2026-06-03 (+23d) |  |  | 85d → 67d |  |
| 168 | 102800 - Toilet Accessories, Product Data, Review/Approval |  | 2026-03-23 → 2026-04-15 A (+23d) |  | 0% → 100% | 72d → none |  |
| 169 | 104413 - Fire Extinquishers/Cabinets, Product Data/Shop Drawings, Submittal | 2026-03-03 → 2026-03-26 A (+23d) | 2026-04-06 → 2026-04-29 (+23d) |  | 0% → 72% | 87d → 69d | constraint start no earlier than 2026-03-02 → start no earlier than 2026-03-25 |
| 170 | 104413 - Fire Extinquishers/Cabinets, Product Data/Shop Drawings, Review/Approval | 2026-04-07 → 2026-04-30 (+23d) | 2026-04-27 → 2026-05-20 (+23d) |  |  | 87d → 69d |  |
| 173 | 107316 - Metal Canopies, Color Samples | 2026-03-03 → 2026-03-26 A (+23d) | 2026-03-09 → 2026-04-01 A (+23d) |  | 0% → 100% | 17d → none | constraint start no earlier than 2026-03-02 → start no earlier than 2026-03-25 |
| 175 | 107316 - Metal Canopies, Shop Drawings, Review/Approval |  | 2026-03-18 → 2026-04-10 A (+23d) |  | 0% → 100% | 26d → none |  |
| 176 | 107316 - Metal Canopies, Color Samples, Review/Approval | 2026-03-10 → 2026-04-02 A (+23d) | 2026-03-30 → 2026-04-22 (+23d) |  | 0% → 87% | 17d → 7d | constraint start no earlier than 2026-03-02 → start no earlier than 2026-03-25 |
| 177 | 107316 - Metal Canopies, Fabrication/Delivery | 2026-04-01 → 2026-04-24 (+23d) | 2026-06-09 → 2026-07-02 (+23d) |  |  | 17d → 7d |  |
| 178 | 113100 - Office Appliances, Product Data, Submittal | 2026-03-03 → 2026-03-26 A (+23d) | 2026-04-13 → 2026-05-06 (+23d) |  | 0% → 60% | 91d → 73d | constraint start no earlier than 2026-03-02 → start no earlier than 2026-03-25 |
| 179 | 113100 - Office Appliances, Product Data, Review/Approval | 2026-04-14 → 2026-05-07 (+23d) | 2026-05-04 → 2026-05-27 (+23d) |  |  | 91d → 73d |  |
| 186 | 142123 - Hydraulic Elevators, Fabrication/Delivery |  | 2026-06-22 → 2026-04-16 A (-67d) | 80d → 16d | 0% → 100% | 13d → none |  |
| 201 | 230553 - ID for HVAC Piping & Equipment, Product Data, Submittals | 2026-03-03 → 2026-03-26 A (+23d) | 2026-03-30 → 2026-04-22 (+23d) |  | 0% → 90% | 103d → 85d | constraint start no earlier than 2026-03-02 → start no earlier than 2026-03-25 |
| 202 | 230553 - ID for HVAC Piping & Equipment, Product Data, Review/Approve | 2026-03-31 → 2026-04-23 (+23d) | 2026-04-20 → 2026-05-13 (+23d) |  |  | 103d → 85d |  |
| 203 | 230593 - Testing and Balancing, Qualifications Data for TAB Firm | 2026-03-03 → 2026-03-26 A (+23d) | 2026-03-30 → 2026-04-22 (+23d) |  | 0% → 90% | 134d → 117d | constraint start no earlier than 2026-03-02 → start no earlier than 2026-03-25 |
| 204 | 230593 - Testing and Balancing, TAB agenda | 2026-03-03 → 2026-03-26 A (+23d) | 2026-03-30 → 2026-04-22 (+23d) |  | 0% → 90% | 134d → 117d | constraint start no earlier than 2026-03-02 → start no earlier than 2026-03-25 |
| 205 | 230593 - Testing and Balancing, Qualifications Data, Review/Approval | 2026-03-31 → 2026-04-23 (+23d) | 2026-04-27 → 2026-05-20 (+23d) |  |  | 134d → 117d |  |
| 206 | 230593 - Testing and Balancing, TAB agenda, Review/Approval | 2026-03-31 → 2026-04-23 (+23d) | 2026-04-27 → 2026-05-20 (+23d) |  |  | 134d → 117d |  |
| 207 | 230593 - Testing and Balancing, Final TAB Report | 2026-09-04 → 2026-08-31 (-4d) | 2026-09-17 → 2026-09-11 (-6d) |  |  | 30d → 34d |  |
| 208 | 230713 - Duct Insulation, Product Data, Submittals | 2026-03-03 → 2026-03-26 A (+23d) | 2026-03-23 → 2026-04-15 A (+23d) |  | 0% → 100% | 0d → none | constraint start no earlier than 2026-03-02 → start no earlier than 2026-03-25 |
| 209 | 230713 - Duct Insulation, Product Data, Review/Approval | 2026-03-24 → 2026-04-16 A (+23d) | 2026-04-13 → 2026-05-06 (+23d) |  | 0% → 20% |  | constraint start no earlier than 2026-03-02 → start no earlier than 2026-03-25 |
| 210 | 230719 - HVAC Piping Insulation, Product Data, Submittals | 2026-03-03 → 2026-03-26 A (+23d) | 2026-03-23 → 2026-04-15 A (+23d) |  | 0% → 100% | 0d → none | constraint start no earlier than 2026-03-02 → start no earlier than 2026-03-25 |
| 211 | 230719 - HVAC Piping Insulation, Product Data, Review/Approval | 2026-03-24 → 2026-04-16 A (+23d) | 2026-04-13 → 2026-05-06 (+23d) |  | 0% → 20% |  | constraint start no earlier than 2026-03-02 → start no earlier than 2026-03-25 |
| 212 | 232300 - Refrigerant Piping, Product Data, Submittals | 2026-03-03 → 2026-03-26 A (+23d) | 2026-03-23 → 2026-04-15 A (+23d) |  | 0% → 100% | 0d → none | constraint start no earlier than 2026-03-02 → start no earlier than 2026-03-25 |

| ID | Task | Start | Finish | Complete | Total float | Other |
| --- | --- | --- | --- | --- | --- | --- |
| 213 | 232300 - Refrigerant Piping, Shop Drawings, Submittals | 2026-03-03 → 2026-03-26 A (+23d) | 2026-03-23 → 2026-04-15 A (+23d) | 0% → 100% | 0d → none | constraint start no earlier than 2026-03-02 → start no earlier than 2026-03-25 |
| 214 | 232300 - Refrigerant Piping, Product Data, Review/Approvals | 2026-03-24 → 2026-04-16 A (+23d) | 2026-04-13 → 2026-05-06 (+23d) | 0% → 20% |  | constraint start no earlier than 2026-03-02 → start no earlier than 2026-03-25 |
| 215 | 232300 - Refrigerant Piping, Shop Drawings, Review/Approvals | 2026-03-24 → 2026-04-16 A (+23d) | 2026-04-13 → 2026-05-06 (+23d) | 0% → 20% |  | constraint start no earlier than 2026-03-02 → start no earlier than 2026-03-25 |
| 216 | 233113 - Metal Ducts, Shop Drawings, Submittal | 2026-03-03 → 2026-03-26 A (+23d) | 2026-03-23 → 2026-04-15 A (+23d) | 0% → 100% | 0d → none | constraint start no earlier than 2026-03-02 → start no earlier than 2026-03-25 |
| 217 | 233113 - Metal Ducts, Shop Drawings, Review/Approval | 2026-03-24 → 2026-04-16 A (+23d) | 2026-04-13 → 2026-05-06 (+23d) | 0% → 20% |  | constraint start no earlier than 2026-03-02 → start no earlier than 2026-03-25 |
| 219 | 233300 - Air Duct Accessories, Shop Drawings, Submittal | 2026-03-03 → 2026-03-26 A (+23d) | 2026-03-23 → 2026-04-15 A (+23d) | 0% → 100% | 0d → none | constraint start no earlier than 2026-03-02 → start no earlier than 2026-03-25 |
| 221 | 233300 - Air Duct Accessories, Shop Drawings, Review/Approval | 2026-03-24 → 2026-04-16 A (+23d) | 2026-04-13 → 2026-05-06 (+23d) | 0% → 20% |  | constraint start no earlier than 2026-03-02 → start no earlier than 2026-03-25 |
| 223 | 233713 - Diffusers, Registers and Grilles, Product Data, Review/Approval |  | 2026-03-23 → 2026-04-15 A (+23d) | 0% → 100% | 15d → none |  |
| 225 | 238126 - Split System Air-Conditioners, Shop Drawings, Submittal | 2026-03-03 → 2026-03-26 A (+23d) | 2026-03-23 → 2026-04-15 A (+23d) | 0% → 100% | 0d → none | constraint start no earlier than 2026-03-02 → start no earlier than 2026-03-25 |
| 227 | 238126 - Split System Air-Conditioners, Shop Drawings, Review/Approval | 2026-03-24 → 2026-04-16 A (+23d) | 2026-04-13 → 2026-05-06 (+23d) | 0% → 20% |  | constraint start no earlier than 2026-03-02 → start no earlier than 2026-03-25 |
| 228 | 238136 - VRF System, Product Data, Submittals | 2026-03-03 → 2026-03-26 A (+23d) | 2026-03-04 → 2026-03-27 A (+23d) | 0% → 100% | 13d → none | constraint start no earlier than 2026-03-02 → start no earlier than 2026-03-25 |
| 229 | 238136 - VRF System, Shop Drawing, Review/Approval | 2026-03-05 → 2026-03-30 A (+25d) | 2026-03-25 → 2026-04-17 A (+23d) | 0% → 100% | 13d → none | constraint start no earlier than 2026-03-02 → start no earlier than 2026-03-25 |
| 230 | 238239 - Decentralized HVAC Equipment, Product Data, Submittal | 2026-03-03 → 2026-03-26 A (+23d) | 2026-03-23 → 2026-04-15 A (+23d) | 0% → 100% | 0d → none | constraint start no earlier than 2026-03-02 → start no earlier than 2026-03-25 |
| 231 | 238239 - Decentralized HVAC Equipment, Product Data, Review/Approval | 2026-03-24 → 2026-04-16 A (+23d) | 2026-04-13 → 2026-05-06 (+23d) | 0% → 20% |  | constraint start no earlier than 2026-03-02 → start no earlier than 2026-03-25 |
| 232 | 260519 - Low-Voltage Power Conductors & Cables, Product Data, Submittals | 2026-03-03 → 2026-03-26 A (+23d) | 2026-03-16 → 2026-04-08 A (+23d) | 0% → 100% | 149d → none | constraint start no earlier than 2026-03-02 → start no earlier than 2026-03-25 |
| 233 | 260519 - Low-Voltage Power Conductors & Cables, Product Data, Review/Approvals | 2026-03-17 → 2026-04-09 A (+23d) | 2026-04-06 → 2026-04-29 (+23d) | 0% → 53% | 149d → 132d | constraint start no earlier than 2026-03-02 → start no earlier than 2026-03-25 |
| 234 | 260526 - Grounding and Bonding for Electrical, Product Data, Submittal | 2026-03-03 → 2026-03-26 A (+23d) | 2026-03-16 → 2026-04-08 A (+23d) | 0% → 100% | 149d → none | constraint start no earlier than 2026-03-02 → start no earlier than 2026-03-25 |
| 235 | 260526 - Grounding and Bonding for Electrical, Product Data, Review/Approval | 2026-03-17 → 2026-04-09 A (+23d) | 2026-04-06 → 2026-04-29 (+23d) | 0% → 53% | 149d → 132d | constraint start no earlier than 2026-03-02 → start no earlier than 2026-03-25 |
| 236 | 260553 - ID for Electrical Systems, Product Data/ID Schedule, Submittal | 2026-03-03 → 2026-03-26 A (+23d) | 2026-03-30 → 2026-04-22 (+23d) | 0% → 90% | 103d → 85d | constraint start no earlier than 2026-03-02 → start no earlier than 2026-03-25 |
| 237 | 260553 - ID for Electrical Systems, Product Data/ID Schedule, Review/Approval | 2026-03-31 → 2026-04-23 (+23d) | 2026-04-20 → 2026-05-13 (+23d) |  | 103d → 85d |  |
| 240 | 260923 - Lighting Control Devices, Shop Drawings, Submital | 2026-03-03 → 2026-03-26 A (+23d) | 2026-03-16 → 2026-04-08 A (+23d) | 0% → 100% | 20d → none | constraint start no earlier than 2026-03-02 → start no earlier than 2026-03-25 |
| 241 | 260923 - Lighting Control Devices, Shop Drawings, Review/Approval | 2026-03-17 → 2026-04-09 A (+23d) | 2026-04-06 → 2026-04-29 (+23d) | 0% → 53% | 20d → 12d | constraint start no earlier than 2026-03-02 → start no earlier than 2026-03-25 |
| 242 | 262200 - Low Voltage Transformers, Product Data, Submital | 2026-03-03 → 2026-03-26 A (+23d) | 2026-03-16 → 2026-04-08 A (+23d) | 0% → 100% | 20d → none | constraint start no earlier than 2026-03-02 → start no earlier than 2026-03-25 |
| 243 | 262200 - Low Voltage Transformers, Product Data, Review/Approval | 2026-03-17 → 2026-04-09 A (+23d) | 2026-04-06 → 2026-04-29 (+23d) | 0% → 53% | 20d → 12d | constraint start no earlier than 2026-03-02 → start no earlier than 2026-03-25 |
| 244 | 262200 - Low Voltage Transformers, Shop Drawings, Submital | 2026-03-03 → 2026-03-26 A (+23d) | 2026-03-16 → 2026-04-08 A (+23d) | 0% → 100% | 20d → none | constraint start no earlier than 2026-03-02 → start no earlier than 2026-03-25 |
| 245 | 262200 - Low Voltage Transformers, Shop Drawings, Review/Approval | 2026-03-17 → 2026-04-09 A (+23d) | 2026-04-06 → 2026-04-29 (+23d) | 0% → 53% | 20d → 12d | constraint start no earlier than 2026-03-02 → start no earlier than 2026-03-25 |
| 250 | 262416 - Panelboard, Release for Fabrication |  | 2026-03-05 → 2026-03-30 A (+25d) | 0% → 100% | 171d → none |  |
| 251 | 262726 - Wiring Devices, Product Data, Submittal | 2026-03-03 → 2026-03-26 A (+23d) | 2026-03-16 → 2026-04-08 A (+23d) | 0% → 100% | 20d → none | constraint start no earlier than 2026-03-02 → start no earlier than 2026-03-25 |
| 252 | 262726 - Wiring Devices, Product Data, Review/Approval | 2026-03-17 → 2026-04-09 A (+23d) | 2026-04-06 → 2026-04-29 (+23d) | 0% → 53% | 20d → 12d | constraint start no earlier than 2026-03-02 → start no earlier than 2026-03-25 |
| 257 | 262913 - Enclosed Controllers, Product Data/Shop Drawing, Submittal | 2026-03-03 → 2026-03-26 A (+23d) | 2026-03-16 → 2026-04-08 A (+23d) | 0% → 100% | 20d → none | constraint start no earlier than 2026-03-02 → start no earlier than 2026-03-25 |
| 258 | 262913 - Enclosed Controllers, Product Data/Shop Drawing, Review/Approval | 2026-03-17 → 2026-04-09 A (+23d) | 2026-04-06 → 2026-04-29 (+23d) | 0% → 53% | 20d → 12d | constraint start no earlier than 2026-03-02 → start no earlier than 2026-03-25 |
| 261 | 265100 - LED Interior Lighting, Fabrication/Delivery | 2026-03-03 → 2026-03-26 A (+23d) | 2026-06-22 → 2026-07-15 (+23d) | 0% → 23% | 33d → 15d | constraint start no earlier than 2026-03-02 → start no earlier than 2026-03-25 |
| 264 | 265600 - Exterior Lighting, Fabrication/Delivery | 2026-03-03 → 2026-03-26 A (+23d) | 2026-06-22 → 2026-07-15 (+23d) | 0% → 23% | 17d → 7d | constraint start no earlier than 2026-03-02 → start no earlier than 2026-03-25 |
| 265 | 275123 - Intercommunications & PA Systems, Shop Drawings/Product Data, Submittal | 2026-03-03 → 2026-03-26 A (+23d) | 2026-03-30 → 2026-04-22 (+23d) | 0% → 90% | 10d → 2d | constraint start no earlier than 2026-03-02 → start no earlier than 2026-03-25 |
| 266 | 275123 - Intercommunications & PA Systems, Shop Drawings/Product Data, Review/Approval | 2026-03-31 → 2026-04-23 (+23d) | 2026-04-20 → 2026-05-13 (+23d) |  | 10d → 2d |  |
| 267 | 281300 - Access Control System, Shop Drawings, Submittal | 2026-03-03 → 2026-03-26 A (+23d) | 2026-03-30 → 2026-04-22 (+23d) | 0% → 90% | 10d → 2d | constraint start no earlier than 2026-03-02 → start no earlier than 2026-03-25 |
| 268 | 281300 - Access Control System, Shop Drawings, Review/Approval | 2026-03-31 → 2026-04-23 (+23d) | 2026-04-20 → 2026-05-13 (+23d) |  | 10d → 2d |  |
| 269 | 282300 - Video Surveillance, Product Data, Submittal | 2026-03-03 → 2026-03-26 A (+23d) | 2026-03-30 → 2026-04-22 (+23d) | 0% → 90% | 10d → 2d | constraint start no earlier than 2026-03-02 → start no earlier than 2026-03-25 |
| 270 | 282300 - Video Surveillance, Product Data, Review/Approval | 2026-03-31 → 2026-04-23 (+23d) | 2026-04-20 → 2026-05-13 (+23d) |  | 10d → 2d |  |
| 271 | 282300 - Video Surveillance, Shop Drawings, Submittal | 2026-03-03 → 2026-03-26 A (+23d) | 2026-03-30 → 2026-04-22 (+23d) | 0% → 90% | 10d → 2d | constraint start no earlier than 2026-03-02 → start no earlier than 2026-03-25 |
| 272 | 282300 - Video Surveillance, Shop Drawings, Review/Approval | 2026-03-31 → 2026-04-23 (+23d) | 2026-04-20 → 2026-05-13 (+23d) |  | 10d → 2d |  |
| 274 | 283111 - Digital, Addressable Fire Alarm System, Shop Drawings, to EOR Review/Approval |  | 2026-03-06 → 2026-03-31 A (+25d) | 0% → 100% | 41d → none |  |
| 275 | 283111 - Digital, Addressable Fire Alarm System, Product Data, Submittal to AHJ | 2026-03-03 → 2026-03-26 A (+23d) | 2026-03-30 → 2026-04-22 (+23d) | 0% → 90% | 94d → 77d | constraint start no earlier than 2026-03-02 → start no earlier than 2026-03-25 |
| 276 | 283111 - Digital, Addressable Fire Alarm System, Product Data, Review/Approval by AHJ | 2026-03-31 → 2026-04-23 (+23d) | 2026-06-22 → 2026-07-15 (+23d) |  | 94d → 77d |  |
| 277 | 283111 - Digital, Addressable Fire Alarm System, Shop Drawings, Submittal to AHJ | 2026-03-03 → 2026-03-26 A (+23d) | 2026-03-30 → 2026-04-22 (+23d) | 0% → 90% | 94d → 77d | constraint start no earlier than 2026-03-02 → start no earlier than 2026-03-25 |
| 278 | 283111 - Digital, Addressable Fire Alarm System, Shop Drawings, AHJ Review/Approval | 2026-03-31 → 2026-04-23 (+23d) | 2026-06-22 → 2026-07-15 (+23d) |  | 94d → 77d |  |
| 281 | 321313 - Concrete Paving, Design Mixes, Submittal | 2026-03-03 → 2026-03-26 A (+23d) | 2026-03-23 → 2026-04-15 A (+23d) | 0% → 100% | 94d → none | constraint start no earlier than 2026-03-02 → start no earlier than 2026-03-25 |
| 282 | 321313 - Concrete Paving, Design Mixes, Review/Approval | 2026-03-24 → 2026-04-16 A (+23d) | 2026-04-13 → 2026-05-06 (+23d) | 0% → 20% | 94d → 84d | constraint start no earlier than 2026-03-02 → start no earlier than 2026-03-25 |
| 283 | 321313 - Concrete Paving, Product Data, Submittals | 2026-03-03 → 2026-03-26 A (+23d) | 2026-03-23 → 2026-04-15 A (+23d) | 0% → 100% | 94d → none | constraint start no earlier than 2026-03-02 → start no earlier than 2026-03-25 |
| 284 | 321313 - Concrete Paving, Product Data, Review/Approval | 2026-03-24 → 2026-04-16 A (+23d) | 2026-04-13 → 2026-05-06 (+23d) | 0% → 20% | 94d → 84d | constraint start no earlier than 2026-03-02 → start no earlier than 2026-03-25 |
| 285 | 321713 - Parking Bumpers and Bollards, Product Data, Submittal | 2026-03-03 → 2026-03-26 A (+23d) | 2026-04-06 → 2026-04-29 (+23d) | 0% → 72% | 84d → 74d | constraint start no earlier than 2026-03-02 → start no earlier than 2026-03-25 |
| 286 | 321713 - Parking Bumpers and Bollards, Product Data, Review/Approval | 2026-04-07 → 2026-04-30 (+23d) | 2026-04-27 → 2026-05-20 (+23d) |  | 84d → 74d |  |
| 287 | 321723 - Pavement Markings, Product Data, Submittal | 2026-03-03 → 2026-03-26 A (+23d) | 2026-04-06 → 2026-04-29 (+23d) | 0% → 72% | 84d → 74d | constraint start no earlier than 2026-03-02 → start no earlier than 2026-03-25 |
| 288 | 321723 - Pavement Markings, Product Data, Review/Approval | 2026-04-07 → 2026-04-30 (+23d) | 2026-04-27 → 2026-05-20 (+23d) |  | 84d → 74d |  |
| 289 | 321726 - Tactile Warning Surfacing, Product Data, Submittal | 2026-03-03 → 2026-03-26 A (+23d) | 2026-04-06 → 2026-04-29 (+23d) | 0% → 72% | 57d → 47d | constraint start no earlier than 2026-03-02 → start no earlier than 2026-03-25 |
| 290 | 321726 - Tactile Warning Surfacing, Product Data, Review/Approval | 2026-04-07 → 2026-04-30 (+23d) | 2026-04-27 → 2026-05-20 (+23d) |  | 57d → 47d |  |
| 291 | 321726 - Tactile Warning Surfacing, Color Sample Chart, Submittal | 2026-03-03 → 2026-03-26 A (+23d) | 2026-04-06 → 2026-04-29 (+23d) | 0% → 72% | 57d → 47d | constraint start no earlier than 2026-03-02 → start no earlier than 2026-03-25 |
| 292 | 321726 - Tactile Warning Surfacing, Color Sample Chart, Review/Approval | 2026-04-07 → 2026-04-30 (+23d) | 2026-04-27 → 2026-05-20 (+23d) |  | 57d → 47d |  |
| 293 | 323113 - Chain Link Fence, Product Data, Submittal | 2026-03-03 → 2026-03-26 A (+23d) | 2026-04-06 → 2026-04-29 (+23d) | 0% → 72% | 87d → 69d | constraint start no earlier than 2026-03-02 → start no earlier than 2026-03-25 |
| 294 | 323113 - Chain Link Fence, Product Data, Review/Approval | 2026-04-07 → 2026-04-30 (+23d) | 2026-04-27 → 2026-05-20 (+23d) |  | 87d → 69d |  |
| 295 | 323113 - Chain Link Fence, Shop Drawings, Submittal | 2026-03-03 → 2026-03-26 A (+23d) | 2026-04-06 → 2026-04-29 (+23d) | 0% → 72% | 87d → 69d | constraint start no earlier than 2026-03-02 → start no earlier than 2026-03-25 |
| 296 | 323113 - Chain Link Fence, Shop Drawings, Review/Approval | 2026-04-07 → 2026-04-30 (+23d) | 2026-04-27 → 2026-05-20 (+23d) |  | 87d → 69d |  |
| 297 | 323113 - Chain Link Fence, Samples, Submittal | 2026-03-03 → 2026-03-26 A (+23d) | 2026-04-06 → 2026-04-29 (+23d) | 0% → 72% | 87d → 69d | constraint start no earlier than 2026-03-02 → start no earlier than 2026-03-25 |
| 298 | 323113 - Chain Link Fence, Samples, Review/Approval | 2026-04-07 → 2026-04-30 (+23d) | 2026-04-27 → 2026-05-20 (+23d) |  | 87d → 69d |  |
| 299 | 323114 - Security Wire Mesh Fences/Gates, Product Data, Submittals | 2026-03-03 → 2026-03-26 A (+23d) | 2026-04-06 → 2026-04-29 (+23d) | 0% → 72% | 87d → 69d | constraint start no earlier than 2026-03-02 → start no earlier than 2026-03-25 |
| 300 | 323114 - Security Wire Mesh Fences/Gates, Product Data, Review/Approval | 2026-04-07 → 2026-04-30 (+23d) | 2026-04-27 → 2026-05-20 (+23d) |  | 87d → 69d |  |
| 301 | 323114 - Security Wire Mesh Fences/Gates, Shop Drawings, Submittals | 2026-03-03 → 2026-03-26 A (+23d) | 2026-04-06 → 2026-04-29 (+23d) | 0% → 72% | 87d → 69d | constraint start no earlier than 2026-03-02 → start no earlier than 2026-03-25 |
| 302 | 323114 - Security Wire Mesh Fences/Gates, Shop Drawings, Review/Approval | 2026-04-07 → 2026-04-30 (+23d) | 2026-04-27 → 2026-05-20 (+23d) |  | 87d → 69d |  |
| 304 | 323119 - Decorative Metal Fences & Gates, Product Data, Review/Approval |  | 2026-03-23 → 2026-04-15 A (+23d) | 0% → 100% | 112d → none |  |
| 306 | 323119 - Decorative Metal Fences & Gates, Shop Drawings, Review/Approval |  | 2026-03-23 → 2026-04-15 A (+23d) | 0% → 100% | 112d → none |  |

| ID | Task | Start | Finish | Duration | Complete | Total float | Predecessors | Other |
| --- | --- | --- | --- | --- | --- | --- | --- | --- |
| 307 | 328400 - Planting Irrigation, Product Data/Shop Drawings, Submittal | 2026-03-03 → 2026-03-26 A (+23d) | 2026-04-06 → 2026-04-29 (+23d) |  | 0% → 72% | 64d → 54d |  | constraint start no earlier than 2026-03-02 → start no earlier than 2026-03-25 |
| 308 | 328400 - Planting Irrigation, Product Data/Shop Drawings, Review/Approval | 2026-04-07 → 2026-04-30 (+23d) | 2026-04-27 → 2026-05-20 (+23d) |  |  | 64d → 54d |  |  |
| 309 | 329200 - Turf and Grasses, Product Data, Submittal | 2026-03-03 → 2026-03-26 A (+23d) | 2026-04-06 → 2026-04-29 (+23d) |  | 0% → 72% | 64d → 54d |  | constraint start no earlier than 2026-03-02 → start no earlier than 2026-03-25 |
| 310 | 329200 - Turf and Grasses, Product Data, Review/Approval | 2026-04-07 → 2026-04-30 (+23d) | 2026-04-27 → 2026-05-20 (+23d) |  |  | 64d → 54d |  |  |
| 311 | 329300 - Plants, Product Data, Submittal | 2026-03-03 → 2026-03-26 A (+23d) | 2026-04-06 → 2026-04-29 (+23d) |  | 0% → 72% | 64d → 54d |  | constraint start no earlier than 2026-03-02 → start no earlier than 2026-03-25 |
| 312 | 329300 - Plants, Product Data, Review/Approval | 2026-04-07 → 2026-04-30 (+23d) | 2026-04-27 → 2026-05-20 (+23d) |  |  | 64d → 54d |  |  |
| 313 | **Pre-Installation Meetings** |  | 2026-04-29 → 2026-05-21 (+22d) | 157d → 173d | 8% → 50% | 132d → 69d |  |  |
| 317 | Preinstallation Meeting, Cold Fluid Applied Waterproofing | 2026-04-21 → 2026-05-14 (+23d) | 2026-04-21 → 2026-05-14 (+23d) |  |  | 24d → 14d |  |  |
| 318 | Preinstallation Meeting, Hollow Metal Doors and Frames | 2026-03-24 → 2026-04-16 A (+23d) | 2026-03-24 → 2026-04-16 A (+23d) |  | 0% → 100% | 183d → none |  | constraint none → start no earlier than 2026-03-25 |
| 319 | Preinstallation Meeting, Aluminum Frames and Storefronts | 2026-04-07 → 2026-04-16 A (+9d) | 2026-04-07 → 2026-04-16 A (+9d) |  | 0% → 100% | 0d → none |  |  |
| 320 | Preinstallation Meeting, Metal Canopies | 2026-03-31 → 2026-04-23 (+23d) | 2026-03-31 → 2026-04-23 (+23d) |  |  | 17d → 7d |  |  |
| 321 | Preinstallation Meeting, Hydraulic Passenger Elevator | 2026-03-03 → 2026-03-26 A (+23d) | 2026-03-03 → 2026-03-26 A (+23d) |  | 0% → 100% | 23d → none |  | constraint start no earlier than 2026-03-02 → start no earlier than 2026-03-25 |
| 322 | Preinstallation Meeting, Fencing | 2026-04-28 → 2026-05-21 (+23d) | 2026-04-28 → 2026-05-21 (+23d) |  |  | 87d → 69d |  |  |
| 323 | Preinstallation Meeting, Security Wire Mesh Fence and Gates | 2026-04-28 → 2026-05-21 (+23d) | 2026-04-28 → 2026-05-21 (+23d) |  |  | 87d → 69d |  |  |
| 324 | Preinstallation Meeting, Decorative Metal Fences and Gates | 2026-03-24 → 2026-04-16 A (+23d) | 2026-03-24 → 2026-04-16 A (+23d) |  | 0% → 100% | 112d → none |  | constraint start no earlier than 2026-03-02 → start no earlier than 2026-03-25 |
| 325 | Preinstallation Meeting, TPO Roofing/Sheet Metal Flashing & Trim | 2026-04-28 → 2026-04-23 (-5d) | 2026-04-28 → 2026-04-23 (-5d) |  |  | 17d → 6d | 85, 86, 88, 95, 96, 97, 100, 101 → 85SS, 86SS, 88SS, 95SS, 96SS, 97SS, 100SS, 101SS |  |
| 326 | Preinstallation Meeting, Stucco System | 2026-04-29 → 2026-05-07 (+8d) | 2026-04-29 → 2026-05-07 (+8d) |  |  | 18d → 19d |  |  |
| 327 | Preinstallation Meeting, Architectural Concrete Sealing & Polishing | 2026-03-25 → 2026-04-17 A (+23d) | 2026-03-25 → 2026-04-17 A (+23d) |  | 0% → 100% | 121d → none |  | constraint start no earlier than 2026-03-02 → start no earlier than 2026-03-25 |
| 328 | **Sitework** |  | 2026-03-10 → 2026-04-02 A (+23d) | 164d → 181d | 70% → 100% | 89d → none |  |  |
| 334 | Construct Retention Pond |  | 2026-03-05 → 2026-03-20 A (+15d) | 3d → 0d | 0% → 100% | 92d → none |  |  |
| 336 | Sanitary Sewer, Fire Line and domestic water |  | 2026-03-10 → 2026-04-02 A (+23d) |  | 0% → 100% | 89d → none |  |  |
| 352 | **Building Construction** |  | 2026-08-17 → 2026-08-14 (-3d) | 179d → 178d | 7% → 28% |  |  |  |
| 358 | Construct Second Lift of Elevators/Stair Tower CMU |  | 2026-03-12 → 2026-03-10 A (-2d) | 8d → 0d | 0% → 100% | 8d → none |  |  |
| 361 | Construct Final Lift of Elevators/Stair Tower CMU | 2026-03-03 → 2026-03-11 A (+8d) | 2026-03-12 → 2026-04-06 A (+25d) |  | 0% → 100% | 23d → none |  | constraint start no earlier than 2026-03-02 → none |
| 362 | Install Hollow Metal Frame in Stair Towers - 3rd Floor | 2026-03-03 → 2026-03-26 A (+23d) | 2026-03-03 → 2026-03-26 A (+23d) |  | 0% → 100% | 23d → none |  | constraint start no earlier than 2026-03-02 → start no earlier than 2026-03-25 |
| 363 | Grout Final Lift of CMU at Elevators/Stair Towers | 2026-03-24 → 2026-04-10 A (+17d) | 2026-03-25 → 2026-04-10 A (+16d) | 2d → 1d | 0% → 100% | 9d → none |  |  |
| 367 | Construct Exterior CMU Walls - 2nd to 3rd floor |  | 2026-03-16 → 2026-03-04 A (-12d) | 10d → 0d | 0% → 100% | 20d → none |  |  |
| 368 | 2nd floor-structure erection |  | 2026-03-18 → 2026-03-13 A (-5d) | 12d → 0d | 0% → 100% | 4d → none |  |  |
| 369 | 3rd floor-SOD prep/wire install/Pour | 2026-03-19 → 2026-03-16 A (-3d) | 2026-03-27 → 2026-04-04 A (+8d) |  | 0% → 100% | 4d → none |  |  |
| 370 | 3rd floor-SOD Pour Completed | 2026-03-27 → 2026-04-04 A (+8d) | 2026-03-27 → 2026-04-04 A (+8d) |  | 0% → 100% | 4d → none |  |  |
| 371 | Install stairs in stair towers | 2026-04-07 → 2026-04-08 A (+1d) | 2026-04-15 → 2026-04-11 A (-4d) | 7d → 3d | 0% → 100% | 1d → none |  |  |
| 372 | Install Railings | 2026-04-16 → 2026-04-10 A (-6d) | 2026-04-27 → 2026-04-11 A (-16d) | 8d → 1d | 0% → 100% | 18d → none |  |  |
| 373 | 3rd Floor - Construct CMU walls from 3rd Floor to Roof | 2026-04-06 → 2026-03-16 A (-21d) | 2026-04-24 → 2026-04-16 A (-8d) | 15d → 0d | 0% → 100% | 4d → none |  |  |
| 374 | 3rd floor structure erection & Roof | 2026-04-16 → 2026-03-30 A (-17d) | 2026-05-20 → 2026-04-30 (-20d) | 25d → 24d | 0% → 67% | 1d → 0d | 370FS+5d, 373SS+5d, 41, 43, 105, 106, 107, 371 → 373SS |  |
| 375 | Install TPO Roofing | 2026-05-21 → 2026-05-01 (-20d) | 2026-05-29 → 2026-05-11 (-18d) |  |  | 1d → 0d | 374, 373, 41, 43, 325, 372 → 374, 373, 41, 43, 325SS, 361 |  |
| 376 | Roofing Complete - Building Dry-In | 2026-06-01 → 2026-05-12 (-20d) | 2026-06-01 → 2026-05-12 (-20d) |  |  | 1d → 22d |  |  |
| 377 | EIFS/Stucco | 2026-05-21 → 2026-05-15 (-6d) | 2026-07-08 → 2026-07-02 (-6d) |  |  | 3d → 14d |  |  |
| 378 | Storefront Frames Install | 2026-06-03 → 2026-06-12 (+9d) | 2026-06-16 → 2026-06-25 (+9d) |  |  |  | 376, 373, 374, 317, 319, 128 → 376, 373, 374, 319, 128 |  |
| 379 | Storefront Glass Installed | 2026-07-01 → 2026-07-10 (+9d) | 2026-07-14 → 2026-07-23 (+9d) |  |  |  |  |  |
| 380 | Stanley Sliding Door Install | 2026-06-01 → 2026-05-12 (-20d) | 2026-06-01 → 2026-05-12 (-20d) |  |  | 1d → 22d |  |  |
| 381 | Canopies | 2026-06-18 → 2026-07-03 (+15d) | 2026-06-29 → 2026-07-14 (+15d) |  |  | 11d → 7d |  |  |
| 382 | Install Metal Coping/Downspouts/Trim | 2026-07-15 → 2026-07-24 (+9d) | 2026-07-22 → 2026-07-31 (+9d) |  |  |  |  |  |
| 383 | Exterior Building Caulking | 2026-07-23 → 2026-08-03 (+11d) | 2026-07-29 → 2026-08-07 (+9d) |  |  |  |  |  |
| 384 | Exterior Building Punchlist | 2026-07-30 → 2026-08-10 (+11d) | 2026-08-05 → 2026-08-14 (+9d) |  |  |  |  |  |
| 385 | Light gauge office framing | 2026-05-21 → 2026-05-01 (-20d) | 2026-05-27 → 2026-05-07 (-20d) |  |  | 13d → 35d |  |  |
| 386 | Elevator #1 Install | 2026-06-23 → 2026-05-14 (-40d) | 2026-07-20 → 2026-06-10 (-40d) |  |  | 13d → 40d |  |  |
| 387 | Elevator #2 install | 2026-07-21 → 2026-06-11 (-40d) | 2026-08-17 → 2026-07-08 (-40d) |  |  | 13d → 40d |  |  |
| 388 | Building Façade Complete | 2026-07-22 → 2026-07-31 (+9d) | 2026-07-22 → 2026-07-31 (+9d) |  |  |  |  |  |
| 389 | **Site Utlities/As-Builts** |  | 2026-09-17 → 2026-09-16 (-1d) | 216d → 215d | 16% → 59% |  |  |  |
| 390 | Electrical Gear Procurement |  |  |  |  |  |  | constraint start no earlier than 2026-01-26 → none |
| 391 | Procure Transformer |  | 2026-05-25 → 2026-03-30 A (-56d) | 60d → 3d | 0% → 100% | 16d → none |  |  |
| 394 | Set Transformer | 2026-05-26 → 2026-03-31 A (-56d) | 2026-06-01 → 2026-03-31 A (-62d) | 5d → 1d | 0% → 100% | 16d → none |  |  |
| 395 | Permanent Power to Building | 2026-06-02 → 2026-04-17 A (-46d) | 2026-06-15 → 2026-05-08 (-38d) | 10d → 16d | 0% → 50% | 16d → 41d |  |  |
| 396 | As-Built Drawings for Sanitary and Storm Water | 2026-09-02 → 2026-09-01 (-1d) | 2026-09-17 → 2026-09-16 (-1d) |  |  |  | 335, 336, 440FS-3d → 335, 336 |  |
| 397 | **Rough-ins and Finishes** |  | 2026-10-01 → 2026-09-25 (-6d) | 161d → 157d |  | 5d → 8d |  |  |
| 398 | 1st Floor Electrical/Fire Alarm Rough In |  | 2026-05-25 → 2026-05-26 (+1d) | 15d → 7d |  | 5d → 8d |  |  |
| 399 | 1st Floor HVAC Rough In |  | 2026-05-04 → 2026-05-15 (+11d) | 15d → 7d |  |  |  |  |
| 400 | 1st Floor Sprinkler Rough-in/riser room-1st floor |  | 2026-04-22 → 2026-05-15 (+23d) |  |  | 13d → 5d |  |  |
| 401 | 1st Floor HVAC Trim/Line Set | 2026-05-26 → 2026-05-27 (+1d) | 2026-06-08 → 2026-06-09 (+1d) |  |  | 5d → 8d |  |  |
| 402 | 1st Floor Plumbing rough walls | 2026-06-09 → 2026-03-25 A (-76d) | 2026-06-15 → 2026-04-03 A (-73d) | 5d → 0d | 0% → 100% | 5d → none |  |  |
| 403 | 1st Floor Hallway System- by Janus | 2026-06-16 → 2026-06-10 (-6d) | 2026-07-13 → 2026-07-07 (-6d) |  |  | 5d → 8d |  |  |
| 404 | 1st Floor Electrical Trim/FA/Hang Lights | 2026-07-14 → 2026-07-16 (+2d) | 2026-07-22 → 2026-07-24 (+2d) |  |  | 18d → 15d |  |  |
| 405 | 2nd Floor HVAC Rough In | 2026-05-21 → 2026-05-07 (-14d) | 2026-06-10 → 2026-05-27 (-14d) |  |  | 13d → 0d |  |  |
| 406 | 2nd Floor Electrical/Fire Alarm Rough In | 2026-06-11 → 2026-03-26 A (-77d) | 2026-07-01 → 2026-06-17 (-14d) |  |  | 13d → 22d |  |  |
| 407 | 2nd Floor Sprinkler Rough-in | 2026-06-04 → 2026-05-21 (-14d) | 2026-06-12 → 2026-05-29 (-14d) |  |  | 16d → 3d |  |  |
| 408 | 2nd Floor HVAC Trim/Line Sets | 2026-06-15 → 2026-06-01 (-14d) | 2026-06-26 → 2026-06-12 (-14d) |  |  | 16d → 25d |  |  |
| 409 | 2nd Floor Hallway System - by Janus | 2026-07-14 → 2026-07-08 (-6d) | 2026-08-10 → 2026-08-04 (-6d) |  |  | 5d → 8d |  |  |
| 410 | 2nd Floor Electrical Trim/FA/Hang Light-2nd Floor | 2026-08-11 → 2026-08-05 (-6d) | 2026-08-19 → 2026-08-13 (-6d) |  |  | 5d → 8d |  |  |
| 411 | Install Gear in Electrical Room | 2026-06-01 → 2026-04-16 A (-46d) | 2026-06-12 → 2026-05-11 (-32d) | 10d → 7d |  | 13d → 33d | 398, 375, 390, 256 → 375SS, 390 |  |
| 412 | Power to elevator machine rooms | 2026-06-16 → 2026-05-12 (-35d) | 2026-06-17 → 2026-05-13 (-35d) |  |  | 16d → 40d |  |  |

| ID | Task | Start | Finish | Duration | Total float | Predecessors | Other |
| --- | --- | --- | --- | --- | --- | --- | --- |
| 413 | 3rd Floor HVAC Rough In | 2026-05-26 → 2026-05-07 (-19d) | 2026-06-15 → 2026-05-27 (-19d) |  | 6d → 18d |  |  |
| 414 | 3rd Floor Electrical/Fire Alarm Rough In | 2026-06-05 → 2026-05-19 (-17d) | 2026-06-25 → 2026-06-08 (-17d) |  | 6d → 18d |  |  |
| 415 | 3rd Floor Sprinkler Rough-in | 2026-06-26 → 2026-06-09 (-17d) | 2026-07-02 → 2026-06-15 (-17d) |  | 6d → 18d |  |  |
| 416 | 3rd Floor HVAC Trim/Line Sets | 2026-07-03 → 2026-06-16 (-17d) | 2026-07-16 → 2026-06-29 (-17d) |  | 6d → 18d |  |  |
| 417 | 3rd Floor Hallway System-by Janus | 2026-07-17 → 2026-06-30 (-17d) | 2026-08-13 → 2026-07-27 (-17d) |  | 6d → 18d |  |  |
| 418 | 3rd Floor Electrical Trim/FA/Hang Lights | 2026-08-14 → 2026-07-28 (-17d) | 2026-08-24 → 2026-08-05 (-19d) |  | 6d → 18d |  |  |
| 419 | Install Aluminum Wainscot at Elevator Lobbies | 2026-08-14 → 2026-08-05 (-9d) | 2026-08-20 → 2026-08-11 (-9d) |  | 8d → 14d |  |  |
| 420 | Office Buildout | 2026-06-17 → 2026-03-16 A (-93d) | 2026-08-11 → 2026-08-06 (-5d) | 40d → 30d | 11d → 13d |  |  |
| 421 | Initial BDA System Requirement Testing | 2026-08-14 → 2026-07-28 (-17d) | 2026-08-14 → 2026-07-28 (-17d) |  | 18d → 30d |  |  |
| 422 | Install BDA System | 2026-08-31 → 2026-08-12 (-19d) | 2026-09-11 → 2026-08-25 (-17d) |  | 18d → 30d |  |  |
| 423 | 1st Floor Punchlist Repairs | 2026-08-12 → 2026-08-07 (-5d) | 2026-08-18 → 2026-08-13 (-5d) |  | 15d → 17d |  |  |
| 424 | 2nd Floor Punchlist Repairs | 2026-08-21 → 2026-08-14 (-7d) | 2026-08-27 → 2026-08-20 (-7d) |  | 8d → 12d |  |  |
| 425 | 3rd Floor Punchlist Repairs | 2026-08-25 → 2026-08-12 (-13d) | 2026-08-31 → 2026-08-18 (-13d) |  | 6d → 14d |  |  |
| 426 | Complete Interior Punchlist Work - All Floors | 2026-09-01 → 2026-08-24 (-8d) | 2026-09-02 → 2026-08-25 (-8d) |  | 6d → 11d |  |  |
| 427 | Final Clean/Floor Sealer | 2026-09-04 → 2026-08-31 (-4d) | 2026-10-01 → 2026-09-25 (-6d) |  | 5d → 8d |  |  |
| 428 | HVAC Startup | 2026-08-27 → 2026-08-21 (-6d) | 2026-09-03 → 2026-08-28 (-6d) |  | 5d → 8d |  |  |
| 429 | Install Plumbing Fixtures and Water Heaters | 2026-07-17 → 2026-06-30 (-17d) | 2026-07-22 → 2026-07-03 (-19d) |  | 24d → 36d |  |  |
| 430 | Install Interior Signage | 2026-08-27 → 2026-08-21 (-6d) | 2026-08-27 → 2026-08-21 (-6d) |  | 8d → 11d |  |  |
| 431 | Install Fire Extinguishers and Cabinets | 2026-08-14 → 2026-08-07 (-7d) | 2026-08-14 → 2026-08-07 (-7d) |  | 9d → 13d |  |  |
| 432 | Final Painting, Stairs/Railings/Doors | 2026-08-20 → 2026-08-14 (-6d) | 2026-08-26 → 2026-08-20 (-6d) |  | 5d → 8d |  |  |
| 433 | Wall Packs | 2026-07-09 → 2026-07-03 (-6d) | 2026-07-13 → 2026-07-07 (-6d) |  | 9d → 20d |  |  |
| 434 | Elevator Trim out by Subs | 2026-08-21 → 2026-08-12 (-9d) | 2026-08-25 → 2026-08-14 (-11d) |  | 10d → 16d |  |  |
| 435 | **Finsh Sitework - Dumpster/Sidewalks/Paving/Landscaping** | 2026-07-09 → 2026-02-23 A (-136d) | 2026-10-22 → 2026-10-21 (-1d) | 76d → 173d |  |  |  |
| 436 | Rough grade for landscaping | 2026-07-09 → 2026-07-03 (-6d) | 2026-07-10 → 2026-07-06 (-4d) |  | 3d → 14d |  |  |
| 437 | Install Exterior Lighting in Parking Area | 2026-07-13 → 2026-07-16 (+3d) | 2026-07-17 → 2026-07-22 (+5d) |  | 3d → 7d |  |  |
| 438 | Form and Pour Sidewalks | 2026-07-23 → 2026-08-03 (+11d) | 2026-07-29 → 2026-08-07 (+9d) |  |  |  |  |
| 439 | Landscaping and Irrigation Installation | 2026-07-27 → 2026-08-05 (+9d) | 2026-08-21 → 2026-09-01 (+11d) |  |  |  |  |
| 440 | Curb/Asphalt Paving | 2026-08-24 → 2026-02-23 A (-182d) | 2026-09-04 → 2026-09-08 (+4d) | 10d → 5d | 0d → 13d |  |  |
| 441 | Install Fencing | 2026-07-30 → 2026-08-10 (+11d) | 2026-08-05 → 2026-08-14 (+9d) |  | 21d → 13d |  |  |
| 442 | Striping | 2026-09-07 → 2026-09-09 (+2d) | 2026-09-07 → 2026-09-09 (+2d) |  | 16d → 13d |  |  |
| 443 | Landscaping As-Built Drawings | 2026-08-24 → 2026-09-02 (+9d) | 2026-09-04 → 2026-09-15 (+11d) |  | 9d → 1d |  |  |
| 444 | Developer's Letter of Dedication | 2026-09-07 → 2026-09-16 (+9d) | 2026-09-18 → 2026-09-29 (+11d) |  | 9d → 1d |  |  |
| 445 | Engineer's Certificate of Completion | 2026-09-07 → 2026-09-16 (+9d) | 2026-09-11 → 2026-09-22 (+11d) |  | 14d → 6d |  |  |
| 446 | Contractor's Letter of Completion | 2026-09-08 → 2026-09-10 (+2d) | 2026-09-09 → 2026-09-11 (+2d) |  | 16d → 13d |  |  |
| 447 | Satisfaction Letter/Email from FDOT and City for Infrastructure | 2026-09-07 → 2026-09-16 (+9d) | 2026-09-18 → 2026-09-29 (+11d) |  | 9d → 1d |  |  |
| 448 | SOV for Site Utilites, Water, Wastewater, Reclaimed Water | 2026-09-18 → 2026-09-17 (-1d) | 2026-10-01 → 2026-09-30 (-1d) |  |  |  |  |
| 449 | Polk County Final Walkthrough Request | 2026-10-02 → 2026-10-01 (-1d) | 2026-10-08 → 2026-10-07 (-1d) |  |  |  |  |
| 450 | Polk County Approval of Site | 2026-10-09 → 2026-10-08 (-1d) | 2026-10-22 → 2026-10-21 (-1d) |  |  |  |  |
| 451 | **Final Building Sign-Offs** | 2026-08-26 → 2026-08-17 (-9d) | 2026-10-15 → 2026-10-14 (-1d) | 37d → 43d | 11d → 12d |  |  |
| 452 | Pre Closeout Meeting with AHJ | 2026-10-02 → 2026-09-28 (-4d) | 2026-10-02 → 2026-09-28 (-4d) |  | 20d → 24d |  |  |
| 453 | Final BDA Test | 2026-09-14 → 2026-08-26 (-19d) | 2026-09-14 → 2026-08-26 (-19d) |  | 18d → 30d |  |  |
| 454 | Elevator Ready for State Inspection | 2026-08-26 → 2026-08-17 (-9d) | 2026-08-26 → 2026-08-17 (-9d) |  | 31d → 37d |  |  |
| 455 | Final Building Inspections | 2026-10-09 → 2026-10-08 (-1d) | 2026-10-15 → 2026-10-14 (-1d) |  |  |  |  |
| 456 | Weather Days Remaining per Contract (1 Used to date) | 2026-10-12 → 2026-10-13 (+1d) |  | 15d → 14d |  | 455SS+1d → 455SS+3d | was named Weather Days per Contract (20 Calendar Days) |
