# Public Storage Fairfax VA - LIVE

How a schedule from Primavera P6 changed from version to version. A marks actual dates.

## Version 1 (data date 2025-09-30, saved 2025-11-06, file update_1.xer)

Note of the change: Add all project schedule files to buckets - 13 projects, MPP+XER, baseline+updates

| ID | WBS | Task | Duration | Start | Finish | Predecessors | Complete | Total float | Constraint |
| --- | --- | --- | --- | --- | --- | --- | --- | --- | --- |
|  | 1 | **Public Storage Fairfax VA** |  | 2025-05-05 | 2026-09-15 |  |  |  |  |
|  | 3 | **Milestones** |  | 2025-05-05 | 2026-09-15 |  |  |  |  |
| MIL-1000 |  | Notice to Proceed (05.05.25) | 0d | 2025-05-05 A | 2025-05-05 A |  | 100% |  |  |
| MIL-1020 |  | Permanent Power | 0d | 2026-03-24 | 2026-03-24 | CON-POW-1070 |  | 92d |  |
| MIL-1010 |  | Weathertight - Main Building | 0d | 2026-04-01 | 2026-04-01 | CON-MB-L1-1260 FF, CON-MB-L5-1020 FF, CON-MB-L3-1050 FF, CON-MB-L4-1040 FF, CON-MB-L5-1030 FF, CON-MB-L1-1250 FF, CON-MB-L2-1050 FF |  | 53d |  |
| MIL-1030 |  | Substantial Completion (08.19.26) | 0d | 2026-08-19 | 2026-08-19 | CLO-MB-1020 FF, SITE-MB-1140 FF, CON-MB-2010 FF, SITE-MB-1090 FF |  | 0d | finish on or before 2026-08-19 |
| MIL-1040 |  | Final Completion - Main Building | 5d | 2026-09-09 | 2026-09-15 | MIL-1030, CLO-MB-1050, CLO-OFF-1050 |  | 0d |  |
|  | 1 | **Preconstruction** |  | 2025-05-05 | 2026-02-17 |  |  |  |  |
|  | 1 | **Procurement** |  | 2025-05-05 | 2026-02-17 |  |  |  |  |
| PROC-1000 |  | Precon Construction | 1d | 2025-05-05 A | 2025-05-05 A |  | 100% |  |  |
| PROC-1010 |  | Contractor Procurement | 60d | 2025-05-06 A | 2025-10-14 | MIL-1000 | 83% | 3d |  |
|  | 2 | **Long Lead Items** |  | 2025-06-12 | 2026-02-17 |  |  |  |  |
| PROC-1020 |  | Elevator Submittal | 23d | 2025-06-12 A | 2025-07-14 A | PROC-1010 | 100% |  | start on or after 2025-06-30 |
| PROC-1030 |  | Brick Submittal and Fabrication | 60d | 2025-07-01 A | 2025-09-19 A |  | 100% |  | start on or after 2025-07-01 |
| PROC-1040 |  | Switchgear Submittal | 15d | 2025-07-31 A | 2025-08-20 A | PROC-1010 | 100% |  | start on or after 2025-07-31 |
| PROC-1050 |  | Light Fixtures Submittal | 20d | 2025-08-04 A | 2025-08-29 A | PROC-1010 | 100% |  | start on or after 2025-08-04 |
| PROC-1060 |  | Switchgear Fabrication | 30d | 2025-08-21 A | 2025-09-30 A | PROC-1040 | 100% |  |  |
| PROC-1070 |  | Light Fixtures Fabrication | 20d | 2025-09-01 A | 2025-09-25 A | PROC-1050 | 100% |  |  |
| PROC-1080 |  | Glass Field Measurement and Fabrication - Office | 45d | 2025-09-15 A | 2025-12-16 | PROC-1010 |  | 3d | start on or after 2025-09-15 |
| PROC-1090 |  | Fire Pump Submittal | 40d | 2025-09-29 A | 2025-11-21 | PROC-1010 | 30% | 148d | start on or after 2025-09-01 |
| PROC-1100 |  | Elevator Fabrication | 70d | 2025-10-15 | 2026-01-20 | PROC-1020 |  | 76d |  |
| PROC-1110 |  | HVAC Equipment Submittal | 20d | 2025-10-15 | 2025-11-11 | PROC-1010 |  | 78d |  |
| PROC-1120 |  | Ferguson Tank Submittal | 20d | 2025-10-15 | 2025-11-11 | PROC-1010 |  | 10d |  |
| PROC-1130 |  | HVAC Equipment Fabrication | 70d | 2025-11-12 | 2026-02-17 | PROC-1110 |  | 78d |  |
| PROC-1140 |  | Ferguson Tank Fabrication | 60d | 2025-11-12 | 2026-02-03 | PROC-1120 |  | 10d |  |
| PROC-1150 |  | Fire Pump Fabrication | 30d | 2025-11-24 | 2026-01-02 | PROC-1090 |  | 148d |  |
|  | 2 | **Construction** |  | 2025-05-05 | 2026-08-14 |  |  |  |  |
|  | 2 | **Site Work** |  | 2025-05-05 | 2026-08-14 |  |  |  |  |
| SITE-1020 |  | Mobilization | 1d | 2025-05-05 A | 2025-05-05 A | MIL-1000 | 100% |  | start on or after 2025-05-05 |
| SITE-1000 |  | Erosion Control Phase I | 4d | 2025-05-06 A | 2025-05-09 A | SITE-1020 | 100% |  |  |
| SITE-1010 |  | Stormwater Management Ponds | 10d | 2026-02-04 | 2026-02-17 | SITE-MB-1040, PROC-1140 |  | 10d |  |
|  | 1 | **Site Work - Main Building** |  | 2025-05-12 | 2026-08-14 |  |  |  |  |
| SITE-MB-1010 |  | Demo/Clear Site - Main Building | 10d | 2025-05-12 A | 2025-05-23 A | SITE-1000 | 100% |  |  |
| SITE-MB-1020 |  | Rough Grading - Main Building | 10d | 2025-05-26 A | 2025-06-06 A | SITE-MB-1010 | 100% |  |  |
| SITE-MB-1030 |  | Building Pad Delivery - Main Building | 35d | 2025-06-09 A | 2025-07-25 A | SITE-MB-1020 | 100% |  | finish on or after 2025-07-25 |
| SITE-MB-1040 |  | Domestic & Fire Water Online - Main Building | 27d | 2025-07-28 A | 2025-09-02 A | SITE-MB-1030 | 100% |  |  |
| SITE-MB-1050 |  | Storm Structures and Pipe - Main Building | 30d | 2025-10-01 | 2025-11-11 | SITE-MB-1040 |  | 70d |  |
| SITE-MB-1060 |  | Sanitary Sewer - Main Building | 10d | 2025-11-12 | 2025-11-25 | SITE-MB-1050 |  | 70d |  |
| SITE-MB-1070 |  | Fine Grading - Main Building | 15d | 2026-02-18 | 2026-03-10 | SITE-1010, SITE-MB-1060 |  | 10d |  |
| SITE-MB-1100 |  | Curb and Gutter - Main Building | 7d | 2026-05-14 | 2026-05-22 | SITE-MB-1070, CON-MB-EXT-1000, CON-MB-EXT-1020 |  | 30d |  |
| SITE-MB-1120 |  | Stone Base Parking Lot - Main Building | 10d | 2026-05-25 | 2026-06-05 | SITE-MB-1100 |  | 30d |  |
| SITE-MB-1080 |  | Sidewalk - Main Building | 5d | 2026-07-13 | 2026-07-17 | CON-MB-EXT-1050, CON-MB-EXT-1100, SITE-MB-1060, SITE-MB-1100 |  | 0d |  |
| SITE-MB-1130 |  | Paving (Includes SHA Work) - Main Building | 10d | 2026-07-20 | 2026-07-31 | SITE-MB-1120, SITE-MB-1080 |  | 0d |  |
| SITE-MB-1090 |  | Landscape - Main Building | 10d | 2026-08-03 | 2026-08-14 | SITE-MB-1080, SITE-MB-1130, CON-MB-EXT-1030, CON-MB-EXT-1050 |  | 0d |  |
| SITE-MB-1140 |  | Line Striping - Main Building | 2d | 2026-08-03 | 2026-08-04 | SITE-MB-1130 |  | 8d |  |
|  | 3 | **Site Work - Office** |  | 2025-05-12 | 2025-11-06 |  |  |  |  |
| SITE-OFF-1000 |  | Demo/Clear Site - Office Building | 10d | 2025-05-12 A | 2025-05-23 A | SITE-1000 | 100% |  |  |
| SITE-OFF-1010 |  | Rough Grading - Office Building | 10d | 2025-05-26 A | 2025-06-06 A | SITE-OFF-1000 | 100% |  |  |
| SITE-OFF-1020 |  | Building Pad Delivery - Office Building | 35d | 2025-06-09 A | 2025-07-25 A | SITE-OFF-1010 | 100% |  | finish on or after 2025-07-25 |
| SITE-OFF-1030 |  | Domestic & Fire Water Online - Office Building | 19d | 2025-10-01 | 2025-10-27 | SITE-OFF-1020 |  | 41d |  |
| SITE-OFF-1060 |  | Fine Grading - Office Building | 3d | 2025-10-01 | 2025-10-03 | SITE-OFF-1020 |  | 57d |  |
| SITE-OFF-1090 |  | Curb and Gutter - Office Building | 1d | 2025-10-28 | 2025-10-28 | SITE-OFF-1060, SITE-OFF-1030 |  | 41d |  |
| SITE-OFF-1070 |  | Sidewalk - Office Building | 2d | 2025-10-29 | 2025-10-30 | SITE-OFF-1090, CON-OFF-1170 |  | 41d |  |
| SITE-OFF-1110 |  | Stone Base Parking Lot - Office Building | 1d | 2025-10-29 | 2025-10-29 | SITE-OFF-1090 |  | 42d |  |
| SITE-OFF-1120 |  | Paving - Office Building | 2d | 2025-10-31 | 2025-11-03 | SITE-OFF-1110, SITE-OFF-1070 |  | 41d |  |
| SITE-OFF-1080 |  | Landscape - Office Building | 1d | 2025-11-04 | 2025-11-04 | SITE-OFF-1070, SITE-OFF-1120 |  | 47d |  |
| SITE-OFF-1100 |  | Misc Exterior Items (Vehicle Gate Operator) - Office Building | 3d | 2025-11-04 | 2025-11-06 | SITE-OFF-1120 |  | 45d |  |
| SITE-OFF-1130 |  | Line Striping - Office Building | 1d | 2025-11-04 | 2025-11-04 | SITE-OFF-1120 |  | 41d |  |
|  | 1 | **Main Building** |  | 2025-08-04 | 2026-08-07 |  |  |  |  |
|  | 1 | **Substructure** |  | 2025-08-04 | 2025-10-07 |  |  |  |  |
| CON-MB-1000 |  | UG Electric Rough In | 10d | 2025-08-04 A | 2025-08-27 A | SITE-MB-1030 | 100% |  | start on or after 2025-08-04 |
| CON-MB-1010 |  | UG Plumbing Roughin | 8d | 2025-08-18 A | 2025-08-27 A | CON-MB-1000 | 100% |  |  |
| CON-MB-1020 |  | Prep/Pour SOG 1/2 | 12d | 2025-08-27 A | 2025-09-10 A | CON-MB-1000, CON-MB-1010 | 100% |  | finish on or after 2025-09-10 |
| CON-MB-1030 |  | Prep/Pour SOG 2/2 | 18d | 2025-08-29 A | 2025-09-22 A | CON-MB-1020 FS+2d | 100% |  | finish on or after 2025-09-22 |
| CON-MB-1040 |  | Foundation Waterproofing | 5d | 2025-10-01 | 2025-10-07 | CON-MB-1030 FS+4d |  | 107d |  |
|  | 9 | **Superstructure** |  | 2025-10-01 | 2026-03-25 |  |  |  |  |
|  | 1 | **First Floor Superstructure** |  | 2025-10-01 | 2025-11-13 |  |  |  |  |
| CON-MB-L1-1040 |  | Structural Steel Columns & Beams - 1st Floor | 18d | 2025-10-01 | 2025-10-24 | CON-MB-1030 FS+4d |  | 0d |  |
| CON-MB-L1-1060 |  | Metal Decking - 2nd floor | 4d | 2025-10-27 | 2025-10-30 | CON-MB-L1-1040 |  | 0d |  |
| CON-MB-L1-1070 |  | Prep/Pour SOD - 2nd Floor | 4d | 2025-10-31 | 2025-11-05 | CON-MB-L1-1060 |  | 0d |  |

| ID | WBS | Task | Duration | Start | Finish | Predecessors | Complete | Total float |
| --- | --- | --- | --- | --- | --- | --- | --- | --- |
| CON-MB-L1-1090 |  | Exterior & Interior Framing - 1st Floor | 6d | 2025-11-06 | 2025-11-13 | CON-MB-1040, CON-MB-L1-1070 |  | 86d |
|  | 2 | **Second Floor Superstructure** |  | 2025-11-06 | 2025-12-19 |  |  |  |
| CON-MB-L2-1000 |  | Structural Steel Columns & Beams - 2nd Floor | 14d | 2025-11-06 | 2025-11-25 | CON-MB-L1-1070, CON-MB-L1-1040 |  | 0d |
| CON-MB-L2-1010 |  | Metal Decking 3rd Floor | 4d | 2025-11-26 | 2025-12-01 | CON-MB-L2-1000 |  | 0d |
| CON-MB-L2-1020 |  | Prep/Pour SOD - 3rd floor | 4d | 2025-12-02 | 2025-12-05 | CON-MB-L2-1010 |  | 0d |
| CON-MB-L2-1040 |  | Exterior & Interior Framing - 2nd Floor | 10d | 2025-12-08 | 2025-12-19 | CON-MB-L2-1020 |  | 82d |
|  | 3 | **Third Floor Superstructure** |  | 2025-12-08 | 2026-01-20 |  |  |  |
| CON-MB-L3-1000 |  | Structural Steel Columns & Beams - 3rd Floor | 14d | 2025-12-08 | 2025-12-25 | CON-MB-L2-1020, CON-MB-L2-1000 |  | 0d |
| CON-MB-L3-1010 |  | Metal Decking - 4th Floor | 4d | 2025-12-26 | 2025-12-31 | CON-MB-L3-1000 |  | 0d |
| CON-MB-L3-1020 |  | Prep & Pour SOD - 4th Floor | 4d | 2026-01-01 | 2026-01-06 | CON-MB-L3-1010 |  | 0d |
| CON-MB-L3-1040 |  | Exterior & Interior Framing - 3rd Floor | 10d | 2026-01-07 | 2026-01-20 | CON-MB-L3-1020 |  | 78d |
|  | 6 | **Fourth Floor Superstructure** |  | 2026-01-07 | 2026-02-19 |  |  |  |
| CON-MB-L4-1000 |  | Structural Steel Columns & Beams - 4th Floor | 14d | 2026-01-07 | 2026-01-26 | CON-MB-L3-1020, CON-MB-L3-1000 |  | 0d |
| CON-MB-L4-1010 |  | Metal Decking - 5th Floor | 4d | 2026-01-27 | 2026-01-30 | CON-MB-L4-1000 |  | 0d |
| CON-MB-L4-1020 |  | Prep & Pour SOD - 5th Floor | 4d | 2026-02-02 | 2026-02-05 | CON-MB-L4-1010 |  | 0d |
| CON-MB-L4-1030 |  | Exterior & Interior Framing - 4th Floor | 10d | 2026-02-06 | 2026-02-19 | CON-MB-L4-1020 |  | 79d |
|  | 4 | **Fifth Floor Superstructure** |  | 2026-02-06 | 2026-03-25 |  |  |  |
| CON-MB-L5-1000 |  | Structural Steel Columns & Beams - 5th Floor | 14d | 2026-02-06 | 2026-02-25 | CON-MB-L4-1020, CON-MB-L4-1000 |  | 0d |
| CON-MB-L5-1010 |  | Framing & Metal Decking - Roof | 10d | 2026-02-26 | 2026-03-11 | CON-MB-L5-1000 |  | 0d |
| CON-MB-L5-1050 |  | Exterior & Interior Framing - 5th Floor | 10d | 2026-03-12 | 2026-03-25 | CON-MB-L5-1000, CON-MB-L5-1010 |  | 0d |
|  | 3 | **Interior Finishes** |  | 2025-09-15 | 2026-08-07 |  |  |  |
| CON-MB-2000 |  | Grind/Seal Floors (Full Building) | 10d | 2026-07-16 | 2026-07-29 | CON-MB-L1-1270, CON-MB-L2-1070, CON-MB-L3-1150, CON-MB-L4-1140, CON-MB-L5-1170 |  | 0d |
| CON-MB-2010 |  | Final Cleaning (Full Building) | 15d | 2026-07-20 | 2026-08-07 | CON-MB-2000 SS+2d, CON-MB-2000 FF+2d |  | 5d |
|  | 6 | **Elevator** |  | 2025-09-15 | 2026-07-01 |  |  |  |
| CON-ELEV-1000 |  | Elevator 3 CMU Shaft | 12d | 2025-09-15 A | 2025-09-30 A | CON-MB-1020 FS+2d | 100% |  |
| CON-ELEV-1010 |  | Elevator 1/2 CMU Shaft | 14d | 2025-10-01 | 2025-10-20 | CON-ELEV-1000 |  | 142d |
| CON-ELEV-1020 |  | Elevator Install | 65d | 2026-04-02 | 2026-07-01 | CON-MB-L5-1020, PROC-1020, PROC-1100, CON-ELEV-1010, CON-ELEV-1000 |  | 25d |
|  | 8 | **Stair Shafts** |  | 2025-09-15 | 2025-11-04 |  |  |  |
| CON-STAIR-1000 |  | Stair Tower B CMU | 25d | 2025-09-15 A | 2025-10-15 | CON-MB-1020 FS+2d | 56% | 193d |
| CON-STAIR-1010 |  | Stair Tower A CMU | 10d | 2025-10-01 | 2025-10-14 | CON-ELEV-1000 |  | 194d |
| CON-STAIR-1020 |  | Stair Stringers and Pans | 10d | 2025-10-16 | 2025-10-29 | CON-STAIR-1000, CON-STAIR-1010 |  | 193d |
| CON-STAIR-1030 |  | Doors & HW - Stairs | 2d | 2025-10-30 | 2025-10-31 | CON-STAIR-1010, CON-STAIR-1000, CON-STAIR-1020 |  | 193d |
| CON-STAIR-1040 |  | Prep/Paint - Stairs | 2d | 2025-11-03 | 2025-11-04 | CON-STAIR-1020, CON-STAIR-1030 |  | 203d |
|  | 1 | **First Floor Interior Finishes** |  | 2026-04-23 | 2026-06-11 |  |  |  |
| CON-MB-L1-1270 |  | Janus Wall Panels - 1st Floor | 15d | 2026-04-23 | 2026-05-13 | CON-MB-L2-1070 |  | 0d |
| CON-MB-L1-1130 |  | Fire Proofing Structural Steel - 1st Floor | 5d | 2026-04-30 | 2026-05-06 | CON-MB-L2-1090 |  | 46d |
| CON-MB-L1-1140 |  | OH & Wall Plumbing Rough In - 1st Floor | 3d | 2026-05-07 | 2026-05-11 | CON-MB-L1-1130, CON-MB-L1-1090 |  | 53d |
| CON-MB-L1-1150 |  | Electric & Low Voltage OH & Wall Rough In - 1st Floor | 10d | 2026-05-07 | 2026-05-20 | CON-MB-L1-1130, CON-MB-L1-1090 |  | 46d |
| CON-MB-L1-1160 |  | HVAC Rough In - 1st Floor | 3d | 2026-05-07 | 2026-05-11 | CON-MB-L1-1130, PROC-1130, CON-MB-L1-1090 |  | 53d |
| CON-MB-L1-1170 |  | Sprinkler Rough In - 1st Floor | 10d | 2026-05-07 | 2026-05-20 | CON-MB-L1-1130, PROC-1150, CON-MB-L1-1090 |  | 60d |
| CON-MB-L1-1180 |  | OH & Wall MEP Inspections - 1st Floor | 2d | 2026-05-21 | 2026-05-22 | CON-MB-L1-1140, CON-MB-L1-1150, CON-MB-L1-1160 |  | 46d |
| CON-MB-L1-1190 |  | Hang & Finish Drywall - 1st Floor | 7d | 2026-05-25 | 2026-06-02 | CON-MB-L1-1180, MIL-1010 |  | 46d |
| CON-MB-L1-1200 |  | Doors & HW - 1st Floor | 2d | 2026-06-03 | 2026-06-04 | CON-MB-L1-1180, CON-MB-L1-1190 |  | 73d |
| CON-MB-L1-1210 |  | Prep/Paint Walls & Ceilings - 1st Floor | 2d | 2026-06-03 | 2026-06-04 | CON-MB-L1-1190 |  | 46d |
| CON-MB-L1-1220 |  | Plumbing Fixtures - 1st Floor | 2d | 2026-06-05 | 2026-06-08 | CON-MB-L1-1210 |  | 49d |
| CON-MB-L1-1230 |  | Diffusers - 1st Floor | 5d | 2026-06-05 | 2026-06-11 | CON-MB-L1-1210 |  | 46d |
| CON-MB-L1-1240 |  | Light Fixtures - 1st Floor | 5d | 2026-06-05 | 2026-06-11 | CON-MB-L1-1210, PROC-1070 |  | 46d |
|  | 2 | **Second Floor Interior Finishes** |  | 2025-12-22 | 2026-05-21 |  |  |  |
| CON-MB-L2-1060 |  | Doors & HW - 2nd Floor | 2d | 2025-12-22 | 2025-12-23 | CON-MB-L2-1040 |  | 188d |
| CON-MB-L2-1080 |  | Prep/Paint Walls - 2nd Floor | 2d | 2025-12-24 | 2025-12-25 | CON-MB-L2-1060 |  | 188d |
| CON-MB-L2-1070 |  | Janus Wall Panels - 2nd Floor | 15d | 2026-04-02 | 2026-04-22 | CON-MB-L5-1020 |  | 0d |
| CON-MB-L2-1090 |  | Fireproofing Structural Steel - 2nd Floor | 5d | 2026-04-23 | 2026-04-29 | CON-MB-L3-1060 |  | 46d |
| CON-MB-L2-1100 |  | Electric OH & Wall Rough In - 2nd Floor | 10d | 2026-04-30 | 2026-05-13 | CON-MB-L2-1090, CON-MB-L2-1040 |  | 83d |
| CON-MB-L2-1110 |  | HVAC Rough In - 2nd Floor | 5d | 2026-04-30 | 2026-05-06 | CON-MB-L2-1090, PROC-1130, CON-MB-L2-1040 |  | 88d |
| CON-MB-L2-1120 |  | Sprinkler Rough In - 2nd Floor | 10d | 2026-04-30 | 2026-05-13 | CON-MB-L2-1090, CON-MB-L2-1040 |  | 65d |
| CON-MB-L2-1140 |  | OH & Wall MEP Inspections - 2nd Floor | 1d | 2026-05-14 | 2026-05-14 | CON-MB-L2-1100, CON-MB-L2-1040, CON-MB-L2-1110 |  | 83d |
| CON-MB-L2-1150 |  | Diffusers - 2nd Floor | 5d | 2026-05-15 | 2026-05-21 | CON-MB-L2-1140 |  | 83d |
| CON-MB-L2-1160 |  | Light Fixtures - 2nd Floor | 5d | 2026-05-15 | 2026-05-21 | CON-MB-L2-1140, PROC-1070 |  | 83d |
|  | 3 | **Third Floor Interior Finishes** |  | 2026-04-16 | 2026-06-03 |  |  |  |
| CON-MB-L3-1060 |  | Fire Proofing Structural Steel - 3rd Floor | 5d | 2026-04-16 | 2026-04-22 | CON-MB-L4-1050 |  | 46d |
| CON-MB-L3-1070 |  | OH & Wall Plumbing Rough In - 3rd Floor | 3d | 2026-04-23 | 2026-04-27 | CON-MB-L3-1060, CON-MB-L3-1040 |  | 60d |
| CON-MB-L3-1080 |  | Electric & Low Voltage OH & Wall Rough In - 3rd Floor | 10d | 2026-04-23 | 2026-05-06 | CON-MB-L3-1060, CON-MB-L3-1040 |  | 53d |
| CON-MB-L3-1090 |  | HVAC Rough In - 3rd Floor | 5d | 2026-04-23 | 2026-04-29 | CON-MB-L3-1060, PROC-1130, CON-MB-L3-1040 |  | 58d |
| CON-MB-L3-1100 |  | Sprinkler Rough In - 3rd Floor | 10d | 2026-04-23 | 2026-05-06 | CON-MB-L3-1060, CON-MB-L3-1040 |  | 70d |
| CON-MB-L3-1120 |  | OH & Wall MEP Inspections - 3rd Floor | 2d | 2026-05-07 | 2026-05-08 | CON-MB-L3-1090, CON-MB-L3-1070, CON-MB-L3-1080 |  | 53d |
| CON-MB-L3-1130 |  | Hang/Finish Drywall - 3rd Floor | 7d | 2026-05-11 | 2026-05-19 | CON-MB-L3-1120, MIL-1010 |  | 53d |
| CON-MB-L3-1150 |  | Janus Wall Panels - 3rd Floor | 15d | 2026-05-14 | 2026-06-03 | CON-MB-L1-1270 |  | 0d |
| CON-MB-L3-1140 |  | Prep/Paint Walls & Ceilings - 3rd Floor | 3d | 2026-05-20 | 2026-05-22 | CON-MB-L3-1130 |  | 53d |
| CON-MB-L3-1160 |  | Plumbing Fixtures - 3rd Floor | 4d | 2026-05-25 | 2026-05-28 | CON-MB-L3-1140 |  | 54d |
| CON-MB-L3-1170 |  | Diffusers - 3rd Floor | 5d | 2026-05-25 | 2026-05-29 | CON-MB-L3-1140 |  | 53d |

| ID | WBS | Task | Duration | Start | Finish | Predecessors | Complete | Total float |
| --- | --- | --- | --- | --- | --- | --- | --- | --- |
| CON-MB-L3-1180 |  | Light Fixtures - 3rd Floor | 5d | 2026-05-25 | 2026-05-29 | CON-MB-L3-1140, PROC-1070 |  | 53d |
|  | 4 | **Fourth Floor Interior Finishes** |  | 2026-04-09 | 2026-06-24 |  |  |  |
| CON-MB-L4-1050 |  | Fire Proofing Structural Steel - 4th Floor | 5d | 2026-04-09 | 2026-04-15 | CON-MB-L5-1040 |  | 46d |
| CON-MB-L4-1060 |  | Electric OH & Wall Rough In - 4th Floor | 10d | 2026-04-20 | 2026-05-01 | CON-MB-L4-1050 FS+2d, CON-MB-L4-1030 |  | 67d |
| CON-MB-L4-1070 |  | HVAC Rough In - 4th Floor | 5d | 2026-04-20 | 2026-04-24 | CON-MB-L4-1050 FS+2d, PROC-1130, CON-MB-L4-1030 |  | 72d |
| CON-MB-L4-1080 |  | Sprinkler Rough In - 4th Floor | 10d | 2026-04-20 | 2026-05-01 | CON-MB-L4-1050 FS+2d, CON-MB-L4-1030 |  | 73d |
| CON-MB-L4-1100 |  | OH & Wall MEP Inspections - 4th Floor | 1d | 2026-05-04 | 2026-05-04 | CON-MB-L4-1070, CON-MB-L4-1060 |  | 67d |
| CON-MB-L4-1110 |  | Prep/Paint Walls - 4th Floor | 2d | 2026-05-05 | 2026-05-06 | CON-MB-L4-1100 |  | 70d |
| CON-MB-L4-1120 |  | Diffusers - 4th Floor | 5d | 2026-05-05 | 2026-05-11 | CON-MB-L4-1100 |  | 67d |
| CON-MB-L4-1130 |  | Light Fixtures - 4th Floor | 5d | 2026-05-05 | 2026-05-11 | CON-MB-L4-1100, PROC-1070 |  | 67d |
| CON-MB-L4-1140 |  | Janus Wall Panels - 4th Floor | 15d | 2026-06-04 | 2026-06-24 | CON-MB-L3-1150 |  | 0d |
|  | 5 | **Fifth Floor Interior Finishes** |  | 2026-04-02 | 2026-07-15 |  |  |  |
| CON-MB-L5-1040 |  | Fire Proofing Structural Steel - 5th Floor | 5d | 2026-04-02 | 2026-04-08 | CON-MB-L5-1020 |  | 37d |
| CON-MB-L5-1060 |  | Electric & Low Voltage OH & Wall Rough In - 5th Floor | 10d | 2026-04-09 | 2026-04-22 | CON-MB-L5-1050, CON-MB-L5-1040 |  | 37d |
| CON-MB-L5-1070 |  | OH & Wall Plumbing Rough In - 5th Floor | 3d | 2026-04-09 | 2026-04-13 | CON-MB-L5-1050, CON-MB-L5-1040 |  | 44d |
| CON-MB-L5-1080 |  | HVAC Rough In - 5th Floor | 5d | 2026-04-09 | 2026-04-15 | CON-MB-L5-1050, PROC-1130, CON-MB-L5-1040 |  | 42d |
| CON-MB-L5-1090 |  | Sprinkler Rough In - 5th Floor | 10d | 2026-04-09 | 2026-04-22 | CON-MB-L5-1050, CON-MB-L5-1040 |  | 80d |
| CON-MB-L5-1110 |  | OH & Wall MEP Inspections - 5th Floor | 1d | 2026-04-23 | 2026-04-23 | CON-MB-L5-1060, CON-MB-L5-1070, CON-MB-L5-1080 |  | 37d |
| CON-MB-L5-1120 |  | Hang/Finish Drywall - 5th Floor | 7d | 2026-04-24 | 2026-05-04 | CON-MB-L5-1110, MIL-1010 |  | 37d |
| CON-MB-L5-1130 |  | Prep/Paint Walls - 5th Floor | 2d | 2026-05-05 | 2026-05-06 | CON-MB-L5-1120 |  | 90d |
| CON-MB-L5-1140 |  | Plumbing Fixtures - 5th Floor | 4d | 2026-05-07 | 2026-05-12 | CON-MB-L5-1130 |  | 90d |
| CON-MB-L5-1150 |  | Diffusers - 5th Floor | 1d | 2026-05-07 | 2026-05-07 | CON-MB-L5-1130 |  | 93d |
| CON-MB-L5-1160 |  | Light Fixtures - 5th Floor | 1d | 2026-05-07 | 2026-05-07 | CON-MB-L5-1130, PROC-1070 |  | 93d |
| CON-MB-L5-1170 |  | Janus Wall Panels - 5th Floor | 15d | 2026-06-25 | 2026-07-15 | CON-MB-L5-1120, CON-MB-L4-1140 |  | 0d |
|  | 7 | **Switchgear Room** |  | 2025-12-08 | 2026-03-23 |  |  |  |
| CON-POW-1000 |  | Switchgear Room Enclosure | 10d | 2025-12-08 | 2025-12-19 | CON-MB-L1-1250, CON-MB-L2-1020 |  | 92d |
| CON-POW-1010 |  | Install Switchgear Equipment | 15d | 2025-12-22 | 2026-01-09 | PROC-1060, CON-POW-1000 |  | 92d |
| CON-POW-1020 |  | Switchgear Lights and Power | 15d | 2026-01-12 | 2026-01-30 | CON-POW-1010, PROC-1070 |  | 92d |
| CON-POW-1030 |  | City Inspection | 1d | 2026-02-02 | 2026-02-02 | CON-POW-1020 |  | 92d |
| CON-POW-1040 |  | Dominion Primary | 20d | 2026-02-03 | 2026-03-02 | CON-POW-1030 |  | 92d |
| CON-POW-1050 |  | Dominion Transformer | 5d | 2026-03-03 | 2026-03-09 | CON-POW-1040 |  | 92d |
| CON-POW-1060 |  | Dominion Secondary | 5d | 2026-03-10 | 2026-03-16 | CON-POW-1050 |  | 92d |
| CON-POW-1070 |  | Power Activation | 5d | 2026-03-17 | 2026-03-23 | CON-POW-1060 |  | 92d |
|  | 2 | **Exterior Finishes** |  | 2025-11-11 | 2026-07-24 |  |  |  |
| CON-MB-L1-1250 |  | Exterior Sheathing - 1st Floor | 6d | 2025-11-11 | 2025-11-18 | CON-MB-L1-1090 SS+3d |  | 86d |
| CON-MB-L2-1050 |  | Exterior Sheathing - 2nd Floor | 6d | 2025-12-11 | 2025-12-18 | CON-MB-L2-1040 SS+3d |  | 82d |
| CON-MB-L3-1050 |  | Exterior Sheathing - 3rd Floor | 6d | 2026-01-12 | 2026-01-19 | CON-MB-L3-1040 SS+3d |  | 78d |
| CON-MB-L4-1040 |  | Exterior Sheathing - 4th Floor | 6d | 2026-02-11 | 2026-02-18 | CON-MB-L4-1030 SS+3d |  | 79d |
| CON-MB-L5-1030 |  | Exterior Sheathing - 5th Floor | 6d | 2026-03-17 | 2026-03-24 | CON-MB-L5-1010, CON-MB-L5-1050 SS+3d |  | 0d |
| CON-MB-L1-1260 |  | Perimeter Waterproofing West Elevation | 4d | 2026-03-19 | 2026-03-24 | CON-MB-L1-1250, CON-MB-L5-1030 SS, CON-MB-L5-1030 FF |  | 0d |
| CON-MB-EXT-1000 |  | Brick West Elevation | 18d | 2026-03-25 | 2026-04-17 | CON-MB-L5-1030, PROC-1030, SITE-MB-1070, CON-MB-L1-1260 |  | 0d |
| CON-MB-L2-1280 |  | Perimeter Waterproofing North Elevation | 4d | 2026-03-25 | 2026-03-30 | CON-MB-L2-1050, CON-MB-L1-1260, CON-MB-L5-1030 |  | 14d |
| CON-MB-L2-1290 |  | Perimeter Waterproofing East Elevation | 4d | 2026-03-31 | 2026-04-03 | CON-MB-L3-1050, CON-MB-L2-1280, CON-MB-L5-1030 |  | 28d |
| CON-MB-L2-1300 |  | Perimeter Waterproofing South Elevation | 4d | 2026-04-06 | 2026-04-09 | CON-MB-L4-1040, CON-MB-L2-1290, CON-MB-L5-1030 |  | 47d |
| CON-MB-EXT-1020 |  | Brick North Elevation | 18d | 2026-04-20 | 2026-05-13 | CON-MB-EXT-1000, SITE-MB-1070, CON-MB-L2-1280 |  | 0d |
| CON-MB-EXT-1030 |  | Brick East Elevation | 18d | 2026-05-14 | 2026-06-08 | CON-MB-EXT-1020, SITE-MB-1070, CON-MB-L2-1290 |  | 0d |
| CON-MB-EXT-1040 |  | Stucco West Elevation | 6d | 2026-06-09 | 2026-06-16 | CON-MB-EXT-1030 SS+18d |  | 0d |
| CON-MB-EXT-1050 |  | Brick South Elevation | 18d | 2026-06-09 | 2026-07-02 | CON-MB-EXT-1030, SITE-MB-1070, CON-MB-L2-1300 |  | 5d |
| CON-MB-EXT-1060 |  | Stucco North Elevation | 6d | 2026-06-17 | 2026-06-24 | CON-MB-EXT-1040 |  | 0d |
| CON-MB-EXT-1070 |  | Glass West Elevation | 7d | 2026-06-17 | 2026-06-25 | CON-MB-EXT-1040 |  | 3d |
| CON-MB-EXT-1080 |  | Stucco East Elevation | 6d | 2026-06-25 | 2026-07-02 | CON-MB-EXT-1060 |  | 0d |
| CON-MB-EXT-1090 |  | Glass North Elevation | 7d | 2026-06-26 | 2026-07-06 | CON-MB-EXT-1070 |  | 3d |
| CON-MB-EXT-1100 |  | Stucco South Elevation | 6d | 2026-07-03 | 2026-07-10 | CON-MB-EXT-1080 |  | 0d |
| CON-MB-EXT-1120 |  | Swing Doors/ Automatic Sliding Entrance | 4d | 2026-07-03 | 2026-07-08 | CON-MB-EXT-1050 |  | 15d |
| CON-MB-EXT-1130 |  | Storefront | 7d | 2026-07-03 | 2026-07-13 | CON-MB-EXT-1050 |  | 5d |
| CON-MB-EXT-1110 |  | Glass East Elevation | 7d | 2026-07-07 | 2026-07-15 | CON-MB-EXT-1090 |  | 3d |
| CON-MB-EXT-1150 |  | Canopies | 7d | 2026-07-14 | 2026-07-22 | CON-MB-EXT-1130 |  | 5d |
| CON-MB-EXT-1140 |  | Glass South Elevation | 7d | 2026-07-16 | 2026-07-24 | CON-MB-EXT-1110 |  | 3d |
|  | 5 | **Roofing** |  | 2026-03-12 | 2026-04-01 |  |  |  |
| CON-MB-L5-1020 |  | Roof Insulation & TPO | 15d | 2026-03-12 | 2026-04-01 | CON-MB-L5-1010 |  | 0d |
|  | 3 | **Office Building** |  | 2025-07-21 | 2025-12-22 |  |  |  |
|  | 1 | **Structure - Office** |  | 2025-07-21 | 2025-10-16 |  |  |  |
| CON-OFF-1000 |  | Prep/Pour SOG - Office Building | 5d | 2025-07-21 A | 2025-07-22 A | SITE-OFF-1020 | 100% |  |
| CON-OFF-1010 |  | Structural Steel - Office Building | 2d | 2025-09-30 A | 2025-09-30 A | CON-OFF-1000 | 100% |  |
| CON-OFF-1030 |  | Interior/Exterior Framing - Office Building | 8d | 2025-10-01 | 2025-10-10 | CON-OFF-1010 |  | 31d |
| CON-OFF-1070 |  | Framing Inspection - Office Building | 1d | 2025-10-13 | 2025-10-13 | CON-OFF-1030 |  | 31d |
| CON-OFF-1050 |  | Roof Decking - Office Building | 1d | 2025-10-14 | 2025-10-14 | CON-OFF-1030, CON-OFF-1010, CON-OFF-1070 |  | 31d |
| CON-OFF-1020 |  | Foundation Waterproofing - Office Building | 2d | 2025-10-15 | 2025-10-16 | CON-OFF-1000, PROC-1010 |  | 31d |
|  | 2 | **Interior Finishes - Office** |  | 2025-10-17 | 2025-12-22 |  |  |  |
| CON-OFF-1080 |  | MEP Rough In - Office Building | 3d | 2025-10-17 | 2025-10-21 | CON-OFF-1040, CON-OFF-1070, CON-OFF-1020 |  | 31d |

| ID | WBS | Task | Duration | Start | Finish | Predecessors | Total float | Constraint |
| --- | --- | --- | --- | --- | --- | --- | --- | --- |
| CON-OFF-1090 |  | MEP Inspections - Office Building | 1d | 2025-10-22 | 2025-10-22 | CON-OFF-1080 | 31d |  |
| CON-OFF-1100 |  | Hang/Finish Drywall - Office Building | 3d | 2025-10-23 | 2025-10-27 | CON-OFF-1090, CON-OFF-1070 | 31d |  |
| CON-OFF-1110 |  | Doors, Frames & Hardware - Office Building | 2d | 2025-10-28 | 2025-10-29 | CON-OFF-1100, CON-OFF-1030 | 31d |  |
| CON-OFF-1120 |  | Prep/Paint Walls - Office Building | 2d | 2025-10-30 | 2025-10-31 | CON-OFF-1110 | 31d |  |
| CON-OFF-1130 |  | Flooring - Office Building | 5d | 2025-11-03 | 2025-11-07 | CON-OFF-1120 | 31d |  |
| CON-OFF-1140 |  | MEP Finishes, Fixtures, Accessories - Office Building | 2d | 2025-11-10 | 2025-11-11 | CON-OFF-1120, CON-OFF-1130 | 31d |  |
| CON-OFF-1150 |  | Millwork - Office Building | 2d | 2025-11-10 | 2025-11-11 | CON-OFF-1110, CON-OFF-1130 | 35d | start on or after 2025-11-03 |
| CON-OFF-1220 |  | Final Cleaning - Office Building | 1d | 2025-12-22 | 2025-12-22 | CON-OFF-1110, CON-OFF-1120, CON-OFF-1130, CON-OFF-1140, CON-OFF-1150, SITE-OFF-1070, CON-OFF-1160 | 7d |  |
|  | 3 | **Exterior Finishes - Office** |  | 2025-10-15 | 2025-12-19 |  |  |  |
| CON-OFF-1040 |  | Roofing - Office Building | 2d | 2025-10-15 | 2025-10-16 | CON-OFF-1030, CON-OFF-1050 | 31d | finish on or after 2025-10-07 |
| CON-OFF-1060 |  | Exterior Sheathing/Waterproofing - Office Building | 3d | 2025-10-15 | 2025-10-17 | CON-OFF-1030, CON-OFF-1070, CON-OFF-1050 | 43d |  |
| CON-OFF-1170 |  | Brick Facade - Office Building | 5d | 2025-10-20 | 2025-10-24 | PROC-1030, CON-OFF-1060 | 43d |  |
| CON-OFF-1160 |  | Store Front & Windows - Office Building | 3d | 2025-12-17 | 2025-12-19 | PROC-1080, CON-OFF-1060 | 3d | start on or after 2025-10-22 |
|  | 4 | **Final Inspections & Close Out** |  | 2025-12-22 | 2026-09-08 |  |  |  |
|  | 1 | **Office Building** |  | 2025-12-22 | 2026-01-20 |  |  |  |
| CLO-OFF-1030 |  | Final Building Inspections - Office Building | 5d | 2025-12-22 | 2025-12-26 | CON-OFF-1140, CON-OFF-1170, CON-OFF-1090, CON-OFF-1160 | 3d |  |
| CLO-OFF-1000 |  | Office Temporary Occupancy | 1d | 2025-12-29 | 2025-12-29 | CON-OFF-1220, CLO-OFF-1030, SITE-OFF-1130 | 3d | finish on or before 2026-01-01 |
| CLO-OFF-1040 |  | Punch List Walk - Office Building | 2d | 2025-12-29 | 2025-12-30 | SITE-OFF-1130, SITE-OFF-1100, CLO-OFF-1030, CON-OFF-1220, CON-OFF-1140, CON-OFF-1150, SITE-OFF-1080 | 9d |  |
| CLO-OFF-1050 |  | Punch List Corrections - Office Building | 15d | 2025-12-31 | 2026-01-20 | CLO-OFF-1040 | 9d | finish on or before 2026-02-02 |
|  | 2 | **Main Building** |  | 2026-07-30 | 2026-09-08 |  |  |  |
| CLO-MB-1000 |  | Fire Alarm Inspection | 5d | 2026-07-30 | 2026-08-05 | CON-MB-EXT-1150, CON-STAIR-1030, CON-MB-EXT-1140, CON-MB-EXT-1120, MIL-1020 SS, CON-MB-2000 | 0d |  |
| CLO-MB-1010 |  | State Inspection for Elevators | 5d | 2026-08-06 | 2026-08-12 | CLO-MB-1000, CON-ELEV-1020, MIL-1020 SS | 0d |  |
| CLO-MB-1020 |  | Final Building Inspections | 5d | 2026-08-13 | 2026-08-19 | CLO-MB-1010, CON-MB-L3-1160, CON-MB-L3-1170, CON-MB-L3-1180, CON-MB-L4-1130, CON-MB-L4-1120, CON-MB-L4-1110, CON-MB-L4-1080, CON-MB-L3-1100, CON-MB-L2-1120, CON-MB-L1-1170, CON-MB-L5-1090, MIL-1020 SS | 0d |  |
| CLO-MB-1040 |  | Punch List Walk - Main Building | 2d | 2026-08-17 | 2026-08-18 | SITE-MB-1140, CON-MB-L1-1220, CON-MB-L1-1230, CON-MB-L1-1240, SITE-MB-1090, CON-STAIR-1040, CON-MB-L3-1160, CON-MB-L3-1170, CON-MB-L3-1180, CON-MB-L4-1130, CON-MB-L4-1120, CON-MB-L4-1110, CON-MB-L4-1080, CON-MB-L3-1100, CON-MB-L2-1120, CON-MB-L1-1170, CON-MB-L5-1090, CON-MB-2010 | 0d |  |
| CLO-MB-1050 |  | Punch List Corrections - Main Building | 15d | 2026-08-19 | 2026-09-08 | CLO-MB-1040 | 0d |  |

## Version 2 (data date 2025-10-31, saved 2025-11-03, file update_2.xer)

Note of the change: Add all project schedule files to buckets - 13 projects, MPP+XER, baseline+updates

Last finish stays 2026-09-15. Complete tasks 24 → 34.

Changed:

| ID | Task | Start | Finish | Duration | Complete | Total float | Predecessors | Other |
| --- | --- | --- | --- | --- | --- | --- | --- | --- |
| MIL-1020 | Permanent Power | 2026-03-24 → 2026-03-26 (+2d) | 2026-03-24 → 2026-03-26 (+2d) |  |  | 92d → 90d |  |  |
| MIL-1010 | Weathertight - Main Building | 2026-04-01 → 2026-04-09 (+8d) | 2026-04-01 → 2026-04-09 (+8d) |  |  | 53d → 47d |  |  |
| 1 | **Preconstruction** |  | 2026-02-17 → 2026-02-13 (-4d) |  |  |  |  |  |
| 1 | **Procurement** |  | 2026-02-17 → 2026-02-13 (-4d) |  |  |  |  |  |
| PROC-1010 | Contractor Procurement |  | 2025-10-14 → 2025-11-07 (+24d) |  | 83% → 92% | 3d → 0d |  |  |
| 2 | **Long Lead Items** |  | 2026-02-17 → 2026-02-13 (-4d) |  |  |  |  |  |
| PROC-1120 | Ferguson Tank Submittal | 2025-10-15 → 2025-07-29 A (-78d) | 2025-11-11 → 2025-10-15 A (-27d) |  | 0% → 100% | 10d → none |  |  |
| PROC-1080 | Glass Field Measurement and Fabrication - Office |  | 2025-12-16 → 2025-12-19 (+3d) |  | 0% → 22% | 3d → 0d | PROC-1010 → PROC-1010 SS | constraint start on or after 2025-09-15 → none |
| PROC-1110 | HVAC Equipment Submittal | 2025-10-15 → 2025-09-15 A (-30d) | 2025-11-11 → 2025-09-30 A (-42d) |  | 0% → 100% | 78d → none |  |  |
| PROC-1130 | HVAC Equipment Fabrication | 2025-11-12 → 2025-10-20 A (-23d) | 2026-02-17 → 2026-01-16 (-32d) |  | 0% → 29% | 78d → 47d |  |  |
| PROC-1090 | Fire Pump Submittal | 2025-09-29 A → 2025-10-27 A (+28d) | 2025-11-21 → 2025-12-01 (+10d) |  | 30% → 60% | 148d → 142d |  |  |
| PROC-1140 | Ferguson Tank Fabrication | 2025-11-12 → 2025-10-27 A (-16d) | 2026-02-03 → 2025-11-21 (-74d) | 60d → 15d | 0% → 33% | 10d → 68d |  |  |
| PROC-1100 | Elevator Fabrication | 2025-10-15 → 2025-11-10 (+26d) | 2026-01-20 → 2026-02-13 (+24d) |  |  | 76d → 58d |  |  |
| PROC-1150 | Fire Pump Fabrication | 2025-11-24 → 2025-12-02 (+8d) | 2026-01-02 → 2026-01-12 (+10d) |  |  | 148d → 142d |  |  |
| SITE-1010 | Stormwater Management Ponds | 2026-02-04 → 2025-11-24 (-72d) | 2026-02-17 → 2025-12-05 (-74d) |  |  | 10d → 68d |  |  |
| SITE-MB-1050 | Storm Structures and Pipe - Main Building | 2025-10-01 → 2025-11-03 (+33d) | 2025-11-11 → 2025-12-12 (+31d) |  |  | 70d → 53d |  |  |
| SITE-MB-1060 | Sanitary Sewer - Main Building | 2025-11-12 → 2025-12-15 (+33d) | 2025-11-25 → 2025-12-26 (+31d) |  |  | 70d → 53d |  |  |
| SITE-MB-1070 | Fine Grading - Main Building | 2026-02-18 → 2025-12-29 (-51d) | 2026-03-10 → 2026-01-16 (-53d) |  |  | 10d → 53d |  |  |
| SITE-MB-1100 | Curb and Gutter - Main Building | 2026-05-14 → 2026-05-22 (+8d) | 2026-05-22 → 2026-06-01 (+10d) |  |  | 30d → 24d |  |  |
| SITE-MB-1120 | Stone Base Parking Lot - Main Building | 2026-05-25 → 2026-06-02 (+8d) | 2026-06-05 → 2026-06-15 (+10d) |  |  | 30d → 24d |  |  |
| 3 | **Site Work - Office** |  | 2025-11-06 → 2025-12-03 (+27d) |  |  |  |  |  |
| SITE-OFF-1030 | Domestic & Fire Water Online - Office Building | 2025-10-01 → 2025-11-10 (+40d) | 2025-10-27 → 2025-11-21 (+25d) | 19d → 10d |  | 41d → 22d | SITE-OFF-1020 → SITE-OFF-1020, PROC-1010 |  |
| SITE-OFF-1060 | Fine Grading - Office Building | 2025-10-01 → 2025-11-10 (+40d) | 2025-10-03 → 2025-11-17 (+45d) | 3d → 6d |  | 57d → 26d | SITE-OFF-1020 → SITE-OFF-1020, PROC-1010 |  |
| SITE-OFF-1080 | Landscape - Office Building | 2025-11-04 → 2025-11-18 (+14d) | 2025-11-04 → 2025-11-18 (+14d) |  |  | 47d → 37d | SITE-OFF-1070, SITE-OFF-1120 → SITE-OFF-1060 |  |
| SITE-OFF-1090 | Curb and Gutter - Office Building | 2025-10-28 → 2025-11-24 (+27d) | 2025-10-28 → 2025-11-24 (+27d) |  |  | 41d → 22d |  |  |
| SITE-OFF-1070 | Sidewalk - Office Building | 2025-10-29 → 2025-11-25 (+27d) | 2025-10-30 → 2025-11-26 (+27d) |  |  | 41d → 22d |  |  |
| SITE-OFF-1110 | Stone Base Parking Lot - Office Building | 2025-10-29 → 2025-11-25 (+27d) | 2025-10-29 → 2025-11-25 (+27d) |  |  | 42d → 23d |  |  |
| SITE-OFF-1120 | Paving - Office Building | 2025-10-31 → 2025-11-27 (+27d) | 2025-11-03 → 2025-11-28 (+25d) |  |  | 41d → 22d |  |  |
| SITE-OFF-1100 | Misc Exterior Items (Vehicle Gate Operator) - Office Building | 2025-11-04 → 2025-12-01 (+27d) | 2025-11-06 → 2025-12-03 (+27d) |  |  | 45d → 26d |  |  |
| SITE-OFF-1130 | Line Striping - Office Building | 2025-11-04 → 2025-12-01 (+27d) | 2025-11-04 → 2025-12-01 (+27d) |  |  | 41d → 22d |  |  |
| 1 | **Main Building** |  | 2026-08-07 → 2026-07-29 (-9d) |  |  |  |  |  |
| 1 | **Substructure** |  | 2025-10-07 → 2025-11-26 (+50d) |  |  |  |  |  |
| CON-MB-1040 | Foundation Waterproofing | 2025-10-01 → 2025-11-20 (+50d) | 2025-10-07 → 2025-11-26 (+50d) |  |  | 107d → 69d | CON-MB-1030 FS+4d → CON-MB-1030 FS+4d, CON-MB-L1-1250 |  |
| 9 | **Superstructure** | 2025-10-01 → 2025-09-29 (-2d) | 2026-03-25 → 2026-04-02 (+8d) |  |  |  |  |  |
| 1 | **First Floor Superstructure** | 2025-10-01 → 2025-09-29 (-2d) | 2025-11-13 → 2025-11-11 (-2d) |  |  |  |  |  |
| CON-MB-L1-1040 | Structural Steel Columns & Beams - 1st Floor | 2025-10-01 → 2025-09-29 A (-2d) | 2025-10-24 → 2025-10-28 A (+4d) |  | 0% → 100% | 0d → none |  |  |
| CON-MB-L1-1060 | Metal Decking - 2nd floor | 2025-10-27 → 2025-10-23 A (-4d) | 2025-10-30 → 2025-10-28 A (-2d) |  | 0% → 100% | 0d → none |  |  |
| CON-MB-L1-1090 | Exterior & Interior Framing - 1st Floor | 2025-11-06 → 2025-10-28 A (-9d) | 2025-11-13 → 2025-11-11 (-2d) | 6d → 10d | 0% → 40% | 86d → 69d | CON-MB-1040, CON-MB-L1-1070 → CON-MB-L1-1070, CON-MB-L1-1040 |  |
| CON-MB-L1-1070 | Prep/Pour SOD - 2nd Floor | 2025-10-31 → 2025-10-29 A (-2d) | 2025-11-05 → 2025-11-03 (-2d) | 4d → 8d | 0% → 88% |  |  |  |
| 2 | **Second Floor Superstructure** | 2025-11-06 → 2025-11-04 (-2d) | 2025-12-19 → 2025-12-23 (+4d) |  |  |  |  |  |
| CON-MB-L2-1000 | Structural Steel Columns & Beams - 2nd Floor | 2025-11-06 → 2025-11-04 (-2d) | 2025-11-25 → 2025-11-21 (-4d) |  |  |  |  |  |
| CON-MB-L2-1010 | Metal Decking 3rd Floor | 2025-11-26 → 2025-11-24 (-2d) | 2025-12-01 → 2025-11-27 (-4d) |  |  |  |  |  |
| CON-MB-L2-1020 | Prep/Pour SOD - 3rd floor | 2025-12-02 → 2025-11-28 (-4d) | 2025-12-05 → 2025-12-09 (+4d) | 4d → 8d |  |  |  |  |
| CON-MB-L2-1040 | Exterior & Interior Framing - 2nd Floor | 2025-12-08 → 2025-12-10 (+2d) | 2025-12-19 → 2025-12-23 (+4d) |  |  | 82d → 60d | CON-MB-L2-1020 → CON-MB-L2-1020, CON-MB-1040 |  |
| 3 | **Third Floor Superstructure** | 2025-12-08 → 2025-12-10 (+2d) | 2026-01-20 → 2026-01-28 (+8d) |  |  |  |  |  |
| CON-MB-L3-1000 | Structural Steel Columns & Beams - 3rd Floor | 2025-12-08 → 2025-12-10 (+2d) | 2025-12-25 → 2025-12-29 (+4d) |  |  |  |  |  |
| CON-MB-L3-1010 | Metal Decking - 4th Floor | 2025-12-26 → 2025-12-30 (+4d) | 2025-12-31 → 2026-01-02 (+2d) |  |  |  |  |  |
| CON-MB-L3-1020 | Prep & Pour SOD - 4th Floor | 2026-01-01 → 2026-01-05 (+4d) | 2026-01-06 → 2026-01-14 (+8d) | 4d → 8d |  |  |  |  |
| CON-MB-L3-1040 | Exterior & Interior Framing - 3rd Floor | 2026-01-07 → 2026-01-15 (+8d) | 2026-01-20 → 2026-01-28 (+8d) |  |  | 78d → 63d |  |  |
| 6 | **Fourth Floor Superstructure** | 2026-01-07 → 2026-01-15 (+8d) | 2026-02-19 → 2026-02-27 (+8d) |  |  |  |  |  |
| CON-MB-L4-1000 | Structural Steel Columns & Beams - 4th Floor | 2026-01-07 → 2026-01-15 (+8d) | 2026-01-26 → 2026-02-03 (+8d) |  |  |  |  |  |
| CON-MB-L4-1010 | Metal Decking - 5th Floor | 2026-01-27 → 2026-02-04 (+8d) | 2026-01-30 → 2026-02-09 (+10d) |  |  |  |  |  |
| CON-MB-L4-1020 | Prep & Pour SOD - 5th Floor | 2026-02-02 → 2026-02-10 (+8d) | 2026-02-05 → 2026-02-13 (+8d) |  |  |  |  |  |
| CON-MB-L4-1030 | Exterior & Interior Framing - 4th Floor | 2026-02-06 → 2026-02-16 (+10d) | 2026-02-19 → 2026-02-27 (+8d) |  |  | 79d → 57d |  |  |
| 4 | **Fifth Floor Superstructure** | 2026-02-06 → 2026-02-16 (+10d) | 2026-03-25 → 2026-04-02 (+8d) |  |  |  |  |  |
| CON-MB-L5-1000 | Structural Steel Columns & Beams - 5th Floor | 2026-02-06 → 2026-02-16 (+10d) | 2026-02-25 → 2026-03-05 (+8d) |  |  |  |  |  |
| CON-MB-L5-1010 | Framing & Metal Decking - Roof | 2026-02-26 → 2026-03-06 (+8d) | 2026-03-11 → 2026-03-19 (+8d) |  |  |  |  |  |
| CON-MB-L5-1050 | Exterior & Interior Framing - 5th Floor | 2026-03-12 → 2026-03-20 (+8d) | 2026-03-25 → 2026-04-02 (+8d) |  |  |  |  |  |
| 3 | **Interior Finishes** |  | 2026-08-07 → 2026-07-14 (-24d) |  |  |  |  |  |
| CON-MB-2000 | Grind/Seal Floors (Full Building) | 2026-07-16 → 2026-06-22 (-24d) | 2026-07-29 → 2026-07-03 (-26d) |  |  | 0d → 18d |  |  |
| CON-MB-2010 | Final Cleaning (Full Building) | 2026-07-20 → 2026-06-24 (-26d) | 2026-08-07 → 2026-07-14 (-24d) |  |  | 5d → 23d |  |  |
| 6 | **Elevator** |  | 2026-07-01 → 2026-07-09 (+8d) |  |  |  |  |  |
| CON-ELEV-1010 | Elevator 1/2 CMU Shaft | 2025-10-01 → 2025-11-03 (+33d) | 2025-10-20 → 2025-11-20 (+31d) |  |  | 142d → 119d |  |  |
| CON-ELEV-1020 | Elevator Install | 2026-04-02 → 2026-04-10 (+8d) | 2026-07-01 → 2026-07-09 (+8d) |  |  | 25d → 19d |  |  |
| 8 | **Stair Shafts** |  | 2025-11-04 → 2025-11-20 (+16d) |  |  |  |  |  |
| CON-STAIR-1000 | Stair Tower B CMU |  | 2025-10-15 → 2025-10-24 A (+9d) |  | 56% → 100% | 193d → none |  |  |
| CON-STAIR-1010 | Stair Tower A CMU | 2025-10-01 → 2025-10-03 A (+2d) | 2025-10-14 → 2025-10-17 A (+3d) |  | 0% → 100% | 194d → none |  |  |
| CON-STAIR-1020 | Stair Stringers and Pans | 2025-10-16 → 2025-11-03 (+18d) | 2025-10-29 → 2025-11-14 (+16d) |  |  | 193d → 181d |  |  |
| CON-STAIR-1030 | Doors & HW - Stairs | 2025-10-30 → 2025-11-17 (+18d) | 2025-10-31 → 2025-11-18 (+18d) |  |  | 193d → 181d |  |  |
| CON-STAIR-1040 | Prep/Paint - Stairs | 2025-11-03 → 2025-11-19 (+16d) | 2025-11-04 → 2025-11-20 (+16d) |  |  | 203d → 191d |  |  |

| ID | Task | Start | Finish | Duration | Total float | Predecessors |
| --- | --- | --- | --- | --- | --- | --- |
| 1 | **First Floor Interior Finishes** | 2026-04-23 → 2026-01-15 (-98d) | 2026-06-11 → 2026-04-29 (-43d) |  |  |  |
| CON-MB-L1-1130 | Fire Proofing Structural Steel - 1st Floor | 2026-04-30 → 2026-01-15 (-105d) | 2026-05-06 → 2026-01-26 (-100d) | 5d → 8d | 46d → 28d | CON-MB-L2-1090 → CON-MB-L3-1020 |
| CON-MB-L1-1140 | OH & Wall Plumbing Rough In - 1st Floor | 2026-05-07 → 2026-01-27 (-100d) | 2026-05-11 → 2026-01-29 (-102d) |  | 53d → 57d |  |
| CON-MB-L1-1150 | Electric & Low Voltage OH & Wall Rough In - 1st Floor | 2026-05-07 → 2026-01-27 (-100d) | 2026-05-20 → 2026-02-09 (-100d) |  | 46d → 50d |  |
| CON-MB-L1-1160 | HVAC Rough In - 1st Floor | 2026-05-07 → 2026-01-27 (-100d) | 2026-05-11 → 2026-01-29 (-102d) |  | 53d → 57d |  |
| CON-MB-L1-1170 | Sprinkler Rough In - 1st Floor | 2026-05-07 → 2026-01-27 (-100d) | 2026-05-20 → 2026-02-09 (-100d) |  | 60d → 132d |  |
| CON-MB-L1-1180 | OH & Wall MEP Inspections - 1st Floor | 2026-05-21 → 2026-02-10 (-100d) | 2026-05-22 → 2026-02-11 (-100d) |  | 46d → 50d |  |
| CON-MB-L1-1270 | Janus Wall Panels - 1st Floor | 2026-04-23 → 2026-03-16 (-38d) | 2026-05-13 → 2026-04-03 (-40d) |  | 0d → 28d | CON-MB-L2-1070 → CON-MB-L2-1070, CON-MB-L1-1180 |
| CON-MB-L1-1190 | Hang & Finish Drywall - 1st Floor | 2026-05-25 → 2026-04-10 (-45d) | 2026-06-02 → 2026-04-20 (-43d) |  | 46d → 77d |  |
| CON-MB-L1-1200 | Doors & HW - 1st Floor | 2026-06-03 → 2026-04-21 (-43d) | 2026-06-04 → 2026-04-22 (-43d) |  | 73d → 104d |  |
| CON-MB-L1-1210 | Prep/Paint Walls & Ceilings - 1st Floor | 2026-06-03 → 2026-04-21 (-43d) | 2026-06-04 → 2026-04-22 (-43d) |  | 46d → 77d |  |
| CON-MB-L1-1220 | Plumbing Fixtures - 1st Floor | 2026-06-05 → 2026-04-23 (-43d) | 2026-06-08 → 2026-04-24 (-45d) |  | 49d → 80d |  |
| CON-MB-L1-1230 | Diffusers - 1st Floor | 2026-06-05 → 2026-04-23 (-43d) | 2026-06-11 → 2026-04-29 (-43d) |  | 46d → 77d |  |
| CON-MB-L1-1240 | Light Fixtures - 1st Floor | 2026-06-05 → 2026-04-23 (-43d) | 2026-06-11 → 2026-04-29 (-43d) |  | 46d → 77d |  |
| 2 | **Second Floor Interior Finishes** | 2025-12-22 → 2025-12-24 (+2d) | 2026-05-21 → 2026-03-13 (-69d) |  |  |  |
| CON-MB-L2-1060 | Doors & HW - 2nd Floor | 2025-12-22 → 2025-12-24 (+2d) | 2025-12-23 → 2025-12-25 (+2d) |  | 188d → 164d |  |
| CON-MB-L2-1080 | Prep/Paint Walls - 2nd Floor | 2025-12-24 → 2025-12-26 (+2d) | 2025-12-25 → 2025-12-29 (+4d) |  | 188d → 164d |  |
| CON-MB-L2-1090 | Fireproofing Structural Steel - 2nd Floor | 2026-04-23 → 2026-01-27 (-86d) | 2026-04-29 → 2026-02-05 (-83d) | 5d → 8d | 46d → 28d | CON-MB-L3-1060 → CON-MB-L1-1130 |
| CON-MB-L2-1100 | Electric OH & Wall Rough In - 2nd Floor | 2026-04-30 → 2026-02-06 (-83d) | 2026-05-13 → 2026-02-19 (-83d) |  | 83d → 28d |  |
| CON-MB-L2-1110 | HVAC Rough In - 2nd Floor | 2026-04-30 → 2026-02-06 (-83d) | 2026-05-06 → 2026-02-12 (-83d) |  | 88d → 33d |  |
| CON-MB-L2-1120 | Sprinkler Rough In - 2nd Floor | 2026-04-30 → 2026-02-06 (-83d) | 2026-05-13 → 2026-02-19 (-83d) |  | 65d → 124d |  |
| CON-MB-L2-1140 | OH & Wall MEP Inspections - 2nd Floor | 2026-05-14 → 2026-02-20 (-83d) | 2026-05-14 → 2026-02-20 (-83d) |  | 83d → 28d |  |
| CON-MB-L2-1070 | Janus Wall Panels - 2nd Floor | 2026-04-02 → 2026-02-23 (-38d) | 2026-04-22 → 2026-03-13 (-40d) |  | 0d → 28d | CON-MB-L5-1020 → CON-MB-L2-1140 |
| CON-MB-L2-1150 | Diffusers - 2nd Floor | 2026-05-15 → 2026-02-23 (-81d) | 2026-05-21 → 2026-02-27 (-83d) |  | 83d → 142d |  |
| CON-MB-L2-1160 | Light Fixtures - 2nd Floor | 2026-05-15 → 2026-02-23 (-81d) | 2026-05-21 → 2026-02-27 (-83d) |  | 83d → 142d |  |
| 3 | **Third Floor Interior Finishes** | 2026-04-16 → 2026-02-06 (-69d) | 2026-06-03 → 2026-04-30 (-34d) |  |  |  |
| CON-MB-L3-1060 | Fire Proofing Structural Steel - 3rd Floor | 2026-04-16 → 2026-02-06 (-69d) | 2026-04-22 → 2026-02-17 (-64d) | 5d → 8d | 46d → 49d | CON-MB-L4-1050 → CON-MB-L2-1090 |
| CON-MB-L3-1070 | OH & Wall Plumbing Rough In - 3rd Floor | 2026-04-23 → 2026-02-18 (-64d) | 2026-04-27 → 2026-02-20 (-66d) |  | 60d → 56d |  |
| CON-MB-L3-1080 | Electric & Low Voltage OH & Wall Rough In - 3rd Floor | 2026-04-23 → 2026-02-18 (-64d) | 2026-05-06 → 2026-03-03 (-64d) |  | 53d → 49d |  |
| CON-MB-L3-1090 | HVAC Rough In - 3rd Floor | 2026-04-23 → 2026-02-18 (-64d) | 2026-04-29 → 2026-02-24 (-64d) |  | 58d → 54d |  |
| CON-MB-L3-1100 | Sprinkler Rough In - 3rd Floor | 2026-04-23 → 2026-02-18 (-64d) | 2026-05-06 → 2026-03-03 (-64d) |  | 70d → 116d |  |
| CON-MB-L3-1120 | OH & Wall MEP Inspections - 3rd Floor | 2026-05-07 → 2026-03-04 (-64d) | 2026-05-08 → 2026-03-05 (-64d) |  | 53d → 49d |  |
| CON-MB-L3-1150 | Janus Wall Panels - 3rd Floor | 2026-05-14 → 2026-04-06 (-38d) | 2026-06-03 → 2026-04-24 (-40d) |  | 0d → 28d | CON-MB-L1-1270 → CON-MB-L1-1270, CON-MB-L3-1120 |
| CON-MB-L3-1130 | Hang/Finish Drywall - 3rd Floor | 2026-05-11 → 2026-04-10 (-31d) | 2026-05-19 → 2026-04-20 (-29d) |  | 53d → 74d |  |
| CON-MB-L3-1140 | Prep/Paint Walls & Ceilings - 3rd Floor | 2026-05-20 → 2026-04-21 (-29d) | 2026-05-22 → 2026-04-23 (-29d) |  | 53d → 74d |  |
| CON-MB-L3-1160 | Plumbing Fixtures - 3rd Floor | 2026-05-25 → 2026-04-24 (-31d) | 2026-05-28 → 2026-04-29 (-29d) |  | 54d → 75d |  |
| CON-MB-L3-1170 | Diffusers - 3rd Floor | 2026-05-25 → 2026-04-24 (-31d) | 2026-05-29 → 2026-04-30 (-29d) |  | 53d → 74d |  |
| CON-MB-L3-1180 | Light Fixtures - 3rd Floor | 2026-05-25 → 2026-04-24 (-31d) | 2026-05-29 → 2026-04-30 (-29d) |  | 53d → 74d |  |
| 4 | **Fourth Floor Interior Finishes** | 2026-04-09 → 2026-04-10 (+1d) | 2026-06-24 → 2026-05-29 (-26d) |  |  |  |
| CON-MB-L4-1050 | Fire Proofing Structural Steel - 4th Floor | 2026-04-09 → 2026-04-10 (+1d) | 2026-04-15 → 2026-04-21 (+6d) | 5d → 8d | 46d → 18d | CON-MB-L5-1040 → CON-MB-L3-1060, CON-MB-L5-1020 |
| CON-MB-L4-1060 | Electric OH & Wall Rough In - 4th Floor | 2026-04-20 → 2026-04-24 (+4d) | 2026-05-01 → 2026-05-07 (+6d) |  | 67d → 18d |  |
| CON-MB-L4-1070 | HVAC Rough In - 4th Floor | 2026-04-20 → 2026-04-24 (+4d) | 2026-04-24 → 2026-04-30 (+6d) |  | 72d → 23d |  |
| CON-MB-L4-1080 | Sprinkler Rough In - 4th Floor | 2026-04-20 → 2026-04-24 (+4d) | 2026-05-01 → 2026-05-07 (+6d) |  | 73d → 69d |  |
| CON-MB-L4-1100 | OH & Wall MEP Inspections - 4th Floor | 2026-05-04 → 2026-05-08 (+4d) | 2026-05-04 → 2026-05-08 (+4d) |  | 67d → 18d |  |
| CON-MB-L4-1110 | Prep/Paint Walls - 4th Floor | 2026-05-05 → 2026-05-11 (+6d) | 2026-05-06 → 2026-05-12 (+6d) |  | 70d → 66d |  |
| CON-MB-L4-1120 | Diffusers - 4th Floor | 2026-05-05 → 2026-05-11 (+6d) | 2026-05-11 → 2026-05-15 (+4d) |  | 67d → 63d |  |
| CON-MB-L4-1130 | Light Fixtures - 4th Floor | 2026-05-05 → 2026-05-11 (+6d) | 2026-05-11 → 2026-05-15 (+4d) |  | 67d → 63d |  |
| CON-MB-L4-1140 | Janus Wall Panels - 4th Floor | 2026-06-04 → 2026-05-11 (-24d) | 2026-06-24 → 2026-05-29 (-26d) |  | 0d → 18d | CON-MB-L3-1150 → CON-MB-L3-1150, CON-MB-L4-1100 |
| 5 | **Fifth Floor Interior Finishes** | 2026-04-02 → 2026-04-22 (+20d) | 2026-07-15 → 2026-06-19 (-26d) |  |  |  |
| CON-MB-L5-1040 | Fire Proofing Structural Steel - 5th Floor | 2026-04-02 → 2026-04-22 (+20d) | 2026-04-08 → 2026-05-01 (+23d) | 5d → 8d | 37d → 20d | CON-MB-L5-1020 → CON-MB-L5-1000, CON-MB-L4-1020, CON-MB-L4-1050 |
| CON-MB-L5-1060 | Electric & Low Voltage OH & Wall Rough In - 5th Floor | 2026-04-09 → 2026-05-04 (+25d) | 2026-04-22 → 2026-05-15 (+23d) |  | 37d → 20d |  |
| CON-MB-L5-1070 | OH & Wall Plumbing Rough In - 5th Floor | 2026-04-09 → 2026-05-04 (+25d) | 2026-04-13 → 2026-05-06 (+23d) |  | 44d → 27d |  |
| CON-MB-L5-1080 | HVAC Rough In - 5th Floor | 2026-04-09 → 2026-05-04 (+25d) | 2026-04-15 → 2026-05-08 (+23d) |  | 42d → 25d |  |
| CON-MB-L5-1090 | Sprinkler Rough In - 5th Floor | 2026-04-09 → 2026-05-04 (+25d) | 2026-04-22 → 2026-05-15 (+23d) |  | 80d → 63d |  |
| CON-MB-L5-1110 | OH & Wall MEP Inspections - 5th Floor | 2026-04-23 → 2026-05-18 (+25d) | 2026-04-23 → 2026-05-18 (+25d) |  | 37d → 20d |  |
| CON-MB-L5-1120 | Hang/Finish Drywall - 5th Floor | 2026-04-24 → 2026-05-19 (+25d) | 2026-05-04 → 2026-05-27 (+23d) |  | 37d → 20d |  |
| CON-MB-L5-1130 | Prep/Paint Walls - 5th Floor | 2026-05-05 → 2026-05-28 (+23d) | 2026-05-06 → 2026-05-29 (+23d) |  | 90d → 73d |  |
| CON-MB-L5-1140 | Plumbing Fixtures - 5th Floor | 2026-05-07 → 2026-06-01 (+25d) | 2026-05-12 → 2026-06-04 (+23d) |  | 90d → 73d |  |
| CON-MB-L5-1150 | Diffusers - 5th Floor | 2026-05-07 → 2026-06-01 (+25d) | 2026-05-07 → 2026-06-01 (+25d) |  | 93d → 76d |  |
| CON-MB-L5-1160 | Light Fixtures - 5th Floor | 2026-05-07 → 2026-06-01 (+25d) | 2026-05-07 → 2026-06-01 (+25d) |  | 93d → 76d |  |
| CON-MB-L5-1170 | Janus Wall Panels - 5th Floor | 2026-06-25 → 2026-06-01 (-24d) | 2026-07-15 → 2026-06-19 (-26d) |  | 0d → 18d | CON-MB-L5-1120, CON-MB-L4-1140 → CON-MB-L5-1120, CON-MB-L4-1140, CON-MB-L5-1110 |
| 7 | **Switchgear Room** | 2025-12-08 → 2025-12-10 (+2d) | 2026-03-23 → 2026-03-25 (+2d) |  |  |  |
| CON-POW-1000 | Switchgear Room Enclosure | 2025-12-08 → 2025-12-10 (+2d) | 2025-12-19 → 2025-12-23 (+4d) |  | 92d → 90d |  |
| CON-POW-1010 | Install Switchgear Equipment | 2025-12-22 → 2025-12-24 (+2d) | 2026-01-09 → 2026-01-13 (+4d) |  | 92d → 90d |  |
| CON-POW-1020 | Switchgear Lights and Power | 2026-01-12 → 2026-01-14 (+2d) | 2026-01-30 → 2026-02-03 (+4d) |  | 92d → 90d |  |
| CON-POW-1030 | City Inspection | 2026-02-02 → 2026-02-04 (+2d) | 2026-02-02 → 2026-02-04 (+2d) |  | 92d → 90d |  |
| CON-POW-1040 | Dominion Primary | 2026-02-03 → 2026-02-05 (+2d) | 2026-03-02 → 2026-03-04 (+2d) |  | 92d → 90d |  |
| CON-POW-1050 | Dominion Transformer | 2026-03-03 → 2026-03-05 (+2d) | 2026-03-09 → 2026-03-11 (+2d) |  | 92d → 90d |  |
| CON-POW-1060 | Dominion Secondary | 2026-03-10 → 2026-03-12 (+2d) | 2026-03-16 → 2026-03-18 (+2d) |  | 92d → 90d |  |
| CON-POW-1070 | Power Activation | 2026-03-17 → 2026-03-19 (+2d) | 2026-03-23 → 2026-03-25 (+2d) |  | 92d → 90d |  |

| ID | Task | Start | Finish | Duration | Complete | Total float | Predecessors | Other |
| --- | --- | --- | --- | --- | --- | --- | --- | --- |
| 2 | **Exterior Finishes** | 2025-11-11 → 2025-11-12 (+1d) | 2026-07-24 → 2026-07-29 (+5d) |  |  |  |  |  |
| CON-MB-L1-1250 | Exterior Sheathing - 1st Floor | 2025-11-11 → 2025-11-12 (+1d) | 2025-11-18 → 2025-11-19 (+1d) |  |  | 86d → 69d | CON-MB-L1-1090 SS+3d → CON-MB-L1-1090 |  |
| CON-MB-L2-1050 | Exterior Sheathing - 2nd Floor | 2025-12-11 → 2025-12-15 (+4d) | 2025-12-18 → 2025-12-22 (+4d) |  |  | 82d → 86d |  |  |
| CON-MB-L3-1050 | Exterior Sheathing - 3rd Floor | 2026-01-12 → 2026-01-20 (+8d) | 2026-01-19 → 2026-01-27 (+8d) |  |  |  |  |  |
| CON-MB-L4-1040 | Exterior Sheathing - 4th Floor | 2026-02-11 → 2026-02-19 (+8d) | 2026-02-18 → 2026-02-26 (+8d) |  |  | 79d → 72d |  |  |
| CON-MB-L5-1030 | Exterior Sheathing - 5th Floor | 2026-03-17 → 2026-03-25 (+8d) | 2026-03-24 → 2026-04-01 (+8d) |  |  |  |  |  |
| CON-MB-L1-1260 | Perimeter Waterproofing West Elevation | 2026-03-19 → 2026-03-27 (+8d) | 2026-03-24 → 2026-04-01 (+8d) |  |  |  |  |  |
| CON-MB-EXT-1000 | Brick West Elevation | 2026-03-25 → 2026-04-02 (+8d) | 2026-04-17 → 2026-04-27 (+10d) |  |  |  |  |  |
| CON-MB-L2-1280 | Perimeter Waterproofing North Elevation | 2026-03-25 → 2026-04-02 (+8d) | 2026-03-30 → 2026-04-07 (+8d) |  |  |  |  |  |
| CON-MB-L2-1290 | Perimeter Waterproofing East Elevation | 2026-03-31 → 2026-04-08 (+8d) | 2026-04-03 → 2026-04-13 (+10d) |  |  |  |  |  |
| CON-MB-L2-1300 | Perimeter Waterproofing South Elevation | 2026-04-06 → 2026-04-14 (+8d) | 2026-04-09 → 2026-04-17 (+8d) |  |  | 47d → 40d |  |  |
| CON-MB-EXT-1020 | Brick North Elevation | 2026-04-20 → 2026-04-28 (+8d) | 2026-05-13 → 2026-05-21 (+8d) |  |  |  |  |  |
| CON-MB-EXT-1040 | Stucco West Elevation | 2026-06-09 → 2026-04-28 (-42d) | 2026-06-16 → 2026-05-05 (-42d) |  |  | 0d → 16d | CON-MB-EXT-1030 SS+18d → CON-MB-EXT-1000, CON-MB-L1-1260 |  |
| CON-MB-EXT-1070 | Glass West Elevation | 2026-06-17 → 2026-05-06 (-42d) | 2026-06-25 → 2026-05-14 (-42d) |  |  | 3d → 33d |  |  |
| CON-MB-EXT-1090 | Glass North Elevation | 2026-06-26 → 2026-05-15 (-42d) | 2026-07-06 → 2026-05-25 (-42d) |  |  | 3d → 33d |  |  |
| CON-MB-EXT-1030 | Brick East Elevation | 2026-05-14 → 2026-05-22 (+8d) | 2026-06-08 → 2026-06-16 (+8d) |  |  |  |  |  |
| CON-MB-EXT-1060 | Stucco North Elevation | 2026-06-17 → 2026-05-22 (-26d) | 2026-06-24 → 2026-05-29 (-26d) |  |  | 0d → 4d | CON-MB-EXT-1040 → CON-MB-EXT-1040, CON-MB-EXT-1020, CON-MB-L2-1280 |  |
| CON-MB-EXT-1110 | Glass East Elevation | 2026-07-07 → 2026-05-26 (-42d) | 2026-07-15 → 2026-06-03 (-42d) |  |  | 3d → 33d |  |  |
| CON-MB-EXT-1080 | Stucco East Elevation | 2026-06-25 → 2026-06-01 (-24d) | 2026-07-02 → 2026-06-08 (-24d) |  |  | 0d → 4d | CON-MB-EXT-1060 → CON-MB-EXT-1060, CON-MB-L2-1290 |  |
| CON-MB-EXT-1140 | Glass South Elevation | 2026-07-16 → 2026-06-04 (-42d) | 2026-07-24 → 2026-06-12 (-42d) |  |  | 3d → 33d |  |  |
| CON-MB-EXT-1100 | Stucco South Elevation | 2026-07-03 → 2026-06-09 (-24d) | 2026-07-10 → 2026-06-16 (-24d) |  |  | 0d → 4d | CON-MB-EXT-1080 → CON-MB-EXT-1080, CON-MB-L2-1300 |  |
| CON-MB-EXT-1050 | Brick South Elevation | 2026-06-09 → 2026-06-17 (+8d) | 2026-07-02 → 2026-07-10 (+8d) |  |  | 5d → 0d |  |  |
| CON-MB-EXT-1130 | Storefront | 2026-07-03 → 2026-06-23 (-10d) | 2026-07-13 → 2026-07-20 (+7d) | 7d → 20d |  | 5d → 0d | CON-MB-EXT-1050 → CON-MB-EXT-1000, CON-MB-EXT-1020, CON-MB-EXT-1030, CON-MB-EXT-1040, CON-MB-EXT-1060, CON-MB-EXT-1080, CON-MB-EXT-1100, CON-MB-EXT-1050 FF+6d |  |
| CON-MB-EXT-1120 | Swing Doors/ Automatic Sliding Entrance | 2026-07-03 → 2026-07-13 (+10d) | 2026-07-08 → 2026-07-16 (+8d) |  |  | 15d → 9d |  |  |
| CON-MB-EXT-1150 | Canopies | 2026-07-14 → 2026-07-21 (+7d) | 2026-07-22 → 2026-07-29 (+7d) |  |  | 5d → 0d |  |  |
| 5 | **Roofing** | 2026-03-12 → 2026-03-20 (+8d) | 2026-04-01 → 2026-04-09 (+8d) |  |  |  |  |  |
| CON-MB-L5-1020 | Roof Insulation & TPO | 2026-03-12 → 2026-03-20 (+8d) | 2026-04-01 → 2026-04-09 (+8d) |  |  | 0d → 18d |  |  |
| 3 | **Office Building** |  | 2025-12-22 → 2025-12-25 (+3d) |  |  |  |  |  |
| 1 | **Structure - Office** |  | 2025-10-16 → 2025-11-04 (+19d) |  |  |  |  |  |
| CON-OFF-1030 | Interior/Exterior Framing - Office Building | 2025-10-01 → 2025-10-10 A (+9d) | 2025-10-10 → 2025-10-22 A (+12d) |  | 0% → 100% | 31d → none |  |  |
| CON-OFF-1070 | Framing Inspection - Office Building | 2025-10-13 → 2025-10-22 A (+9d) | 2025-10-13 → 2025-10-22 A (+9d) |  | 0% → 100% | 31d → none |  |  |
| CON-OFF-1050 | Roof Decking - Office Building | 2025-10-14 → 2025-10-27 A (+13d) | 2025-10-14 → 2025-10-27 A (+13d) |  | 0% → 100% | 31d → none |  |  |
| CON-OFF-1020 | Foundation Waterproofing - Office Building | 2025-10-15 → 2025-10-31 A (+16d) | 2025-10-16 → 2025-11-04 (+19d) |  |  | 31d → 18d | CON-OFF-1000, PROC-1010 → CON-OFF-1000, PROC-1010 SS |  |
| 2 | **Interior Finishes - Office** | 2025-10-17 → 2025-11-05 (+19d) | 2025-12-22 → 2025-12-25 (+3d) |  |  |  |  |  |
| CON-OFF-1080 | MEP Rough In - Office Building | 2025-10-17 → 2025-11-05 (+19d) | 2025-10-21 → 2025-11-07 (+17d) |  |  | 31d → 18d |  |  |
| CON-OFF-1090 | MEP Inspections - Office Building | 2025-10-22 → 2025-11-10 (+19d) | 2025-10-22 → 2025-11-10 (+19d) |  |  | 31d → 18d |  |  |
| CON-OFF-1100 | Hang/Finish Drywall - Office Building | 2025-10-23 → 2025-11-11 (+19d) | 2025-10-27 → 2025-11-13 (+17d) |  |  | 31d → 18d |  |  |
| CON-OFF-1110 | Doors, Frames & Hardware - Office Building | 2025-10-28 → 2025-11-14 (+17d) | 2025-10-29 → 2025-11-17 (+19d) |  |  | 31d → 18d |  |  |
| CON-OFF-1120 | Prep/Paint Walls - Office Building | 2025-10-30 → 2025-11-18 (+19d) | 2025-10-31 → 2025-11-19 (+19d) |  |  | 31d → 18d |  |  |
| CON-OFF-1130 | Flooring - Office Building | 2025-11-03 → 2025-11-20 (+17d) | 2025-11-07 → 2025-11-26 (+19d) |  |  | 31d → 18d |  |  |
| CON-OFF-1140 | MEP Finishes, Fixtures, Accessories - Office Building | 2025-11-10 → 2025-11-27 (+17d) | 2025-11-11 → 2025-11-28 (+17d) |  |  | 31d → 18d |  |  |
| CON-OFF-1150 | Millwork - Office Building | 2025-11-10 → 2025-11-27 (+17d) | 2025-11-11 → 2025-11-28 (+17d) |  |  | 35d → 22d |  | constraint start on or after 2025-11-03 → none |
| CON-OFF-1220 | Final Cleaning - Office Building | 2025-12-22 → 2025-12-25 (+3d) | 2025-12-22 → 2025-12-25 (+3d) |  |  | 7d → 4d |  |  |
| 3 | **Exterior Finishes - Office** | 2025-10-15 → 2025-10-29 (+14d) | 2025-12-19 → 2025-12-24 (+5d) |  |  |  |  |  |
| CON-OFF-1040 | Roofing - Office Building | 2025-10-15 → 2025-10-29 A (+14d) | 2025-10-16 → 2025-10-29 A (+13d) |  | 0% → 100% | 31d → none |  |  |
| CON-OFF-1060 | Exterior Sheathing/Waterproofing - Office Building | 2025-10-15 → 2025-11-03 (+19d) | 2025-10-17 → 2025-11-05 (+19d) |  |  | 43d → 30d |  |  |
| CON-OFF-1170 | Brick Facade - Office Building | 2025-10-20 → 2025-11-06 (+17d) | 2025-10-24 → 2025-11-12 (+19d) |  |  | 43d → 30d |  |  |
| CON-OFF-1160 | Store Front & Windows - Office Building | 2025-12-17 → 2025-12-22 (+5d) | 2025-12-19 → 2025-12-24 (+5d) |  |  | 3d → 0d |  | constraint start on or after 2025-10-22 → none |
| 4 | **Final Inspections & Close Out** | 2025-12-22 → 2025-12-25 (+3d) |  |  |  |  |  |  |
| 1 | **Office Building** | 2025-12-22 → 2025-12-25 (+3d) | 2026-01-20 → 2026-01-23 (+3d) |  |  |  |  |  |
| CLO-OFF-1030 | Final Building Inspections - Office Building | 2025-12-22 → 2025-12-25 (+3d) | 2025-12-26 → 2025-12-31 (+5d) |  |  | 3d → 0d |  |  |
| CLO-OFF-1000 | Office Temporary Occupancy | 2025-12-29 → 2026-01-01 (+3d) | 2025-12-29 → 2026-01-01 (+3d) |  |  | 3d → 0d |  |  |
| CLO-OFF-1040 | Punch List Walk - Office Building | 2025-12-29 → 2026-01-01 (+3d) | 2025-12-30 → 2026-01-02 (+3d) |  |  | 9d → 6d |  |  |
| CLO-OFF-1050 | Punch List Corrections - Office Building | 2025-12-31 → 2026-01-05 (+5d) | 2026-01-20 → 2026-01-23 (+3d) |  |  | 9d → 6d |  |  |
| CLO-MB-1040 | Punch List Walk - Main Building |  |  |  |  |  | SITE-MB-1140, CON-MB-L1-1220, CON-MB-L1-1230, CON-MB-L1-1240, SITE-MB-1090, CON-STAIR-1040, CON-MB-L3-1160, CON-MB-L3-1170, CON-MB-L3-1180, CON-MB-L4-1130, CON-MB-L4-1120, CON-MB-L4-1110, CON-MB-L4-1080, CON-MB-L3-1100, CON-MB-L2-1120, CON-MB-L1-1170, CON-MB-L5-1090, CON-MB-2010 → SITE-MB-1140, CON-MB-L1-1220, CON-MB-L1-1230, CON-MB-L1-1240, SITE-MB-1090, CON-STAIR-1040, CON-MB-L3-1160, CON-MB-L3-1170, CON-MB-L3-1180, CON-MB-L4-1130, CON-MB-L4-1120, CON-MB-L4-1110, CON-MB-L4-1080, CON-MB-L3-1100, CON-MB-L2-1120, CON-MB-L1-1170, CON-MB-L5-1090, CON-MB-2010, CON-MB-L2-1080 |  |

## Version 3 (data date 2025-12-31, saved 2026-01-12, file update_3.xer)

Note of the change: Add all project schedule files to buckets - 13 projects, MPP+XER, baseline+updates

Last finish 2026-09-15 → 2026-09-11 (-4d). Complete tasks 34 → 48.

Added:

| ID | Task | Duration | Start | Finish | Predecessors |
| --- | --- | --- | --- | --- | --- |
| SITE-1030 | Stormwater Management Ponds Phase II | 10d | 2026-03-23 | 2026-04-03 | SITE-MB-1070, CON-MB-L5-1100 |
| CON-MB-2020 | Winterization | 5d | 2025-12-22 A | 2025-12-29 A | MIL-1000 SS |
| CON-MB-L1-1280 | Perimeter Waterproofing - 1st Floor | 3d | 2026-02-04 | 2026-02-06 | CON-MB-L2-1050, CON-MB-1040 |
| CON-MB-L5-1100 | Brick Facade - 1st Floor | 30d | 2026-02-09 | 2026-03-20 | CON-MB-L1-1280 |
| CON-MB-L2-1310 | Perimeter Waterproofing West/North Elevations (5th Floor) | 2d | 2026-04-17 | 2026-04-20 | CON-MB-L5-1030 |

Changed:

| ID | Task | Start | Finish | Duration | Complete | Total float | Predecessors | Other |
| --- | --- | --- | --- | --- | --- | --- | --- | --- |
| 1 | **Public Storage Fairfax VA** |  | 2026-09-15 → 2026-09-11 (-4d) |  |  |  |  |  |
| 3 | **Milestones** |  | 2026-09-15 → 2026-09-11 (-4d) |  |  |  |  |  |
| MIL-1010 | Weathertight - Main Building | 2026-04-09 → 2026-04-16 (+7d) | 2026-04-09 → 2026-04-16 (+7d) |  |  | 47d → 42d |  |  |
| MIL-1020 | Permanent Power | 2026-03-26 → 2026-05-06 (+41d) | 2026-03-26 → 2026-05-06 (+41d) |  |  | 90d → 61d |  |  |
| MIL-1040 | Final Completion - Main Building | 2026-09-09 → 2026-09-11 (+2d) | 2026-09-15 → 2026-09-11 (-4d) | 5d → 0d |  | 0d → 8d |  | constraint none → finish on or before 2026-09-19 |
| 1 | **Preconstruction** |  | 2026-02-13 → 2026-03-11 (+26d) |  |  |  |  |  |
| 1 | **Procurement** |  | 2026-02-13 → 2026-03-11 (+26d) |  |  |  |  |  |
| PROC-1010 | Contractor Procurement |  | 2025-11-07 A |  | 92% → 100% | 0d → none |  |  |
| 2 | **Long Lead Items** |  | 2026-02-13 → 2026-03-11 (+26d) |  |  |  |  |  |
| PROC-1080 | Glass Field Measurement and Fabrication - Office |  | 2025-12-19 → 2025-12-22 A (+3d) |  | 22% → 100% | 0d → none |  |  |
| PROC-1130 | HVAC Equipment Fabrication |  | 2026-01-16 → 2026-02-11 (+26d) |  | 29% → 57% | 47d → 29d |  |  |
| PROC-1090 | Fire Pump Submittal |  | 2025-12-01 → 2026-01-01 (+31d) |  | 60% → 98% | 142d → 129d |  |  |
| PROC-1140 | Ferguson Tank Fabrication |  | 2025-11-21 A |  | 33% → 100% | 68d → none |  |  |
| PROC-1100 | Elevator Fabrication | 2025-11-10 → 2026-01-01 (+52d) | 2026-02-13 → 2026-03-11 (+26d) | 70d → 50d |  | 58d → 40d |  |  |
| PROC-1150 | Fire Pump Fabrication | 2025-12-02 → 2026-01-02 (+31d) | 2026-01-12 → 2026-01-29 (+17d) | 30d → 20d |  | 142d → 129d |  |  |
| 2 | **Construction** |  | 2026-08-14 → 2026-08-19 (+5d) |  |  |  |  |  |
| 2 | **Site Work** |  | 2026-08-14 → 2026-08-19 (+5d) |  |  |  |  |  |
| SITE-1010 | Stormwater Management Ponds Phase I | 2025-11-24 → 2025-11-03 A (-21d) | 2025-12-05 → 2025-11-21 A (-14d) |  | 0% → 100% | 68d → none |  | was named Stormwater Management Ponds |
| 1 | **Site Work - Main Building** |  | 2026-08-14 → 2026-08-19 (+5d) |  |  |  |  |  |
| SITE-MB-1050 | Storm Structures and Pipe - Main Building | 2025-11-03 A | 2025-12-12 → 2026-01-14 (+33d) |  | 0% → 67% | 53d → 114d |  |  |
| SITE-MB-1070 | Fine Grading - Main Building | 2025-12-29 → 2026-01-01 (+3d) | 2026-01-16 → 2026-01-21 (+5d) |  |  | 53d → 31d | SITE-1010, SITE-MB-1060 → SITE-1010 |  |
| SITE-MB-1060 | Sanitary Sewer - Main Building | 2025-12-15 → 2026-04-01 (+107d) | 2025-12-26 → 2026-04-14 (+109d) |  |  | 53d → 60d |  | constraint none → start on or after 2026-04-01 |
| SITE-MB-1100 | Curb and Gutter - Main Building | 2026-05-22 → 2026-05-08 (-14d) | 2026-06-01 → 2026-05-18 (-14d) |  |  | 24d → 36d |  |  |
| SITE-MB-1120 | Stone Base Parking Lot - Main Building | 2026-06-02 → 2026-05-19 (-14d) | 2026-06-15 → 2026-06-01 (-14d) |  |  | 24d → 36d |  |  |
| SITE-MB-1080 | Sidewalk - Main Building | 2026-07-13 → 2026-07-08 (-5d) | 2026-07-17 → 2026-07-21 (+4d) | 5d → 10d |  |  |  |  |
| SITE-MB-1130 | Paving (Includes SHA Work) - Main Building | 2026-07-20 → 2026-07-22 (+2d) | 2026-07-31 → 2026-08-05 (+5d) | 10d → 11d |  |  |  |  |
| SITE-MB-1090 | Landscape - Main Building | 2026-08-03 → 2026-08-06 (+3d) | 2026-08-14 → 2026-08-19 (+5d) |  |  |  |  |  |
| SITE-MB-1140 | Line Striping - Main Building | 2026-08-03 → 2026-08-06 (+3d) | 2026-08-04 → 2026-08-07 (+3d) |  |  |  |  |  |
| 3 | **Site Work - Office** |  | 2025-12-03 → 2026-01-26 (+54d) |  |  |  |  |  |
| SITE-OFF-1030 | Domestic & Fire Water Online - Office Building | 2025-11-10 → 2026-01-01 (+52d) | 2025-11-21 → 2026-01-14 (+54d) |  |  | 22d → 148d |  |  |
| SITE-OFF-1060 | Fine Grading - Office Building | 2025-11-10 → 2026-01-01 (+52d) | 2025-11-17 → 2026-01-08 (+52d) |  |  | 26d → 152d |  |  |
| SITE-OFF-1080 | Landscape - Office Building | 2025-11-18 → 2026-01-09 (+52d) | 2025-11-18 → 2026-01-09 (+52d) |  |  | 37d → 163d |  |  |
| SITE-OFF-1090 | Curb and Gutter - Office Building | 2025-11-24 → 2026-01-15 (+52d) | 2025-11-24 → 2026-01-15 (+52d) |  |  | 22d → 148d |  |  |
| SITE-OFF-1070 | Sidewalk - Office Building | 2025-11-25 → 2026-01-16 (+52d) | 2025-11-26 → 2026-01-19 (+54d) |  |  | 22d → 148d |  |  |
| SITE-OFF-1110 | Stone Base Parking Lot - Office Building | 2025-11-25 → 2026-01-16 (+52d) | 2025-11-25 → 2026-01-16 (+52d) |  |  | 23d → 149d |  |  |
| SITE-OFF-1120 | Paving - Office Building | 2025-11-27 → 2026-01-20 (+54d) | 2025-11-28 → 2026-01-21 (+54d) |  |  | 22d → 148d |  |  |
| SITE-OFF-1100 | Misc Exterior Items (Vehicle Gate Operator) - Office Building | 2025-12-01 → 2026-01-22 (+52d) | 2025-12-03 → 2026-01-26 (+54d) |  |  | 26d → 152d |  |  |
| SITE-OFF-1130 | Line Striping - Office Building | 2025-12-01 → 2026-01-22 (+52d) | 2025-12-01 → 2026-01-22 (+52d) |  |  | 22d → 148d |  |  |
| 1 | **Main Building** |  | 2026-07-29 → 2026-07-13 (-16d) |  |  |  |  |  |
| 1 | **Substructure** |  | 2025-11-26 → 2026-01-26 (+61d) |  |  |  |  |  |
| CON-MB-1040 | Foundation Waterproofing | 2025-11-20 → 2026-01-20 (+61d) | 2025-11-26 → 2026-01-26 (+61d) |  |  | 69d → 10d |  |  |
| 9 | **Superstructure** |  | 2026-04-02 → 2026-04-17 (+15d) |  |  |  |  |  |
| 1 | **First Floor Superstructure** |  | 2025-11-11 → 2026-01-09 (+59d) |  |  |  |  |  |
| CON-MB-L1-1090 | Exterior & Interior Framing - 1st Floor |  | 2025-11-11 → 2026-01-09 (+59d) |  | 40% → 30% | 69d → 10d |  |  |
| CON-MB-L1-1070 | Prep/Pour SOD - 2nd Floor |  | 2025-11-03 → 2025-11-01 A (-2d) |  | 88% → 100% | 0d → none |  |  |
| 2 | **Second Floor Superstructure** |  | 2025-12-23 → 2026-02-04 (+43d) |  |  |  |  |  |
| CON-MB-L2-1000 | Structural Steel Columns & Beams - 2nd Floor | 2025-11-04 A | 2025-11-21 A |  | 0% → 100% | 0d → none |  |  |
| CON-MB-L2-1010 | Metal Decking 3rd Floor | 2025-11-24 A | 2025-11-27 A |  | 0% → 100% | 0d → none |  |  |
| CON-MB-L2-1020 | Prep/Pour SOD - 3rd floor | 2025-11-28 A | 2025-12-09 → 2025-12-04 A (-5d) |  | 0% → 100% | 0d → none |  |  |
| CON-MB-L2-1040 | Exterior & Interior Framing - 2nd Floor | 2025-12-10 → 2026-01-22 (+43d) | 2025-12-23 → 2026-02-04 (+43d) |  |  | 60d → 4d | CON-MB-L2-1020, CON-MB-1040 → CON-MB-L2-1020, CON-MB-L2-1090 |  |
| 3 | **Third Floor Superstructure** | 2025-12-10 → 2025-12-01 (-9d) | 2026-01-28 → 2026-02-16 (+19d) |  |  |  |  |  |
| CON-MB-L3-1000 | Structural Steel Columns & Beams - 3rd Floor | 2025-12-10 → 2025-12-01 A (-9d) | 2025-12-29 → 2025-12-19 A (-10d) |  | 0% → 100% | 0d → none |  |  |
| CON-MB-L3-1010 | Metal Decking - 4th Floor | 2025-12-30 → 2025-12-19 A (-11d) | 2026-01-02 → 2025-12-23 A (-10d) |  | 0% → 100% | 0d → none |  |  |
| CON-MB-L3-1020 | Prep & Pour SOD - 4th Floor | 2026-01-05 → 2025-12-22 A (-14d) | 2026-01-14 → 2026-01-05 (-9d) |  | 0% → 62% |  |  |  |
| CON-MB-L3-1040 | Exterior & Interior Framing - 3rd Floor | 2026-01-15 → 2026-02-03 (+19d) | 2026-01-28 → 2026-02-16 (+19d) |  |  | 63d → 50d | CON-MB-L3-1020 → CON-MB-L3-1020, CON-MB-L3-1060 |  |
| 6 | **Fourth Floor Superstructure** | 2026-01-15 → 2026-01-06 (-9d) | 2026-02-27 → 2026-03-02 (+3d) |  |  |  |  |  |
| CON-MB-L4-1000 | Structural Steel Columns & Beams - 4th Floor | 2026-01-15 → 2026-01-06 (-9d) | 2026-02-03 → 2026-01-23 (-11d) |  |  |  |  |  |
| CON-MB-L4-1010 | Metal Decking - 5th Floor | 2026-02-04 → 2026-01-26 (-9d) | 2026-02-09 → 2026-01-29 (-11d) |  |  |  |  |  |
| CON-MB-L4-1020 | Prep & Pour SOD - 5th Floor | 2026-02-10 → 2026-01-30 (-11d) | 2026-02-13 → 2026-02-04 (-9d) |  |  |  |  |  |
| CON-MB-L4-1030 | Exterior & Interior Framing - 4th Floor | 2026-02-16 → 2026-02-17 (+1d) | 2026-02-27 → 2026-03-02 (+3d) |  |  | 57d → 0d | CON-MB-L4-1020 → CON-MB-L4-1020, CON-MB-L4-1050 |  |
| 4 | **Fifth Floor Superstructure** | 2026-02-16 → 2026-02-05 (-11d) | 2026-04-02 → 2026-04-17 (+15d) |  |  |  |  |  |
| CON-MB-L5-1000 | Structural Steel Columns & Beams - 5th Floor | 2026-02-16 → 2026-02-05 (-11d) | 2026-03-05 → 2026-02-24 (-9d) |  |  | 0d → 9d |  |  |
| CON-MB-L5-1010 | Framing & Metal Decking - Roof | 2026-03-06 → 2026-02-25 (-9d) | 2026-03-19 → 2026-03-10 (-9d) |  |  | 0d → 9d |  |  |
| CON-MB-L5-1050 | Exterior & Interior Framing - 5th Floor | 2026-03-20 → 2026-04-06 (+17d) | 2026-04-02 → 2026-04-17 (+15d) |  |  | 0d → 9d | CON-MB-L5-1000, CON-MB-L5-1010 → CON-MB-L5-1000, CON-MB-L5-1010, CON-MB-L5-1040 SS+3d |  |
| 3 | **Interior Finishes** |  | 2026-07-14 → 2026-06-30 (-14d) |  |  |  |  |  |
| CON-MB-2000 | Grind/Seal Floors (Full Building) | 2026-06-22 → 2026-06-05 (-17d) | 2026-07-03 → 2026-06-18 (-15d) |  |  | 18d → 29d |  |  |
| CON-MB-2010 | Final Cleaning (Full Building) | 2026-06-24 → 2026-06-09 (-15d) | 2026-07-14 → 2026-06-29 (-15d) |  |  | 23d → 37d |  |  |
| 6 | **Elevator** |  | 2026-07-09 → 2026-06-30 (-9d) |  |  |  |  |  |
| CON-ELEV-1010 | Elevator 1/2 CMU Shaft | 2025-11-03 → 2025-10-01 A (-33d) | 2025-11-20 → 2025-10-17 A (-34d) |  | 0% → 100% | 119d → none |  |  |
| CON-ELEV-1020 | Elevator Install | 2026-04-10 → 2026-04-01 (-9d) | 2026-07-09 → 2026-06-30 (-9d) |  |  | 19d → 26d |  |  |

| ID | Task | Start | Finish | Complete | Total float | Predecessors | Other |
| --- | --- | --- | --- | --- | --- | --- | --- |
| 8 | **Stair Shafts** |  | 2025-11-20 → 2026-01-13 (+54d) |  |  |  |  |
| CON-STAIR-1020 | Stair Stringers and Pans | 2025-11-03 → 2025-12-29 A (+56d) | 2025-11-14 → 2026-01-07 (+54d) | 0% → 50% | 181d → 143d |  |  |
| CON-STAIR-1030 | Doors & HW - Stairs | 2025-11-17 → 2026-01-08 (+52d) | 2025-11-18 → 2026-01-09 (+52d) |  | 181d → 143d |  |  |
| CON-STAIR-1040 | Prep/Paint - Stairs | 2025-11-19 → 2026-01-12 (+54d) | 2025-11-20 → 2026-01-13 (+54d) |  | 191d → 161d |  |  |
| 1 | **First Floor Interior Finishes** | 2026-01-15 → 2025-12-12 (-34d) | 2026-04-29 → 2026-05-06 (+7d) |  |  |  |  |
| CON-MB-L1-1130 | Fireproofing Structural Steel - 1st Floor | 2026-01-15 → 2025-12-12 A (-34d) | 2026-01-26 → 2026-01-09 (-17d) | 0% → 12% | 28d → 2d | CON-MB-L3-1020 → CON-MB-L1-1070, CON-MB-2020 | was named Fire Proofing Structural Steel - 1st Floor |
| CON-MB-L1-1140 | OH & Wall Plumbing Rough In - 1st Floor | 2026-01-27 → 2026-01-12 (-15d) | 2026-01-29 → 2026-01-14 (-15d) |  | 57d → 68d |  |  |
| CON-MB-L1-1150 | Electric & Low Voltage OH & Wall Rough In - 1st Floor | 2026-01-27 → 2026-01-12 (-15d) | 2026-02-09 → 2026-01-23 (-17d) |  | 50d → 61d |  |  |
| CON-MB-L1-1170 | Sprinkler Rough In - 1st Floor | 2026-01-27 → 2026-01-12 (-15d) | 2026-02-09 → 2026-01-23 (-17d) |  | 132d → 143d | CON-MB-L1-1130, PROC-1150, CON-MB-L1-1090 → CON-MB-L1-1130, CON-MB-L1-1090, PROC-1010 |  |
| CON-MB-L1-1160 | HVAC Rough In - 1st Floor | 2026-01-27 → 2026-02-12 (+16d) | 2026-01-29 → 2026-02-16 (+18d) |  | 57d → 45d |  |  |
| CON-MB-L1-1180 | OH & Wall MEP Inspections - 1st Floor | 2026-02-10 → 2026-02-17 (+7d) | 2026-02-11 → 2026-02-18 (+7d) |  | 50d → 45d |  |  |
| CON-MB-L1-1270 | Janus Wall Panels - 1st Floor | 2026-03-16 → 2026-03-13 (-3d) | 2026-04-03 → 2026-04-02 (-1d) |  | 28d → 29d |  |  |
| CON-MB-L1-1190 | Hang & Finish Drywall - 1st Floor | 2026-04-10 → 2026-04-17 (+7d) | 2026-04-20 → 2026-04-27 (+7d) |  | 77d → 80d |  |  |
| CON-MB-L1-1200 | Doors & HW - 1st Floor | 2026-04-21 → 2026-04-28 (+7d) | 2026-04-22 → 2026-04-29 (+7d) |  | 104d → 102d |  |  |
| CON-MB-L1-1210 | Prep/Paint Walls & Ceilings - 1st Floor | 2026-04-21 → 2026-04-28 (+7d) | 2026-04-22 → 2026-04-29 (+7d) |  | 77d → 80d |  |  |
| CON-MB-L1-1220 | Plumbing Fixtures - 1st Floor | 2026-04-23 → 2026-04-30 (+7d) | 2026-04-24 → 2026-05-01 (+7d) |  | 80d → 83d |  |  |
| CON-MB-L1-1230 | Diffusers - 1st Floor | 2026-04-23 → 2026-04-30 (+7d) | 2026-04-29 → 2026-05-06 (+7d) |  | 77d → 80d |  |  |
| CON-MB-L1-1240 | Light Fixtures - 1st Floor | 2026-04-23 → 2026-04-30 (+7d) | 2026-04-29 → 2026-05-06 (+7d) |  | 77d → 80d |  |  |
| 2 | **Second Floor Interior Finishes** | 2025-12-24 → 2026-01-12 (+19d) | 2026-03-13 → 2026-03-12 (-1d) |  |  |  |  |
| CON-MB-L2-1090 | Fireproofing Structural Steel - 2nd Floor | 2026-01-27 → 2026-01-12 (-15d) | 2026-02-05 → 2026-01-21 (-15d) |  | 28d → 2d | CON-MB-L1-1130 → CON-MB-L1-1130, CON-MB-L2-1020 |  |
| CON-MB-L2-1060 | Doors & HW - 2nd Floor | 2025-12-24 → 2026-02-05 (+43d) | 2025-12-25 → 2026-02-06 (+43d) |  | 164d → 141d |  |  |
| CON-MB-L2-1100 | Electric OH & Wall Rough In - 2nd Floor | 2026-02-06 → 2026-02-05 (-1d) | 2026-02-19 → 2026-02-18 (-1d) |  | 28d → 29d |  |  |
| CON-MB-L2-1120 | Sprinkler Rough In - 2nd Floor | 2026-02-06 → 2026-02-05 (-1d) | 2026-02-19 → 2026-02-18 (-1d) |  | 124d → 125d |  |  |
| CON-MB-L2-1080 | Prep/Paint Walls - 2nd Floor | 2025-12-26 → 2026-02-09 (+45d) | 2025-12-29 → 2026-02-10 (+43d) |  | 164d → 141d |  |  |
| CON-MB-L2-1110 | HVAC Rough In - 2nd Floor | 2026-02-06 → 2026-02-12 (+6d) | 2026-02-12 → 2026-02-18 (+6d) |  | 33d → 29d |  |  |
| CON-MB-L2-1140 | OH & Wall MEP Inspections - 2nd Floor | 2026-02-20 → 2026-02-19 (-1d) | 2026-02-20 → 2026-02-19 (-1d) |  | 28d → 29d |  |  |
| CON-MB-L2-1070 | Janus Wall Panels - 2nd Floor | 2026-02-23 → 2026-02-20 (-3d) | 2026-03-13 → 2026-03-12 (-1d) |  | 28d → 29d |  |  |
| CON-MB-L2-1150 | Diffusers - 2nd Floor | 2026-02-23 → 2026-02-20 (-3d) | 2026-02-27 → 2026-02-26 (-1d) |  | 142d → 146d |  |  |
| CON-MB-L2-1160 | Light Fixtures - 2nd Floor | 2026-02-23 → 2026-02-20 (-3d) | 2026-02-27 → 2026-02-26 (-1d) |  | 142d → 146d |  |  |
| 3 | **Third Floor Interior Finishes** | 2026-02-06 → 2026-01-22 (-15d) | 2026-04-30 → 2026-05-07 (+7d) |  |  |  |  |
| CON-MB-L3-1060 | Fire Proofing Structural Steel - 3rd Floor | 2026-02-06 → 2026-01-22 (-15d) | 2026-02-17 → 2026-02-02 (-15d) |  | 49d → 2d | CON-MB-L2-1090 → CON-MB-L2-1090, CON-MB-L3-1020, CON-MB-L3-1000 |  |
| CON-MB-L3-1070 | OH & Wall Plumbing Rough In - 3rd Floor | 2026-02-18 → 2026-02-17 (-1d) | 2026-02-20 → 2026-02-19 (-1d) |  | 56d → 57d |  |  |
| CON-MB-L3-1080 | Electric & Low Voltage OH & Wall Rough In - 3rd Floor | 2026-02-18 → 2026-02-17 (-1d) | 2026-03-03 → 2026-03-02 (-1d) |  | 49d → 50d |  |  |
| CON-MB-L3-1090 | HVAC Rough In - 3rd Floor | 2026-02-18 → 2026-02-17 (-1d) | 2026-02-24 → 2026-02-23 (-1d) |  | 54d → 55d |  |  |
| CON-MB-L3-1100 | Sprinkler Rough In - 3rd Floor | 2026-02-18 → 2026-02-17 (-1d) | 2026-03-03 → 2026-03-02 (-1d) |  | 116d → 117d |  |  |
| CON-MB-L3-1120 | OH & Wall MEP Inspections - 3rd Floor | 2026-03-04 → 2026-03-03 (-1d) | 2026-03-05 → 2026-03-04 (-1d) |  | 49d → 50d |  |  |
| CON-MB-L3-1150 | Janus Wall Panels - 3rd Floor | 2026-04-06 → 2026-04-03 (-3d) | 2026-04-24 → 2026-04-23 (-1d) |  | 28d → 29d |  |  |
| CON-MB-L3-1130 | Hang/Finish Drywall - 3rd Floor | 2026-04-10 → 2026-04-17 (+7d) | 2026-04-20 → 2026-04-27 (+7d) |  | 74d → 69d |  |  |
| CON-MB-L3-1140 | Prep/Paint Walls & Ceilings - 3rd Floor | 2026-04-21 → 2026-04-28 (+7d) | 2026-04-23 → 2026-04-30 (+7d) |  | 74d → 69d |  |  |
| CON-MB-L3-1160 | Plumbing Fixtures - 3rd Floor | 2026-04-24 → 2026-05-01 (+7d) | 2026-04-29 → 2026-05-06 (+7d) |  | 75d → 70d |  |  |
| CON-MB-L3-1170 | Diffusers - 3rd Floor | 2026-04-24 → 2026-05-01 (+7d) | 2026-04-30 → 2026-05-07 (+7d) |  | 74d → 69d |  |  |
| CON-MB-L3-1180 | Light Fixtures - 3rd Floor | 2026-04-24 → 2026-05-01 (+7d) | 2026-04-30 → 2026-05-07 (+7d) |  | 74d → 69d |  |  |
| 4 | **Fourth Floor Interior Finishes** | 2026-04-10 → 2026-02-05 (-64d) | 2026-05-29 → 2026-05-14 (-15d) |  |  |  |  |
| CON-MB-L4-1050 | Fire Proofing Structural Steel - 4th Floor | 2026-04-10 → 2026-02-05 (-64d) | 2026-04-21 → 2026-02-16 (-64d) |  | 18d → 0d | CON-MB-L3-1060, CON-MB-L5-1020 → CON-MB-L3-1060, CON-MB-L4-1020, CON-MB-L3-1020 |  |
| CON-MB-L4-1060 | Electric OH & Wall Rough In - 4th Floor | 2026-04-24 → 2026-03-03 (-52d) | 2026-05-07 → 2026-03-16 (-52d) |  | 18d → 56d |  |  |
| CON-MB-L4-1070 | HVAC Rough In - 4th Floor | 2026-04-24 → 2026-03-03 (-52d) | 2026-04-30 → 2026-03-09 (-52d) |  | 23d → 61d |  |  |
| CON-MB-L4-1080 | Sprinkler Rough In - 4th Floor | 2026-04-24 → 2026-03-03 (-52d) | 2026-05-07 → 2026-03-16 (-52d) |  | 69d → 107d |  |  |
| CON-MB-L4-1100 | OH & Wall MEP Inspections - 4th Floor | 2026-05-08 → 2026-03-17 (-52d) | 2026-05-08 → 2026-03-17 (-52d) |  | 18d → 56d |  |  |
| CON-MB-L4-1110 | Prep/Paint Walls - 4th Floor | 2026-05-11 → 2026-03-18 (-54d) | 2026-05-12 → 2026-03-19 (-54d) |  | 66d → 104d |  |  |
| CON-MB-L4-1120 | Diffusers - 4th Floor | 2026-05-11 → 2026-03-18 (-54d) | 2026-05-15 → 2026-03-24 (-52d) |  | 63d → 101d |  |  |
| CON-MB-L4-1130 | Light Fixtures - 4th Floor | 2026-05-11 → 2026-03-18 (-54d) | 2026-05-15 → 2026-03-24 (-52d) |  | 63d → 101d |  |  |
| CON-MB-L4-1140 | Janus Wall Panels - 4th Floor | 2026-05-11 → 2026-04-24 (-17d) | 2026-05-29 → 2026-05-14 (-15d) |  | 18d → 29d |  |  |
| 5 | **Fifth Floor Interior Finishes** | 2026-04-22 → 2026-04-01 (-21d) | 2026-06-19 → 2026-06-04 (-15d) |  |  |  |  |
| CON-MB-L5-1040 | Fire Proofing Structural Steel - 5th Floor | 2026-04-22 → 2026-04-01 (-21d) | 2026-05-01 → 2026-04-10 (-21d) |  | 20d → 9d | CON-MB-L5-1000, CON-MB-L4-1020, CON-MB-L4-1050 → CON-MB-L5-1000, CON-MB-L4-1020, CON-MB-L4-1050, CON-MB-L5-1020 |  |
| CON-MB-L5-1060 | Electric & Low Voltage OH & Wall Rough In - 5th Floor | 2026-05-04 → 2026-04-20 (-14d) | 2026-05-15 → 2026-05-01 (-14d) |  | 20d → 30d |  |  |
| CON-MB-L5-1070 | OH & Wall Plumbing Rough In - 5th Floor | 2026-05-04 → 2026-04-20 (-14d) | 2026-05-06 → 2026-04-22 (-14d) |  | 27d → 37d |  |  |
| CON-MB-L5-1080 | HVAC Rough In - 5th Floor | 2026-05-04 → 2026-04-20 (-14d) | 2026-05-08 → 2026-04-24 (-14d) |  | 25d → 35d |  |  |
| CON-MB-L5-1090 | Sprinkler Rough In - 5th Floor | 2026-05-04 → 2026-04-20 (-14d) | 2026-05-15 → 2026-05-01 (-14d) |  | 63d → 73d |  |  |
| CON-MB-L5-1110 | OH & Wall MEP Inspections - 5th Floor | 2026-05-18 → 2026-05-04 (-14d) | 2026-05-18 → 2026-05-04 (-14d) |  | 20d → 30d |  |  |
| CON-MB-L5-1120 | Hang/Finish Drywall - 5th Floor | 2026-05-19 → 2026-05-05 (-14d) | 2026-05-27 → 2026-05-13 (-14d) |  | 20d → 30d |  |  |
| CON-MB-L5-1130 | Prep/Paint Walls - 5th Floor | 2026-05-28 → 2026-05-14 (-14d) | 2026-05-29 → 2026-05-15 (-14d) |  | 73d → 86d |  |  |
| CON-MB-L5-1170 | Janus Wall Panels - 5th Floor | 2026-06-01 → 2026-05-15 (-17d) | 2026-06-19 → 2026-06-04 (-15d) |  | 18d → 29d |  |  |
| CON-MB-L5-1140 | Plumbing Fixtures - 5th Floor | 2026-06-01 → 2026-05-18 (-14d) | 2026-06-04 → 2026-05-21 (-14d) |  | 73d → 86d |  |  |
| CON-MB-L5-1150 | Diffusers - 5th Floor | 2026-06-01 → 2026-05-18 (-14d) | 2026-06-01 → 2026-05-18 (-14d) |  | 76d → 89d |  |  |
| CON-MB-L5-1160 | Light Fixtures - 5th Floor | 2026-06-01 → 2026-05-18 (-14d) | 2026-06-01 → 2026-05-18 (-14d) |  | 76d → 89d |  |  |
| 7 | **Switchgear Room** | 2025-12-10 → 2026-01-20 (+41d) | 2026-03-25 → 2026-05-05 (+41d) |  |  |  |  |
| CON-POW-1000 | Switchgear Room Enclosure | 2025-12-10 → 2026-01-20 (+41d) | 2025-12-23 → 2026-02-02 (+41d) |  | 90d → 61d |  |  |
| CON-POW-1010 | Install Switchgear Equipment | 2025-12-24 → 2026-02-03 (+41d) | 2026-01-13 → 2026-02-23 (+41d) |  | 90d → 61d |  |  |
| CON-POW-1020 | Switchgear Lights and Power | 2026-01-14 → 2026-02-24 (+41d) | 2026-02-03 → 2026-03-16 (+41d) |  | 90d → 61d |  |  |
| CON-POW-1030 | City Inspection | 2026-02-04 → 2026-03-17 (+41d) | 2026-02-04 → 2026-03-17 (+41d) |  | 90d → 61d |  |  |

| ID | Task | Start | Finish | Duration | Complete | Total float | Predecessors | Other |
| --- | --- | --- | --- | --- | --- | --- | --- | --- |
| CON-POW-1040 | Dominion Primary | 2026-02-05 → 2026-03-18 (+41d) | 2026-03-04 → 2026-04-14 (+41d) |  |  | 90d → 61d |  |  |
| CON-POW-1050 | Dominion Transformer | 2026-03-05 → 2026-04-15 (+41d) | 2026-03-11 → 2026-04-21 (+41d) |  |  | 90d → 61d |  |  |
| CON-POW-1060 | Dominion Secondary | 2026-03-12 → 2026-04-22 (+41d) | 2026-03-18 → 2026-04-28 (+41d) |  |  | 90d → 61d |  |  |
| CON-POW-1070 | Power Activation | 2026-03-19 → 2026-04-29 (+41d) | 2026-03-25 → 2026-05-05 (+41d) |  |  | 90d → 61d |  |  |
| 2 | **Exterior Finishes** | 2025-11-12 → 2026-01-12 (+61d) | 2026-07-29 → 2026-07-13 (-16d) |  |  |  |  |  |
| CON-MB-L1-1250 | Exterior Sheathing - 1st Floor | 2025-11-12 → 2026-01-12 (+61d) | 2025-11-19 → 2026-01-19 (+61d) |  |  | 69d → 10d |  |  |
| CON-MB-L2-1050 | Exterior Sheathing - 2nd Floor | 2025-12-15 → 2026-01-27 (+43d) | 2025-12-22 → 2026-02-03 (+43d) |  |  | 86d → 4d |  |  |
| CON-MB-L3-1050 | Exterior Sheathing - 3rd Floor | 2026-01-20 → 2026-02-06 (+17d) | 2026-01-27 → 2026-02-13 (+17d) |  |  | 78d → 55d |  |  |
| CON-MB-L4-1040 | Exterior Sheathing - 4th Floor | 2026-02-19 → 2026-02-20 (+1d) | 2026-02-26 → 2026-02-27 (+1d) |  |  | 72d → 0d |  |  |
| CON-MB-L1-1260 | Perimeter Waterproofing West Elevation (Excluding 5th Floor) | 2026-03-27 → 2026-03-02 (-25d) | 2026-04-01 → 2026-03-05 (-27d) |  |  |  | CON-MB-L1-1250, CON-MB-L5-1030 SS, CON-MB-L5-1030 FF → CON-MB-L4-1040 | was named Perimeter Waterproofing West Elevation |
| CON-MB-EXT-1000 | Brick West Elevation (Excluding 5th Floor) | 2026-04-02 → 2026-03-06 (-27d) | 2026-04-27 → 2026-04-02 (-25d) | 18d → 20d |  |  | CON-MB-L5-1030, PROC-1030, SITE-MB-1070, CON-MB-L1-1260 → PROC-1030, SITE-MB-1070, CON-MB-L1-1260, CON-MB-L5-1100 FF+5d, CON-MB-L4-1040 | was named Brick West Elevation |
| CON-MB-L2-1280 | Perimeter Waterproofing North Elevation (Excluding 5th Floor) | 2026-04-02 → 2026-03-06 (-27d) | 2026-04-07 → 2026-03-11 (-27d) |  |  | 14d → 16d | CON-MB-L2-1050, CON-MB-L1-1260, CON-MB-L5-1030 → CON-MB-L2-1050, CON-MB-L1-1260 | was named Perimeter Waterproofing North Elevation |
| CON-MB-EXT-1130 | Storefront | 2026-06-23 → 2026-03-23 (-92d) | 2026-07-20 → 2026-04-17 (-94d) |  |  | 0d → 66d | CON-MB-EXT-1000, CON-MB-EXT-1020, CON-MB-EXT-1030, CON-MB-EXT-1040, CON-MB-EXT-1060, CON-MB-EXT-1080, CON-MB-EXT-1100, CON-MB-EXT-1050 FF+6d → CON-MB-L5-1100 |  |
| CON-MB-EXT-1020 | Brick North and West Elevations (5th Floor) | 2026-04-28 → 2026-04-03 (-25d) | 2026-05-21 → 2026-05-07 (-14d) | 18d → 25d |  |  |  | was named Brick North Elevation |
| CON-MB-EXT-1040 | Stucco West Elevation | 2026-04-28 → 2026-04-03 (-25d) | 2026-05-05 → 2026-04-23 (-12d) | 6d → 15d |  | 16d → 25d |  |  |
| CON-MB-L5-1030 | Exterior Sheathing - 5th Floor | 2026-03-25 → 2026-04-09 (+15d) | 2026-04-01 → 2026-04-16 (+15d) |  |  | 0d → 9d |  |  |
| CON-MB-EXT-1150 | Canopies | 2026-07-21 → 2026-04-20 (-92d) | 2026-07-29 → 2026-04-28 (-92d) |  |  | 0d → 66d |  |  |
| CON-MB-L2-1290 | Perimeter Waterproofing East Elevation | 2026-04-08 → 2026-04-21 (+13d) | 2026-04-13 → 2026-04-24 (+11d) |  |  | 28d → 9d | CON-MB-L3-1050, CON-MB-L2-1280, CON-MB-L5-1030 → CON-MB-L3-1050, CON-MB-L2-1280, CON-MB-L5-1030, CON-MB-L2-1310 |  |
| CON-MB-EXT-1070 | Glass West Elevation | 2026-05-06 → 2026-04-24 (-12d) | 2026-05-14 → 2026-05-04 (-10d) |  |  | 33d → 41d |  |  |
| CON-MB-L2-1300 | Perimeter Waterproofing South Elevation | 2026-04-14 → 2026-04-27 (+13d) | 2026-04-17 → 2026-04-30 (+13d) |  |  | 40d → 30d |  |  |
| CON-MB-EXT-1090 | Glass North Elevation | 2026-05-15 → 2026-05-05 (-10d) | 2026-05-25 → 2026-05-13 (-12d) |  |  | 33d → 41d |  |  |
| CON-MB-EXT-1030 | Brick East Elevation | 2026-05-22 → 2026-05-08 (-14d) | 2026-06-16 → 2026-06-11 (-5d) | 18d → 25d |  |  |  |  |
| CON-MB-EXT-1060 | Stucco North Elevation | 2026-05-22 → 2026-05-08 (-14d) | 2026-05-29 → 2026-05-18 (-11d) | 6d → 7d |  | 4d → 15d |  |  |
| CON-MB-EXT-1110 | Glass East Elevation | 2026-05-26 → 2026-05-14 (-12d) | 2026-06-03 → 2026-05-22 (-12d) |  |  | 33d → 41d |  |  |
| CON-MB-EXT-1080 | Stucco East Elevation | 2026-06-01 → 2026-05-19 (-13d) | 2026-06-08 → 2026-06-05 (-3d) | 6d → 14d |  | 4d → 15d |  |  |
| CON-MB-EXT-1140 | Glass South Elevation | 2026-06-04 → 2026-05-25 (-10d) | 2026-06-12 → 2026-06-02 (-10d) |  |  | 33d → 41d |  |  |
| CON-MB-EXT-1100 | Stucco South Elevation | 2026-06-09 → 2026-06-08 (-1d) |  | 6d → 7d |  | 4d → 15d |  |  |
| CON-MB-EXT-1050 | Brick South Elevation | 2026-06-17 → 2026-06-12 (-5d) | 2026-07-10 → 2026-07-07 (-3d) |  |  |  |  |  |
| CON-MB-EXT-1120 | Swing Doors/ Automatic Sliding Entrance | 2026-07-13 → 2026-07-08 (-5d) | 2026-07-16 → 2026-07-13 (-3d) |  |  | 9d → 12d |  |  |
| 5 | **Roofing** | 2026-03-20 → 2026-03-11 (-9d) | 2026-04-09 → 2026-03-31 (-9d) |  |  |  |  |  |
| CON-MB-L5-1020 | Roof Insulation & TPO | 2026-03-20 → 2026-03-11 (-9d) | 2026-04-09 → 2026-03-31 (-9d) |  |  | 18d → 9d |  |  |
| 3 | **Office Building** |  | 2025-12-25 → 2026-01-23 (+29d) |  |  |  |  |  |
| 1 | **Structure - Office** |  | 2025-11-04 → 2025-12-02 (+28d) |  |  |  |  |  |
| CON-OFF-1020 | Foundation Waterproofing - Office Building |  | 2025-11-04 → 2025-12-02 A (+28d) |  | 0% → 100% | 18d → none |  |  |
| 2 | **Interior Finishes - Office** | 2025-11-05 → 2025-12-03 (+28d) | 2025-12-25 → 2026-01-23 (+29d) |  |  |  |  |  |
| CON-OFF-1080 | MEP Rough In - Office Building | 2025-11-05 → 2025-12-03 A (+28d) | 2025-11-07 → 2025-12-12 A (+35d) |  | 0% → 100% | 18d → none |  |  |
| CON-OFF-1090 | MEP Inspections - Office Building | 2025-11-10 → 2025-12-29 A (+49d) | 2025-11-10 → 2026-01-02 (+53d) |  |  | 18d → 143d |  |  |
| CON-OFF-1100 | Hang/Finish Drywall - Office Building | 2025-11-11 → 2026-01-05 (+55d) | 2025-11-13 → 2026-01-07 (+55d) |  |  | 18d → 143d |  |  |
| CON-OFF-1110 | Doors, Frames & Hardware - Office Building | 2025-11-14 → 2026-01-08 (+55d) | 2025-11-17 → 2026-01-09 (+53d) |  |  | 18d → 143d |  |  |
| CON-OFF-1120 | Prep/Paint Walls - Office Building | 2025-11-18 → 2026-01-12 (+55d) | 2025-11-19 → 2026-01-13 (+55d) |  |  | 18d → 143d |  |  |
| CON-OFF-1130 | Flooring - Office Building | 2025-11-20 → 2026-01-14 (+55d) | 2025-11-26 → 2026-01-20 (+55d) |  |  | 18d → 143d |  |  |
| CON-OFF-1140 | MEP Finishes, Fixtures, Accessories - Office Building | 2025-11-27 → 2026-01-21 (+55d) | 2025-11-28 → 2026-01-22 (+55d) |  |  | 18d → 143d |  |  |
| CON-OFF-1150 | Millwork - Office Building | 2025-11-27 → 2026-01-21 (+55d) | 2025-11-28 → 2026-01-22 (+55d) |  |  | 22d → 147d |  |  |
| CON-OFF-1220 | Final Cleaning - Office Building | 2025-12-25 → 2026-01-23 (+29d) | 2025-12-25 → 2026-01-23 (+29d) |  |  | 4d → 147d |  |  |
| 3 | **Exterior Finishes - Office** |  | 2025-12-24 → 2026-01-12 (+19d) |  |  |  |  |  |
| CON-OFF-1060 | Exterior Sheathing/Waterproofing - Office Building | 2025-11-03 → 2025-12-29 A (+56d) | 2025-11-05 → 2026-01-05 (+61d) |  |  | 30d → 151d |  |  |
| CON-OFF-1160 | Store Front & Windows - Office Building | 2025-12-22 → 2026-01-06 (+15d) | 2025-12-24 → 2026-01-08 (+15d) |  |  | 0d → 153d |  |  |
| CON-OFF-1170 | Brick Facade - Office Building | 2025-11-06 → 2026-01-06 (+61d) | 2025-11-12 → 2026-01-12 (+61d) |  |  | 30d → 151d |  |  |
| 4 | **Final Inspections & Close Out** | 2025-12-25 → 2026-01-23 (+29d) | 2026-09-08 → 2026-09-11 (+3d) |  |  |  |  |  |
| 1 | **Office Building** | 2025-12-25 → 2026-01-23 (+29d) | 2026-01-23 → 2026-02-23 (+31d) |  |  |  |  |  |
| CLO-OFF-1030 | Final Building Inspections - Office Building | 2025-12-25 → 2026-01-23 (+29d) | 2025-12-31 → 2026-01-29 (+29d) |  |  | 0d → 143d |  |  |
| CLO-OFF-1000 | Office Temporary Occupancy | 2026-01-01 → 2026-01-30 (+29d) | 2026-01-01 → 2026-01-30 (+29d) |  |  | 0d → 143d |  | constraint finish on or before 2026-01-01 → finish on or before 2026-08-19 |
| CLO-OFF-1040 | Punch List Walk - Office Building | 2026-01-01 → 2026-01-30 (+29d) | 2026-01-02 → 2026-02-02 (+31d) |  |  | 6d → 149d |  |  |
| CLO-OFF-1050 | Punch List Corrections - Office Building | 2026-01-05 → 2026-02-03 (+29d) | 2026-01-23 → 2026-02-23 (+31d) |  |  | 6d → 149d |  | constraint finish on or before 2026-02-02 → none |
| 2 | **Main Building** | 2026-07-30 → 2026-07-14 (-16d) | 2026-09-08 → 2026-09-11 (+3d) |  |  |  |  |  |
| CLO-MB-1000 | Fire Alarm Inspection | 2026-07-30 → 2026-07-14 (-16d) | 2026-08-05 → 2026-07-20 (-16d) |  |  | 0d → 12d | CON-MB-EXT-1150, CON-STAIR-1030, CON-MB-EXT-1140, CON-MB-EXT-1120, MIL-1020 SS, CON-MB-2000 → CON-MB-EXT-1150, CON-STAIR-1030, CON-MB-EXT-1140, CON-MB-EXT-1120, MIL-1020 SS, CON-MB-2000, PROC-1150 |  |
| CLO-MB-1010 | State Inspection for Elevators | 2026-08-06 → 2026-07-21 (-16d) | 2026-08-12 → 2026-07-27 (-16d) |  |  | 0d → 12d |  |  |
| CLO-MB-1020 | Final Building Inspections | 2026-08-13 → 2026-07-28 (-16d) | 2026-08-19 → 2026-08-03 (-16d) |  |  | 0d → 12d |  |  |
| CLO-MB-1040 | Punch List Walk - Main Building | 2026-08-17 → 2026-08-20 (+3d) | 2026-08-18 → 2026-08-21 (+3d) |  |  | 0d → 5d | SITE-MB-1140, CON-MB-L1-1220, CON-MB-L1-1230, CON-MB-L1-1240, SITE-MB-1090, CON-STAIR-1040, CON-MB-L3-1160, CON-MB-L3-1170, CON-MB-L3-1180, CON-MB-L4-1130, CON-MB-L4-1120, CON-MB-L4-1110, CON-MB-L4-1080, CON-MB-L3-1100, CON-MB-L2-1120, CON-MB-L1-1170, CON-MB-L5-1090, CON-MB-2010, CON-MB-L2-1080 → SITE-MB-1140, CON-MB-L1-1220, CON-MB-L1-1230, CON-MB-L1-1240, SITE-MB-1090, CON-STAIR-1040, CON-MB-L3-1160, CON-MB-L3-1170, CON-MB-L3-1180, CON-MB-L4-1130, CON-MB-L4-1120, CON-MB-L4-1110, CON-MB-L4-1080, CON-MB-L3-1100, CON-MB-L2-1120, CON-MB-L1-1170, CON-MB-L5-1090, CON-MB-2010, CON-MB-L2-1080, SITE-1030 |  |
| CLO-MB-1050 | Punch List Corrections - Main Building | 2026-08-19 → 2026-08-24 (+5d) | 2026-09-08 → 2026-09-11 (+3d) |  |  | 0d → 5d |  |  |

## Version 4 (data date 2026-01-31, saved 2026-02-05, file update_4.xer)

Note of the change: Add all project schedule files to buckets - 13 projects, MPP+XER, baseline+updates

Last finish 2026-09-11 → 2026-09-04 (-7d). Complete tasks 48 → 63.

Added:

| ID | Task | Duration | Start | Finish | Predecessors |
| --- | --- | --- | --- | --- | --- |
| 5 | **Impacts/Delays** |  | 2026-01-26 | 2026-02-13 |  |
| 1 | **Fragnet 001 - Weather Delays** |  | 2026-01-26 | 2026-02-13 |  |
| FRAG01-1000 | Site Shutdown Due to Ice and Road Conditions | 2d | 2026-01-26 A | 2026-01-27 A | MIL-1000 SS |
| FRAG01-1010 | Labor Crew Clear Snow and Start Tenting | 5d | 2026-01-28 A | 2026-02-03 | FRAG01-1000 |
| FRAG01-1020 | Temporary Heat Permit Obtained | 7d | 2026-01-29 A | 2026-02-06 | FRAG01-1000 |
| FRAG01-1030 | Propane Heaters Installed, Melt Snow/Ice | 5d | 2026-02-09 | 2026-02-13 | FRAG01-1020, FRAG01-1010 |

Changed:

| ID | Task | Start | Finish | Complete | Total float | Predecessors | Other |
| --- | --- | --- | --- | --- | --- | --- | --- |
| 1 | **Public Storage Fairfax VA** |  | 2026-09-11 → 2026-09-04 (-7d) |  |  |  |  |
| 3 | **Milestones** |  | 2026-09-11 → 2026-09-04 (-7d) |  |  |  |  |
| MIL-1010 | Weathertight - Main Building | 2026-04-16 → 2026-05-01 (+15d) | 2026-04-16 → 2026-05-01 (+15d) |  | 42d → 22d |  |  |
| MIL-1020 | Permanent Power | 2026-05-06 → 2026-05-20 (+14d) | 2026-05-06 → 2026-05-20 (+14d) |  | 61d → 45.8d |  |  |
| MIL-1030 | Substantial Completion (08.19.26) | 2026-08-19 → 2026-08-12 (-7d) | 2026-08-19 → 2026-08-12 (-7d) |  | 0d → 7d | CLO-MB-1020 FF, SITE-MB-1140 FF, CON-MB-2010 FF, SITE-MB-1090 FF → CLO-MB-1020 FF, SITE-MB-1140 FF, CON-MB-2010 FF, SITE-MB-1090 FF, CLO-OFF-1000 FF |  |
| MIL-1040 | Final Completion - Main Building | 2026-09-11 → 2026-09-04 (-7d) | 2026-09-11 → 2026-09-04 (-7d) |  | 8d → -16d |  |  |
| 1 | **Preconstruction** |  | 2026-03-11 → 2026-03-06 (-5d) |  |  |  |  |
| 1 | **Procurement** |  | 2026-03-11 → 2026-03-06 (-5d) |  |  |  |  |
| PROC-1000 | Precon Construction |  |  |  |  | none → MIL-1000 SS |  |
| PROC-1010 | Contractor Procurement |  |  |  |  | MIL-1000 → MIL-1000, PROC-1000 |  |
| 2 | **Long Lead Items** |  | 2026-03-11 → 2026-03-06 (-5d) |  |  |  |  |
| PROC-1020 | Elevator Submittal |  |  |  |  |  | constraint start on or after 2025-06-30 → none |
| PROC-1030 | Brick Submittal and Fabrication |  |  |  |  | none → MIL-1000 SS | constraint start on or after 2025-07-01 → none |
| PROC-1040 | Switchgear Submittal |  |  |  |  |  | constraint start on or after 2025-07-31 → none |
| PROC-1050 | Light Fixtures Submittal |  |  |  |  |  | constraint start on or after 2025-08-04 → none |
| PROC-1130 | HVAC Equipment Fabrication |  | 2026-02-11 → 2026-01-16 A (-26d) | 57% → 100% | 29d → none |  |  |
| PROC-1090 | Fire Pump Submittal |  | 2026-01-01 → 2026-02-02 (+32d) |  | 129d → 107d |  | constraint start on or after 2025-09-01 → none |
| PROC-1100 | Elevator Fabrication | 2026-01-01 → 2025-12-02 A (-30d) | 2026-03-11 → 2026-03-06 (-5d) | 0% → 50% | 40d → 43d |  |  |
| PROC-1150 | Fire Pump Fabrication | 2026-01-02 → 2026-02-03 (+32d) | 2026-01-29 → 2026-03-02 (+32d) |  | 129d → 107d |  |  |
| 2 | **Construction** |  | 2026-08-19 → 2026-08-12 (-7d) |  |  |  |  |
| 2 | **Site Work** |  | 2026-08-19 → 2026-08-12 (-7d) |  |  |  |  |
| SITE-1020 | Mobilization |  |  |  |  |  | constraint start on or after 2025-05-05 → none |
| SITE-1030 | Stormwater Management Ponds Phase II | 2026-03-23 → 2026-03-27 (+4d) | 2026-04-03 → 2026-04-10 (+7d) |  | 103d → 76.8d |  |  |
| 1 | **Site Work - Main Building** |  | 2026-08-19 → 2026-08-12 (-7d) |  |  |  |  |
| SITE-MB-1030 | Building Pad Delivery - Main Building |  |  |  |  |  | constraint finish on or after 2025-07-25 → none |
| SITE-MB-1050 | Storm Structures and Pipe - Main Building |  | 2026-01-14 → 2026-02-11 (+28d) | 67% → 75% | 114d → 77.5d |  |  |
| SITE-MB-1070 | Fine Grading - Main Building | 2026-01-01 → 2025-12-16 A (-16d) | 2026-01-21 → 2026-02-11 (+21d) | 0% → 50% | 31d → 15.5d |  |  |
| SITE-MB-1060 | Sanitary Sewer - Main Building | 2026-04-01 → 2026-02-11 (-49d) | 2026-04-14 → 2026-02-25 (-48d) |  | 60d → 77.5d |  | constraint start on or after 2026-04-01 → none |
| SITE-MB-1100 | Curb and Gutter - Main Building | 2026-05-08 → 2026-05-12 (+4d) | 2026-05-18 → 2026-05-20 (+2d) |  | 36d → 17d |  |  |
| SITE-MB-1120 | Stone Base Parking Lot - Main Building | 2026-05-19 → 2026-05-21 (+2d) | 2026-06-01 → 2026-06-03 (+2d) |  | 36d → 17d |  |  |
| SITE-MB-1080 | Sidewalk - Main Building | 2026-07-08 → 2026-07-01 (-7d) | 2026-07-21 → 2026-07-14 (-7d) |  | 0d → -12d |  |  |
| SITE-MB-1130 | Paving (Includes SHA Work) - Main Building | 2026-07-22 → 2026-07-15 (-7d) | 2026-08-05 → 2026-07-29 (-7d) |  | 0d → -12d |  |  |
| SITE-MB-1090 | Landscape - Main Building | 2026-08-06 → 2026-07-30 (-7d) | 2026-08-19 → 2026-08-12 (-7d) |  | 0d → -12d |  |  |
| SITE-MB-1140 | Line Striping - Main Building | 2026-08-06 → 2026-07-30 (-7d) | 2026-08-07 → 2026-07-31 (-7d) |  | 8d → -4d |  |  |
| 3 | **Site Work - Office** |  | 2026-01-26 → 2026-05-25 (+119d) |  |  |  |  |
| SITE-OFF-1020 | Building Pad Delivery - Office Building |  |  |  |  |  | constraint finish on or after 2025-07-25 → none |
| SITE-OFF-1060 | Fine Grading - Office Building | 2026-01-01 → 2025-12-16 A (-16d) | 2026-01-08 → 2026-01-16 A (+8d) | 0% → 100% | 152d → none |  |  |
| SITE-OFF-1110 | Stone Base Parking Lot - Office Building | 2026-01-16 → 2025-12-17 A (-30d) | 2026-01-16 → 2025-12-17 A (-30d) | 0% → 100% | 149d → none | SITE-OFF-1090 → SITE-OFF-1060 |  |
| SITE-OFF-1120 | Paving - Office Building | 2026-01-20 → 2025-12-18 A (-33d) | 2026-01-21 → 2026-02-03 (+13d) |  | 148d → 121d | SITE-OFF-1110, SITE-OFF-1070 → SITE-OFF-1110 |  |
| SITE-OFF-1030 | Domestic & Fire Water Online - Office Building | 2026-01-01 → 2026-02-02 (+32d) | 2026-01-14 → 2026-02-13 (+30d) |  | 148d → 114d |  |  |
| SITE-OFF-1080 | Landscape - Office Building | 2026-01-09 → 2026-02-02 (+24d) | 2026-01-09 → 2026-02-02 (+24d) |  | 163d → 125d |  |  |
| SITE-OFF-1070 | Sidewalk - Office Building | 2026-01-16 → 2026-02-04 (+19d) | 2026-01-19 → 2026-02-05 (+17d) |  | 148d → 121d | SITE-OFF-1090, CON-OFF-1170 → CON-OFF-1170, SITE-OFF-1120 |  |
| SITE-OFF-1130 | Line Striping - Office Building | 2026-01-22 → 2026-02-04 (+13d) | 2026-01-22 → 2026-02-04 (+13d) |  | 148d → 123d |  |  |
| SITE-OFF-1090 | Curb and Gutter - Office Building | 2026-01-15 → 2026-02-16 (+32d) | 2026-01-15 → 2026-02-16 (+32d) |  | 148d → 114d | SITE-OFF-1060, SITE-OFF-1030 → SITE-OFF-1030, SITE-OFF-1120 |  |
| SITE-OFF-1100 | Misc Exterior Items (Vehicle Gate Operator) - Office Building | 2026-01-22 → 2026-05-20 (+118d) | 2026-01-26 → 2026-05-25 (+119d) |  | 152d → 45.8d | SITE-OFF-1120 → SITE-OFF-1120, MIL-1020 SS |  |
| 1 | **Main Building** |  | 2026-07-13 → 2026-07-15 (+2d) |  |  |  |  |
| 1 | **Substructure** |  | 2026-01-26 → 2026-02-10 (+15d) |  |  |  |  |
| CON-MB-1000 | UG Electric Rough In |  |  |  |  |  | constraint start on or after 2025-08-04 → none |
| CON-MB-1020 | Prep/Pour SOG 1/2 |  |  |  |  |  | constraint finish on or after 2025-09-10 → none |
| CON-MB-1030 | Prep/Pour SOG 2/2 |  |  |  |  | CON-MB-1020 FS+2d → CON-MB-1020 | constraint finish on or after 2025-09-22 → none |
| CON-MB-1040 | Foundation Waterproofing | 2026-01-20 → 2026-02-03 (+14d) | 2026-01-26 → 2026-02-10 (+15d) |  | 10d → -3.2d | CON-MB-1030 FS+4d, CON-MB-L1-1250 → CON-MB-1030, CON-MB-L1-1250 |  |
| 9 | **Superstructure** |  | 2026-04-17 → 2026-05-04 (+17d) |  |  |  |  |
| 1 | **First Floor Superstructure** |  | 2026-01-09 → 2026-01-30 (+21d) |  |  |  |  |
| CON-MB-L1-1040 | Structural Steel Columns & Beams - 1st Floor |  |  |  |  | CON-MB-1030 FS+4d → CON-MB-1030 |  |
| CON-MB-L1-1090 | Exterior & Interior Framing - 1st Floor |  | 2026-01-09 → 2026-01-30 A (+21d) | 30% → 100% | 10d → none |  |  |
| 2 | **Second Floor Superstructure** |  | 2026-02-04 → 2026-02-03 (-1d) |  |  |  |  |
| CON-MB-L2-1040 | Exterior & Interior Framing - 2nd Floor | 2026-01-22 → 2026-01-13 A (-9d) | 2026-02-04 → 2026-02-03 (-1d) | 0% → 80% | 4d → -3d |  |  |
| 3 | **Third Floor Superstructure** |  | 2026-02-16 → 2026-02-25 (+9d) |  |  |  |  |
| CON-MB-L3-1020 | Prep & Pour SOD - 4th Floor |  | 2026-01-05 A | 62% → 100% | 0d → none |  |  |
| CON-MB-L3-1040 | Exterior & Interior Framing - 3rd Floor | 2026-02-03 → 2026-02-12 (+9d) | 2026-02-16 → 2026-02-25 (+9d) |  | 50d → 34d |  |  |
| 6 | **Fourth Floor Superstructure** |  | 2026-03-02 → 2026-03-17 (+15d) |  |  |  |  |
| CON-MB-L4-1000 | Structural Steel Columns & Beams - 4th Floor | 2026-01-06 A | 2026-01-23 A | 0% → 100% | 0d → none |  |  |
| CON-MB-L4-1010 | Metal Decking - 5th Floor | 2026-01-26 → 2026-01-16 A (-10d) | 2026-01-29 → 2026-01-23 A (-6d) | 0% → 100% | 0d → none |  |  |
| CON-MB-L4-1020 | Prep & Pour SOD - 5th Floor | 2026-01-30 → 2026-02-16 (+17d) | 2026-02-04 → 2026-02-19 (+15d) |  | 0d → -12d | CON-MB-L4-1010 → CON-MB-L4-1010, FRAG01-1030 |  |
| CON-MB-L4-1030 | Exterior & Interior Framing - 4th Floor | 2026-02-17 → 2026-03-04 (+15d) | 2026-03-02 → 2026-03-17 (+15d) |  | 0d → -12d |  |  |
| 4 | **Fifth Floor Superstructure** | 2026-02-05 → 2026-02-20 (+15d) | 2026-04-17 → 2026-05-04 (+17d) |  |  |  |  |
| CON-MB-L5-1000 | Structural Steel Columns & Beams - 5th Floor | 2026-02-05 → 2026-02-20 (+15d) | 2026-02-24 → 2026-03-11 (+15d) |  | 9d → -12d |  |  |
| CON-MB-L5-1010 | Framing & Metal Decking - Roof | 2026-02-25 → 2026-03-12 (+15d) | 2026-03-10 → 2026-03-25 (+15d) |  | 9d → -12d |  |  |
| CON-MB-L5-1050 | Exterior & Interior Framing - 5th Floor | 2026-04-06 → 2026-04-21 (+15d) | 2026-04-17 → 2026-05-04 (+17d) |  | 9d → -12d |  |  |
| 3 | **Interior Finishes** |  | 2026-06-30 → 2026-07-15 (+15d) |  |  |  |  |

| ID | Task | Start | Finish | Complete | Total float | Predecessors |
| --- | --- | --- | --- | --- | --- | --- |
| CON-MB-2000 | Grind/Seal Floors (Full Building) | 2026-06-05 → 2026-06-19 (+14d) | 2026-06-18 → 2026-07-02 (+14d) |  | 29d → 10d |  |
| CON-MB-2010 | Final Cleaning (Full Building) | 2026-06-09 → 2026-06-23 (+14d) | 2026-06-29 → 2026-07-13 (+14d) |  | 37d → 10d |  |
| 6 | **Elevator** |  | 2026-06-30 → 2026-07-15 (+15d) |  |  |  |
| CON-ELEV-1000 | Elevator 3 CMU Shaft |  |  |  |  | CON-MB-1020 FS+2d → CON-MB-1020 |
| CON-ELEV-1020 | Elevator Install | 2026-04-01 → 2026-04-16 (+15d) | 2026-06-30 → 2026-07-15 (+15d) |  | 26d → 15d |  |
| 8 | **Stair Shafts** |  | 2026-01-13 → 2026-02-05 (+23d) |  |  |  |
| CON-STAIR-1000 | Stair Tower B CMU |  |  |  |  | CON-MB-1020 FS+2d → CON-MB-1020 |
| CON-STAIR-1020 | Stair Stringers and Pans |  | 2026-01-07 A | 50% → 100% | 143d → none |  |
| CON-STAIR-1030 | Doors & HW - Stairs | 2026-01-08 → 2026-02-02 (+25d) | 2026-01-09 → 2026-02-03 (+25d) |  | 143d → 122d |  |
| CON-STAIR-1040 | Prep/Paint - Stairs | 2026-01-12 → 2026-02-04 (+23d) | 2026-01-13 → 2026-02-05 (+23d) |  | 161d → 122d |  |
| 1 | **First Floor Interior Finishes** |  | 2026-05-06 → 2026-05-25 (+19d) |  |  |  |
| CON-MB-L1-1130 | Fireproofing Structural Steel - 1st Floor |  | 2026-01-09 A | 12% → 100% | 2d → none |  |
| CON-MB-L1-1160 | HVAC Rough In - 1st Floor | 2026-02-12 → 2026-01-06 A (-37d) | 2026-02-16 → 2026-02-03 (-13d) | 0% → 50% | 45d → 45.5d |  |
| CON-MB-L1-1140 | OH & Wall Plumbing Rough In - 1st Floor | 2026-01-12 → 2026-01-07 A (-5d) | 2026-01-14 → 2026-02-03 (+20d) | 0% → 60% | 68d → 45.8d |  |
| CON-MB-L1-1150 | Electric & Low Voltage OH & Wall Rough In - 1st Floor | 2026-01-12 → 2026-01-07 A (-5d) | 2026-01-23 → 2026-02-09 (+17d) | 0% → 40% | 61d → 41d |  |
| CON-MB-L1-1170 | Sprinkler Rough In - 1st Floor | 2026-01-12 A | 2026-01-23 → 2026-02-11 (+19d) | 0% → 20% | 143d → 118d |  |
| CON-MB-L1-1180 | OH & Wall MEP Inspections - 1st Floor | 2026-02-17 → 2026-02-10 (-7d) | 2026-02-18 → 2026-02-11 (-7d) |  | 45d → 41d |  |
| CON-MB-L1-1270 | Janus Wall Panels - 1st Floor | 2026-03-13 → 2026-03-12 (-1d) | 2026-04-02 → 2026-04-01 (-1d) |  | 29d → 21d |  |
| CON-MB-L1-1190 | Hang & Finish Drywall - 1st Floor | 2026-04-17 → 2026-05-04 (+17d) | 2026-04-27 → 2026-05-12 (+15d) |  | 80d → 45d |  |
| CON-MB-L1-1200 | Doors & HW - 1st Floor | 2026-04-28 → 2026-05-13 (+15d) | 2026-04-29 → 2026-05-14 (+15d) |  | 102d → 45d |  |
| CON-MB-L1-1210 | Prep/Paint Walls & Ceilings - 1st Floor | 2026-04-28 → 2026-05-15 (+17d) | 2026-04-29 → 2026-05-18 (+19d) |  | 80d → 45d | CON-MB-L1-1190 → CON-MB-L1-1190, CON-MB-L1-1200 |
| CON-MB-L1-1220 | Plumbing Fixtures - 1st Floor | 2026-04-30 → 2026-05-19 (+19d) | 2026-05-01 → 2026-05-20 (+19d) |  | 83d → 48d |  |
| CON-MB-L1-1230 | Diffusers - 1st Floor | 2026-04-30 → 2026-05-19 (+19d) | 2026-05-06 → 2026-05-25 (+19d) |  | 80d → 45d |  |
| CON-MB-L1-1240 | Light Fixtures - 1st Floor | 2026-04-30 → 2026-05-19 (+19d) | 2026-05-06 → 2026-05-25 (+19d) |  | 80d → 45d |  |
| 2 | **Second Floor Interior Finishes** |  | 2026-03-12 → 2026-03-11 (-1d) |  |  |  |
| CON-MB-L2-1090 | Fireproofing Structural Steel - 2nd Floor | 2026-01-12 A | 2026-01-21 → 2026-01-23 A (+2d) | 0% → 100% | 2d → none |  |
| CON-MB-L2-1110 | HVAC Rough In - 2nd Floor | 2026-02-12 → 2026-01-19 A (-24d) | 2026-02-18 → 2026-02-05 (-13d) | 0% → 20% |  | CON-MB-L2-1090, PROC-1130, CON-MB-L2-1040 → CON-MB-L2-1090, PROC-1130, CON-MB-L2-1040 SS+3d |
| CON-MB-L2-1060 | Doors & HW - 2nd Floor | 2026-02-05 → 2026-02-04 (-1d) | 2026-02-06 → 2026-02-05 (-1d) |  | 141d → 120d |  |
| CON-MB-L2-1100 | Electric OH & Wall Rough In - 2nd Floor | 2026-02-05 → 2026-02-04 (-1d) | 2026-02-18 → 2026-02-17 (-1d) |  | 29d → 21d |  |
| CON-MB-L2-1120 | Sprinkler Rough In - 2nd Floor | 2026-02-05 → 2026-02-04 (-1d) | 2026-02-18 → 2026-02-17 (-1d) |  | 125d → 114d |  |
| CON-MB-L2-1080 | Prep/Paint Walls - 2nd Floor | 2026-02-09 → 2026-02-06 (-3d) | 2026-02-10 → 2026-02-09 (-1d) |  | 141d → 120d |  |
| CON-MB-L2-1140 | OH & Wall MEP Inspections - 2nd Floor | 2026-02-19 → 2026-02-18 (-1d) | 2026-02-19 → 2026-02-18 (-1d) |  | 29d → 21d |  |
| CON-MB-L2-1070 | Janus Wall Panels - 2nd Floor | 2026-02-20 → 2026-02-19 (-1d) | 2026-03-12 → 2026-03-11 (-1d) |  | 29d → 21d |  |
| CON-MB-L2-1150 | Diffusers - 2nd Floor | 2026-02-20 → 2026-02-19 (-1d) | 2026-02-26 → 2026-02-25 (-1d) |  | 146d → 108d |  |
| CON-MB-L2-1160 | Light Fixtures - 2nd Floor | 2026-02-20 → 2026-02-19 (-1d) | 2026-02-26 → 2026-02-25 (-1d) |  | 146d → 108d |  |
| 3 | **Third Floor Interior Finishes** | 2026-01-22 → 2026-02-02 (+11d) | 2026-05-07 → 2026-05-22 (+15d) |  |  |  |
| CON-MB-L3-1060 | Fire Proofing Structural Steel - 3rd Floor | 2026-01-22 → 2026-02-02 (+11d) | 2026-02-02 → 2026-02-11 (+9d) |  | 2d → -6d |  |
| CON-MB-L3-1070 | OH & Wall Plumbing Rough In - 3rd Floor | 2026-02-17 → 2026-02-26 (+9d) | 2026-02-19 → 2026-03-02 (+11d) |  | 57d → 41d |  |
| CON-MB-L3-1080 | Electric & Low Voltage OH & Wall Rough In - 3rd Floor | 2026-02-17 → 2026-02-26 (+9d) | 2026-03-02 → 2026-03-11 (+9d) |  | 50d → 34d |  |
| CON-MB-L3-1090 | HVAC Rough In - 3rd Floor | 2026-02-17 → 2026-02-26 (+9d) | 2026-02-23 → 2026-03-04 (+9d) |  | 55d → 39d |  |
| CON-MB-L3-1100 | Sprinkler Rough In - 3rd Floor | 2026-02-17 → 2026-02-26 (+9d) | 2026-03-02 → 2026-03-11 (+9d) |  | 117d → 98d |  |
| CON-MB-L3-1120 | OH & Wall MEP Inspections - 3rd Floor | 2026-03-03 → 2026-03-12 (+9d) | 2026-03-04 → 2026-03-13 (+9d) |  | 50d → 34d |  |
| CON-MB-L3-1150 | Janus Wall Panels - 3rd Floor | 2026-04-03 → 2026-04-02 (-1d) | 2026-04-23 → 2026-04-22 (-1d) |  | 29d → 21d |  |
| CON-MB-L3-1130 | Hang/Finish Drywall - 3rd Floor | 2026-04-17 → 2026-05-04 (+17d) | 2026-04-27 → 2026-05-12 (+15d) |  | 69d → 46d |  |
| CON-MB-L3-1140 | Prep/Paint Walls & Ceilings - 3rd Floor | 2026-04-28 → 2026-05-13 (+15d) | 2026-04-30 → 2026-05-15 (+15d) |  | 69d → 46d |  |
| CON-MB-L3-1160 | Plumbing Fixtures - 3rd Floor | 2026-05-01 → 2026-05-18 (+17d) | 2026-05-06 → 2026-05-21 (+15d) |  | 70d → 47d |  |
| CON-MB-L3-1170 | Diffusers - 3rd Floor | 2026-05-01 → 2026-05-18 (+17d) | 2026-05-07 → 2026-05-22 (+15d) |  | 69d → 46d |  |
| CON-MB-L3-1180 | Light Fixtures - 3rd Floor | 2026-05-01 → 2026-05-18 (+17d) | 2026-05-07 → 2026-05-22 (+15d) |  | 69d → 46d |  |
| 4 | **Fourth Floor Interior Finishes** | 2026-02-05 → 2026-02-20 (+15d) | 2026-05-14 → 2026-05-13 (-1d) |  |  |  |
| CON-MB-L4-1050 | Fire Proofing Structural Steel - 4th Floor | 2026-02-05 → 2026-02-20 (+15d) | 2026-02-16 → 2026-03-03 (+15d) |  | 0d → -12d |  |
| CON-MB-L4-1060 | Electric OH & Wall Rough In - 4th Floor | 2026-03-03 → 2026-03-18 (+15d) | 2026-03-16 → 2026-03-31 (+15d) |  | 56d → 36d | CON-MB-L4-1050 FS+2d, CON-MB-L4-1030 → CON-MB-L4-1050, CON-MB-L4-1030 |
| CON-MB-L4-1070 | HVAC Rough In - 4th Floor | 2026-03-03 → 2026-03-18 (+15d) | 2026-03-09 → 2026-03-24 (+15d) |  | 61d → 41d | CON-MB-L4-1050 FS+2d, PROC-1130, CON-MB-L4-1030 → CON-MB-L4-1050, PROC-1130, CON-MB-L4-1030 |
| CON-MB-L4-1080 | Sprinkler Rough In - 4th Floor | 2026-03-03 → 2026-03-18 (+15d) | 2026-03-16 → 2026-03-31 (+15d) |  | 107d → 84d | CON-MB-L4-1050 FS+2d, CON-MB-L4-1030 → CON-MB-L4-1050, CON-MB-L4-1030 |
| CON-MB-L4-1100 | OH & Wall MEP Inspections - 4th Floor | 2026-03-17 → 2026-04-01 (+15d) | 2026-03-17 → 2026-04-01 (+15d) |  | 56d → 36d |  |
| CON-MB-L4-1110 | Prep/Paint Walls - 4th Floor | 2026-03-18 → 2026-04-02 (+15d) | 2026-03-19 → 2026-04-03 (+15d) |  | 104d → 81d |  |
| CON-MB-L4-1120 | Diffusers - 4th Floor | 2026-03-18 → 2026-04-02 (+15d) | 2026-03-24 → 2026-04-08 (+15d) |  | 101d → 78d |  |
| CON-MB-L4-1130 | Light Fixtures - 4th Floor | 2026-03-18 → 2026-04-02 (+15d) | 2026-03-24 → 2026-04-08 (+15d) |  | 101d → 78d |  |
| CON-MB-L4-1140 | Janus Wall Panels - 4th Floor | 2026-04-24 → 2026-04-23 (-1d) | 2026-05-14 → 2026-05-13 (-1d) |  | 29d → 21d |  |
| 5 | **Fifth Floor Interior Finishes** | 2026-04-01 → 2026-04-16 (+15d) | 2026-06-04 → 2026-06-18 (+14d) |  |  |  |
| CON-MB-L5-1040 | Fire Proofing Structural Steel - 5th Floor | 2026-04-01 → 2026-04-16 (+15d) | 2026-04-10 → 2026-04-27 (+17d) |  | 9d → -12d |  |
| CON-MB-L5-1060 | Electric & Low Voltage OH & Wall Rough In - 5th Floor | 2026-04-20 → 2026-05-05 (+15d) | 2026-05-01 → 2026-05-18 (+17d) |  | 30d → 10d |  |
| CON-MB-L5-1070 | OH & Wall Plumbing Rough In - 5th Floor | 2026-04-20 → 2026-05-05 (+15d) | 2026-04-22 → 2026-05-07 (+15d) |  | 37d → 17d |  |
| CON-MB-L5-1080 | HVAC Rough In - 5th Floor | 2026-04-20 → 2026-05-05 (+15d) | 2026-04-24 → 2026-05-11 (+17d) |  | 35d → 15d |  |
| CON-MB-L5-1090 | Sprinkler Rough In - 5th Floor | 2026-04-20 → 2026-05-05 (+15d) | 2026-05-01 → 2026-05-18 (+17d) |  | 73d → 50d |  |
| CON-MB-L5-1110 | OH & Wall MEP Inspections - 5th Floor | 2026-05-04 → 2026-05-19 (+15d) | 2026-05-04 → 2026-05-19 (+15d) |  | 30d → 10d |  |
| CON-MB-L5-1120 | Hang/Finish Drywall - 5th Floor | 2026-05-05 → 2026-05-20 (+15d) | 2026-05-13 → 2026-05-28 (+15d) |  | 30d → 10d |  |
| CON-MB-L5-1130 | Prep/Paint Walls - 5th Floor | 2026-05-14 → 2026-05-29 (+15d) | 2026-05-15 → 2026-06-01 (+17d) |  | 86d → 36d |  |
| CON-MB-L5-1170 | Janus Wall Panels - 5th Floor | 2026-05-15 → 2026-05-29 (+14d) | 2026-06-04 → 2026-06-18 (+14d) |  | 29d → 10d |  |
| CON-MB-L5-1140 | Plumbing Fixtures - 5th Floor | 2026-05-18 → 2026-06-02 (+15d) | 2026-05-21 → 2026-06-05 (+15d) |  | 86d → 36d |  |
| CON-MB-L5-1150 | Diffusers - 5th Floor | 2026-05-18 → 2026-06-02 (+15d) | 2026-05-18 → 2026-06-02 (+15d) |  | 89d → 39d |  |

| ID | Task | Start | Finish | Duration | Complete | Total float | Predecessors | Other |
| --- | --- | --- | --- | --- | --- | --- | --- | --- |
| CON-MB-L5-1160 | Light Fixtures - 5th Floor | 2026-05-18 → 2026-06-02 (+15d) | 2026-05-18 → 2026-06-02 (+15d) |  |  | 89d → 39d |  |  |
| 7 | **Switchgear Room** | 2026-01-20 → 2026-02-03 (+14d) | 2026-05-05 → 2026-05-20 (+15d) |  |  |  |  |  |
| CON-POW-1000 | Switchgear Room Enclosure | 2026-01-20 → 2026-02-03 (+14d) | 2026-02-02 → 2026-02-17 (+15d) |  |  | 61d → 45.8d |  |  |
| CON-POW-1010 | Install Switchgear Equipment | 2026-02-03 → 2026-02-17 (+14d) | 2026-02-23 → 2026-03-10 (+15d) |  |  | 61d → 45.8d |  |  |
| CON-POW-1020 | Switchgear Lights and Power | 2026-02-24 → 2026-03-10 (+14d) | 2026-03-16 → 2026-03-31 (+15d) |  |  | 61d → 45.8d |  |  |
| CON-POW-1030 | City Inspection | 2026-03-17 → 2026-03-31 (+14d) | 2026-03-17 → 2026-04-01 (+15d) |  |  | 61d → 45.8d |  |  |
| CON-POW-1040 | Dominion Primary | 2026-03-18 → 2026-04-01 (+14d) | 2026-04-14 → 2026-04-29 (+15d) |  |  | 61d → 45.8d |  |  |
| CON-POW-1050 | Dominion Transformer | 2026-04-15 → 2026-04-29 (+14d) | 2026-04-21 → 2026-05-06 (+15d) |  |  | 61d → 45.8d |  |  |
| CON-POW-1060 | Dominion Secondary | 2026-04-22 → 2026-05-06 (+14d) | 2026-04-28 → 2026-05-13 (+15d) |  |  | 61d → 45.8d |  |  |
| CON-POW-1070 | Power Activation | 2026-04-29 → 2026-05-13 (+14d) | 2026-05-05 → 2026-05-20 (+15d) |  |  | 61d → 45.8d |  |  |
| 2 | **Exterior Finishes** |  | 2026-07-13 → 2026-07-06 (-7d) |  |  |  |  |  |
| CON-MB-L1-1250 | Exterior Sheathing - 1st Floor | 2026-01-12 A | 2026-01-19 → 2026-02-03 (+15d) |  | 0% → 80% | 10d → -3.2d |  |  |
| CON-MB-L2-1050 | Exterior Sheathing - 2nd Floor | 2026-01-27 → 2026-02-02 (+6d) | 2026-02-03 → 2026-02-09 (+6d) |  |  | 4d → -3d |  |  |
| CON-MB-L1-1280 | Perimeter Waterproofing - 1st Floor | 2026-02-04 → 2026-02-10 (+6d) | 2026-02-06 → 2026-02-13 (+7d) |  |  | 4d → -3.2d |  |  |
| CON-MB-L5-1100 | Brick Facade - 1st Floor | 2026-02-09 → 2026-02-13 (+4d) | 2026-03-20 → 2026-03-27 (+7d) |  |  | 4d → -3.2d |  |  |
| CON-MB-L3-1050 | Exterior Sheathing - 3rd Floor | 2026-02-06 → 2026-02-17 (+11d) | 2026-02-13 → 2026-02-24 (+11d) |  |  | 55d → 38d |  |  |
| CON-MB-L4-1040 | Exterior Sheathing - 4th Floor | 2026-02-20 → 2026-03-09 (+17d) | 2026-02-27 → 2026-03-16 (+17d) |  |  | 0d → -12d |  |  |
| CON-MB-L1-1260 | Perimeter Waterproofing West Elevation (Excluding 5th Floor) | 2026-03-02 → 2026-03-17 (+15d) | 2026-03-05 → 2026-03-20 (+15d) |  |  | 0d → -12d |  |  |
| CON-MB-EXT-1000 | Brick West Elevation (Excluding 5th Floor) | 2026-03-06 → 2026-03-23 (+17d) | 2026-04-02 → 2026-04-15 (+13d) | 20d → 18d |  | 0d → -12d |  |  |
| CON-MB-L2-1280 | Perimeter Waterproofing North Elevation (Excluding 5th Floor) | 2026-03-06 → 2026-03-23 (+17d) | 2026-03-11 → 2026-03-26 (+15d) |  |  | 16d → 2d |  |  |
| CON-MB-EXT-1130 | Storefront | 2026-03-23 → 2026-03-27 (+4d) | 2026-04-17 → 2026-04-24 (+7d) |  |  | 66d → 61.8d |  |  |
| CON-MB-EXT-1020 | Brick North and West Elevations (5th Floor) | 2026-04-03 → 2026-04-16 (+13d) | 2026-05-07 → 2026-05-11 (+4d) | 25d → 18d |  | 0d → -12d |  |  |
| CON-MB-EXT-1040 | Stucco West Elevation | 2026-04-03 → 2026-04-16 (+13d) | 2026-04-23 → 2026-05-06 (+13d) |  |  | 25d → -1d |  |  |
| CON-MB-L5-1030 | Exterior Sheathing - 5th Floor | 2026-04-09 → 2026-04-24 (+15d) | 2026-04-16 → 2026-05-01 (+15d) |  |  | 9d → -12d |  |  |
| CON-MB-EXT-1150 | Canopies | 2026-04-20 → 2026-04-24 (+4d) | 2026-04-28 → 2026-05-05 (+7d) |  |  | 66d → 61.8d |  |  |
| CON-MB-L2-1310 | Perimeter Waterproofing West/North Elevations (5th Floor) | 2026-04-17 → 2026-05-04 (+17d) | 2026-04-20 → 2026-05-05 (+15d) |  |  | 9d → -12d |  |  |
| CON-MB-L2-1290 | Perimeter Waterproofing East Elevation | 2026-04-21 → 2026-05-06 (+15d) | 2026-04-24 → 2026-05-11 (+17d) |  |  | 9d → -12d |  |  |
| CON-MB-EXT-1070 | Glass West Elevation | 2026-04-24 → 2026-05-07 (+13d) | 2026-05-04 → 2026-05-15 (+11d) |  |  | 41d → 32d |  |  |
| CON-MB-EXT-1030 | Brick East Elevation | 2026-05-08 → 2026-05-12 (+4d) | 2026-06-11 → 2026-06-04 (-7d) | 25d → 18d |  | 0d → -12d |  |  |
| CON-MB-EXT-1060 | Stucco North Elevation | 2026-05-08 → 2026-05-12 (+4d) | 2026-05-18 → 2026-05-20 (+2d) |  |  | 15d → -4d |  |  |
| CON-MB-L2-1300 | Perimeter Waterproofing South Elevation | 2026-04-27 → 2026-05-12 (+15d) | 2026-04-30 → 2026-05-15 (+15d) |  |  | 30d → 2d |  |  |
| CON-MB-EXT-1090 | Glass North Elevation | 2026-05-05 → 2026-05-18 (+13d) | 2026-05-13 → 2026-05-26 (+13d) |  |  | 41d → 32d |  |  |
| CON-MB-EXT-1080 | Stucco East Elevation | 2026-05-19 → 2026-05-21 (+2d) | 2026-06-05 → 2026-06-09 (+4d) |  |  | 15d → -4d |  |  |
| CON-MB-EXT-1110 | Glass East Elevation | 2026-05-14 → 2026-05-27 (+13d) | 2026-05-22 → 2026-06-04 (+13d) |  |  | 41d → 32d |  |  |
| CON-MB-EXT-1050 | Brick South Elevation | 2026-06-12 → 2026-06-05 (-7d) | 2026-07-07 → 2026-06-30 (-7d) |  |  | 0d → -12d |  |  |
| CON-MB-EXT-1140 | Glass South Elevation | 2026-05-25 → 2026-06-05 (+11d) | 2026-06-02 → 2026-06-15 (+13d) |  |  | 41d → 32d |  |  |
| CON-MB-EXT-1100 | Stucco South Elevation | 2026-06-08 → 2026-06-10 (+2d) | 2026-06-16 → 2026-06-18 (+2d) |  |  | 15d → -4d |  |  |
| CON-MB-EXT-1120 | Swing Doors/ Automatic Sliding Entrance | 2026-07-08 → 2026-07-01 (-7d) | 2026-07-13 → 2026-07-06 (-7d) |  |  | 12d → 17d |  |  |
| 5 | **Roofing** | 2026-03-11 → 2026-03-26 (+15d) | 2026-03-31 → 2026-04-15 (+15d) |  |  |  |  |  |
| CON-MB-L5-1020 | Roof Insulation & TPO | 2026-03-11 → 2026-03-26 (+15d) | 2026-03-31 → 2026-04-15 (+15d) |  |  | 9d → -12d |  |  |
| 3 | **Office Building** |  | 2026-01-23 → 2026-02-17 (+25d) |  |  |  |  |  |
| 2 | **Interior Finishes - Office** |  | 2026-01-23 → 2026-02-17 (+25d) |  |  |  |  |  |
| CON-OFF-1090 | MEP Inspections - Office Building |  | 2026-01-02 → 2026-01-23 A (+21d) |  | 0% → 100% | 143d → none |  |  |
| CON-OFF-1100 | Hang/Finish Drywall - Office Building | 2026-01-05 → 2025-12-31 A (-5d) | 2026-01-07 → 2026-01-30 A (+23d) |  | 0% → 100% | 143d → none |  |  |
| CON-OFF-1110 | Doors, Frames & Hardware - Office Building | 2026-01-08 A | 2026-01-09 → 2026-02-02 (+24d) |  | 0% → 75% | 143d → 111.5d |  |  |
| CON-OFF-1120 | Prep/Paint Walls - Office Building | 2026-01-12 → 2026-02-02 (+21d) | 2026-01-13 → 2026-02-04 (+22d) |  |  | 143d → 111.5d |  |  |
| CON-OFF-1130 | Flooring - Office Building | 2026-01-14 → 2026-02-04 (+21d) | 2026-01-20 → 2026-02-11 (+22d) |  |  | 143d → 111.5d |  |  |
| CON-OFF-1140 | MEP Finishes, Fixtures, Accessories - Office Building | 2026-01-21 → 2026-02-11 (+21d) | 2026-01-22 → 2026-02-13 (+22d) |  |  | 143d → 111.5d |  |  |
| CON-OFF-1150 | Millwork - Office Building | 2026-01-21 → 2026-02-11 (+21d) | 2026-01-22 → 2026-02-13 (+22d) |  |  | 147d → 115.5d |  |  |
| CON-OFF-1220 | Final Cleaning - Office Building | 2026-01-23 → 2026-02-17 (+25d) | 2026-01-23 → 2026-02-17 (+25d) |  |  | 147d → 114d | CON-OFF-1110, CON-OFF-1120, CON-OFF-1130, CON-OFF-1140, CON-OFF-1150, SITE-OFF-1070, CON-OFF-1160 → CON-OFF-1110, CON-OFF-1120, CON-OFF-1130, CON-OFF-1140, CON-OFF-1150, SITE-OFF-1070, CON-OFF-1160, SITE-OFF-1090 |  |
| 3 | **Exterior Finishes - Office** |  | 2026-01-12 → 2026-02-02 (+21d) |  |  |  |  |  |
| CON-OFF-1040 | Roofing - Office Building |  |  |  |  |  |  | constraint finish on or after 2025-10-07 → none |
| CON-OFF-1060 | Exterior Sheathing/Waterproofing - Office Building | 2025-12-29 A → 2025-12-10 A (-19d) | 2026-01-05 → 2025-12-16 A (-20d) |  | 0% → 100% | 151d → none |  |  |
| CON-OFF-1170 | Brick Facade - Office Building | 2026-01-06 → 2025-12-17 A (-20d) | 2026-01-12 → 2026-02-02 (+21d) |  | 0% → 85% | 151d → 120.25d |  |  |
| CON-OFF-1160 | Store Front & Windows - Office Building | 2026-01-06 → 2025-12-30 A (-7d) | 2026-01-08 A |  | 0% → 100% | 153d → none |  |  |
| 4 | **Final Inspections & Close Out** | 2026-01-23 → 2026-02-13 (+21d) | 2026-09-11 → 2026-09-04 (-7d) |  |  |  |  |  |
| 1 | **Office Building** | 2026-01-23 → 2026-02-13 (+21d) | 2026-02-23 → 2026-06-17 (+114d) |  |  |  |  |  |
| CLO-OFF-1030 | Final Building Inspections - Office Building | 2026-01-23 → 2026-02-13 (+21d) | 2026-01-29 → 2026-02-20 (+22d) |  |  | 143d → 111.5d |  |  |
| CLO-OFF-1000 | Office Temporary Occupancy | 2026-01-30 → 2026-02-20 (+21d) | 2026-01-30 → 2026-02-23 (+24d) |  |  | 143d → 127.5d |  |  |
| CLO-OFF-1040 | Punch List Walk - Office Building | 2026-01-30 → 2026-05-25 (+115d) | 2026-02-02 → 2026-05-27 (+114d) |  |  | 149d → 45.8d |  |  |
| CLO-OFF-1050 | Punch List Corrections - Office Building | 2026-02-03 → 2026-05-27 (+113d) | 2026-02-23 → 2026-06-17 (+114d) |  |  | 149d → 45.8d |  |  |
| 2 | **Main Building** | 2026-07-14 → 2026-07-07 (-7d) | 2026-09-11 → 2026-09-04 (-7d) |  |  |  |  |  |
| CLO-MB-1000 | Fire Alarm Inspection | 2026-07-14 → 2026-07-07 (-7d) | 2026-07-20 → 2026-07-13 (-7d) |  |  | 12d → 17d |  |  |
| CLO-MB-1010 | State Inspection for Elevators | 2026-07-21 → 2026-07-16 (-5d) | 2026-07-27 → 2026-07-22 (-5d) |  |  | 12d → 15d |  |  |
| CLO-MB-1020 | Final Building Inspections | 2026-07-28 → 2026-07-23 (-5d) | 2026-08-03 → 2026-07-29 (-5d) |  |  | 12d → 15d |  |  |
| CLO-MB-1040 | Punch List Walk - Main Building | 2026-08-20 → 2026-08-13 (-7d) | 2026-08-21 → 2026-08-14 (-7d) |  |  | 5d → -12d | SITE-MB-1140, CON-MB-L1-1220, CON-MB-L1-1230, CON-MB-L1-1240, SITE-MB-1090, CON-STAIR-1040, CON-MB-L3-1160, CON-MB-L3-1170, CON-MB-L3-1180, CON-MB-L4-1130, CON-MB-L4-1120, CON-MB-L4-1110, CON-MB-L4-1080, CON-MB-L3-1100, CON-MB-L2-1120, CON-MB-L1-1170, CON-MB-L5-1090, CON-MB-2010, CON-MB-L2-1080, SITE-1030 → SITE-MB-1140, CON-MB-L1-1220, CON-MB-L1-1230, CON-MB-L1-1240, SITE-MB-1090, CON-STAIR-1040, CON-MB-L3-1160, CON-MB-L3-1170, CON-MB-L3-1180, CON-MB-L4-1130, CON-MB-L4-1120, CON-MB-L4-1110, CON-MB-L4-1080, CON-MB-L3-1100, CON-MB-L2-1120, CON-MB-L1-1170, CON-MB-L5-1090, CON-MB-2010, CON-MB-L2-1080, SITE-1030, CON-MB-L2-1150, CON-MB-L2-1160, CON-MB-L5-1140, CON-MB-L5-1150, CON-MB-L5-1160 |  |
| CLO-MB-1050 | Punch List Corrections - Main Building | 2026-08-24 → 2026-08-17 (-7d) | 2026-09-11 → 2026-09-04 (-7d) |  |  | 5d → -12d |  |  |

## Version 5 (data date 2026-02-28, saved 2026-03-11, file update_5.xer)

Note of the change: Add all project schedule files to buckets - 13 projects, MPP+XER, baseline+updates

Last finish 2026-09-04 → 2026-09-09 (+5d). Complete tasks 63 → 66.

Added:

| ID | Task | Duration | Start | Finish | Predecessors |
| --- | --- | --- | --- | --- | --- |
| 5 | **Fragnets** |  | 2026-01-26 | 2026-02-23 |  |
| 1 | **Fragnet 01 - Weather Impact January 2026** |  | 2026-01-26 | 2026-02-09 |  |
| 2 | **Fragnet 02 - Weather Impact February 2026** |  | 2026-02-02 | 2026-02-23 |  |
| FRAG02-1000 | Weather Delay - 2/2-2/5 | 5d | 2026-02-02 A | 2026-02-05 A | MIL-1000 SS |
| FRAG02-1010 | Weather Delay - 2/23 | 5d | 2026-02-23 A | 2026-02-23 A | MIL-1000 SS |

Removed: Impacts/Delays; Fragnet 001 - Weather Delays; FRAG01-1020 Temporary Heat Permit Obtained

Changed:

| ID | Task | Start | Finish | Complete | Total float | Predecessors | Other |
| --- | --- | --- | --- | --- | --- | --- | --- |
| 1 | **Public Storage Fairfax VA** |  | 2026-09-04 → 2026-09-09 (+5d) |  |  |  |  |
| 3 | **Milestones** |  | 2026-09-04 → 2026-09-09 (+5d) |  |  |  |  |
| MIL-1010 | Weathertight - Main Building | 2026-05-01 → 2026-04-30 (-1d) | 2026-05-01 → 2026-04-30 (-1d) |  | 22d → 35d |  |  |
| MIL-1020 | Permanent Power | 2026-05-20 → 2026-06-17 (+28d) | 2026-05-20 → 2026-06-17 (+28d) |  | 45.8d → 34d |  |  |
| MIL-1030 | Substantial Completion (08.24.26) | 2026-08-12 → 2026-08-17 (+5d) | 2026-08-12 → 2026-08-17 (+5d) |  |  |  | was named Substantial Completion (08.19.26); constraint finish on or before 2026-08-19 → finish on or before 2026-08-24 |
| MIL-1040 | Final Completion - Main Building | 2026-09-04 → 2026-09-09 (+5d) | 2026-09-04 → 2026-09-09 (+5d) |  | -16d → 10d |  |  |
| 1 | **Preconstruction** |  | 2026-03-06 → 2026-03-30 (+24d) |  |  |  |  |
| 1 | **Procurement** |  | 2026-03-06 → 2026-03-30 (+24d) |  |  |  |  |
| 2 | **Long Lead Items** |  | 2026-03-06 → 2026-03-30 (+24d) |  |  |  |  |
| PROC-1130 | HVAC Equipment Fabrication |  | 2026-01-16 A → 2026-02-16 A (+31d) |  |  |  |  |
| PROC-1090 | Fire Pump Submittal |  | 2026-02-02 → 2026-03-02 (+28d) |  | 107d → 90d |  |  |
| PROC-1100 | Elevator Fabrication | 2025-12-02 A → 2026-01-05 A (+34d) | 2026-03-06 → 2026-03-27 (+21d) | 50% → 60% | 43d → 31d |  |  |
| PROC-1150 | Fire Pump Fabrication | 2026-02-03 → 2026-03-03 (+28d) | 2026-03-02 → 2026-03-30 (+28d) |  | 107d → 90d |  |  |
| FRAG01-1010 | Labor Crew Clear Snow and Start Tenting |  | 2026-02-03 → 2026-02-05 A (+2d) | 60% → 100% | -9d → none |  |  |
| FRAG01-1030 | Melt Snow/Ice Using Diesel Heat | 2026-02-09 → 2026-02-06 A (-3d) | 2026-02-13 → 2026-02-09 A (-4d) | 0% → 100% | -12d → none | Temporary Heat Permit Obtained, FRAG01-1010 → FRAG01-1010, MIL-1000 SS, FRAG02-1000 | was named Propane Heaters Installed, Melt Snow/Ice |
| 2 | **Construction** |  | 2026-08-12 → 2026-08-17 (+5d) |  |  |  |  |
| 2 | **Site Work** |  | 2026-08-12 → 2026-08-17 (+5d) |  |  |  |  |
| SITE-1030 | Stormwater Management Ponds Phase II | 2026-03-27 → 2026-04-24 (+28d) | 2026-04-10 → 2026-05-07 (+27d) |  | 76.8d → 79d |  |  |
| 1 | **Site Work - Main Building** |  | 2026-08-12 → 2026-08-17 (+5d) |  |  |  |  |
| SITE-MB-1050 | Storm Structures and Pipe - Main Building |  | 2026-02-11 → 2026-03-13 (+30d) | 75% → 67% | 77.5d → 83d |  |  |
| SITE-MB-1070 | Fine Grading - Main Building | 2025-12-16 A → 2026-03-02 (+76d) | 2026-02-11 → 2026-03-20 (+37d) | 50% → 0% | 15.5d → 16d |  |  |
| SITE-MB-1060 | Sanitary Sewer - Main Building | 2026-02-11 → 2026-04-01 (+49d) | 2026-02-25 → 2026-04-14 (+48d) |  | 77.5d → 71d |  | constraint none → start on or after 2026-04-01 |
| SITE-MB-1100 | Curb and Gutter - Main Building | 2026-05-12 → 2026-05-27 (+15d) | 2026-05-20 → 2026-06-04 (+15d) |  | 17d → 34d |  |  |
| SITE-MB-1120 | Stone Base Parking Lot - Main Building | 2026-05-21 → 2026-06-05 (+15d) | 2026-06-03 → 2026-06-18 (+15d) |  | 17d → 34d |  |  |
| SITE-MB-1080 | Sidewalk - Main Building | 2026-07-01 → 2026-07-16 (+15d) | 2026-07-14 → 2026-07-29 (+15d) |  | -12d → 5d |  |  |
| SITE-MB-1090 | Landscape - Main Building | 2026-07-30 → 2026-07-16 (-14d) | 2026-08-12 → 2026-07-29 (-14d) |  | -12d → 18d | SITE-MB-1080, SITE-MB-1130, CON-MB-EXT-1030, CON-MB-EXT-1050 → CON-MB-EXT-1050, CON-MB-EXT-1030 |  |
| SITE-MB-1130 | Paving (Includes SHA Work) - Main Building | 2026-07-15 → 2026-07-30 (+15d) | 2026-07-29 → 2026-08-13 (+15d) |  | -12d → 5d |  |  |
| SITE-MB-1140 | Line Striping - Main Building | 2026-07-30 → 2026-08-14 (+15d) | 2026-07-31 → 2026-08-17 (+17d) |  | -4d → 5d |  |  |
| 3 | **Site Work - Office** |  | 2026-05-25 → 2026-03-25 (-61d) |  |  |  |  |
| SITE-OFF-1030 | Domestic & Fire Water Online - Office Building | 2026-02-02 → 2026-03-02 (+28d) | 2026-02-13 → 2026-03-13 (+28d) |  | 114d → 106d |  |  |
| SITE-OFF-1060 | Fine Grading - Office Building | 2025-12-16 A → 2026-03-02 (+76d) | 2026-01-16 A → 2026-03-09 (+52d) | 100% → 0% | none → 110d |  |  |
| SITE-OFF-1080 | Landscape - Office Building | 2026-02-02 → 2026-03-10 (+36d) | 2026-02-02 → 2026-03-10 (+36d) |  | 125d → 121d |  |  |
| SITE-OFF-1090 | Curb and Gutter - Office Building | 2026-02-16 → 2026-03-16 (+28d) | 2026-02-16 → 2026-03-16 (+28d) |  | 114d → 106d | SITE-OFF-1030, SITE-OFF-1120 → SITE-OFF-1030, SITE-OFF-1060 |  |
| SITE-OFF-1070 | Sidewalk - Office Building | 2026-02-04 → 2026-03-17 (+41d) | 2026-02-05 → 2026-03-18 (+41d) |  | 121d → 106d | CON-OFF-1170, SITE-OFF-1120 → CON-OFF-1170, SITE-OFF-1090 |  |
| SITE-OFF-1110 | Stone Base Parking Lot - Office Building | 2025-12-17 A → 2026-03-17 (+90d) | 2025-12-17 A → 2026-03-17 (+90d) | 100% → 0% | none → 107d | SITE-OFF-1060 → SITE-OFF-1090 |  |
| SITE-OFF-1120 | Paving - Office Building | 2025-12-18 A → 2026-03-19 (+91d) | 2026-02-03 → 2026-03-20 (+45d) |  | 121d → 106d | SITE-OFF-1110 → SITE-OFF-1070, SITE-OFF-1110 |  |
| SITE-OFF-1100 | Misc Exterior Items (Vehicle Gate Operator) - Office Building | 2026-05-20 → 2026-03-23 (-58d) | 2026-05-25 → 2026-03-25 (-61d) |  | 45.8d → 110d | SITE-OFF-1120, MIL-1020 SS → SITE-OFF-1120 |  |
| SITE-OFF-1130 | Line Striping - Office Building | 2026-02-04 → 2026-03-23 (+47d) | 2026-02-04 → 2026-03-23 (+47d) |  | 123d → 106d |  |  |
| 1 | **Main Building** |  | 2026-07-15 → 2026-07-21 (+6d) |  |  |  |  |
| 1 | **Substructure** |  | 2026-02-10 → 2026-03-09 (+27d) |  |  |  |  |
| CON-MB-1040 | Foundation Waterproofing | 2026-02-03 → 2026-03-03 (+28d) | 2026-02-10 → 2026-03-09 (+27d) |  | -3.2d → 5d |  |  |
| 9 | **Superstructure** |  | 2026-05-04 → 2026-05-01 (-3d) |  |  |  |  |
| 1 | **First Floor Superstructure** |  | 2026-01-30 → 2026-02-27 (+28d) |  |  |  |  |
| CON-MB-L1-1090 | Exterior & Interior Framing - 1st Floor |  | 2026-01-30 A → 2026-02-27 A (+28d) |  |  |  |  |
| 2 | **Second Floor Superstructure** |  | 2026-02-03 → 2026-03-02 (+27d) |  |  |  |  |
| CON-MB-L2-1040 | Exterior & Interior Framing - 2nd Floor | 2026-01-13 A → 2026-02-02 A (+20d) | 2026-02-03 → 2026-03-02 (+27d) | 80% → 90% | -3d → 5d |  |  |
| 3 | **Third Floor Superstructure** |  | 2026-02-25 → 2026-03-18 (+21d) |  |  |  |  |
| CON-MB-L3-1040 | Exterior & Interior Framing - 3rd Floor | 2026-02-12 → 2026-03-05 (+21d) | 2026-02-25 → 2026-03-18 (+21d) |  | 34d → 31d |  |  |
| 6 | **Fourth Floor Superstructure** | 2026-01-06 → 2026-01-07 (+1d) | 2026-03-17 → 2026-03-30 (+13d) |  |  |  |  |
| CON-MB-L4-1000 | Structural Steel Columns & Beams - 4th Floor | 2026-01-06 A → 2026-01-07 A (+1d) |  |  |  |  |  |
| CON-MB-L4-1010 | Metal Decking - 5th Floor | 2026-01-16 A → 2026-01-20 A (+4d) |  |  |  |  |  |
| CON-MB-L4-1020 | Prep & Pour SOD - 5th Floor | 2026-02-16 → 2026-02-09 A (-7d) | 2026-02-19 → 2026-02-11 A (-8d) | 0% → 100% | -12d → none | CON-MB-L4-1010, FRAG01-1030 → FRAG01-1030, CON-MB-L4-1010, FRAG02-1000 |  |
| CON-MB-L4-1030 | Exterior & Interior Framing - 4th Floor | 2026-03-04 → 2026-03-17 (+13d) | 2026-03-17 → 2026-03-30 (+13d) |  | -12d → 7d |  |  |
| 4 | **Fifth Floor Superstructure** | 2026-02-20 → 2026-02-16 (-4d) | 2026-05-04 → 2026-05-01 (-3d) |  |  |  |  |
| CON-MB-L5-1000 | Structural Steel Columns & Beams - 5th Floor | 2026-02-20 → 2026-02-16 A (-4d) | 2026-03-11 → 2026-03-10 (-1d) | 0% → 50% | -12d → 17d | CON-MB-L4-1020, CON-MB-L4-1000 → CON-MB-L4-1000, CON-MB-L4-1020, FRAG02-1010 |  |
| CON-MB-L5-1010 | Framing & Metal Decking - Roof | 2026-03-12 → 2026-03-11 (-1d) | 2026-03-25 → 2026-03-24 (-1d) |  | -12d → 17d | CON-MB-L5-1000 → CON-MB-L5-1000, FRAG02-1010 |  |
| CON-MB-L5-1050 | Exterior & Interior Framing - 5th Floor | 2026-04-21 → 2026-04-20 (-1d) | 2026-05-04 → 2026-05-01 (-3d) |  | -12d → 17d |  |  |
| 3 | **Interior Finishes** |  | 2026-07-15 → 2026-07-20 (+5d) |  |  |  |  |
| CON-MB-2000 | Grind/Seal Floors (Full Building) | 2026-06-19 → 2026-06-26 (+7d) | 2026-07-02 → 2026-07-09 (+7d) |  | 10d → 17d |  |  |
| CON-MB-2010 | Final Cleaning (Full Building) | 2026-06-23 → 2026-06-30 (+7d) | 2026-07-13 → 2026-07-20 (+7d) |  | 10d → 25d |  |  |
| 6 | **Elevator** |  | 2026-07-15 → 2026-07-14 (-1d) |  |  |  |  |
| CON-ELEV-1020 | Elevator Install | 2026-04-16 → 2026-04-15 (-1d) | 2026-07-15 → 2026-07-14 (-1d) |  | 15d → 19d |  |  |
| 8 | **Stair Shafts** |  | 2026-02-05 → 2026-04-20 (+74d) |  |  |  |  |
| CON-STAIR-1030 | Doors & HW - Stairs | 2026-02-02 → 2026-04-15 (+72d) | 2026-02-03 → 2026-04-16 (+72d) |  | 122d → 77d | CON-STAIR-1010, CON-STAIR-1000, CON-STAIR-1020 → CON-STAIR-1020, CON-STAIR-1000, CON-STAIR-1010, CON-MB-L5-1020 |  |
| CON-STAIR-1040 | Prep/Paint - Stairs | 2026-02-04 → 2026-04-17 (+72d) | 2026-02-05 → 2026-04-20 (+74d) |  | 122d → 92d |  |  |
| 1 | **First Floor Interior Finishes** |  | 2026-05-25 → 2026-05-22 (-3d) |  |  |  |  |
| CON-MB-L1-1130 | Fireproofing Structural Steel - 1st Floor |  | 2026-01-09 A → 2025-12-30 A (-10d) |  |  |  |  |
| CON-MB-L1-1160 | HVAC Rough In - 1st Floor |  | 2026-02-03 → 2026-02-13 A (+10d) | 50% → 100% | 45.5d → none |  |  |
| CON-MB-L1-1140 | OH & Wall Plumbing Rough In - 1st Floor | 2026-01-07 A → 2026-01-12 A (+5d) | 2026-02-03 → 2026-02-10 A (+7d) | 60% → 100% | 45.8d → none |  |  |
| CON-MB-L1-1170 | Sprinkler Rough In - 1st Floor |  | 2026-02-11 → 2026-02-27 A (+16d) | 20% → 100% | 118d → none |  |  |

| ID | Task | Start | Finish | Complete | Total float | Predecessors |
| --- | --- | --- | --- | --- | --- | --- |
| CON-MB-L1-1150 | Electric & Low Voltage OH & Wall Rough In - 1st Floor | 2026-01-07 A → 2026-02-11 A (+35d) | 2026-02-09 → 2026-02-25 A (+16d) | 40% → 100% | 41d → none |  |
| CON-MB-L1-1180 | OH & Wall MEP Inspections - 1st Floor | 2026-02-10 → 2026-03-02 (+20d) | 2026-02-11 → 2026-03-03 (+20d) |  | 41d → 39d |  |
| CON-MB-L1-1270 | Janus Wall Panels - 1st Floor | 2026-03-12 → 2026-04-03 (+22d) | 2026-04-01 → 2026-04-23 (+22d) |  | 21d → 17d |  |
| CON-MB-L1-1190 | Hang & Finish Drywall - 1st Floor | 2026-05-04 → 2026-05-01 (-3d) | 2026-05-12 → 2026-05-11 (-1d) |  | 45d → 68d |  |
| CON-MB-L1-1200 | Doors & HW - 1st Floor | 2026-05-13 → 2026-05-12 (-1d) | 2026-05-14 → 2026-05-13 (-1d) |  | 45d → 68d |  |
| CON-MB-L1-1210 | Prep/Paint Walls & Ceilings - 1st Floor | 2026-05-15 → 2026-05-14 (-1d) | 2026-05-18 → 2026-05-15 (-3d) |  | 45d → 68d |  |
| CON-MB-L1-1220 | Plumbing Fixtures - 1st Floor | 2026-05-19 → 2026-05-18 (-1d) | 2026-05-20 → 2026-05-19 (-1d) |  | 48d → 71d |  |
| CON-MB-L1-1230 | Diffusers - 1st Floor | 2026-05-19 → 2026-05-18 (-1d) | 2026-05-25 → 2026-05-22 (-3d) |  | 45d → 68d |  |
| CON-MB-L1-1240 | Light Fixtures - 1st Floor | 2026-05-19 → 2026-05-18 (-1d) | 2026-05-25 → 2026-05-22 (-3d) |  | 45d → 68d |  |
| 2 | **Second Floor Interior Finishes** | 2026-01-12 → 2026-01-05 (-7d) | 2026-03-11 → 2026-04-02 (+22d) |  |  |  |
| CON-MB-L2-1090 | Fireproofing Structural Steel - 2nd Floor | 2026-01-12 A → 2026-01-05 A (-7d) |  |  |  |  |
| CON-MB-L2-1110 | HVAC Rough In - 2nd Floor | 2026-01-19 A → 2026-02-19 A (+31d) | 2026-02-05 → 2026-03-03 (+26d) | 20% → 60% | 29d → 23d | CON-MB-L2-1090, PROC-1130, CON-MB-L2-1040 SS+3d → CON-MB-L2-1040 SS+5d, PROC-1130, CON-MB-L2-1090 |
| CON-MB-L2-1100 | Electric OH & Wall Rough In - 2nd Floor | 2026-02-04 → 2026-02-26 A (+22d) | 2026-02-17 → 2026-03-11 (+22d) | 0% → 20% | 21d → 17d | CON-MB-L2-1090, CON-MB-L2-1040 → CON-MB-L2-1040 SS+5d, CON-MB-L2-1090 |
| CON-MB-L2-1060 | Doors & HW - 2nd Floor | 2026-02-04 → 2026-03-03 (+27d) | 2026-02-05 → 2026-03-04 (+27d) |  | 120d → 123d |  |
| CON-MB-L2-1120 | Sprinkler Rough In - 2nd Floor | 2026-02-04 → 2026-03-03 (+27d) | 2026-02-17 → 2026-03-16 (+27d) |  | 114d → 110d |  |
| CON-MB-L2-1080 | Prep/Paint Walls - 2nd Floor | 2026-02-06 → 2026-03-05 (+27d) | 2026-02-09 → 2026-03-06 (+25d) |  | 120d → 123d |  |
| CON-MB-L2-1140 | OH & Wall MEP Inspections - 2nd Floor | 2026-02-18 → 2026-03-12 (+22d) | 2026-02-18 → 2026-03-12 (+22d) |  | 21d → 17d |  |
| CON-MB-L2-1070 | Janus Wall Panels - 2nd Floor | 2026-02-19 → 2026-03-13 (+22d) | 2026-03-11 → 2026-04-02 (+22d) |  | 21d → 17d |  |
| CON-MB-L2-1150 | Diffusers - 2nd Floor | 2026-02-19 → 2026-03-13 (+22d) | 2026-02-25 → 2026-03-19 (+22d) |  | 108d → 114d |  |
| CON-MB-L2-1160 | Light Fixtures - 2nd Floor | 2026-02-19 → 2026-03-13 (+22d) | 2026-02-25 → 2026-03-19 (+22d) |  | 108d → 114d |  |
| 3 | **Third Floor Interior Finishes** | 2026-02-02 → 2026-02-23 (+21d) | 2026-05-22 → 2026-05-21 (-1d) |  |  |  |
| CON-MB-L3-1060 | Fire Proofing Structural Steel - 3rd Floor | 2026-02-02 → 2026-02-23 A (+21d) | 2026-02-11 → 2026-03-04 (+21d) | 0% → 62% | -6d → 7d |  |
| CON-MB-L3-1070 | OH & Wall Plumbing Rough In - 3rd Floor | 2026-02-26 → 2026-03-19 (+21d) | 2026-03-02 → 2026-03-23 (+21d) |  | 41d → 38d |  |
| CON-MB-L3-1080 | Electric & Low Voltage OH & Wall Rough In - 3rd Floor | 2026-02-26 → 2026-03-19 (+21d) | 2026-03-11 → 2026-04-01 (+21d) |  | 34d → 31d |  |
| CON-MB-L3-1090 | HVAC Rough In - 3rd Floor | 2026-02-26 → 2026-03-19 (+21d) | 2026-03-04 → 2026-03-25 (+21d) |  | 39d → 36d |  |
| CON-MB-L3-1100 | Sprinkler Rough In - 3rd Floor | 2026-02-26 → 2026-03-19 (+21d) | 2026-03-11 → 2026-04-01 (+21d) |  |  |  |
| CON-MB-L3-1120 | OH & Wall MEP Inspections - 3rd Floor | 2026-03-12 → 2026-04-02 (+21d) | 2026-03-13 → 2026-04-03 (+21d) |  | 34d → 31d |  |
| CON-MB-L3-1150 | Janus Wall Panels - 3rd Floor | 2026-04-02 → 2026-04-24 (+22d) | 2026-04-22 → 2026-05-14 (+22d) |  | 21d → 17d |  |
| CON-MB-L3-1130 | Hang/Finish Drywall - 3rd Floor | 2026-05-04 → 2026-05-01 (-3d) | 2026-05-12 → 2026-05-11 (-1d) |  | 46d → 62d |  |
| CON-MB-L3-1140 | Prep/Paint Walls & Ceilings - 3rd Floor | 2026-05-13 → 2026-05-12 (-1d) | 2026-05-15 → 2026-05-14 (-1d) |  | 46d → 62d |  |
| CON-MB-L3-1160 | Plumbing Fixtures - 3rd Floor | 2026-05-18 → 2026-05-15 (-3d) | 2026-05-21 → 2026-05-20 (-1d) |  | 47d → 63d |  |
| CON-MB-L3-1170 | Diffusers - 3rd Floor | 2026-05-18 → 2026-05-15 (-3d) | 2026-05-22 → 2026-05-21 (-1d) |  | 46d → 62d |  |
| CON-MB-L3-1180 | Light Fixtures - 3rd Floor | 2026-05-18 → 2026-05-15 (-3d) | 2026-05-22 → 2026-05-21 (-1d) |  | 46d → 62d |  |
| 4 | **Fourth Floor Interior Finishes** | 2026-02-20 → 2026-03-05 (+13d) | 2026-05-13 → 2026-06-04 (+22d) |  |  |  |
| CON-MB-L4-1050 | Fire Proofing Structural Steel - 4th Floor | 2026-02-20 → 2026-03-05 (+13d) | 2026-03-03 → 2026-03-16 (+13d) |  | -12d → 7d |  |
| CON-MB-L4-1060 | Electric OH & Wall Rough In - 4th Floor | 2026-03-18 → 2026-03-31 (+13d) | 2026-03-31 → 2026-04-13 (+13d) |  | 36d → 39d |  |
| CON-MB-L4-1070 | HVAC Rough In - 4th Floor | 2026-03-18 → 2026-03-31 (+13d) | 2026-03-24 → 2026-04-06 (+13d) |  | 41d → 44d |  |
| CON-MB-L4-1080 | Sprinkler Rough In - 4th Floor | 2026-03-18 → 2026-03-31 (+13d) | 2026-03-31 → 2026-04-13 (+13d) |  | 84d → 90d |  |
| CON-MB-L4-1100 | OH & Wall MEP Inspections - 4th Floor | 2026-04-01 → 2026-04-14 (+13d) | 2026-04-01 → 2026-04-14 (+13d) |  | 36d → 39d |  |
| CON-MB-L4-1110 | Prep/Paint Walls - 4th Floor | 2026-04-02 → 2026-04-15 (+13d) | 2026-04-03 → 2026-04-16 (+13d) |  | 81d → 87d |  |
| CON-MB-L4-1120 | Diffusers - 4th Floor | 2026-04-02 → 2026-04-15 (+13d) | 2026-04-08 → 2026-04-21 (+13d) |  | 78d → 84d |  |
| CON-MB-L4-1130 | Light Fixtures - 4th Floor | 2026-04-02 → 2026-04-15 (+13d) | 2026-04-08 → 2026-04-21 (+13d) |  | 78d → 84d |  |
| CON-MB-L4-1140 | Janus Wall Panels - 4th Floor | 2026-04-23 → 2026-05-15 (+22d) | 2026-05-13 → 2026-06-04 (+22d) |  | 21d → 17d |  |
| 5 | **Fifth Floor Interior Finishes** | 2026-04-16 → 2026-04-15 (-1d) | 2026-06-18 → 2026-06-25 (+7d) |  |  |  |
| CON-MB-L5-1040 | Fire Proofing Structural Steel - 5th Floor | 2026-04-16 → 2026-04-15 (-1d) | 2026-04-27 → 2026-04-24 (-3d) |  | -12d → 17d |  |
| CON-MB-L5-1060 | Electric & Low Voltage OH & Wall Rough In - 5th Floor | 2026-05-05 → 2026-05-04 (-1d) | 2026-05-18 → 2026-05-15 (-3d) |  | 10d → 23d |  |
| CON-MB-L5-1070 | OH & Wall Plumbing Rough In - 5th Floor | 2026-05-05 → 2026-05-04 (-1d) | 2026-05-07 → 2026-05-06 (-1d) |  | 17d → 30d |  |
| CON-MB-L5-1080 | HVAC Rough In - 5th Floor | 2026-05-05 → 2026-05-04 (-1d) | 2026-05-11 → 2026-05-08 (-3d) |  | 15d → 28d |  |
| CON-MB-L5-1090 | Sprinkler Rough In - 5th Floor | 2026-05-05 → 2026-05-04 (-1d) | 2026-05-18 → 2026-05-15 (-3d) |  | 50d → 66d |  |
| CON-MB-L5-1110 | OH & Wall MEP Inspections - 5th Floor | 2026-05-19 → 2026-05-18 (-1d) | 2026-05-19 → 2026-05-18 (-1d) |  | 10d → 23d |  |
| CON-MB-L5-1120 | Hang/Finish Drywall - 5th Floor | 2026-05-20 → 2026-05-19 (-1d) | 2026-05-28 → 2026-05-27 (-1d) |  | 10d → 23d |  |
| CON-MB-L5-1130 | Prep/Paint Walls - 5th Floor | 2026-05-29 → 2026-05-28 (-1d) | 2026-06-01 → 2026-05-29 (-3d) |  | 36d → 59d |  |
| CON-MB-L5-1140 | Plumbing Fixtures - 5th Floor | 2026-06-02 → 2026-06-01 (-1d) | 2026-06-05 → 2026-06-04 (-1d) |  | 36d → 59d |  |
| CON-MB-L5-1150 | Diffusers - 5th Floor | 2026-06-02 → 2026-06-01 (-1d) | 2026-06-02 → 2026-06-01 (-1d) |  | 39d → 62d |  |
| CON-MB-L5-1160 | Light Fixtures - 5th Floor | 2026-06-02 → 2026-06-01 (-1d) | 2026-06-02 → 2026-06-01 (-1d) |  | 39d → 62d |  |
| CON-MB-L5-1170 | Janus Wall Panels - 5th Floor | 2026-05-29 → 2026-06-05 (+7d) | 2026-06-18 → 2026-06-25 (+7d) |  | 10d → 17d |  |
| 7 | **Switchgear Room** | 2026-02-03 → 2026-03-03 (+28d) | 2026-05-20 → 2026-06-16 (+27d) |  |  |  |
| CON-POW-1000 | Switchgear Room Enclosure | 2026-02-03 → 2026-03-03 (+28d) | 2026-02-17 → 2026-03-16 (+27d) |  | 45.8d → 34d |  |
| CON-POW-1010 | Install Switchgear Equipment | 2026-02-17 → 2026-03-17 (+28d) | 2026-03-10 → 2026-04-06 (+27d) |  | 45.8d → 34d |  |
| CON-POW-1020 | Switchgear Lights and Power | 2026-03-10 → 2026-04-07 (+28d) | 2026-03-31 → 2026-04-27 (+27d) |  | 45.8d → 34d |  |
| CON-POW-1030 | City Inspection | 2026-03-31 → 2026-04-28 (+28d) | 2026-04-01 → 2026-04-28 (+27d) |  | 45.8d → 34d |  |
| CON-POW-1040 | Dominion Primary | 2026-04-01 → 2026-04-29 (+28d) | 2026-04-29 → 2026-05-26 (+27d) |  | 45.8d → 34d |  |
| CON-POW-1050 | Dominion Transformer | 2026-04-29 → 2026-05-27 (+28d) | 2026-05-06 → 2026-06-02 (+27d) |  | 45.8d → 34d |  |
| CON-POW-1060 | Dominion Secondary | 2026-05-06 → 2026-06-03 (+28d) | 2026-05-13 → 2026-06-09 (+27d) |  | 45.8d → 34d |  |
| CON-POW-1070 | Power Activation | 2026-05-13 → 2026-06-10 (+28d) | 2026-05-20 → 2026-06-16 (+27d) |  | 45.8d → 34d |  |
| 2 | **Exterior Finishes** | 2026-01-12 → 2026-01-05 (-7d) | 2026-07-06 → 2026-07-21 (+15d) |  |  |  |
| CON-MB-L1-1250 | Exterior Sheathing - 1st Floor | 2026-01-12 A → 2026-01-05 A (-7d) | 2026-02-03 → 2026-03-02 (+27d) | 80% → 83% | -3.2d → 5d |  |
| CON-MB-L2-1050 | Exterior Sheathing - 2nd Floor | 2026-02-02 → 2026-03-02 (+28d) | 2026-02-09 → 2026-03-09 (+28d) |  | -3d → 5d |  |
| CON-MB-L1-1280 | Perimeter Waterproofing - 1st Floor | 2026-02-10 → 2026-03-10 (+28d) | 2026-02-13 → 2026-03-12 (+27d) |  | -3.2d → 5d |  |
| CON-MB-L3-1050 | Exterior Sheathing - 3rd Floor | 2026-02-17 → 2026-03-10 (+21d) | 2026-02-24 → 2026-03-17 (+21d) |  | 38d → 51d |  |

| ID | Task | Start | Finish | Complete | Total float | Predecessors |
| --- | --- | --- | --- | --- | --- | --- |
| CON-MB-L5-1100 | Brick Facade - 1st Floor | 2026-02-13 → 2026-03-13 (+28d) | 2026-03-27 → 2026-04-23 (+27d) |  | -3.2d → 5d |  |
| CON-MB-L4-1040 | Exterior Sheathing - 4th Floor | 2026-03-09 → 2026-03-20 (+11d) | 2026-03-16 → 2026-03-27 (+11d) |  | -12d → 7d |  |
| CON-MB-L1-1260 | Perimeter Waterproofing West Elevation (Excluding 5th Floor) | 2026-03-17 → 2026-03-30 (+13d) | 2026-03-20 → 2026-04-02 (+13d) |  | -12d → 7d |  |
| CON-MB-L2-1280 | Perimeter Waterproofing North Elevation (Excluding 5th Floor) | 2026-03-23 → 2026-04-03 (+11d) | 2026-03-26 → 2026-04-08 (+13d) |  | 2d → 21d |  |
| CON-MB-EXT-1000 | Brick West Elevation (Excluding 5th Floor) | 2026-03-23 → 2026-04-07 (+15d) | 2026-04-15 → 2026-04-30 (+15d) |  | -12d → 5d |  |
| CON-MB-L5-1030 | Exterior Sheathing - 5th Floor | 2026-04-24 → 2026-04-23 (-1d) | 2026-05-01 → 2026-04-30 (-1d) |  | -12d → 17d |  |
| CON-MB-EXT-1130 | Storefront | 2026-03-27 → 2026-04-24 (+28d) | 2026-04-24 → 2026-05-21 (+27d) |  | 61.8d → 45d |  |
| CON-MB-EXT-1020 | Brick North and West Elevations (5th Floor) | 2026-04-16 → 2026-05-01 (+15d) | 2026-05-11 → 2026-05-26 (+15d) |  | -12d → 5d |  |
| CON-MB-EXT-1040 | Stucco West Elevation | 2026-04-16 → 2026-05-01 (+15d) | 2026-05-06 → 2026-05-21 (+15d) |  | -1d → 16d |  |
| CON-MB-L2-1310 | Perimeter Waterproofing West/North Elevations (5th Floor) | 2026-05-04 → 2026-05-01 (-3d) | 2026-05-05 → 2026-05-04 (-1d) |  | -12d → 17d |  |
| CON-MB-L2-1290 | Perimeter Waterproofing East Elevation | 2026-05-06 → 2026-05-05 (-1d) | 2026-05-11 → 2026-05-08 (-3d) |  | -12d → 17d |  |
| CON-MB-L2-1300 | Perimeter Waterproofing South Elevation | 2026-05-12 → 2026-05-11 (-1d) | 2026-05-15 → 2026-05-14 (-1d) |  | 2d → 31d |  |
| CON-MB-EXT-1070 | Glass West Elevation | 2026-05-07 → 2026-05-22 (+15d) | 2026-05-15 → 2026-06-01 (+17d) |  | 32d → 24d |  |
| CON-MB-EXT-1150 | Canopies | 2026-04-24 → 2026-05-22 (+28d) | 2026-05-05 → 2026-06-01 (+27d) |  | 61.8d → 45d |  |
| CON-MB-EXT-1030 | Brick East Elevation | 2026-05-12 → 2026-05-27 (+15d) | 2026-06-04 → 2026-06-19 (+15d) |  | -12d → 5d |  |
| CON-MB-EXT-1060 | Stucco North Elevation | 2026-05-12 → 2026-05-27 (+15d) | 2026-05-20 → 2026-06-04 (+15d) |  | -4d → 13d |  |
| CON-MB-EXT-1090 | Glass North Elevation | 2026-05-18 → 2026-06-02 (+15d) | 2026-05-26 → 2026-06-10 (+15d) |  | 32d → 24d |  |
| CON-MB-EXT-1080 | Stucco East Elevation | 2026-05-21 → 2026-06-05 (+15d) | 2026-06-09 → 2026-06-24 (+15d) |  | -4d → 13d |  |
| CON-MB-EXT-1110 | Glass East Elevation | 2026-05-27 → 2026-06-11 (+15d) | 2026-06-04 → 2026-06-19 (+15d) |  | 32d → 24d |  |
| CON-MB-EXT-1050 | Brick South Elevation | 2026-06-05 → 2026-06-22 (+17d) | 2026-06-30 → 2026-07-15 (+15d) |  | -12d → 5d |  |
| CON-MB-EXT-1140 | Glass South Elevation | 2026-06-05 → 2026-06-22 (+17d) | 2026-06-15 → 2026-06-30 (+15d) |  | 32d → 24d |  |
| CON-MB-EXT-1100 | Stucco South Elevation | 2026-06-10 → 2026-06-25 (+15d) | 2026-06-18 → 2026-07-03 (+15d) |  | -4d → 13d |  |
| CON-MB-EXT-1120 | Swing Doors/ Automatic Sliding Entrance | 2026-07-01 → 2026-07-16 (+15d) | 2026-07-06 → 2026-07-21 (+15d) |  | 17d → 9d |  |
| 5 | **Roofing** | 2026-03-26 → 2026-03-25 (-1d) | 2026-04-15 → 2026-04-14 (-1d) |  |  |  |
| CON-MB-L5-1020 | Roof Insulation & TPO | 2026-03-26 → 2026-03-25 (-1d) | 2026-04-15 → 2026-04-14 (-1d) |  | -12d → 17d |  |
| 3 | **Office Building** |  | 2026-02-17 → 2026-03-24 (+35d) |  |  |  |
| 2 | **Interior Finishes - Office** |  | 2026-02-17 → 2026-03-24 (+35d) |  |  |  |
| CON-OFF-1090 | MEP Inspections - Office Building |  | 2026-01-23 A → 2026-03-03 (+39d) | 100% → 0% | none → 101d |  |
| CON-OFF-1100 | Hang/Finish Drywall - Office Building | 2025-12-31 A → 2026-03-04 (+63d) | 2026-01-30 A → 2026-03-06 (+35d) | 100% → 0% | none → 101d |  |
| CON-OFF-1110 | Doors, Frames & Hardware - Office Building | 2026-01-08 A → 2026-03-09 (+60d) | 2026-02-02 → 2026-03-10 (+36d) | 75% → 0% | 111.5d → 101d |  |
| CON-OFF-1120 | Prep/Paint Walls - Office Building | 2026-02-02 → 2026-03-11 (+37d) | 2026-02-04 → 2026-03-12 (+36d) |  | 111.5d → 101d |  |
| CON-OFF-1130 | Flooring - Office Building | 2026-02-04 → 2026-03-13 (+37d) | 2026-02-11 → 2026-03-19 (+36d) |  | 111.5d → 101d |  |
| CON-OFF-1140 | MEP Finishes, Fixtures, Accessories - Office Building | 2026-02-11 → 2026-03-20 (+37d) | 2026-02-13 → 2026-03-23 (+38d) |  | 111.5d → 101d |  |
| CON-OFF-1150 | Millwork - Office Building | 2026-02-11 → 2026-03-20 (+37d) | 2026-02-13 → 2026-03-23 (+38d) |  | 115.5d → 105d |  |
| CON-OFF-1220 | Final Cleaning - Office Building | 2026-02-17 → 2026-03-24 (+35d) | 2026-02-17 → 2026-03-24 (+35d) |  | 114d → 105d | CON-OFF-1110, CON-OFF-1120, CON-OFF-1130, CON-OFF-1140, CON-OFF-1150, SITE-OFF-1070, CON-OFF-1160, SITE-OFF-1090 → CON-OFF-1160, SITE-OFF-1070, CON-OFF-1150, CON-OFF-1140, CON-OFF-1130, CON-OFF-1120, CON-OFF-1110 |
| 3 | **Exterior Finishes - Office** |  | 2026-02-02 → 2026-03-11 (+37d) |  |  |  |
| CON-OFF-1060 | Exterior Sheathing/Waterproofing - Office Building | 2025-12-10 A → 2025-12-29 A (+19d) | 2025-12-16 A → 2026-03-04 (+78d) | 100% → 0% | none → 109d |  |
| CON-OFF-1160 | Store Front & Windows - Office Building | 2025-12-30 A → 2026-03-05 (+65d) | 2026-01-08 A → 2026-03-09 (+60d) | 100% → 0% | none → 111d |  |
| CON-OFF-1170 | Brick Facade - Office Building | 2025-12-17 A → 2026-03-05 (+78d) | 2026-02-02 → 2026-03-11 (+37d) | 85% → 0% | 120.25d → 109d |  |
| 4 | **Final Inspections & Close Out** | 2026-02-13 → 2026-03-24 (+39d) | 2026-09-04 → 2026-09-09 (+5d) |  |  |  |
| 1 | **Office Building** | 2026-02-13 → 2026-03-24 (+39d) | 2026-06-17 → 2026-04-22 (-56d) |  |  |  |
| CLO-OFF-1030 | Final Building Inspections - Office Building | 2026-02-13 → 2026-03-24 (+39d) | 2026-02-20 → 2026-03-30 (+38d) |  | 111.5d → 101d |  |
| CLO-OFF-1000 | Office Temporary Occupancy | 2026-02-20 → 2026-03-31 (+39d) | 2026-02-23 → 2026-03-31 (+36d) |  | 127.5d → 101d |  |
| CLO-OFF-1040 | Punch List Walk - Office Building | 2026-05-25 → 2026-03-31 (-55d) | 2026-05-27 → 2026-04-01 (-56d) |  | 45.8d → 107d |  |
| CLO-OFF-1050 | Punch List Corrections - Office Building | 2026-05-27 → 2026-04-02 (-55d) | 2026-06-17 → 2026-04-22 (-56d) |  | 45.8d → 107d |  |
| 2 | **Main Building** | 2026-07-07 → 2026-07-22 (+15d) | 2026-09-04 → 2026-09-09 (+5d) |  |  |  |
| CLO-MB-1000 | Fire Alarm Inspection | 2026-07-07 → 2026-07-22 (+15d) | 2026-07-13 → 2026-07-28 (+15d) |  | 17d → 9d |  |
| CLO-MB-1010 | State Inspection for Elevators | 2026-07-16 → 2026-07-29 (+13d) | 2026-07-22 → 2026-08-04 (+13d) |  | 15d → 9d |  |
| CLO-MB-1020 | Final Building Inspections | 2026-07-23 → 2026-08-05 (+13d) | 2026-07-29 → 2026-08-11 (+13d) |  | 15d → 9d |  |
| CLO-MB-1040 | Punch List Walk - Main Building | 2026-08-13 → 2026-08-18 (+5d) | 2026-08-14 → 2026-08-19 (+5d) |  | -12d → 7d |  |
| CLO-MB-1050 | Punch List Corrections - Main Building | 2026-08-17 → 2026-08-20 (+3d) | 2026-09-04 → 2026-09-09 (+5d) |  | -12d → 7d |  |
