# Public Storage HQ

How a schedule from MS Project changed from version to version. A marks actual dates.

## Version 1 (data date 2026-03-04, saved 2026-03-06, file update_5.mpp)

Note of the change: Add all project schedule files to buckets - 13 projects, MPP+XER, baseline+updates

| ID | WBS | Task | Duration | Start | Finish | Predecessors | Complete | Total float | Constraint |
| --- | --- | --- | --- | --- | --- | --- | --- | --- | --- |
| 1 | 1 | **Construction Documents** | 50d | 2025-09-08 A | 2025-11-14 A |  | 100% |  |  |
| 2 |  | CD Kick off and Start | 34d | 2025-09-08 A | 2025-10-23 A |  | 100% |  | start no earlier than 2025-09-08 |
| 3 |  | 65% progress set | 1d | 2025-10-24 A | 2025-10-24 A | 2 | 100% |  |  |
| 4 |  | Owner Drawing review Of 65% set | 5d | 2025-10-27 A | 2025-10-31 A | 3 | 100% |  |  |
| 5 |  | Completon of Bid, Demo and Permit Submital set | 10d | 2025-11-03 A | 2025-11-14 A | 4 | 100% |  |  |
| 6 | 2 | **Plan Check** | 36d | 2025-11-17 A | 2026-01-09 A |  | 100% |  |  |
| 7 | 2.1 | **Issue for Interiors Permit (Plan Check)** | 36d | 2025-11-17 A | 2026-01-09 A |  | 100% |  |  |
| 8 |  | City Permit Review | 15d | 2025-11-17 A | 2025-12-05 A | 5 | 100% |  |  |
| 9 |  | Drawing Coordination/City Comments | 20d | 2025-12-08 A | 2026-01-08 A | 8 | 100% |  |  |
| 10 |  | Receive interior Tl Building Permit | 1d | 2026-01-09 A | 2026-01-09 A | 9 | 100% |  |  |
| 11 | 2.2 | **Issue for Demo Permit** | 16d | 2025-11-17 A | 2025-12-08 A |  | 100% |  |  |
| 12 |  | Demo Permit Review | 15d | 2025-11-17 A | 2025-12-05 A | 5 | 100% |  |  |
| 13 |  | Receive Demo Permit | 1d | 2025-12-08 A | 2025-12-08 A | 12 | 100% |  |  |
| 14 | 3 | **Bidding** | 19d | 2025-11-17 A | 2025-12-11 A |  | 100% |  |  |
| 15 |  | Bidding for Tl GCs | 15d | 2025-11-17 A | 2025-12-05 A |  | 100% |  | start no earlier than 2025-11-17 |
| 16 |  | Award GC Contract | 4d | 2025-12-08 A | 2025-12-11 A | 15 | 100% |  |  |
| 17 | 4 | **Contracting** | 16d | 2025-12-12 A | 2026-01-08 A |  | 100% |  |  |
| 18 |  | Execute Demo LOA | 1d | 2025-12-12 A | 2025-12-12 A | 16 | 100% |  |  |
| 19 |  | Contract Preparation | 5d | 2025-12-15 A | 2025-12-19 A | 18 | 100% |  |  |
| 20 |  | Contract Negotiation | 5d | 2025-12-22 A | 2025-12-30 A | 19 | 100% |  |  |
| 21 |  | Contract Execution | 5d | 2026-01-02 A | 2026-01-08 A | 20 | 100% |  |  |
| 22 | 5 | **ARCO Procurement** | 84d | 2026-01-09 A | 2026-05-06 |  | 46% | 20d |  |
| 23 |  | Submittal Approval - MEPs | 2.2w | 2026-01-09 A | 2026-01-23 A | 21 | 100% |  |  |
| 24 |  | Regular Light Fixture Submittal Approval (Architect) | 9d | 2026-01-28 A | 2026-02-09 A | 21 | 100% |  | start no earlier than 2026-01-28 |
| 25 |  | Specialty Light Fixture Submittal Approval (Architect) | 7d | 2026-02-09 A | 2026-02-17 A | 21, 24 | 100% |  |  |
| 26 |  | Light Fixtures - Regular Fixtures | 8w | 2026-02-10 A | 2026-04-06 | 24 | 43% | 24d |  |
| 27 |  | Light Fixtures - Specialty Fixtures | 9.5w | 2026-02-18 A | 2026-04-24 | 23, 25 | 23% | 11.5d |  |
| 28 |  | Millwork Shop Drawings | 2w | 2026-01-23 A | 2026-02-05 A | 23 | 100% |  |  |
| 29 |  | Millwork Drawing Review Approval | 3d | 2026-02-06 A | 2026-02-10 A | 28 | 100% |  |  |
| 30 |  | Millwork Field Measure and Fab - Level 1 South | 5w | 2026-03-05 | 2026-04-08 | 95, 29 |  | 26d |  |
| 31 |  | Millwork Field Measure and Fab - Level 1 North | 5w | 2026-03-17 | 2026-04-20 | 28, 119, 29 |  | 18d |  |
| 32 |  | Millwork Field Measure and Fab - Level 2 South | 5w | 2026-03-02 A | 2026-04-03 | 28, 140, 29 | 12% | 29d |  |
| 33 |  | Millwork Field Measure and Fab - Level 2 North | 5w | 2026-03-13 | 2026-04-16 | 28, 161, 29 |  | 20d |  |
| 34 |  | Flooring - FC1 Submittal Approval | 1.4w | 2026-02-04 A | 2026-02-12 A | 21 | 100% |  |  |
| 35 |  | Flooring - FC2 - Submittal Approval | 1.4w | 2026-02-04 A | 2026-02-12 A | 21 | 100% |  |  |
| 36 |  | Flooring - FC3 - Submittal Approval | 1.4w | 2026-02-04 A | 2026-02-12 A | 21 | 100% |  |  |
| 37 |  | Flooring - FC4 -Submittal Approval | 1.4w | 2026-02-04 A | 2026-02-12 A | 21 | 100% |  |  |
| 38 |  | Flooring - LVT1 - Submittal Approval | 1.4w | 2026-02-04 A | 2026-02-12 A | 21 | 100% |  |  |
| 39 |  | Flooring - VCT1 - Submittal Approval | 1.4w | 2026-02-04 A | 2026-02-12 A | 21 | 100% |  |  |
| 40 |  | Flooring - FT1 - Submittal Approval | 1w | 2026-02-04 A | 2026-02-10 A | 21 | 100% |  |  |
| 41 |  | Flooring - FT2 - Submittal Approval | 1w | 2026-02-04 A | 2026-02-10 A | 21 | 100% |  |  |
| 42 |  | Wall Tile - WT1 - Submittal Approval | 1w | 2026-02-04 A | 2026-02-10 A | 21 | 100% |  |  |
| 43 |  | Wall Tile - WT2 - Submittal Approval | 1w | 2026-02-04 A | 2026-02-10 A | 21 | 100% |  |  |
| 44 |  | Wall Tile - WT3 - Submittal Approval | 1w | 2026-02-04 A | 2026-02-10 A | 21 | 100% |  |  |
| 45 |  | Wall Tile - WT4 - Submittal Approval | 1w | 2026-02-04 A | 2026-02-10 A | 21 | 100% |  |  |
| 46 |  | Flooring - FC1 | 7.8w | 2026-02-13 A | 2026-04-08 | 34 | 36% | 3d |  |
| 47 |  | Flooring - FC2 | 7.8w | 2026-02-13 A | 2026-04-08 | 35 | 36% | 3d |  |
| 48 |  | Flooring - FC3 | 6w | 2026-02-13 A | 2026-03-26 | 36 | 47% | 12d |  |
| 49 |  | Flooring - FC4 | 6w | 2026-02-13 A | 2026-03-26 | 37 | 47% | 12d |  |
| 50 |  | Flooring - LVT1 | 8.8w | 2026-02-13 A | 2026-04-15 | 38 | 32% | 35d |  |
| 51 |  | Flooring - VCT1 | 6w | 2026-02-13 A | 2026-03-26 | 39 | 47% | 12d |  |
| 52 |  | Flooring - FT1 | 4.4w | 2026-02-11 A | 2026-03-12 | 40 | 73% | 22d |  |
| 53 |  | Flooring - FT2 | 6.6w | 2026-02-11 A | 2026-03-27 | 41 | 48% | 11d | finish no earlier than 2026-03-27 |
| 54 |  | Wall Tile - WT1 | 2w | 2026-02-11 A | 2026-02-24 A | 42 | 100% |  |  |
| 55 |  | Wall Tile - WT2 | 2w | 2026-02-11 A | 2026-02-24 A | 43 | 100% |  |  |
| 56 |  | Wall Tile - WT3 | 7.8w | 2026-02-11 A | 2026-04-06 | 44 | 41% | 5d | finish no earlier than 2026-04-06 |
| 57 |  | Wall Tile - WT4 | 3.6w | 2026-02-11 A | 2026-03-06 | 45 | 89% | 26d | finish no earlier than 2026-03-06 |
| 58 |  | Doors, Frames, and Hardware Submittal Review | 5d | 2026-02-16 A | 2026-02-20 A | 21 | 100% |  |  |
| 59 |  | Door Frames | 5w | 2026-02-25 A | 2026-03-31 | 58 | 24% | 14d |  |
| 60 |  | Doors, Hardware | 8w | 2026-02-23 A | 2026-04-17 | 58 | 20% | 24d |  |
| 61 |  | Appliances | 8w | 2026-01-26 A | 2026-03-20 | 23 | 70% | 44d |  |
| 62 |  | Breakroom Ceiling Baffle Product Selection (by others) | 6d | 2026-02-19 A | 2026-02-26 A | 21 | 100% |  | start no earlier than 2026-02-18 |
| 63 |  | Ceiling Baffles - Breakroom | 10w | 2026-02-26 A | 2026-05-06 | 23, 62 | 10% | 11d |  |
| 64 | 6 | **Procurement Of Direct FBO items** | 116d | 2025-11-03 A | 2026-04-17 |  | 77% | 24d |  |
| 65 | 6.1 | **Furniture** | 116d | 2025-11-03 A | 2026-04-17 |  | 67% | 0d |  |
| 66 |  | Select Furniture Vendor | 1d | 2026-02-19 A | 2026-02-19 A |  | 100% |  | start no earlier than 2026-02-18 |
| 67 |  | Review and finalize details for furniture | 15d | 2025-11-03 A | 2025-11-21 A | 66 | 100% |  |  |
| 68 |  | Furniture Order Due | 1d | 2025-11-24 A | 2025-11-24 A | 67 | 100% |  |  |
| 69 |  | Furniture Lead Time | 80d | 2025-12-23 A | 2026-04-17 | 68 | 60% | 0d | finish no earlier than 2026-04-17 |
| 70 | 6.2 | **HVAC Equipment** | 80d | 2025-12-09 A | 2026-04-03 |  | 85% | 22d |  |

| ID | WBS | Task | Duration | Start | Finish | Predecessors | Complete | Total float | Constraint |
| --- | --- | --- | --- | --- | --- | --- | --- | --- | --- |
| 71 |  | Order Roof Top HVAC equipment | 1d | 2025-12-09 A | 2025-12-09 A |  | 100% |  | start no earlier than 2026-02-18 |
| 72 |  | HVAC Equipment Lead Time - RTUs | 58d | 2025-12-09 A | 2026-03-04 A | 71 | 100% |  | finish no earlier than 2026-03-02 |
| 73 |  | HVAC Equipment Lead Time - VAVs (Round 1) | 58d | 2025-12-09 A | 2026-03-04 A | 71 | 100% |  |  |
| 74 |  | HVAC Equipment Lead Time - VAVs (Round 2) | 32d | 2026-02-19 A | 2026-04-03 |  | 31% | 22d | start no earlier than 2026-02-18 |
| 75 | 6.3 | **Elevator Modernization** | 60d | 2026-01-13 A | 2026-04-06 |  | 62% | 33d |  |
| 76 |  | Contract for Elevator Modernization | 1d | 2026-02-19 A | 2026-02-19 A |  | 100% |  | start no earlier than 2026-02-18 |
| 77 |  | Elevator Equipment Lead Time | 35d | 2026-01-13 A | 2026-03-02 A | 76 | 100% |  |  |
| 78 |  | Elevator Modernization | 25d | 2026-03-03 A | 2026-04-06 | 77 | 8% | 33d |  |
| 79 | 6.4 | **Demolition** | 34d | 2025-12-15 A | 2026-02-04 A |  | 100% |  |  |
| 80 |  | MEP/F Make Safe | 3w | 2025-12-15 A | 2026-01-08 A | 18 | 100% |  |  |
| 81 |  | Demolition | 3w | 2026-01-15 A | 2026-02-04 A | 18 | 100% |  | finish no earlier than 2026-01-28 |
| 82 | 7 | **Construction** | 102d | 2026-01-12 A | 2026-06-03 |  | 42% | 1d |  |
| 83 | 7.1 | **Level 1 South** | 82.5d | 2026-01-12 A | 2026-05-06 |  | 57% | 20.5d |  |
| 84 |  | Overhead MEP Rough In | 20d | 2026-01-12 A | 2026-02-06 A | 21, 10 | 100% |  |  |
| 85 |  | Low Voltage Bulk Cabling | 10d | 2026-02-19 A | 2026-03-04 A | 84SS+3w | 100% |  | start no earlier than 2026-02-18 |
| 86 |  | Slab Demo and Coring | 4d | 2026-01-20 A | 2026-01-23 A | 81SS | 100% |  | start no earlier than 2026-01-20 |
| 87 |  | Walls - Studs and Track | 4d | 2026-01-22 A | 2026-01-27 A | 84SS | 100% |  | start no earlier than 2026-01-22 |
| 88 |  | Underslab MEP | 6d | 2026-01-26 A | 2026-02-02 A | 86 | 100% |  |  |
| 89 |  | Underslab MEP Inspection | 1d | 2026-02-19 A | 2026-02-19 A | 88 | 100% |  | start no earlier than 2026-02-18 |
| 90 |  | Concrete Slab Pourback | 2d | 2026-02-20 A | 2026-02-23 A | 89 | 100% |  | start no earlier than 2026-02-18 |
| 91 |  | Fire Alarm Rough-in | 2d | 2026-02-19 A | 2026-02-20 A | 87 | 100% |  | start no earlier than 2026-02-18 |
| 92 |  | MEP Rough-in Walls | 10d | 2026-01-23 A | 2026-02-05 A | 87SS+1d | 100% |  |  |
| 93 |  | MEP Rough-in Inspection | 5d | 2026-02-06 A | 2026-02-12 A | 92 | 100% |  | start no earlier than 2026-01-23 |
| 94 |  | Single Side Drywall | 5d | 2026-02-19 A | 2026-02-25 A | 87 | 100% |  | start no earlier than 2026-02-18 |
| 95 |  | Second Side Drywall | 5d | 2026-02-26 A | 2026-03-04 A | 94, 92FF, 93 | 100% |  | start no earlier than 2026-02-18 |
| 96 |  | Wall Tape and Bed | 13d | 2026-02-17 A | 2026-03-05 | 95SS+2d | 92% | 27d |  |
| 97 |  | Grid Install Rework | 5d | 2026-03-12 | 2026-03-18 | 96FS-1w, 178 |  | 43d |  |
| 98 |  | Light Fixture Install (Regular) and Ceiling MEP Finishes | 8d | 2026-04-07 | 2026-04-16 | 97FS-1w, 26 |  | 30d |  |
| 99 |  | Light Fixture Install (Specialty) | 8d | 2026-04-24 | 2026-05-06 | 97FS-1w, 27 |  | 11.5d |  |
| 100 |  | Ceiling Cover Inspection | 1d | 2026-04-17 | 2026-04-17 | 98 |  | 30d | start no earlier than 2026-01-23 |
| 101 |  | Ceiling Tile Installation | 3d | 2026-04-24 | 2026-04-28 | 100, 123, 144, 165 |  | 26d |  |
| 102 |  | Restroom Renovations | 10d | 2026-03-27 | 2026-04-10 | 103SF |  | 24d |  |
| 103 |  | Carpet and Tile Prep and Install | 6d | 2026-04-10 | 2026-04-17 | 96, 46, 47, 48, 49, 51, 52, 53, 54, 55, 56, 57, 90 |  | 2d | start no earlier than 2026-04-10 |
| 104 |  | Painting | 10d | 2026-03-06 | 2026-03-19 | 96 |  | 39d |  |
| 105 |  | MEP Trimout | 8d | 2026-04-10 | 2026-04-21 | 104SS+2w, 102 |  | 24d |  |
| 106 |  | Millwork Install | 5d | 2026-04-09 | 2026-04-15 | 30 |  | 35d |  |
| 107 | 7.2 | **Level 1 North** | 81d | 2026-01-12 A | 2026-05-04 |  | 41% | 22d |  |
| 108 |  | Overhead MEP Rough In | 20d | 2026-01-12 A | 2026-02-06 A | 21, 10 | 100% |  |  |
| 109 |  | Low Voltage Bulk Cabling | 10d | 2026-02-19 A | 2026-03-04 A | 108SS+3w | 100% |  | start no earlier than 2026-02-18 |
| 110 |  | Slab Demo and Coring | 3d | 2026-01-26 A | 2026-01-28 A | 86 | 100% |  | start no earlier than 2026-01-20 |
| 111 |  | Walls - Studs and Track | 3d | 2026-02-09 A | 2026-02-11 A | 155 | 100% |  |  |
| 112 |  | Underslab MEP | 3d | 2026-01-29 A | 2026-02-02 A | 110 | 100% |  |  |
| 113 |  | Underslab MEP Inspection | 1d | 2026-02-19 A | 2026-02-19 A | 112 | 100% |  | start no earlier than 2026-02-18 |
| 114 |  | Concrete Slab Pourback | 4d | 2026-02-20 A | 2026-02-25 A | 113 | 100% |  | start no earlier than 2026-02-18 |
| 115 |  | Fire Alarm Rough-in | 2d | 2026-02-19 A | 2026-02-20 A | 111 | 100% |  | start no earlier than 2026-02-18 |
| 116 |  | MEP Rough-in Walls | 10d | 2026-02-23 A | 2026-03-06 | 111SS+2w | 80% | 18d |  |
| 117 |  | MEP Rough-in Inspection | 1d | 2026-03-09 | 2026-03-09 | 116 |  | 18d | start no earlier than 2026-01-23 |
| 118 |  | Single Side Drywall | 5d | 2026-02-19 A | 2026-02-25 | 111 | 35% | 26d | start no earlier than 2026-02-18 |
| 119 |  | Second Side Drywall | 5d | 2026-03-10 | 2026-03-16 | 116FF, 118, 117 |  | 18d |  |
| 120 |  | Wall Tape and Bed | 6d | 2026-04-01 | 2026-04-08 | 119, 59 |  | 14d |  |
| 121 |  | Grid Install Rework | 4d | 2026-04-02 | 2026-04-07 | 120FS-1w, 180 |  | 28d |  |
| 122 |  | Light Fixture Install (Regular) and Ceiling MEP Finishes | 12d | 2026-04-07 | 2026-04-22 | 121FS-1w, 26 |  | 24d |  |
| 123 |  | Ceiling Cover Inspection | 1d | 2026-04-23 | 2026-04-23 | 122 |  | 24d | start no earlier than 2026-01-23 |
| 124 |  | Ceiling Tile Installation | 5d | 2026-04-24 | 2026-04-30 | 123 |  | 24d |  |
| 125 |  | Restroom Renovations | 10d | 2026-03-26 | 2026-04-09 | 126SF |  | 25d |  |
| 126 |  | Carpet and Tile Prep and Install | 7d | 2026-04-09 | 2026-04-17 | 120, 46, 47, 48, 49, 51, 52, 53, 54, 55, 56, 57, 114 |  | 25d |  |
| 127 |  | Painting | 10d | 2026-04-09 | 2026-04-22 | 120 |  | 15d |  |
| 128 |  | MEP Trimout | 8d | 2026-04-23 | 2026-05-04 | 125, 127SS+2w |  | 15d |  |
| 129 |  | Millwork Install | 5d | 2026-04-21 | 2026-04-27 | 30, 31, 32, 33 |  | 18d |  |
| 130 | 7.3 | **Level 2 South** | 80d | 2026-01-12 A | 2026-05-01 |  | 54% | 23d |  |
| 131 |  | Overhead MEP Rough In | 20d | 2026-01-12 A | 2026-02-06 A | 21, 10 | 100% |  |  |
| 132 |  | Low Voltage Bulk Cabling | 10d | 2026-02-19 A | 2026-03-04 A | 131SS+3w | 100% |  | start no earlier than 2026-02-18 |
| 133 |  | Slab Demo and Coring | 2d | 2026-01-29 A | 2026-01-30 A | 110 | 100% |  | start no earlier than 2026-01-20 |
| 134 |  | Walls - Studs and Track | 4d | 2026-01-28 A | 2026-02-02 A | 87 | 100% |  |  |
| 135 |  | Underslab MEP | 3d | 2026-02-02 A | 2026-02-04 A | 133 | 100% |  |  |
| 136 |  | Fire Alarm Rough-in | 2d | 2026-02-19 A | 2026-02-20 A | 134 | 100% |  | start no earlier than 2026-02-18 |
| 137 |  | MEP Rough-in Walls | 10d | 2026-02-11 A | 2026-02-24 A | 134SS+2w | 100% |  |  |
| 138 |  | MEP Rough-in Inspection | 1d | 2026-02-25 A | 2026-02-25 A | 137 | 100% |  | start no earlier than 2026-01-23 |
| 139 |  | Single Side Drywall | 7d | 2026-02-19 A | 2026-02-27 A | 134 | 100% |  | start no earlier than 2026-02-18 |
| 140 |  | Second Side Drywall | 5d | 2026-02-23 A | 2026-02-27 A | 137FF, 139, 138 | 100% |  |  |

| ID | WBS | Task | Duration | Start | Finish | Predecessors | Complete | Total float | Constraint |
| --- | --- | --- | --- | --- | --- | --- | --- | --- | --- |
| 141 |  | Wall Tape and Bed | 5d | 2026-04-01 A | 2026-04-07 A | 140, 59 | 100% |  |  |
| 142 |  | Grid Install Rework | 5d | 2026-04-01 | 2026-04-07 | 141FS-1w, 182 |  | 32d |  |
| 143 |  | Light Fixture Install (Regular) and Ceiling MEP Finishes | 8d | 2026-04-07 | 2026-04-16 | 142FS-1w, 26 |  | 28d |  |
| 144 |  | Ceiling Cover Inspection | 1d | 2026-04-17 | 2026-04-17 | 143 |  | 28d | start no earlier than 2026-01-23 |
| 145 |  | Ceiling Tile Installation | 5d | 2026-04-20 | 2026-04-24 | 144 |  | 28d |  |
| 146 |  | Restroom Renovations | 10d | 2026-04-01 | 2026-04-15 | 147SF |  | 21d |  |
| 147 |  | Carpet and Tile Prep and Install | 6d | 2026-04-15 | 2026-04-22 | 141, 46, 47, 48, 49, 51, 52, 53, 54, 55, 56, 57, 103FS-3d |  | 21d |  |
| 148 |  | Painting | 10d | 2026-04-08 | 2026-04-21 | 141 |  | 16d |  |
| 149 |  | MEP Trimout | 8d | 2026-04-22 | 2026-05-01 | 146, 148SS+2w |  | 16d |  |
| 150 |  | Millwork Install | 5d | 2026-04-21 | 2026-04-27 | 30, 31, 32, 33 |  | 18d |  |
| 151 | 7.4 | **Level 2 North** | 81d | 2026-01-12 A | 2026-05-04 |  | 45% | 22d |  |
| 152 |  | Overhead MEP Rough In | 20d | 2026-01-12 A | 2026-02-06 A | 21, 10 | 100% |  |  |
| 153 |  | Low Voltage Bulk Cabling | 10d | 2026-02-19 A | 2026-03-04 A | 152SS+3w | 100% |  | start no earlier than 2026-02-18 |
| 154 |  | Slab Demo and Coring - Level 2 North | 3d | 2026-02-02 A | 2026-02-04 A | 133 | 100% |  | start no earlier than 2026-01-20 |
| 155 |  | Walls - Studs and Track | 4d | 2026-02-03 A | 2026-02-06 A | 134 | 100% |  |  |
| 156 |  | Underslab MEP | 3d | 2026-02-05 A | 2026-02-09 A | 154 | 100% |  |  |
| 157 |  | Fire Alarm Rough-in | 2d | 2026-02-19 A | 2026-02-20 A | 155 | 100% |  | start no earlier than 2026-02-18 |
| 158 |  | MEP Rough-in Walls | 10d | 2026-02-17 A | 2026-03-02 A | 155SS+2w | 100% |  |  |
| 159 |  | MEP Rough-in Inspection | 1d | 2026-03-03 A | 2026-03-03 A | 158 | 100% |  | start no earlier than 2026-01-23 |
| 160 |  | Single Side Drywall | 7d | 2026-02-19 A | 2026-02-27 A | 155 | 100% |  | start no earlier than 2026-02-18 |
| 161 |  | Second Side Drywall - Level 2 North | 7d | 2026-03-04 A | 2026-03-12 | 158FF, 160, 159 | 14% | 20d |  |
| 162 |  | Wall Tape and Bed | 6d | 2026-04-01 | 2026-04-08 | 161, 59 |  | 14d |  |
| 163 |  | Grid Install Rework | 5d | 2026-04-02 | 2026-04-08 | 162FS-1w, 184 |  | 31d |  |
| 164 |  | Light Fixture Install (Regular) and Ceiling MEP Finishes | 8d | 2026-04-07 | 2026-04-16 | 163FS-1w, 26 |  | 28d |  |
| 165 |  | Ceiling Cover Inspection | 1d | 2026-04-17 | 2026-04-17 | 164 |  | 28d | start no earlier than 2026-01-23 |
| 166 |  | Ceiling Tile Installation - Level 2 North | 5d | 2026-04-20 | 2026-04-24 | 165 |  | 28d |  |
| 167 |  | Restroom Renovations | 10d | 2026-04-01 | 2026-04-15 | 168SF |  | 21d |  |
| 168 |  | Carpet and Tile Prep and Install | 10d | 2026-04-15 | 2026-04-28 | 162, 46, 47, 48, 49, 51, 52, 53, 54, 55, 56, 57, 103FS-3d |  | 21d |  |
| 169 |  | Painting | 10d | 2026-04-09 | 2026-04-22 | 162 |  | 15d |  |
| 170 |  | MEP Trimout - Level 2 North | 8d | 2026-04-23 | 2026-05-04 | 167, 169SS+2w |  | 15d |  |
| 171 |  | Millwork Install | 5d | 2026-04-21 | 2026-04-27 | 30, 31, 32, 33 |  | 18d |  |
| 172 |  | Inspections and Commissioning | 8d | 2026-05-22 | 2026-06-03 | 190, 60, 61, 78, 129, 150, 171, 91, 115, 136, 157, 99, 179, 181, 183, 185, 63, 187, 189 |  | 0d |  |
| 173 |  | Punch Walk and Corrections | 5d | 2026-05-14 | 2026-05-20 | 190 |  | 8d |  |
| 174 |  | Final Clean | 6d | 2026-05-22 | 2026-06-01 | 172SS, 173SS, 128, 105, 149, 170 |  | 2d |  |
| 175 | 7.8 | **Install of Owner Provided Equipment/Vendors** | 59d | 2026-03-02 | 2026-05-21 |  |  | 9d |  |
| 176 |  | Confirm Weather For RTU Replacements | 1d | 2026-03-02 | 2026-03-02 |  |  | 64d | start no earlier than 2026-03-02 |
| 177 |  | RTU Replacement | 3d | 2026-03-05 | 2026-03-09 | 176, 72 |  | 62d |  |
| 178 |  | VAV Replacements - Level 1 South (Round 1) | 5d | 2026-03-05 | 2026-03-11 | 73, 84 |  | 36d |  |
| 179 |  | VAV Replacements - Level 1 South (Round 2) | 3d | 2026-04-06 | 2026-04-08 | 84, 74 |  | 22d |  |
| 180 |  | VAV Replacements - Level 1 North (Round 1) | 5d | 2026-03-05 | 2026-03-11 | 73, 108 |  | 43d |  |
| 181 |  | VAV Replacements - Level 1 North (Round 2) | 3d | 2026-04-09 | 2026-04-13 | 108, 74, 179 |  | 22d |  |
| 182 |  | VAV Replacements - Level 2 South (Round 1) | 5d | 2026-03-12 | 2026-03-18 | 73, 131, 178 |  | 36d |  |
| 183 |  | VAV Replacements - Level 2 South (Round 2) | 3d | 2026-04-14 | 2026-04-16 | 131, 74, 181 |  | 22d |  |
| 184 |  | VAV Replacements - Level 2 North (Round 1) | 5d | 2026-03-19 | 2026-03-25 | 73, 152, 182 |  | 36d |  |
| 185 |  | VAV Replacements - Level 2 North | 3d | 2026-04-17 | 2026-04-21 | 152, 74, 183 |  | 22d |  |
| 186 |  | AV Equipment Rough-in (By Others) | 10d | 2026-04-09 | 2026-04-22 | 96, 85, 109, 120, 132, 141, 153, 162 |  | 15d |  |
| 187 |  | AV Equipment Installation and Trim (By Others) | 6d | 2026-05-14 | 2026-05-21 | 186, 190 |  | 0d | start no earlier than 2026-02-11 |
| 188 |  | Security Systems Equipment Rough-in (By Others) | 12d | 2026-04-09 | 2026-04-24 | 96, 85, 109, 120, 132, 141, 153, 162 |  | 14d |  |
| 189 |  | Security Systems Equipment Installation and Trim (By Others) | 5d | 2026-05-14 | 2026-05-20 | 188, 190 |  | 1d | start no earlier than 2026-02-11 |
| 190 |  | Furniture Systems Installation (By Others) | 18d | 2026-04-20 | 2026-05-13 | 69, 103FS-2d |  | 0d | start no earlier than 2026-04-17 |
| 191 |  | Move in | 1d | 2026-06-04 | 2026-06-04 | 174, 172 |  | 0d |  |

## Version 2 (data date 2026-04-02, saved 2026-04-02, file update_6.mpp)

Note of the change: Add all project schedule files to buckets - 13 projects, MPP+XER, baseline+updates

Last finish stays 2026-06-04. Complete tasks 86 → 107.

Changed:

| ID | Task | Start | Finish | Duration | Complete | Total float | Predecessors | Other |
| --- | --- | --- | --- | --- | --- | --- | --- | --- |
| 22 | **ARCO Procurement** |  | 2026-05-06 → 2026-05-15 (+9d) | 84d → 91d | 46% → 88% | 20d → 13d |  |  |
| 26 | Light Fixtures - Regular Fixtures |  |  |  | 43% → 95% | 24d → 0d |  |  |
| 27 | Light Fixtures - Specialty Fixtures |  |  |  | 23% → 67% |  |  |  |
| 30 | Millwork Field Measure and Fab - Level 1 South | 2026-03-05 A |  |  | 0% → 84% | 26d → 5d |  |  |
| 31 | Millwork Field Measure and Fab - Level 1 North | 2026-03-17 A |  |  | 0% → 52% | 18d → 8d |  |  |
| 32 | Millwork Field Measure and Fab - Level 2 South |  |  |  | 12% → 96% | 29d → 19d |  |  |
| 33 | Millwork Field Measure and Fab - Level 2 North | 2026-03-13 A |  |  | 0% → 60% | 20d → 10d |  |  |
| 46 | Flooring - FC1 |  |  |  | 36% → 90% | 3d → 0d |  |  |
| 47 | Flooring - FC2 |  |  |  | 36% → 90% | 3d → 0d |  |  |
| 48 | Flooring - FC3 |  | 2026-03-26 A |  | 47% → 100% | 12d → none |  |  |
| 49 | Flooring - FC4 |  | 2026-03-26 A |  | 47% → 100% | 12d → none |  |  |
| 50 | Flooring - LVT1 |  |  |  | 32% → 80% |  |  |  |
| 51 | Flooring - VCT1 |  | 2026-03-26 A |  | 47% → 100% | 12d → none |  |  |
| 52 | Flooring - FT1 |  | 2026-03-12 A |  | 73% → 100% | 22d → none |  |  |
| 53 | Flooring - FT2 |  | 2026-03-27 A |  | 48% → 100% | 11d → none |  | constraint finish no earlier than 2026-03-27 → none |
| 56 | Wall Tile - WT3 |  |  |  | 41% → 95% | 5d → 2d |  | constraint finish no earlier than 2026-04-06 → none |
| 57 | Wall Tile - WT4 |  | 2026-03-06 A |  | 89% → 100% | 26d → none |  | constraint finish no earlier than 2026-03-06 → none |
| 59 | Door Frames |  | 2026-03-31 → 2026-04-08 (+8d) | 5w → 6.2w | 24% → 87% | 14d → 0d |  |  |
| 60 | Doors, Hardware |  |  |  | 20% → 73% |  |  |  |
| 61 | Appliances | 2026-01-26 A → 2026-04-06 A (+70d) | 2026-03-20 → 2026-05-15 (+56d) | 8w → 6w | 70% → 93% | 44d → 4d |  |  |
| 63 | Ceiling Baffles - Breakroom |  | 2026-05-06 → 2026-04-20 (-16d) | 10w → 7.6w | 10% → 68% | 11d → 23d |  |  |
| 64 | **Procurement Of Direct FBO items** |  |  |  | 77% → 96% |  |  |  |
| 65 | **Furniture** |  |  |  | 67% → 89% |  |  |  |
| 69 | Furniture Lead Time |  |  |  | 60% → 86% |  |  | constraint finish no earlier than 2026-04-17 → none |
| 70 | **HVAC Equipment** |  |  |  | 85% → 99% |  |  |  |
| 74 | HVAC Equipment Lead Time - VAVs (Round 2) |  |  |  | 31% → 97% |  |  | constraint start no earlier than 2026-02-18 → none |
| 75 | **Elevator Modernization** |  |  |  | 62% → 97% |  |  |  |
| 78 | Elevator Modernization |  |  |  | 8% → 92% |  |  |  |
| 82 | **Construction** |  |  |  | 42% → 52% |  |  |  |
| 83 | **Level 1 South** |  |  |  | 57% → 69% |  |  |  |
| 96 | Wall Tape and Bed |  | 2026-03-05 A |  | 92% → 100% | 27d → none |  |  |
| 97 | Grid Install Rework | 2026-03-12 A | 2026-03-18 A |  | 0% → 100% | 43d → none |  |  |
| 98 | Light Fixture Install (Regular) and Ceiling MEP Finishes | 2026-04-07 → 2026-03-30 A (-8d) | 2026-04-16 → 2026-04-15 (-1d) | 8d → 12.4d | 0% → 13% | 30d → 31.6d |  |  |
| 100 | Ceiling Cover Inspection | 2026-04-17 → 2026-04-15 (-2d) | 2026-04-17 → 2026-04-16 (-1d) |  |  | 30d → 31.6d |  | constraint start no earlier than 2026-01-23 → none |
| 101 | Ceiling Tile Installation | 2026-04-24 → 2026-04-28 (+4d) | 2026-04-28 → 2026-04-30 (+2d) |  |  | 26d → 24d |  |  |
| 102 | Restroom Renovations | 2026-03-27 A | 2026-04-10 → 2026-04-09 (-1d) |  | 0% → 50% |  |  |  |
| 103 | Carpet and Tile Prep and Install | 2026-04-10 → 2026-04-06 A (-4d) | 2026-04-17 → 2026-04-16 (-1d) | 6d → 9d |  | 2d → 3d |  | constraint start no earlier than 2026-04-10 → none |
| 104 | Painting | 2026-03-06 A | 2026-03-19 A |  | 0% → 100% | 39d → none |  |  |
| 106 | Millwork Install | 2026-04-09 → 2026-04-16 A (+7d) | 2026-04-15 → 2026-04-22 (+7d) |  |  | 35d → 30d |  |  |
| 107 | **Level 1 North** |  | 2026-05-04 → 2026-05-12 (+8d) | 81d → 87d | 41% → 50% | 22d → 16d |  |  |
| 116 | MEP Rough-in Walls |  | 2026-03-06 A |  | 80% → 100% | 18d → none |  |  |
| 117 | MEP Rough-in Inspection | 2026-03-09 A | 2026-03-09 A |  | 0% → 100% | 18d → none |  |  |
| 118 | Single Side Drywall |  | 2026-02-25 A |  | 35% → 100% | 26d → none |  | constraint start no earlier than 2026-02-18 → none |
| 119 | Second Side Drywall | 2026-03-10 A | 2026-03-16 A |  | 0% → 100% | 18d → none |  |  |
| 120 | Wall Tape and Bed | 2026-04-01 → 2026-04-09 (+8d) | 2026-04-08 → 2026-04-16 (+8d) |  |  | 14d → 8d |  |  |
| 121 | Grid Install Rework | 2026-04-02 → 2026-04-10 (+8d) | 2026-04-07 → 2026-04-15 (+8d) |  |  | 28d → 22d |  |  |
| 122 | Light Fixture Install (Regular) and Ceiling MEP Finishes | 2026-04-07 → 2026-04-09 (+2d) | 2026-04-22 → 2026-04-24 (+2d) |  |  | 24d → 22d |  |  |
| 123 | Ceiling Cover Inspection | 2026-04-23 → 2026-04-27 (+4d) | 2026-04-23 → 2026-04-27 (+4d) |  |  | 24d → 22d |  | constraint start no earlier than 2026-01-23 → none |
| 124 | Ceiling Tile Installation | 2026-04-24 → 2026-04-28 (+4d) | 2026-04-30 → 2026-05-04 (+4d) |  |  | 24d → 22d |  |  |
| 125 | Restroom Renovations | 2026-03-26 → 2026-04-03 (+8d) | 2026-04-09 → 2026-04-17 (+8d) |  |  | 25d → 19d |  |  |
| 126 | Carpet and Tile Prep and Install | 2026-04-09 → 2026-04-17 (+8d) | 2026-04-17 → 2026-04-27 (+10d) |  |  | 25d → 19d |  |  |
| 127 | Painting | 2026-04-09 → 2026-04-17 (+8d) | 2026-04-22 → 2026-04-30 (+8d) |  |  | 15d → 9d |  |  |
| 128 | MEP Trimout | 2026-04-23 → 2026-05-01 (+8d) | 2026-05-04 → 2026-05-12 (+8d) |  |  | 15d → 9d |  |  |
| 129 | Millwork Install | 2026-04-21 → 2026-05-05 (+14d) | 2026-04-27 → 2026-05-11 (+14d) |  |  | 18d → 8d | 30, 31, 32, 33 → 30, 31, 32, 33, 171 |  |
| 130 | **Level 2 South** |  |  |  | 54% → 61% |  |  |  |
| 142 | Grid Install Rework | 2026-04-01 → 2026-03-25 A (-7d) | 2026-04-07 → 2026-03-31 A (-7d) |  | 0% → 100% | 32d → none |  |  |
| 143 | Light Fixture Install (Regular) and Ceiling MEP Finishes | 2026-04-07 → 2026-03-30 A (-8d) | 2026-04-16 → 2026-04-08 (-8d) |  |  | 28d → 34d |  |  |
| 144 | Ceiling Cover Inspection | 2026-04-17 → 2026-04-09 (-8d) | 2026-04-17 → 2026-04-09 (-8d) |  |  | 28d → 34d |  | constraint start no earlier than 2026-01-23 → none |
| 145 | Ceiling Tile Installation | 2026-04-20 → 2026-04-10 (-10d) | 2026-04-24 → 2026-04-16 (-8d) |  |  | 28d → 34d |  |  |
| 146 | Restroom Renovations | 2026-04-01 → 2026-03-31 A (-1d) | 2026-04-15 → 2026-04-14 (-1d) |  | 0% → 30% | 21d → 22d |  |  |
| 147 | Carpet and Tile Prep and Install | 2026-04-15 → 2026-04-14 (-1d) | 2026-04-22 → 2026-04-21 (-1d) |  |  | 21d → 22d |  |  |
| 151 | **Level 2 North** |  | 2026-05-04 → 2026-05-08 (+4d) | 81d → 84.3d | 45% → 52% | 22d → 18.7d |  |  |
| 154 | Slab Demo and Coring |  |  |  |  |  |  | was named Slab Demo and Coring - Level 2 North |
| 161 | Second Side Drywall |  | 2026-03-12 A |  | 14% → 100% | 20d → none |  | was named Second Side Drywall - Level 2 North |
| 162 | Wall Tape and Bed | 2026-04-01 → 2026-03-31 A (-1d) | 2026-04-08 → 2026-04-14 (+6d) | 6d → 10.3d | 0% → 26% | 14d → 10.7d |  |  |
| 163 | Grid Install Rework | 2026-04-02 → 2026-04-07 (+5d) | 2026-04-08 → 2026-04-14 (+6d) |  |  | 31d → 27.7d |  |  |
| 164 | Light Fixture Install (Regular) and Ceiling MEP Finishes |  | 2026-04-16 → 2026-04-17 (+1d) |  |  | 28d → 27.7d |  |  |
| 165 | Ceiling Cover Inspection |  | 2026-04-17 → 2026-04-20 (+3d) |  |  | 28d → 27.7d |  | constraint start no earlier than 2026-01-23 → none |
| 166 | Ceiling Tile Installation |  | 2026-04-24 → 2026-04-27 (+3d) |  |  | 28d → 27.7d |  | was named Ceiling Tile Installation - Level 2 North |
| 167 | Restroom Renovations | 2026-04-01 → 2026-03-31 A (-1d) | 2026-04-15 → 2026-04-14 (-1d) |  | 0% → 27% | 21d → 21.7d |  |  |

| ID | Task | Start | Finish | Duration | Complete | Total float | Predecessors | Other |
| --- | --- | --- | --- | --- | --- | --- | --- | --- |
| 168 | Carpet and Tile Prep and Install | 2026-04-15 → 2026-04-14 (-1d) |  |  |  | 21d → 21.7d |  |  |
| 169 | Painting | 2026-04-09 → 2026-04-14 (+5d) | 2026-04-22 → 2026-04-28 (+6d) |  |  | 15d → 11.7d |  |  |
| 170 | MEP Trimout | 2026-04-23 → 2026-04-28 (+5d) | 2026-05-04 → 2026-05-08 (+4d) |  |  | 15d → 11.7d |  | was named MEP Trimout - Level 2 North |
| 171 | Millwork Install | 2026-04-21 → 2026-04-28 (+7d) | 2026-04-27 → 2026-05-04 (+7d) |  |  | 18d → 8d | 30, 31, 32, 33 → 30, 31, 32, 33, 150 |  |
| 175 | **Install of Owner Provided Equipment/Vendors** | 2026-03-02 A |  |  | 0% → 26% | 9d → 0d |  |  |
| 176 | Confirm Weather For RTU Replacements | 2026-03-02 A | 2026-03-02 A |  | 0% → 100% | 64d → none |  |  |
| 177 | RTU Replacement | 2026-03-05 → 2026-03-12 A (+7d) | 2026-03-09 → 2026-03-12 A (+3d) | 3d → 1d | 0% → 100% | 62d → none |  |  |
| 178 | VAV Replacements - Level 1 South (Round 1) | 2026-03-05 A | 2026-03-11 A |  | 0% → 100% | 36d → none |  |  |
| 180 | VAV Replacements - Level 1 North (Round 1) | 2026-03-05 A | 2026-03-11 A |  | 0% → 100% | 43d → none |  |  |
| 182 | VAV Replacements - Level 2 South (Round 1) | 2026-03-12 A | 2026-03-18 A |  | 0% → 100% | 36d → none |  |  |
| 184 | VAV Replacements - Level 2 North (Round 1) | 2026-03-19 A | 2026-03-25 A |  | 0% → 100% | 36d → none |  |  |
| 185 | VAV Replacements - Level 2 North (Round 2) |  |  |  |  |  |  | was named VAV Replacements - Level 2 North |
| 186 | AV Equipment Rough-in (By Others) | 2026-04-09 → 2026-04-17 (+8d) | 2026-04-22 → 2026-04-30 (+8d) |  |  | 15d → 9d |  |  |
| 188 | Security Systems Equipment Rough-in (By Others) | 2026-04-09 → 2026-04-17 (+8d) | 2026-04-24 → 2026-05-04 (+10d) |  |  | 14d → 8d |  |  |
