# Public Storage - Mt. Juliet (Golden Bear Place)

How a schedule from Primavera P6 changed from version to version. A marks actual dates.

## Version 1 (data date 2025-07-02, saved 2025-11-06, file baseline.xer)

Note of the change: Add all project schedule files to buckets - 13 projects, MPP+XER, baseline+updates

| ID | WBS | Task | Duration | Start | Finish | Predecessors | Total float |
| --- | --- | --- | --- | --- | --- | --- | --- |
|  | 3 | **Project Summary** |  | 2025-07-02 | 2026-10-22 |  |  |
|  | 1 | **Contract Milestones** |  | 2025-07-02 | 2026-10-22 |  |  |
| PS-CMIL-1000 |  | Proposals/Bids Due | 0d | 2025-07-02 | 2025-07-02 |  | 0d |
| PS-CMIL-1010 |  | Project Open | 0d | 2025-07-02 | 2025-07-02 |  | 550d |
| PS-CMIL-1020 |  | Interviews | 0d | 2025-07-10 | 2025-07-10 | PS-CMIL-1000 SS+5d | 0d |
| PS-CMIL-1030 |  | Award Contract | 0d | 2025-07-21 | 2025-07-21 | PS-CMIL-1020 SS+7d | 0d |
| PS-CMIL-1040 |  | Notice to Proceed | 0d | 2025-07-24 | 2025-07-24 | PS-CMIL-1030 SS+3d | 0d |
| PS-CMIL-1050 |  | Operational Setup | 18d | 2025-07-24 | 2025-08-18 | PS-CMIL-1040 SS | 0d |
| PS-CMIL-1150 |  | Project SC - Before Weather Impacts | 0d | 2026-09-24 | 2026-09-24 | CO-BF-1060 FF | 220d |
| PS-CMIL-1160 |  | Anticipated Remaining Weather Impacts | 20d | 2026-09-25 | 2026-10-22 | PS-CMIL-1150 | 220d |
| PS-CMIL-1170 |  | Project Sustainability Complete - After Weather Impacts | 0d | 2026-10-22 | 2026-10-22 | PS-CMIL-1160 FF | 220d |
|  | 2 | **Construction Milestones** |  | 2025-07-24 | 2026-09-24 |  |  |
| PS-CMIL-1060 |  | Permit Approved | 0d | 2025-07-24 | 2025-07-24 | PS-CMIL-1040 SS | 535d |
| PS-CMIL-1070 |  | Start Construction | 0d | 2025-08-19 | 2025-08-19 | CN-MOBL-1000 SS | 517d |
| PS-CMIL-1080 |  | Start of Foundations | 0d | 2025-12-08 | 2025-12-08 | FS-LVL1-1000 SS | 441d |
| PS-CMIL-1090 |  | Start of Elevated Structure | 0d | 2026-02-05 | 2026-02-05 | FS-LVL1-1050 SS | 403d |
| PS-CMIL-1100 |  | Stair & Elevator Cores Complete to Roof | 0d | 2026-02-06 | 2026-02-06 | FS-LVL1-1020 FF | 401d |
| PS-CMIL-1120 |  | Structure Complete | 0d | 2026-06-04 | 2026-06-04 | FS-ROOF-1020 FF | 318d |
| PS-CMIL-1130 |  | Building Dry In | 0d | 2026-07-13 | 2026-07-13 | EE-ROOF-1060 FF | 292d |
| PS-CMIL-1110 |  | Exterior Work Complete | 0d | 2026-09-01 | 2026-09-01 | EE-WEST-1100 FF | 256d |
| PS-CMIL-1140 |  | Landscape & Hardscape Complete | 0d | 2026-09-24 | 2026-09-24 | SW-FIN-1190 FF | 240d |
|  | 4 | **Pre-Construction** |  | 2025-07-21 | 2025-08-22 |  |  |
|  | 1 | **Procurement** |  | 2025-07-21 | 2025-08-22 |  |  |
| PS-PROC-1000 |  | Contracting of Early Trades | 10d | 2025-07-21 | 2025-08-01 | PS-CMIL-1030 SS | 513d |
| PS-PROC-1010 |  | Elevator | 5d | 2025-08-04 | 2025-08-08 | PS-PROC-1000 | 513d |
| PS-PROC-1020 |  | Electric Room MDP | 5d | 2025-08-11 | 2025-08-15 | PS-PROC-1010 | 513d |
| PS-PROC-1030 |  | Owner's Enabling Work | 5d | 2025-08-18 | 2025-08-22 | PS-PROC-1020 | 513d |
|  | 1 | **Construction** |  | 2025-08-19 | 2026-09-29 |  |  |
|  | MOB | **Mobilization** |  | 2025-08-19 | 2025-09-04 |  |  |
| CN-MOBL-1000 |  | Survey Project Limits | 1d | 2025-08-19 | 2025-08-19 | PS-CMIL-1050 | 0d |
| CN-MOBL-1010 |  | Install Temp Fencing | 2d | 2025-08-20 | 2025-08-21 | CN-MOBL-1000 | 0d |
| CN-MOBL-1020 |  | Install SWPPs | 2d | 2025-08-22 | 2025-08-25 | CN-MOBL-1010 | 0d |
| CN-MOBL-1030 |  | Set Stabilized Entrance | 1d | 2025-08-26 | 2025-08-26 | CN-MOBL-1020 | 0d |
| CN-MOBL-1040 |  | Install Temp Power | 2d | 2025-08-27 | 2025-08-28 | CN-MOBL-1030 | 505d |
| CN-MOBL-1050 |  | Set Field Office | 1d | 2025-08-29 | 2025-08-29 | CN-MOBL-1040 | 505d |
| CN-MOBL-1060 |  | Field Office MEP Hook-Up | 2d | 2025-09-02 | 2025-09-03 | CN-MOBL-1050 | 505d |
| CN-MOBL-1070 |  | Install Temp Toilets, Waste & Hand Wash Stations | 1d | 2025-09-04 | 2025-09-04 | CN-MOBL-1060 | 505d |
|  | Sitework | **Sitework & Utilities** |  | 2025-08-27 | 2025-12-05 |  |  |
|  | SW | **Sitework** |  | 2025-08-27 | 2025-12-05 |  |  |
| SU-STWK-1000 |  | Clear & Grub | 3d | 2025-08-27 | 2025-08-29 | CN-MOBL-1030 | 0d |
| SU-STWK-1010 |  | Mass Excavation & Rock Removal | 20d | 2025-09-02 | 2025-09-29 | SU-STWK-1000 | 0d |
| SU-STWK-1020 |  | Building Pad Prep & Grading | 7d | 2025-09-30 | 2025-10-08 | SU-STWK-1010 | 0d |
| SU-STWK-1030 |  | Building Layout & Staking | 1d | 2025-10-09 | 2025-10-09 | SU-STWK-1020 | 0d |
| SU-STWK-1040 |  | Compact Subgrade | 3d | 2025-10-10 | 2025-10-14 | SU-STWK-1030 | 0d |
| SU-STWK-1050 |  | Install Stone Base | 3d | 2025-11-10 | 2025-11-12 | SU-STWK-1040, SU-SUTL-1050 | 0d |
| SU-STWK-1060 |  | Install Prime Coat, Binder, & Tack Coat | 2d | 2025-11-13 | 2025-11-14 | SU-STWK-1050 | 0d |
| SU-STWK-1070 |  | Install Asphalt (Wearing Course) | 1d | 2025-11-17 | 2025-11-17 | SU-STWK-1060 | 0d |
| SU-STWK-1080 |  | Form & Reinforce Curb & Gutter | 5d | 2025-11-18 | 2025-11-24 | SU-STWK-1070 | 0d |
| SU-STWK-1090 |  | Pour Curb & Gutter | 2d | 2025-11-25 | 2025-11-26 | SU-STWK-1080 | 0d |
| SU-STWK-1100 |  | Rough Grade Site | 5d | 2025-12-01 | 2025-12-05 | SU-STWK-1000, SU-STWK-1090 | 0d |
|  | SIte | **Site Utilities** |  | 2025-10-15 | 2025-11-07 |  |  |
| SU-SUTL-1000 |  | Cut, Cap, and Relocate Existing Utilities | 5d | 2025-10-15 | 2025-10-21 | SU-STWK-1040 | 0d |
| SU-SUTL-1010 |  | Install Irrigation Sleeves | 3d | 2025-10-22 | 2025-10-24 | SU-SUTL-1000 | 0d |
| SU-SUTL-1020 |  | Install U.G. Sewer | 10d | 2025-10-27 | 2025-11-07 | SU-SUTL-1010 | 0d |
| SU-SUTL-1030 |  | Install U.G. Storm Drain | 10d | 2025-10-27 | 2025-11-07 | SU-SUTL-1020 SS | 0d |
| SU-SUTL-1040 |  | Install U.G. Electrical Duct Banks | 10d | 2025-10-27 | 2025-11-07 | SU-SUTL-1030 SS | 0d |
| SU-SUTL-1050 |  | Install U.G. Fire Water & Domestic | 10d | 2025-10-27 | 2025-11-07 | SU-SUTL-1040 SS | 0d |
|  | 1 | **Foundation & Structural** |  | 2025-12-08 | 2026-06-04 |  |  |
|  | 1 | **Level 1** |  | 2025-12-08 | 2026-02-23 |  |  |
| FS-LVL1-1000 |  | Footings & Foundation CIP Walls (includes elevator pit) | 25d | 2025-12-08 | 2026-01-15 | SU-STWK-1100 | 0d |
| FS-LVL1-1010 |  | Underground MEPF Install (Pre-Pour) | 5d | 2026-01-16 | 2026-01-23 | FS-LVL1-1020 SS | 0d |
| FS-LVL1-1020 |  | Erect Stairs & Elevator Shafts (CMU Cores) | 15d | 2026-01-16 | 2026-02-06 | FS-LVL1-1000 | 0d |
| FS-LVL1-1030 |  | Slab Prep & Pour (Pour A1) | 5d | 2026-01-26 | 2026-01-30 | FS-LVL1-1010 | 0d |
| FS-LVL1-1040 |  | Slab Prep & Pour (Pour A2) | 3d | 2026-02-02 | 2026-02-04 | FS-LVL1-1030 | 0d |
| FS-LVL1-1050 |  | Steel Erection (Colums & Beams) | 10d | 2026-02-05 | 2026-02-18 | FS-LVL1-1040 | 0d |
| FS-LVL1-1060 |  | Fireproofing | 3d | 2026-02-19 | 2026-02-23 | FS-LVL1-1050, FS-LVL2-1000 | 390d |
|  | 2 | **Level 2** |  | 2026-02-13 | 2026-03-23 |  |  |
| FS-LVL2-1000 |  | Install Metal Decking | 4d | 2026-02-13 | 2026-02-18 | FS-LVL1-1050 FF | 0d |
| FS-LVL2-1010 |  | MEPF Rough-In (Pre-Pour) | 5d | 2026-02-19 | 2026-02-25 | FS-LVL2-1000 | 0d |
| FS-LVL2-1020 |  | FRP Metal Deck Slab (Pour A1) | 5d | 2026-02-26 | 2026-03-04 | FS-LVL2-1010 | 0d |

| ID | WBS | Task | Duration | Start | Finish | Predecessors | Total float |
| --- | --- | --- | --- | --- | --- | --- | --- |
| FS-LVL2-1030 |  | FRP Metal Deck Slab (Pour A2) | 3d | 2026-03-05 | 2026-03-09 | FS-LVL2-1020 | 0d |
| FS-LVL2-1040 |  | Layout & Erect Load Bearing Framing | 10d | 2026-03-10 | 2026-03-23 | FS-LVL2-1030 | 0d |
|  | 3 | **Level 3** |  | 2026-03-18 | 2026-04-23 |  |  |
| FS-LVL3-1000 |  | Install Metal Decking | 4d | 2026-03-18 | 2026-03-23 | FS-LVL2-1040 FF | 0d |
| FS-LVL3-1010 |  | MEPF Rough-In (Pre-Pour) | 5d | 2026-03-24 | 2026-03-30 | FS-LVL3-1000 | 0d |
| FS-LVL3-1020 |  | FRP Metal Deck Slab (Pour A1) | 5d | 2026-03-31 | 2026-04-06 | FS-LVL3-1010 | 0d |
| FS-LVL3-1030 |  | FRP Metal Deck Slab (Pour A2) | 3d | 2026-04-07 | 2026-04-09 | FS-LVL3-1020 | 0d |
| FS-LVL3-1040 |  | Layout & Erect Load Bearing Framing | 10d | 2026-04-10 | 2026-04-23 | FS-LVL3-1030 | 0d |
|  | 5 | **Level 4** |  | 2026-04-20 | 2026-05-27 |  |  |
| FS-LVL4-1000 |  | Install Metal Decking | 4d | 2026-04-20 | 2026-04-23 | FS-LVL3-1040 FF | 0d |
| FS-LVL4-1010 |  | MEPF Rough-In (Pre-Pour) | 5d | 2026-04-24 | 2026-04-30 | FS-LVL4-1000 | 0d |
| FS-LVL4-1020 |  | FRP Metal Deck Slab (Pour A1) | 5d | 2026-05-01 | 2026-05-07 | FS-LVL4-1010 | 0d |
| FS-LVL4-1030 |  | FRP Metal Deck Slab (Pour A2) | 3d | 2026-05-08 | 2026-05-12 | FS-LVL4-1020 | 0d |
| FS-LVL4-1040 |  | Layout & Erect Load Bearing Framing | 10d | 2026-05-13 | 2026-05-27 | FS-LVL4-1030 | 0d |
|  | 4 | **Roof** |  | 2026-05-21 | 2026-06-04 |  |  |
| FS-ROOF-1000 |  | Install Metal Decking | 4d | 2026-05-21 | 2026-05-27 | FS-LVL4-1040 FF | 0d |
| FS-ROOF-1010 |  | MEPF Rough-In (Stubups) | 3d | 2026-05-28 | 2026-06-01 | FS-ROOF-1000 | 0d |
| FS-ROOF-1020 |  | Layout & Frame Parapets | 3d | 2026-06-02 | 2026-06-04 | FS-ROOF-1010 | 0d |
|  | 2 | **Envelope & Exterior** |  | 2026-06-05 | 2026-09-16 |  |  |
|  | 0 | **North Elevation** |  | 2026-06-05 | 2026-09-11 |  |  |
| EE-NRTH-1000 |  | Layout & Exterior Framing (Level 1) | 5d | 2026-06-05 | 2026-06-11 | FS-ROOF-1020 | 0d |
| EE-NRTH-1010 |  | City Inspection (Rough Framing) | 1d | 2026-06-12 | 2026-06-12 | EE-NRTH-1000 | 248d |
| EE-NRTH-1020 |  | Electrical Rough-In | 5d | 2026-06-15 | 2026-06-19 | EE-NRTH-1010, FS-ROOF-1020 | 248d |
| EE-NRTH-1030 |  | City Inspection (Electrical) | 1d | 2026-06-22 | 2026-06-22 | EE-NRTH-1020 | 249d |
| EE-NRTH-1040 |  | Install Exterior Sheathing | 5d | 2026-06-23 | 2026-06-29 | EE-NRTH-1030 | 249d |
| EE-NRTH-1050 |  | City Inspection (Screw Inspection) | 1d | 2026-06-30 | 2026-06-30 | EE-NRTH-1040 | 249d |
| EE-NRTH-1060 |  | Weather Barrier & Flashing | 5d | 2026-07-01 | 2026-07-08 | EE-NRTH-1050 | 249d |
| EE-NRTH-1070 |  | Install Rigid Insulation | 5d | 2026-07-09 | 2026-07-15 | EE-NRTH-1060 | 249d |
| EE-NRTH-1080 |  | Storefront, Windows & Metals | 3d | 2026-07-16 | 2026-07-20 | EE-NRTH-1070 | 249d |
| EE-NRTH-1090 |  | Install Brick Veneer | 15d | 2026-07-21 | 2026-08-10 | EE-NRTH-1080 | 249d |
| EE-NRTH-1100 |  | Install Canopies & Trim | 3d | 2026-08-11 | 2026-08-13 | EE-NRTH-1090 | 249d |
| EE-NRTH-1110 |  | Install Lighting Fixtures | 3d | 2026-08-14 | 2026-08-18 | EE-NRTH-1100 | 249d |
| EE-NRTH-1120 |  | Install Signage | 1d | 2026-08-19 | 2026-08-19 | EE-NRTH-1110 | 249d |
| EE-NRTH-1130 |  | Install Doors & Hardware | 2d | 2026-08-20 | 2026-08-21 | EE-NRTH-1120 | 249d |
| EE-NRTH-1140 |  | Install Downspouts | 1d | 2026-08-24 | 2026-08-24 | EE-NRTH-1130 | 249d |
| EE-NRTH-1150 |  | Final Paint | 3d | 2026-08-25 | 2026-08-27 | EE-NRTH-1140 | 249d |
| EE-NRTH-1160 |  | Punch List & Corrections | 5d | 2026-08-28 | 2026-09-03 | EE-NRTH-1150 | 249d |
| EE-NRTH-1170 |  | Final Owner Walk (Punch List & Corrections) | 5d | 2026-09-04 | 2026-09-11 | EE-NRTH-1160 | 249d |
|  | 2 | **East Elevation** |  | 2026-06-12 | 2026-09-01 |  |  |
| EE-EAST-1000 |  | Layout & Exterior Framing (Level 1) | 5d | 2026-06-12 | 2026-06-18 | EE-NRTH-1000 | 0d |
| EE-EAST-1010 |  | City Inspection (Rough Framing) | 1d | 2026-06-19 | 2026-06-19 | EE-EAST-1000 | 248d |
| EE-EAST-1020 |  | Electrical Rough-In | 5d | 2026-06-22 | 2026-06-26 | EE-EAST-1010, EE-NRTH-1020 | 248d |
| EE-EAST-1030 |  | City Inspection (Electrical) | 1d | 2026-06-29 | 2026-06-29 | EE-EAST-1020 | 256d |
| EE-EAST-1040 |  | Install Exterior Sheathing | 5d | 2026-06-30 | 2026-07-07 | EE-EAST-1030 | 256d |
| EE-EAST-1050 |  | City Inspection (Screw Inspection) | 1d | 2026-07-08 | 2026-07-08 | EE-EAST-1040 | 256d |
| EE-EAST-1060 |  | Weather Barrier & Flashing | 5d | 2026-07-09 | 2026-07-15 | EE-EAST-1050 | 256d |
| EE-EAST-1070 |  | Install Rigid Insulation | 5d | 2026-07-16 | 2026-07-22 | EE-EAST-1060 | 256d |
| EE-EAST-1080 |  | Install Windows & Metals | 3d | 2026-07-23 | 2026-07-27 | EE-EAST-1070 | 256d |
| EE-EAST-1090 |  | Install Brick Veneer | 15d | 2026-07-28 | 2026-08-17 | EE-EAST-1080 | 256d |
| EE-EAST-1100 |  | Install Signage | 1d | 2026-08-18 | 2026-08-18 | EE-EAST-1090 | 256d |
| EE-EAST-1110 |  | Punch List & Corrections | 5d | 2026-08-19 | 2026-08-25 | EE-EAST-1100 | 256d |
| EE-EAST-1120 |  | Final Owner Walk (Punch List & Corrections) | 5d | 2026-08-26 | 2026-09-01 | EE-EAST-1110 | 256d |
|  | 5 | **South Elevation** |  | 2026-06-19 | 2026-09-11 |  |  |
| EE-SOTH-1000 |  | Layout & Exterior Framing (Level 1) | 5d | 2026-06-19 | 2026-06-25 | EE-EAST-1000 | 0d |
| EE-SOTH-1010 |  | City Inspection (Rough Framing) | 1d | 2026-06-26 | 2026-06-26 | EE-SOTH-1000 | 248d |
| EE-SOTH-1020 |  | Electrical Rough-In | 5d | 2026-06-29 | 2026-07-06 | EE-SOTH-1010, EE-EAST-1020 | 248d |
| EE-SOTH-1030 |  | City Inspection (Electrical) | 1d | 2026-07-07 | 2026-07-07 | EE-SOTH-1020 | 249d |
| EE-SOTH-1040 |  | Install Exterior Sheathing | 5d | 2026-07-08 | 2026-07-14 | EE-SOTH-1030 | 249d |
| EE-SOTH-1050 |  | City Inspection (Screw Inspection) | 1d | 2026-07-15 | 2026-07-15 | EE-SOTH-1040 | 249d |
| EE-SOTH-1060 |  | Weather Barrier & Flashing | 5d | 2026-07-16 | 2026-07-22 | EE-SOTH-1050 | 249d |
| EE-SOTH-1070 |  | Install Rigid Insulation | 5d | 2026-07-23 | 2026-07-29 | EE-SOTH-1060 | 249d |
| EE-SOTH-1080 |  | Install Brick Veneer | 15d | 2026-07-30 | 2026-08-19 | EE-SOTH-1070 | 249d |
| EE-SOTH-1090 |  | Install Signage | 1d | 2026-08-20 | 2026-08-20 | EE-SOTH-1080 | 249d |
| EE-SOTH-1100 |  | Install Doors & Hardware | 1d | 2026-08-21 | 2026-08-21 | EE-SOTH-1090 | 249d |
| EE-SOTH-1110 |  | Install Downspouts | 2d | 2026-08-24 | 2026-08-25 | EE-SOTH-1100 | 249d |
| EE-SOTH-1120 |  | Final Paint | 2d | 2026-08-26 | 2026-08-27 | EE-SOTH-1110 | 249d |
| EE-SOTH-1130 |  | Punch List & Corrections | 5d | 2026-08-28 | 2026-09-03 | EE-SOTH-1120 | 249d |
| EE-SOTH-1140 |  | Final Owner Walk (Punch List & Corrections) | 5d | 2026-09-04 | 2026-09-11 | EE-SOTH-1130 | 249d |
|  | 1 | **West Elevation** |  | 2026-06-26 | 2026-09-14 |  |  |
| EE-WEST-1000 |  | Layout & Exterior Framing (Level 1) | 5d | 2026-06-26 | 2026-07-02 | EE-SOTH-1000 | 0d |

| ID | WBS | Task | Duration | Start | Finish | Predecessors | Total float |
| --- | --- | --- | --- | --- | --- | --- | --- |
| EE-WEST-1010 |  | City Inspection (Rough Framing) | 1d | 2026-07-06 | 2026-07-06 | EE-WEST-1000 | 248d |
| EE-WEST-1020 |  | Electrical Rough-In | 5d | 2026-07-07 | 2026-07-13 | EE-WEST-1010, EE-SOTH-1020 | 248d |
| EE-WEST-1030 |  | City Inspection (Electrical) | 1d | 2026-07-14 | 2026-07-14 | EE-WEST-1020 | 248d |
| EE-WEST-1040 |  | Install Exterior Sheathing | 5d | 2026-07-15 | 2026-07-21 | EE-WEST-1030 | 248d |
| EE-WEST-1050 |  | City Inspection (Screw Inspection) | 1d | 2026-07-22 | 2026-07-22 | EE-WEST-1040 | 248d |
| EE-WEST-1060 |  | Weather Barrier & Flashing | 5d | 2026-07-23 | 2026-07-29 | EE-WEST-1050 | 248d |
| EE-WEST-1070 |  | Install Rigid Insulation | 5d | 2026-07-30 | 2026-08-05 | EE-WEST-1060 | 248d |
| EE-WEST-1080 |  | Install Windows & Metals | 3d | 2026-08-06 | 2026-08-10 | EE-WEST-1070 | 248d |
| EE-WEST-1090 |  | Install Brick Veneer | 15d | 2026-08-11 | 2026-08-31 | EE-WEST-1080 | 248d |
| EE-WEST-1100 |  | Install Signage | 1d | 2026-09-01 | 2026-09-01 | EE-WEST-1090 | 248d |
| EE-WEST-1110 |  | Punch List & Corrections | 5d | 2026-09-02 | 2026-09-09 | EE-WEST-1100 | 248d |
| EE-WEST-1120 |  | Final Owner Walk (Punch List & Corrections) | 3d | 2026-09-10 | 2026-09-14 | EE-WEST-1110 | 248d |
|  | 3 | **Roof** |  | 2026-06-05 | 2026-09-16 |  |  |
| EE-ROOF-1000 |  | Clean & Prep Metal Deck | 2d | 2026-06-05 | 2026-06-08 | FS-ROOF-1020 | 5d |
| EE-ROOF-1010 |  | Stage Materials & Solar Rails (Crane) | 1d | 2026-06-09 | 2026-06-09 | EE-ROOF-1000 | 5d |
| EE-ROOF-1020 |  | Layout for Penetrations, Curb Blocking, Edge Metal | 2d | 2026-06-10 | 2026-06-11 | EE-ROOF-1010 | 5d |
| EE-ROOF-1030 |  | Install Blocking & Equipment Curbs | 3d | 2026-06-12 | 2026-06-16 | EE-ROOF-1020 | 5d |
| EE-ROOF-1040 |  | Install Rigid Insulation | 4d | 2026-06-17 | 2026-06-22 | EE-ROOF-1030 | 5d |
| EE-ROOF-1050 |  | Install Cover Board | 4d | 2026-06-23 | 2026-06-26 | EE-ROOF-1040 | 5d |
| EE-ROOF-1060 |  | Install TPO Roofing System (incl. boots, termination bars) | 10d | 2026-06-29 | 2026-07-13 | EE-ROOF-1050 | 5d |
| EE-ROOF-1070 |  | Install Edge Metal, Coping, Trim | 5d | 2026-07-14 | 2026-07-20 | EE-ROOF-1060 | 5d |
| EE-ROOF-1080 |  | Install Roof Drains, Vents, Mechanical Curbs | 5d | 2026-07-21 | 2026-07-27 | EE-ROOF-1070 | 5d |
| EE-ROOF-1090 |  | Install Electrical Conduit & Roof Mounted Boxes | 5d | 2026-07-28 | 2026-08-03 | EE-ROOF-1080 | 5d |
| EE-ROOF-1140 |  | Set Rooftop Units (RTU's & Splits) | 1d | 2026-07-28 | 2026-07-28 | EE-ROOF-1080 | 26d |
| EE-ROOF-1150 |  | Install Duct/Condensate/Vent Tie-Ins & Flashing | 3d | 2026-07-29 | 2026-07-31 | EE-ROOF-1140 | 26d |
| EE-ROOF-1160 |  | Startup/Controls/Balancing Prep | 3d | 2026-08-03 | 2026-08-05 | EE-ROOF-1150 | 26d |
| EE-ROOF-1100 |  | Install Solar Mounting Rails & Racking | 3d | 2026-08-04 | 2026-08-06 | EE-ROOF-1090 | 5d |
| EE-ROOF-1170 |  | Water Test / Leak Test | 1d | 2026-08-06 | 2026-08-06 | EE-ROOF-1160 | 26d |
| EE-ROOF-1110 |  | Mount Solar Panels | 15d | 2026-08-07 | 2026-08-27 | EE-ROOF-1100 | 5d |
| EE-ROOF-1180 |  | Roof Patches (If Any) | 1d | 2026-08-07 | 2026-08-07 | EE-ROOF-1170 | 26d |
| EE-ROOF-1190 |  | Punch List & Corrections | 3d | 2026-08-10 | 2026-08-12 | EE-ROOF-1180 | 26d |
| EE-ROOF-1120 |  | Run Electrical Conduit & Inverters to Roof | 5d | 2026-08-28 | 2026-09-03 | EE-ROOF-1110 | 5d |
| EE-ROOF-1130 |  | Final Electrical Tie-In (Solar Panels) | 5d | 2026-09-04 | 2026-09-11 | EE-ROOF-1120 | 5d |
| EE-ROOF-1200 |  | Final Owner Walk (Punch List & Corrections) | 3d | 2026-09-14 | 2026-09-16 | EE-ROOF-1190, EE-ROOF-1130 | 5d |
|  | 3 | **Interior Build-Out** |  | 2026-02-09 | 2026-09-16 |  |  |
|  | Level 1 Interior | **Level 1 Interior** |  | 2026-07-14 | 2026-09-02 |  |  |
| IB-L1IN-1000 |  | Layout & Framing (incl. backing, door frames) | 5d | 2026-07-14 | 2026-07-20 | EE-ROOF-1060 | 11d |
| IB-L1IN-1010 |  | Electrical Rough-In | 5d | 2026-07-21 | 2026-07-27 | IB-L1IN-1000 | 258d |
| IB-L1IN-1020 |  | Mechanical Rough-In | 5d | 2026-07-21 | 2026-07-27 | IB-L1IN-1010 SS | 258d |
| IB-L1IN-1030 |  | Plumbing Rough-In | 5d | 2026-07-21 | 2026-07-27 | IB-L1IN-1020 SS | 258d |
| IB-L1IN-1040 |  | Fire Supression Rough-In | 5d | 2026-07-21 | 2026-07-27 | IB-L1IN-1030 SS | 258d |
| IB-L1IN-1050 |  | Install Insulation | 2d | 2026-07-28 | 2026-07-29 | IB-L1IN-1040 | 258d |
| IB-L1IN-1060 |  | Install Drywall | 4d | 2026-07-30 | 2026-08-04 | IB-L1IN-1050 | 258d |
| IB-L1IN-1070 |  | Tape & Mud Drywall | 5d | 2026-08-05 | 2026-08-11 | IB-L1IN-1060 | 258d |
| IB-L1IN-1080 |  | Prep & Paint | 3d | 2026-08-12 | 2026-08-14 | IB-L1IN-1070 | 258d |
| IB-L1IN-1090 |  | MEPF Trim-Out | 5d | 2026-08-17 | 2026-08-21 | IB-L1IN-1080 | 258d |
| IB-L1IN-1100 |  | Install Storage Doors & Hardware | 5d | 2026-08-24 | 2026-08-28 | IB-L1IN-1090 | 258d |
|  | 1 | **Restrooms (Mens & Womens)** |  | 2026-07-21 | 2026-08-19 |  |  |
| IB-L1RR-1000 |  | Framing (Metal Studs, Blocking) | 3d | 2026-07-21 | 2026-07-23 | IB-L1IN-1000 | 11d |
| IB-L1RR-1010 |  | MEPF Rough-In | 3d | 2026-07-24 | 2026-07-28 | IB-L1RR-1000 | 265d |
| IB-L1RR-1020 |  | City Inspection (Framing & MEPF Rough) | 1d | 2026-07-29 | 2026-07-29 | IB-L1RR-1010 | 265d |
| IB-L1RR-1030 |  | Install Insulation | 1d | 2026-07-30 | 2026-07-30 | IB-L1RR-1020 | 265d |
| IB-L1RR-1040 |  | Install Drywall | 2d | 2026-07-31 | 2026-08-03 | IB-L1RR-1030 | 265d |
| IB-L1RR-1050 |  | Tape & Mud Drywall | 3d | 2026-08-04 | 2026-08-06 | IB-L1RR-1040 | 265d |
| IB-L1RR-1060 |  | Painting | 2d | 2026-08-07 | 2026-08-10 | IB-L1RR-1050 | 265d |
| IB-L1RR-1070 |  | Install Restroom Fixtures & Partitions | 2d | 2026-08-11 | 2026-08-12 | IB-L1RR-1060 | 265d |
| IB-L1RR-1080 |  | Install Accessories (Grab Bars, Mirrors, Signs) | 2d | 2026-08-13 | 2026-08-14 | IB-L1RR-1070 | 265d |
| IB-L1RR-1090 |  | Final MEP Trim-Out | 2d | 2026-08-17 | 2026-08-18 | IB-L1RR-1080 | 265d |
| IB-L1RR-1100 |  | Final Clean | 1d | 2026-08-19 | 2026-08-19 | IB-L1RR-1090 | 265d |
|  | 2 | **Management Spaces (Rental Office, Storage, Break Room)** |  | 2026-07-24 | 2026-09-02 |  |  |
| IB-L1M\S-1000 |  | Layout & Framing (incl. backing, door frames) | 3d | 2026-07-24 | 2026-07-28 | IB-L1RR-1000 | 11d |
| IB-L1M\S-1010 |  | MEPF Rough-In | 3d | 2026-07-29 | 2026-07-31 | IB-L1M\S-1000 | 11d |
| IB-L1M\S-1020 |  | City Inspection (Framing & MEPF) | 1d | 2026-08-03 | 2026-08-03 | IB-L1M\S-1010 | 11d |
| IB-L1M\S-1030 |  | Install Insulation | 2d | 2026-08-04 | 2026-08-05 | IB-L1M\S-1020 | 11d |
| IB-L1M\S-1040 |  | Install Drywall | 2d | 2026-08-06 | 2026-08-07 | IB-L1M\S-1030 | 11d |
| IB-L1M\S-1050 |  | Tape & Mud Drywall | 3d | 2026-08-10 | 2026-08-12 | IB-L1M\S-1040 | 11d |
| IB-L1M\S-1060 |  | Painting | 3d | 2026-08-13 | 2026-08-17 | IB-L1M\S-1050 | 11d |
| IB-L1M\S-1070 |  | Install Ceiling Grid (Break Room) | 1d | 2026-08-18 | 2026-08-18 | IB-L1M\S-1060 | 255d |
| IB-L1M\S-1080 |  | Install Base Trim | 1d | 2026-08-19 | 2026-08-19 | IB-L1M\S-1070 | 255d |
| IB-L1M\S-1090 |  | Install Cabinets & Countertops (Break Room & Office) | 3d | 2026-08-20 | 2026-08-24 | IB-L1M\S-1080 | 255d |

| ID | WBS | Task | Duration | Start | Finish | Predecessors | Total float |
| --- | --- | --- | --- | --- | --- | --- | --- |
| IB-L1M\S-1100 |  | Install Sink & Faucests (Break Room) | 1d | 2026-08-25 | 2026-08-25 | IB-L1M\S-1090 | 255d |
| IB-L1M\S-1110 |  | Appliances (Microwave & Fridge) | 1d | 2026-08-26 | 2026-08-26 | IB-L1M\S-1100 | 255d |
| IB-L1M\S-1120 |  | Interior Signage | 1d | 2026-08-27 | 2026-08-27 | IB-L1M\S-1110 | 255d |
| IB-L1M\S-1130 |  | MEPF Trim-Out | 3d | 2026-08-28 | 2026-09-01 | IB-L1M\S-1120 | 255d |
| IB-L1M\S-1140 |  | Final Clean | 1d | 2026-09-02 | 2026-09-02 | IB-L1M\S-1130 | 255d |
|  | Level 2 Interior | **Level 2 Interior** |  | 2026-04-10 | 2026-05-28 |  |  |
| IB-L2IN-1000 |  | Layout & Framing (incl. backing, door frames) | 5d | 2026-04-10 | 2026-04-16 | FS-LVL3-1030 | 46d |
| IB-L2IN-1010 |  | Electrical Rough-In | 5d | 2026-04-17 | 2026-04-23 | IB-L2IN-1000 | 46d |
| IB-L2IN-1020 |  | Mechanical Rough-In | 5d | 2026-04-17 | 2026-04-23 | IB-L2IN-1010 SS | 46d |
| IB-L2IN-1030 |  | Plumbing Rough-In | 5d | 2026-04-17 | 2026-04-23 | IB-L2IN-1020 SS | 46d |
| IB-L2IN-1040 |  | Fire Supression Rough-In | 5d | 2026-04-17 | 2026-04-23 | IB-L2IN-1030 SS | 46d |
| IB-L2IN-1050 |  | Install Insulation | 2d | 2026-04-24 | 2026-04-27 | IB-L2IN-1040 | 323d |
| IB-L2IN-1060 |  | Install Drywall | 4d | 2026-04-28 | 2026-05-01 | IB-L2IN-1050 | 323d |
| IB-L2IN-1070 |  | Tape & Mud Drywall | 5d | 2026-05-04 | 2026-05-08 | IB-L2IN-1060 | 323d |
| IB-L2IN-1080 |  | Prep & Paint | 3d | 2026-05-11 | 2026-05-13 | IB-L2IN-1070 | 323d |
| IB-L2IN-1090 |  | MEPF Trim-Out | 5d | 2026-05-14 | 2026-05-20 | IB-L2IN-1080 | 323d |
| IB-L2IN-1100 |  | Install Storage Doors & Hardware | 5d | 2026-05-21 | 2026-05-28 | IB-L2IN-1090 | 323d |
|  | 3 | **Level 3 Interior** |  | 2026-05-13 | 2026-06-30 |  |  |
| IB-L3IN-1000 |  | Layout & Framing (incl. backing, door frames) | 5d | 2026-05-13 | 2026-05-19 | IB-L2IN-1000, FS-LVL4-1030 | 300d |
| IB-L3IN-1010 |  | Electrical Rough-In | 5d | 2026-05-20 | 2026-05-27 | IB-L3IN-1000 | 300d |
| IB-L3IN-1020 |  | Mechanical Rough-In | 5d | 2026-05-20 | 2026-05-27 | IB-L3IN-1010 SS | 300d |
| IB-L3IN-1030 |  | Plumbing Rough-In | 5d | 2026-05-20 | 2026-05-27 | IB-L3IN-1020 SS | 300d |
| IB-L3IN-1040 |  | Fire Supression Rough-In | 5d | 2026-05-20 | 2026-05-27 | IB-L3IN-1030 SS | 300d |
| IB-L3IN-1050 |  | Install Insulation | 2d | 2026-05-28 | 2026-05-29 | IB-L3IN-1040 | 300d |
| IB-L3IN-1060 |  | Install Drywall | 4d | 2026-06-01 | 2026-06-04 | IB-L3IN-1050 | 300d |
| IB-L3IN-1070 |  | Tape & Mud Drywall | 5d | 2026-06-05 | 2026-06-11 | IB-L3IN-1060 | 300d |
| IB-L3IN-1080 |  | Prep & Paint | 3d | 2026-06-12 | 2026-06-16 | IB-L3IN-1070 | 300d |
| IB-L3IN-1090 |  | MEPF Trim-Out | 5d | 2026-06-17 | 2026-06-23 | IB-L3IN-1080 | 300d |
| IB-L3IN-1100 |  | Install Storage Doors & Hardware | 5d | 2026-06-24 | 2026-06-30 | IB-L3IN-1090 | 300d |
|  | 1 | **Unisex Restroom** |  | 2026-05-20 | 2026-06-19 |  |  |
| IB-L3UN-1000 |  | Framing (Metal Studs, Blocking) | 3d | 2026-05-20 | 2026-05-22 | IB-L3IN-1000 | 307d |
| IB-L3UN-1010 |  | MEPF Rough-In | 3d | 2026-05-26 | 2026-05-28 | IB-L3UN-1000 | 307d |
| IB-L3UN-1020 |  | City Inspection (Framing & MEPF Rough) | 1d | 2026-05-29 | 2026-05-29 | IB-L3UN-1010 | 307d |
| IB-L3UN-1030 |  | Install Insulation | 1d | 2026-06-01 | 2026-06-01 | IB-L3UN-1020 | 307d |
| IB-L3UN-1040 |  | Install Drywall | 2d | 2026-06-02 | 2026-06-03 | IB-L3UN-1030 | 307d |
| IB-L3UN-1050 |  | Tape & Mud Drywall | 3d | 2026-06-04 | 2026-06-08 | IB-L3UN-1040 | 307d |
| IB-L3UN-1060 |  | Painting | 2d | 2026-06-09 | 2026-06-10 | IB-L3UN-1050 | 307d |
| IB-L3UN-1070 |  | Install Restroom Fixtures & Partitions | 2d | 2026-06-11 | 2026-06-12 | IB-L3UN-1060 | 307d |
| IB-L3UN-1080 |  | Install Accessories (Grab Bars, Mirrors, Signs) | 2d | 2026-06-15 | 2026-06-16 | IB-L3UN-1070 | 307d |
| IB-L3UN-1090 |  | Final MEP Trim-Out | 2d | 2026-06-17 | 2026-06-18 | IB-L3UN-1080 | 307d |
| IB-L3UN-1100 |  | Final Clean | 1d | 2026-06-19 | 2026-06-19 | IB-L3UN-1090 | 307d |
|  | 5 | **Level 4 Interior** |  | 2026-05-28 | 2026-07-15 |  |  |
| IB-L4IN-1000 |  | Layout & Framing (incl. backing, door frames) | 5d | 2026-05-28 | 2026-06-03 | FS-ROOF-1000 | 44d |
| IB-L4IN-1010 |  | Electrical Rough-In | 5d | 2026-06-04 | 2026-06-10 | IB-L4IN-1000 | 44d |
| IB-L4IN-1020 |  | Mechanical Rough-In | 5d | 2026-06-04 | 2026-06-10 | IB-L4IN-1010 SS | 44d |
| IB-L4IN-1030 |  | Plumbing Rough-In | 5d | 2026-06-04 | 2026-06-10 | IB-L4IN-1020 SS | 44d |
| IB-L4IN-1040 |  | Fire Supression Rough-In | 5d | 2026-06-04 | 2026-06-10 | IB-L4IN-1030 SS | 44d |
| IB-L4IN-1050 |  | Install Insulation | 2d | 2026-06-11 | 2026-06-12 | IB-L4IN-1040 | 44d |
| IB-L4IN-1060 |  | Install Drywall | 4d | 2026-06-15 | 2026-06-18 | IB-L4IN-1050 | 44d |
| IB-L4IN-1070 |  | Tape & Mud Drywall | 5d | 2026-06-19 | 2026-06-25 | IB-L4IN-1060 | 44d |
| IB-L4IN-1080 |  | Prep & Paint | 3d | 2026-06-26 | 2026-06-30 | IB-L4IN-1070 | 44d |
| IB-L4IN-1090 |  | MEPF Trim-Out | 5d | 2026-07-01 | 2026-07-08 | IB-L4IN-1080 | 44d |
| IB-L4IN-1100 |  | Install Storage Doors & Hardware | 5d | 2026-07-09 | 2026-07-15 | IB-L4IN-1090 | 49d |
|  | 1 | **Janus Scope** |  | 2026-04-24 | 2026-09-08 |  |  |
| IB-JNUS-1000 |  | Level 2 Install (Diamond Plate, Turkey Wire, Misc.) | 15d | 2026-04-24 | 2026-05-14 | IB-L2IN-1000, IB-L2IN-1040 | 46d |
| IB-JNUS-1010 |  | Level 3 Install (Diamond Plate, Turkey Wire, Misc.) | 15d | 2026-05-15 | 2026-06-05 | IB-JNUS-1000 | 46d |
| IB-JNUS-1020 |  | Level 4 Install (Diamond Plate, Turkey Wire, Misc.) | 15d | 2026-06-08 | 2026-06-26 | IB-JNUS-1010 | 46d |
| IB-JNUS-1030 |  | Level 1 Install (Diamond Plate, Turkey Wire, Misc.) | 15d | 2026-08-18 | 2026-09-08 | IB-L1M\S-1060, IB-JNUS-1020 | 11d |
|  | 2 | **Elevator Installation** |  | 2026-07-29 | 2026-09-16 |  |  |
| EL-INST-1000 |  | Evelvator Installation (incl. Equipment Room Buildout) | 35d | 2026-07-29 | 2026-09-16 | IB-L1M\S-1000 | 246d |
|  | 4 | **Stairwells** |  | 2026-02-09 | 2026-02-27 |  |  |
| IB-STAR-1000 |  | Install Stairs & Railings | 10d | 2026-02-09 | 2026-02-20 | FS-LVL1-1020 | 386d |
| IB-STAR-1010 |  | Install Signage & Lighting | 3d | 2026-02-23 | 2026-02-25 | IB-STAR-1000 | 386d |
| IB-STAR-1020 |  | Install Doors & Hardware | 2d | 2026-02-26 | 2026-02-27 | IB-STAR-1010 | 386d |
|  | 4 | **Offsite** |  | 2026-07-06 | 2026-09-29 |  |  |
|  | 2 | **Sitework Finishes** |  | 2026-07-06 | 2026-09-29 |  |  |
| SW-FIN-1040 |  | Finish Grade Site (incl. bio ponds) | 5d | 2026-07-06 | 2026-07-10 | EE-WEST-1000 | 0d |
| SW-FIN-1050 |  | Install Irrigation Sleeves (inc. bio ponds) | 2d | 2026-07-13 | 2026-07-14 | SW-FIN-1040, SW-FIN-1040 FF | 0d |
| SW-FIN-1060 |  | Electrical Rough (Light Poles) | 5d | 2026-07-15 | 2026-07-21 | SW-FIN-1050, SW-FIN-1050 FF | 0d |
| SW-FIN-1100 |  | Install Bollards (including footings) | 5d | 2026-07-22 | 2026-07-28 | SW-FIN-1060 | 0d |

| ID | WBS | Task | Duration | Start | Finish | Predecessors | Total float |
| --- | --- | --- | --- | --- | --- | --- | --- |
| SW-FIN-1130 |  | FRP Concrete (Hardscape & Sidewalks) | 7d | 2026-07-29 | 2026-08-06 | SW-FIN-1100 | 0d |
| SW-FIN-1140 |  | Install Irrigation | 10d | 2026-08-07 | 2026-08-20 | SW-FIN-1130, SW-FIN-1130 FF | 0d |
| SW-FIN-1150 |  | Install Asphalt (Final Coat) | 1d | 2026-08-21 | 2026-08-21 | SW-FIN-1140 | 0d |
| SW-FIN-1170 |  | Planting | 10d | 2026-08-24 | 2026-09-04 | SW-FIN-1150 | 0d |
| SW-FIN-1171 |  | FRP Dumpster Enclosure | 7d | 2026-09-08 | 2026-09-16 | SW-FIN-1130, SW-FIN-1170 | 0d |
| SW-FIN-1180 |  | Site Furnishings & Signage | 5d | 2026-09-17 | 2026-09-23 | SW-FIN-1170, SW-FIN-1171 | 0d |
| SW-FIN-1190 |  | Final Clean | 1d | 2026-09-24 | 2026-09-24 | SW-FIN-1180 | 237d |
| SW-FIN-1200 |  | Punch List | 3d | 2026-09-25 | 2026-09-29 | SW-FIN-1190 | 237d |
|  | 1 | **Rutland Drive Improvements** |  | 2026-07-06 | 2026-09-25 |  |  |
| SW-RTLN-1000 |  | EPSC Install (Silt Fence, Inlet Protection) | 3d | 2026-07-06 | 2026-07-08 | SW-FIN-1040 SS | 2d |
| SW-RTLN-1010 |  | Sawcut Asphalt & Demo Existing Curb | 3d | 2026-07-09 | 2026-07-13 | SW-RTLN-1000 | 2d |
| SW-RTLN-1020 |  | Temp Traffic Control Setup | 3d | 2026-07-14 | 2026-07-16 | SW-RTLN-1010 | 2d |
| SW-RTLN-1030 |  | Relocate Mailbox / Signs / Remove Conflicts | 2d | 2026-07-17 | 2026-07-20 | SW-RTLN-1020 | 2d |
| SW-RTLN-1040 |  | Trench & Install Storm Pipe | 8d | 2026-07-21 | 2026-07-30 | SW-RTLN-1030 | 2d |
| SW-RTLN-1050 |  | Set Curb Inlets, Junction Boxes, Headwalls | 6d | 2026-07-31 | 2026-08-07 | SW-RTLN-1040 | 2d |
| SW-RTLN-1060 |  | Backfill / Compact Drain Trenches | 3d | 2026-08-10 | 2026-08-12 | SW-RTLN-1050 | 2d |
| SW-RTLN-1070 |  | Subgrade Proofrool & Undercut / Backfill (if needed) | 3d | 2026-08-13 | 2026-08-17 | SW-RTLN-1060 | 2d |
| SW-RTLN-1080 |  | Place Aggregate Base | 4d | 2026-08-18 | 2026-08-21 | SW-RTLN-1070 | 2d |
| SW-RTLN-1090 |  | City Inspections (Proofrool, Storm, Curbs) | 2d | 2026-08-24 | 2026-08-25 | SW-RTLN-1080 | 2d |
| SW-RTLN-1100 |  | Install Curb & Gutter | 5d | 2026-08-26 | 2026-09-01 | SW-RTLN-1090 | 2d |
| SW-RTLN-1110 |  | Sidewalks & ADA Ramps | 4d | 2026-09-02 | 2026-09-08 | SW-RTLN-1100 | 2d |
| SW-RTLN-1120 |  | First Lift Asphalt (Binder Course) | 2d | 2026-09-09 | 2026-09-10 | SW-RTLN-1110 | 2d |
| SW-RTLN-1130 |  | Final Grading | 2d | 2026-09-11 | 2026-09-14 | SW-RTLN-1120 | 2d |
| SW-RTLN-1140 |  | Final Asphalt Surface Course | 1d | 2026-09-15 | 2026-09-15 | SW-RTLN-1130 | 2d |
| SW-RTLN-1150 |  | Permanent Signs & Striping | 2d | 2026-09-16 | 2026-09-17 | SW-RTLN-1140 | 2d |
| SW-RTLN-1160 |  | Site Cleanup & Final EPSC Removal | 2d | 2026-09-18 | 2026-09-21 | SW-RTLN-1150 | 2d |
| SW-RTLN-1170 |  | Punch List & Corrections | 2d | 2026-09-22 | 2026-09-23 | SW-RTLN-1160 | 239d |
| SW-RTLN-1180 |  | Final Owner Punch List | 2d | 2026-09-24 | 2026-09-25 | SW-RTLN-1170 | 239d |
|  | Closeout | **Closeout** |  | 2026-06-11 | 2026-09-24 |  |  |
|  | Commisioning | **Commissioning** |  | 2026-07-09 | 2026-07-15 |  |  |
| CO-CM-1000 |  | Start-Up & Testing | 5d | 2026-07-09 | 2026-07-15 | IB-L4IN-1090 | 44d |
|  | Building Finals | **Building Finals** |  | 2026-06-11 | 2026-09-24 |  |  |
| CO-BF-1000 |  | Rough Fire Sprinkler Inspection | 1d | 2026-06-11 | 2026-06-11 | IB-L4IN-1040 | 67d |
| CO-BF-1010 |  | Final Fire Sprinkler Inspection | 1d | 2026-07-16 | 2026-07-16 | CO-CM-1000, CO-BF-1000 | 44d |
| CO-BF-1020 |  | Electrical Final | 1d | 2026-07-17 | 2026-07-17 | CO-BF-1010, IB-L4IN-1090 | 44d |
| CO-BF-1030 |  | Plumbing Final | 1d | 2026-07-20 | 2026-07-20 | CO-BF-1020 | 44d |
| CO-BF-1040 |  | Mechanical Final | 1d | 2026-07-21 | 2026-07-21 | CO-BF-1030 | 44d |
| CO-BF-1050 |  | Fire Alarm Final | 1d | 2026-07-22 | 2026-07-22 | CO-BF-1040 | 44d |
| CO-BF-1060 |  | Building Final | 1d | 2026-09-24 | 2026-09-24 | CO-BF-1050, SW-RTLN-1160, SW-FIN-1180, IB-L4IN-1100, EE-ROOF-1200, IB-JNUS-1030 | 0d |
|  | 2 | **Warranty Work** |  | 2026-09-25 | 2027-09-09 |  |  |
| WW-WARR-1000 |  | 1st Quarter HVAC Maintenance | 60d | 2026-09-25 | 2026-12-21 | CO-BF-1060 | 0d |
| WW-WARR-1010 |  | 1st Quarter Landscape Maintenance | 60d | 2026-09-25 | 2026-12-21 | CO-BF-1060 | 0d |
| WW-WARR-1020 |  | 11-Month Warranty Walk | 220d | 2026-09-25 | 2027-08-11 | CO-BF-1060 | 20d |
| WW-WARR-1030 |  | 2nd Quarter HVAC Maintenance | 60d | 2026-12-22 | 2027-03-22 | WW-WARR-1000 | 0d |
| WW-WARR-1040 |  | 2nd Quarter Landscape Maintenance | 60d | 2026-12-22 | 2027-03-22 | WW-WARR-1010 | 0d |
| WW-WARR-1050 |  | 3rd Quarter HVAC Maintenance | 60d | 2027-03-23 | 2027-06-15 | WW-WARR-1030 | 0d |
| WW-WARR-1060 |  | 3rd Quarter Landscape Maintenance | 60d | 2027-03-23 | 2027-06-15 | WW-WARR-1040 | 0d |
| WW-WARR-1070 |  | 4th Quarter HVAC Maintenance | 60d | 2027-06-16 | 2027-09-09 | WW-WARR-1050 | 0d |
| WW-WARR-1080 |  | 4th Quarter Landscape Maintenance | 60d | 2027-06-16 | 2027-09-09 | WW-WARR-1060 | 0d |
|  | 5 | **Weather Impacts** |  | 2026-09-25 | 2026-10-22 |  |  |
| WI-WTHR-1000 |  | Rain Days | 20d | 2026-09-25 | 2026-10-22 | PS-CMIL-1160 SS | 220d |

## Version 2 (data date 2025-10-01, saved 2025-11-06, file update_1.xer)

Note of the change: Add all project schedule files to buckets - 13 projects, MPP+XER, baseline+updates

Last finish 2027-09-09 → 2027-10-14 (+35d). Complete tasks 0 → 10.

Changed:

| ID | Task | Start | Finish | Complete | Total float | Predecessors |
| --- | --- | --- | --- | --- | --- | --- |
| 3 | **Project Summary** |  | 2026-10-22 → 2026-11-30 (+39d) |  |  |  |
| 1 | **Contract Milestones** |  | 2026-10-22 → 2026-11-30 (+39d) |  |  |  |
| PS-CMIL-1000 | Proposals/Bids Due | 2025-07-02 A | 2025-07-02 A | 0% → 100% | 0d → none |  |
| PS-CMIL-1020 | Interviews | 2025-07-10 A | 2025-07-10 A | 0% → 100% | 0d → none |  |
| PS-CMIL-1030 | Award Contract | 2025-07-21 → 2025-09-04 A (+45d) | 2025-07-21 → 2025-09-04 A (+45d) | 0% → 100% | 0d → none |  |
| PS-CMIL-1040 | Notice to Proceed | 2025-07-24 → 2025-09-11 A (+49d) | 2025-07-24 → 2025-09-11 A (+49d) | 0% → 100% | 0d → none |  |
| PS-CMIL-1050 | Operational Setup | 2025-07-24 → 2025-09-11 A (+49d) | 2025-08-18 → 2025-09-25 A (+38d) | 0% → 100% | 0d → none |  |
| PS-CMIL-1010 | Project Open | 2025-07-02 → 2026-10-28 (+483d) | 2025-07-02 → 2026-10-28 (+483d) |  | 550d → 0d | none → EE-NRTH-1170 FF, EE-EAST-1120 FF, EE-SOTH-1140 FF, EE-WEST-1120 FF, SW-FIN-1200 FF, SW-RTLN-1180 FF, IB-L3UN-1100 FF, IB-STAR-1020 FF, IB-L1RR-1100 FF, IB-L1M\S-1140 FF |
| PS-CMIL-1150 | Project SC - Before Weather Impacts | 2026-09-24 → 2026-10-29 (+35d) | 2026-09-24 → 2026-10-29 (+35d) |  |  |  |
| PS-CMIL-1160 | Anticipated Remaining Weather Impacts | 2026-09-25 → 2026-10-30 (+35d) | 2026-10-22 → 2026-11-30 (+39d) |  |  |  |
| PS-CMIL-1170 | Project Sustainability Complete - After Weather Impacts | 2026-10-22 → 2026-11-30 (+39d) | 2026-10-22 → 2026-11-30 (+39d) |  |  |  |
| 2 | **Construction Milestones** | 2025-07-24 → 2025-09-26 (+64d) | 2026-09-24 → 2026-10-23 (+29d) |  |  |  |
| PS-CMIL-1070 | Start Construction | 2025-08-19 → 2025-09-26 A (+38d) | 2025-08-19 → 2025-09-26 A (+38d) | 0% → 100% | 517d → none |  |
| PS-CMIL-1060 | Permit Approved | 2025-07-24 → 2025-10-01 (+69d) | 2025-07-24 → 2025-10-01 (+69d) |  | 535d → 512d |  |
| PS-CMIL-1080 | Start of Foundations | 2025-12-08 → 2026-01-12 (+35d) | 2025-12-08 → 2026-01-12 (+35d) |  | 441d → 445d |  |
| PS-CMIL-1090 | Start of Elevated Structure | 2026-02-05 → 2026-02-06 (+1d) | 2026-02-05 → 2026-02-06 (+1d) |  | 403d → 427d |  |
| PS-CMIL-1100 | Stair & Elevator Cores Complete to Roof | 2026-02-06 → 2026-03-09 (+31d) | 2026-02-06 → 2026-03-09 (+31d) |  | 401d → 405d |  |
| PS-CMIL-1120 | Structure Complete | 2026-06-04 → 2026-06-05 (+1d) | 2026-06-04 → 2026-06-05 (+1d) |  | 318d → 342d |  |
| PS-CMIL-1130 | Building Dry In | 2026-07-13 → 2026-07-14 (+1d) | 2026-07-13 → 2026-07-14 (+1d) |  | 292d → 316d |  |
| PS-CMIL-1110 | Exterior Work Complete | 2026-09-01 → 2026-10-07 (+36d) | 2026-09-01 → 2026-10-07 (+36d) |  |  |  |
| PS-CMIL-1140 | Landscape & Hardscape Complete | 2026-09-24 → 2026-10-23 (+29d) | 2026-09-24 → 2026-10-23 (+29d) |  | 240d → 244d |  |
| 4 | **Pre-Construction** | 2025-07-21 → 2025-09-19 (+60d) | 2025-08-22 → 2025-10-21 (+60d) |  |  |  |
| 1 | **Procurement** | 2025-07-21 → 2025-09-19 (+60d) | 2025-08-22 → 2025-10-21 (+60d) |  |  |  |
| PS-PROC-1000 | Contracting of Early Trades | 2025-07-21 → 2025-09-19 A (+60d) | 2025-08-01 → 2025-10-02 A (+62d) | 0% → 100% | 513d → none |  |
| PS-PROC-1010 | Elevator | 2025-08-04 → 2025-10-01 (+58d) | 2025-08-08 → 2025-10-07 (+60d) |  | 513d → 256d |  |
| PS-PROC-1020 | Electric Room MDP | 2025-08-11 → 2025-10-08 (+58d) | 2025-08-15 → 2025-10-14 (+60d) |  | 513d → 256d |  |
| PS-PROC-1030 | Owner's Enabling Work | 2025-08-18 → 2025-10-15 (+58d) | 2025-08-22 → 2025-10-21 (+60d) |  | 513d → 256d |  |
| 1 | **Construction** | 2025-08-19 → 2025-09-26 (+38d) | 2026-09-29 → 2026-10-28 (+29d) |  |  |  |
| MOB | **Mobilization** | 2025-08-19 → 2025-09-26 (+38d) | 2025-09-04 → 2025-11-07 (+64d) |  |  |  |
| CN-MOBL-1000 | Survey Project Limits | 2025-08-19 → 2025-09-26 A (+38d) | 2025-08-19 → 2025-09-26 A (+38d) | 0% → 100% | 0d → none |  |
| CN-MOBL-1020 | Install SWPPs | 2025-08-22 → 2025-09-26 A (+35d) | 2025-08-25 → 2025-09-29 A (+35d) | 0% → 100% | 0d → none | CN-MOBL-1010 → CN-MOBL-1000 SS |
| CN-MOBL-1030 | Set Stabilized Entrance | 2025-08-26 → 2025-09-30 A (+35d) | 2025-08-26 → 2025-09-30 A (+35d) | 0% → 100% | 0d → none | CN-MOBL-1020 → CN-MOBL-1020 FF |
| CN-MOBL-1010 | Install Temp Fencing | 2025-08-20 → 2025-10-29 (+70d) | 2025-08-21 → 2025-10-30 (+70d) |  |  | CN-MOBL-1000 → SU-STWK-1010 |
| CN-MOBL-1040 | Install Temp Power | 2025-08-27 → 2025-10-31 (+65d) | 2025-08-28 → 2025-11-03 (+67d) |  | 505d → 0d | CN-MOBL-1030 → CN-MOBL-1010 |
| CN-MOBL-1050 | Set Field Office | 2025-08-29 → 2025-11-04 (+67d) | 2025-08-29 → 2025-11-04 (+67d) |  | 505d → 0d |  |
| CN-MOBL-1060 | Field Office MEP Hook-Up | 2025-09-02 → 2025-11-05 (+64d) | 2025-09-03 → 2025-11-06 (+64d) |  | 505d → 0d |  |
| CN-MOBL-1070 | Install Temp Toilets, Waste & Hand Wash Stations | 2025-09-04 → 2025-11-07 (+64d) | 2025-09-04 → 2025-11-07 (+64d) |  | 505d → 0d |  |
| Sitework | **Sitework & Utilities** | 2025-08-27 → 2025-10-01 (+35d) | 2025-12-05 → 2026-01-09 (+35d) |  |  |  |
| SW | **Sitework** | 2025-08-27 → 2025-10-01 (+35d) | 2025-12-05 → 2026-01-09 (+35d) |  |  |  |
| SU-STWK-1010 | Mass Excavation & Rock Removal | 2025-09-02 → 2025-10-01 A (+29d) | 2025-09-29 → 2025-10-28 (+29d) |  |  | SU-STWK-1000 → CN-MOBL-1030 |
| SU-STWK-1000 | Clear & Grub | 2025-08-27 → 2025-10-24 (+58d) | 2025-08-29 → 2025-10-28 (+60d) |  |  | CN-MOBL-1030 → SU-STWK-1010 FF |
| SU-STWK-1020 | Building Pad Prep & Grading | 2025-09-30 → 2025-10-29 (+29d) | 2025-10-08 → 2025-11-06 (+29d) |  |  | SU-STWK-1010 → SU-STWK-1010, SU-STWK-1000 |
| SU-STWK-1030 | Building Layout & Staking | 2025-10-09 → 2025-11-07 (+29d) | 2025-10-09 → 2025-11-07 (+29d) |  |  |  |
| SU-STWK-1040 | Compact Subgrade | 2025-10-10 → 2025-11-10 (+31d) | 2025-10-14 → 2025-11-12 (+29d) |  |  | SU-STWK-1030 → SU-STWK-1030, CN-MOBL-1070 |
| SU-STWK-1050 | Install Stone Base | 2025-11-10 → 2025-12-11 (+31d) | 2025-11-12 → 2025-12-15 (+33d) |  |  |  |
| SU-STWK-1060 | Install Prime Coat, Binder, & Tack Coat | 2025-11-13 → 2025-12-16 (+33d) | 2025-11-14 → 2025-12-17 (+33d) |  |  |  |
| SU-STWK-1070 | Install Asphalt (Wearing Course) | 2025-11-17 → 2025-12-18 (+31d) | 2025-11-17 → 2025-12-18 (+31d) |  |  |  |
| SU-STWK-1080 | Form & Reinforce Curb & Gutter | 2025-11-18 → 2025-12-19 (+31d) | 2025-11-24 → 2025-12-29 (+35d) |  |  |  |
| SU-STWK-1090 | Pour Curb & Gutter | 2025-11-25 → 2025-12-30 (+35d) | 2025-11-26 → 2026-01-02 (+37d) |  |  |  |
| SU-STWK-1100 | Rough Grade Site | 2025-12-01 → 2026-01-05 (+35d) | 2025-12-05 → 2026-01-09 (+35d) |  |  |  |
| SIte | **Site Utilities** | 2025-10-15 → 2025-11-13 (+29d) | 2025-11-07 → 2025-12-10 (+33d) |  |  |  |
| SU-SUTL-1000 | Cut, Cap, and Relocate Existing Utilities | 2025-10-15 → 2025-11-13 (+29d) | 2025-10-21 → 2025-11-19 (+29d) |  |  |  |
| SU-SUTL-1010 | Install Irrigation Sleeves | 2025-10-22 → 2025-11-20 (+29d) | 2025-10-24 → 2025-11-24 (+31d) |  |  |  |
| SU-SUTL-1020 | Install U.G. Sewer | 2025-10-27 → 2025-11-25 (+29d) | 2025-11-07 → 2025-12-10 (+33d) |  |  |  |
| SU-SUTL-1030 | Install U.G. Storm Drain | 2025-10-27 → 2025-11-25 (+29d) | 2025-11-07 → 2025-12-10 (+33d) |  |  |  |
| SU-SUTL-1040 | Install U.G. Electrical Duct Banks | 2025-10-27 → 2025-11-25 (+29d) | 2025-11-07 → 2025-12-10 (+33d) |  |  |  |
| SU-SUTL-1050 | Install U.G. Fire Water & Domestic | 2025-10-27 → 2025-11-25 (+29d) | 2025-11-07 → 2025-12-10 (+33d) |  |  |  |
| 1 | **Foundation & Structural** | 2025-12-08 → 2026-01-12 (+35d) | 2026-06-04 → 2026-06-05 (+1d) |  |  |  |
| 1 | **Level 1** | 2025-12-08 → 2026-01-12 (+35d) | 2026-02-23 → 2026-03-09 (+14d) |  |  |  |
| FS-LVL1-1000 | Footings & Foundation CIP Walls (includes elevator pit) | 2025-12-08 → 2026-01-12 (+35d) | 2026-01-15 → 2026-02-16 (+32d) |  |  |  |
| FS-LVL1-1010 | Underground MEPF Install (Pre-Pour) | 2026-01-16 → 2026-01-20 (+4d) | 2026-01-23 → 2026-01-26 (+3d) |  |  | FS-LVL1-1020 SS → FS-LVL1-1000 SS+5d |
| FS-LVL1-1030 | Slab Prep & Pour (Pour A1) | 2026-01-26 → 2026-01-27 (+1d) | 2026-01-30 → 2026-02-02 (+3d) |  |  |  |
| FS-LVL1-1040 | Slab Prep & Pour (Pour A2) | 2026-02-02 → 2026-02-03 (+1d) | 2026-02-04 → 2026-02-05 (+1d) |  |  |  |
| FS-LVL1-1050 | Steel Erection (Colums & Beams) | 2026-02-05 → 2026-02-06 (+1d) | 2026-02-18 → 2026-02-19 (+1d) |  |  |  |
| FS-LVL1-1020 | Erect Stairs & Elevator Shafts (CMU Cores) | 2026-01-16 → 2026-02-17 (+32d) | 2026-02-06 → 2026-03-09 (+31d) |  | 0d → 149d |  |
| FS-LVL1-1060 | Fireproofing | 2026-02-19 → 2026-02-20 (+1d) | 2026-02-23 → 2026-02-24 (+1d) |  | 390d → 173d |  |
| 2 | **Level 2** | 2026-02-13 → 2026-02-16 (+3d) | 2026-03-23 → 2026-03-24 (+1d) |  |  |  |
| FS-LVL2-1000 | Install Metal Decking | 2026-02-13 → 2026-02-16 (+3d) | 2026-02-18 → 2026-02-19 (+1d) |  |  |  |
| FS-LVL2-1010 | MEPF Rough-In (Pre-Pour) | 2026-02-19 → 2026-02-20 (+1d) | 2026-02-25 → 2026-02-26 (+1d) |  |  |  |
| FS-LVL2-1020 | FRP Metal Deck Slab (Pour A1) | 2026-02-26 → 2026-02-27 (+1d) | 2026-03-04 → 2026-03-05 (+1d) |  |  |  |

| ID | Task | Start | Finish | Total float | Predecessors |
| --- | --- | --- | --- | --- | --- |
| FS-LVL2-1030 | FRP Metal Deck Slab (Pour A2) | 2026-03-05 → 2026-03-06 (+1d) | 2026-03-09 → 2026-03-10 (+1d) |  |  |
| FS-LVL2-1040 | Layout & Erect Load Bearing Framing | 2026-03-10 → 2026-03-11 (+1d) | 2026-03-23 → 2026-03-24 (+1d) |  |  |
| 3 | **Level 3** | 2026-03-18 → 2026-03-19 (+1d) | 2026-04-23 → 2026-04-24 (+1d) |  |  |
| FS-LVL3-1000 | Install Metal Decking | 2026-03-18 → 2026-03-19 (+1d) | 2026-03-23 → 2026-03-24 (+1d) |  |  |
| FS-LVL3-1010 | MEPF Rough-In (Pre-Pour) | 2026-03-24 → 2026-03-25 (+1d) | 2026-03-30 → 2026-03-31 (+1d) |  |  |
| FS-LVL3-1020 | FRP Metal Deck Slab (Pour A1) | 2026-03-31 → 2026-04-01 (+1d) | 2026-04-06 → 2026-04-07 (+1d) |  |  |
| FS-LVL3-1030 | FRP Metal Deck Slab (Pour A2) | 2026-04-07 → 2026-04-08 (+1d) | 2026-04-09 → 2026-04-10 (+1d) |  |  |
| FS-LVL3-1040 | Layout & Erect Load Bearing Framing | 2026-04-10 → 2026-04-13 (+3d) | 2026-04-23 → 2026-04-24 (+1d) |  |  |
| 5 | **Level 4** | 2026-04-20 → 2026-04-21 (+1d) | 2026-05-27 → 2026-05-28 (+1d) |  |  |
| FS-LVL4-1000 | Install Metal Decking | 2026-04-20 → 2026-04-21 (+1d) | 2026-04-23 → 2026-04-24 (+1d) |  |  |
| FS-LVL4-1010 | MEPF Rough-In (Pre-Pour) | 2026-04-24 → 2026-04-27 (+3d) | 2026-04-30 → 2026-05-01 (+1d) |  |  |
| FS-LVL4-1020 | FRP Metal Deck Slab (Pour A1) | 2026-05-01 → 2026-05-04 (+3d) | 2026-05-07 → 2026-05-08 (+1d) |  |  |
| FS-LVL4-1030 | FRP Metal Deck Slab (Pour A2) | 2026-05-08 → 2026-05-11 (+3d) | 2026-05-12 → 2026-05-13 (+1d) |  |  |
| FS-LVL4-1040 | Layout & Erect Load Bearing Framing | 2026-05-13 → 2026-05-14 (+1d) | 2026-05-27 → 2026-05-28 (+1d) |  |  |
| 4 | **Roof** | 2026-05-21 → 2026-05-22 (+1d) | 2026-06-04 → 2026-06-05 (+1d) |  |  |
| FS-ROOF-1000 | Install Metal Decking | 2026-05-21 → 2026-05-22 (+1d) | 2026-05-27 → 2026-05-28 (+1d) |  |  |
| FS-ROOF-1010 | MEPF Rough-In (Stubups) | 2026-05-28 → 2026-05-29 (+1d) | 2026-06-01 → 2026-06-02 (+1d) |  |  |
| FS-ROOF-1020 | Layout & Frame Parapets | 2026-06-02 → 2026-06-03 (+1d) | 2026-06-04 → 2026-06-05 (+1d) |  |  |
| 2 | **Envelope & Exterior** | 2026-06-05 → 2026-05-14 (-22d) | 2026-09-16 → 2026-10-19 (+33d) |  |  |
| 0 | **North Elevation** | 2026-06-05 → 2026-05-14 (-22d) | 2026-09-11 → 2026-09-03 (-8d) |  |  |
| EE-NRTH-1000 | Layout & Exterior Framing (Level 1) | 2026-06-05 → 2026-05-14 (-22d) | 2026-06-11 → 2026-05-20 (-22d) | 0d → 10d | FS-ROOF-1020 → FS-LVL4-1030 |
| EE-NRTH-1010 | City Inspection (Rough Framing) | 2026-06-12 → 2026-05-21 (-22d) | 2026-06-12 → 2026-05-21 (-22d) | 248d → 10d |  |
| EE-NRTH-1020 | Electrical Rough-In | 2026-06-15 → 2026-06-08 (-7d) | 2026-06-19 → 2026-06-12 (-7d) | 248d → 0d |  |
| EE-NRTH-1030 | City Inspection (Electrical) | 2026-06-22 → 2026-06-15 (-7d) | 2026-06-22 → 2026-06-15 (-7d) | 249d → 7d |  |
| EE-NRTH-1040 | Install Exterior Sheathing | 2026-06-23 → 2026-06-16 (-7d) | 2026-06-29 → 2026-06-22 (-7d) | 249d → 7d |  |
| EE-NRTH-1050 | City Inspection (Screw Inspection) | 2026-06-30 → 2026-06-23 (-7d) | 2026-06-30 → 2026-06-23 (-7d) | 249d → 7d |  |
| EE-NRTH-1060 | Weather Barrier & Flashing | 2026-07-01 → 2026-06-24 (-7d) | 2026-07-08 → 2026-06-30 (-8d) | 249d → 7d |  |
| EE-NRTH-1070 | Install Rigid Insulation | 2026-07-09 → 2026-07-01 (-8d) | 2026-07-15 → 2026-07-08 (-7d) | 249d → 7d |  |
| EE-NRTH-1080 | Storefront, Windows & Metals | 2026-07-16 → 2026-07-09 (-7d) | 2026-07-20 → 2026-07-13 (-7d) | 249d → 7d |  |
| EE-NRTH-1090 | Install Brick Veneer | 2026-07-21 → 2026-07-14 (-7d) | 2026-08-10 → 2026-08-03 (-7d) | 249d → 7d |  |
| EE-NRTH-1100 | Install Canopies & Trim | 2026-08-11 → 2026-08-04 (-7d) | 2026-08-13 → 2026-08-06 (-7d) | 249d → 38d |  |
| EE-NRTH-1110 | Install Lighting Fixtures | 2026-08-14 → 2026-08-07 (-7d) | 2026-08-18 → 2026-08-11 (-7d) | 249d → 38d |  |
| EE-NRTH-1120 | Install Signage | 2026-08-19 → 2026-08-12 (-7d) | 2026-08-19 → 2026-08-12 (-7d) | 249d → 38d |  |
| EE-NRTH-1130 | Install Doors & Hardware | 2026-08-20 → 2026-08-13 (-7d) | 2026-08-21 → 2026-08-14 (-7d) | 249d → 38d |  |
| EE-NRTH-1140 | Install Downspouts | 2026-08-24 → 2026-08-17 (-7d) | 2026-08-24 → 2026-08-17 (-7d) | 249d → 38d |  |
| EE-NRTH-1150 | Final Paint | 2026-08-25 → 2026-08-18 (-7d) | 2026-08-27 → 2026-08-20 (-7d) | 249d → 38d |  |
| EE-NRTH-1160 | Punch List & Corrections | 2026-08-28 → 2026-08-21 (-7d) | 2026-09-03 → 2026-08-27 (-7d) | 249d → 38d |  |
| EE-NRTH-1170 | Final Owner Walk (Punch List & Corrections) | 2026-09-04 → 2026-08-28 (-7d) | 2026-09-11 → 2026-09-03 (-8d) | 249d → 38d |  |
| 2 | **East Elevation** | 2026-06-12 → 2026-05-21 (-22d) | 2026-09-01 → 2026-09-09 (+8d) |  |  |
| EE-EAST-1000 | Layout & Exterior Framing (Level 1) | 2026-06-12 → 2026-05-21 (-22d) | 2026-06-18 → 2026-05-28 (-21d) | 0d → 10d |  |
| EE-EAST-1010 | City Inspection (Rough Framing) | 2026-06-19 → 2026-05-29 (-21d) | 2026-06-19 → 2026-05-29 (-21d) | 248d → 10d |  |
| EE-EAST-1020 | Electrical Rough-In | 2026-06-22 → 2026-06-15 (-7d) | 2026-06-26 → 2026-06-19 (-7d) | 248d → 0d |  |
| EE-EAST-1030 | City Inspection (Electrical) | 2026-06-29 → 2026-06-22 (-7d) | 2026-06-29 → 2026-06-22 (-7d) | 256d → 17d |  |
| EE-EAST-1040 | Install Exterior Sheathing | 2026-06-30 → 2026-06-23 (-7d) | 2026-07-07 → 2026-06-29 (-8d) | 256d → 17d |  |
| EE-EAST-1050 | City Inspection (Screw Inspection) | 2026-07-08 → 2026-06-30 (-8d) | 2026-07-08 → 2026-06-30 (-8d) | 256d → 17d |  |
| EE-EAST-1060 | Weather Barrier & Flashing | 2026-07-09 → 2026-07-01 (-8d) | 2026-07-15 → 2026-07-08 (-7d) | 256d → 17d |  |
| EE-EAST-1070 | Install Rigid Insulation | 2026-07-16 → 2026-07-09 (-7d) | 2026-07-22 → 2026-07-15 (-7d) | 256d → 17d |  |
| EE-EAST-1080 | Install Windows & Metals | 2026-07-23 → 2026-07-16 (-7d) | 2026-07-27 → 2026-07-20 (-7d) | 256d → 17d |  |
| EE-EAST-1090 | Install Brick Veneer | 2026-07-28 → 2026-08-04 (+7d) | 2026-08-17 → 2026-08-24 (+7d) | 256d → 7d | EE-EAST-1080 → EE-EAST-1080, EE-NRTH-1090 |
| EE-EAST-1100 | Install Signage | 2026-08-18 → 2026-08-25 (+7d) | 2026-08-18 → 2026-08-25 (+7d) | 256d → 35d |  |
| EE-EAST-1110 | Punch List & Corrections | 2026-08-19 → 2026-08-26 (+7d) | 2026-08-25 → 2026-09-01 (+7d) | 256d → 35d |  |
| EE-EAST-1120 | Final Owner Walk (Punch List & Corrections) | 2026-08-26 → 2026-09-02 (+7d) | 2026-09-01 → 2026-09-09 (+8d) | 256d → 35d |  |
| 5 | **South Elevation** | 2026-06-19 → 2026-05-29 (-21d) | 2026-09-11 → 2026-10-07 (+26d) |  |  |
| EE-SOTH-1000 | Layout & Exterior Framing (Level 1) | 2026-06-19 → 2026-05-29 (-21d) | 2026-06-25 → 2026-06-04 (-21d) | 0d → 10d |  |
| EE-SOTH-1010 | City Inspection (Rough Framing) | 2026-06-26 → 2026-06-05 (-21d) | 2026-06-26 → 2026-06-05 (-21d) | 248d → 10d |  |
| EE-SOTH-1020 | Electrical Rough-In | 2026-06-29 → 2026-06-22 (-7d) | 2026-07-06 → 2026-06-26 (-10d) | 248d → 0d |  |
| EE-SOTH-1030 | City Inspection (Electrical) | 2026-07-07 → 2026-06-29 (-8d) | 2026-07-07 → 2026-06-29 (-8d) | 249d → 30d |  |
| EE-SOTH-1040 | Install Exterior Sheathing | 2026-07-08 → 2026-06-30 (-8d) | 2026-07-14 → 2026-07-07 (-7d) | 249d → 30d |  |
| EE-SOTH-1050 | City Inspection (Screw Inspection) | 2026-07-15 → 2026-07-08 (-7d) | 2026-07-15 → 2026-07-08 (-7d) | 249d → 30d |  |
| EE-SOTH-1060 | Weather Barrier & Flashing | 2026-07-16 → 2026-07-09 (-7d) | 2026-07-22 → 2026-07-15 (-7d) | 249d → 30d |  |
| EE-SOTH-1070 | Install Rigid Insulation | 2026-07-23 → 2026-07-16 (-7d) | 2026-07-29 → 2026-07-22 (-7d) | 249d → 30d |  |
| EE-SOTH-1080 | Install Brick Veneer | 2026-07-30 → 2026-08-25 (+26d) | 2026-08-19 → 2026-09-15 (+27d) | 249d → 7d | EE-SOTH-1070 → EE-SOTH-1070, EE-EAST-1090 |
| EE-SOTH-1090 | Install Signage | 2026-08-20 → 2026-09-16 (+27d) | 2026-08-20 → 2026-09-16 (+27d) | 249d → 15d |  |
| EE-SOTH-1100 | Install Doors & Hardware | 2026-08-21 → 2026-09-17 (+27d) | 2026-08-21 → 2026-09-17 (+27d) | 249d → 15d |  |
| EE-SOTH-1110 | Install Downspouts | 2026-08-24 → 2026-09-18 (+25d) | 2026-08-25 → 2026-09-21 (+27d) | 249d → 15d |  |
| EE-SOTH-1120 | Final Paint | 2026-08-26 → 2026-09-22 (+27d) | 2026-08-27 → 2026-09-23 (+27d) | 249d → 15d |  |
| EE-SOTH-1130 | Punch List & Corrections | 2026-08-28 → 2026-09-24 (+27d) | 2026-09-03 → 2026-09-30 (+27d) | 249d → 15d |  |
| EE-SOTH-1140 | Final Owner Walk (Punch List & Corrections) | 2026-09-04 → 2026-10-01 (+27d) | 2026-09-11 → 2026-10-07 (+26d) | 249d → 15d |  |
| 1 | **West Elevation** | 2026-06-26 → 2026-06-05 (-21d) | 2026-09-14 → 2026-10-19 (+35d) |  |  |
| EE-WEST-1000 | Layout & Exterior Framing (Level 1) | 2026-06-26 → 2026-06-05 (-21d) | 2026-07-02 → 2026-06-11 (-21d) | 0d → 10d |  |

| ID | Task | Start | Finish | Total float | Predecessors |
| --- | --- | --- | --- | --- | --- |
| EE-WEST-1010 | City Inspection (Rough Framing) | 2026-07-06 → 2026-06-12 (-24d) | 2026-07-06 → 2026-06-12 (-24d) | 248d → 10d |  |
| EE-WEST-1020 | Electrical Rough-In | 2026-07-07 → 2026-06-29 (-8d) | 2026-07-13 → 2026-07-06 (-7d) | 248d → 0d |  |
| EE-WEST-1030 | City Inspection (Electrical) | 2026-07-14 → 2026-07-07 (-7d) | 2026-07-14 → 2026-07-07 (-7d) | 248d → 0d |  |
| EE-WEST-1040 | Install Exterior Sheathing | 2026-07-15 → 2026-07-08 (-7d) | 2026-07-21 → 2026-07-14 (-7d) | 248d → 0d |  |
| EE-WEST-1050 | City Inspection (Screw Inspection) | 2026-07-22 → 2026-07-15 (-7d) | 2026-07-22 → 2026-07-15 (-7d) | 248d → 0d |  |
| EE-WEST-1060 | Weather Barrier & Flashing | 2026-07-23 → 2026-07-16 (-7d) | 2026-07-29 → 2026-07-22 (-7d) | 248d → 0d |  |
| EE-WEST-1070 | Install Rigid Insulation | 2026-07-30 → 2026-07-23 (-7d) | 2026-08-05 → 2026-07-29 (-7d) | 248d → 0d |  |
| EE-WEST-1080 | Install Windows & Metals | 2026-08-06 → 2026-07-30 (-7d) | 2026-08-10 → 2026-08-03 (-7d) | 248d → 0d |  |
| EE-WEST-1090 | Install Brick Veneer | 2026-08-11 → 2026-09-16 (+36d) | 2026-08-31 → 2026-10-06 (+36d) | 248d → 7d | EE-WEST-1080 → EE-WEST-1080, EE-SOTH-1080 |
| EE-WEST-1100 | Install Signage | 2026-09-01 → 2026-10-07 (+36d) | 2026-09-01 → 2026-10-07 (+36d) | 248d → 7d |  |
| EE-WEST-1110 | Punch List & Corrections | 2026-09-02 → 2026-10-08 (+36d) | 2026-09-09 → 2026-10-14 (+35d) | 248d → 7d |  |
| EE-WEST-1120 | Final Owner Walk (Punch List & Corrections) | 2026-09-10 → 2026-10-15 (+35d) | 2026-09-14 → 2026-10-19 (+35d) | 248d → 7d |  |
| 3 | **Roof** | 2026-06-05 → 2026-06-08 (+3d) | 2026-09-16 → 2026-09-17 (+1d) |  |  |
| EE-ROOF-1000 | Clean & Prep Metal Deck | 2026-06-05 → 2026-06-08 (+3d) | 2026-06-08 → 2026-06-09 (+1d) |  |  |
| EE-ROOF-1010 | Stage Materials & Solar Rails (Crane) | 2026-06-09 → 2026-06-10 (+1d) | 2026-06-09 → 2026-06-10 (+1d) |  |  |
| EE-ROOF-1020 | Layout for Penetrations, Curb Blocking, Edge Metal | 2026-06-10 → 2026-06-11 (+1d) | 2026-06-11 → 2026-06-12 (+1d) |  |  |
| EE-ROOF-1030 | Install Blocking & Equipment Curbs | 2026-06-12 → 2026-06-15 (+3d) | 2026-06-16 → 2026-06-17 (+1d) |  |  |
| EE-ROOF-1040 | Install Rigid Insulation | 2026-06-17 → 2026-06-18 (+1d) | 2026-06-22 → 2026-06-23 (+1d) |  |  |
| EE-ROOF-1050 | Install Cover Board | 2026-06-23 → 2026-06-24 (+1d) | 2026-06-26 → 2026-06-29 (+3d) |  |  |
| EE-ROOF-1060 | Install TPO Roofing System (incl. boots, termination bars) | 2026-06-29 → 2026-06-30 (+1d) | 2026-07-13 → 2026-07-14 (+1d) |  |  |
| EE-ROOF-1070 | Install Edge Metal, Coping, Trim | 2026-07-14 → 2026-07-15 (+1d) | 2026-07-20 → 2026-07-21 (+1d) | 5d → 29d |  |
| EE-ROOF-1080 | Install Roof Drains, Vents, Mechanical Curbs | 2026-07-21 → 2026-07-22 (+1d) | 2026-07-27 → 2026-07-28 (+1d) | 5d → 29d |  |
| EE-ROOF-1090 | Install Electrical Conduit & Roof Mounted Boxes | 2026-07-28 → 2026-07-29 (+1d) | 2026-08-03 → 2026-08-04 (+1d) | 5d → 29d |  |
| EE-ROOF-1140 | Set Rooftop Units (RTU's & Splits) | 2026-07-28 → 2026-07-29 (+1d) | 2026-07-28 → 2026-07-29 (+1d) | 26d → 50d |  |
| EE-ROOF-1150 | Install Duct/Condensate/Vent Tie-Ins & Flashing | 2026-07-29 → 2026-07-30 (+1d) | 2026-07-31 → 2026-08-03 (+3d) | 26d → 50d |  |
| EE-ROOF-1160 | Startup/Controls/Balancing Prep | 2026-08-03 → 2026-08-04 (+1d) | 2026-08-05 → 2026-08-06 (+1d) | 26d → 50d |  |
| EE-ROOF-1100 | Install Solar Mounting Rails & Racking | 2026-08-04 → 2026-08-05 (+1d) | 2026-08-06 → 2026-08-07 (+1d) | 5d → 29d |  |
| EE-ROOF-1170 | Water Test / Leak Test | 2026-08-06 → 2026-08-07 (+1d) | 2026-08-06 → 2026-08-07 (+1d) | 26d → 50d |  |
| EE-ROOF-1110 | Mount Solar Panels | 2026-08-07 → 2026-08-10 (+3d) | 2026-08-27 → 2026-08-28 (+1d) | 5d → 29d |  |
| EE-ROOF-1180 | Roof Patches (If Any) | 2026-08-07 → 2026-08-10 (+3d) | 2026-08-07 → 2026-08-10 (+3d) | 26d → 50d |  |
| EE-ROOF-1190 | Punch List & Corrections | 2026-08-10 → 2026-08-11 (+1d) | 2026-08-12 → 2026-08-13 (+1d) | 26d → 50d |  |
| EE-ROOF-1120 | Run Electrical Conduit & Inverters to Roof | 2026-08-28 → 2026-08-31 (+3d) | 2026-09-03 → 2026-09-04 (+1d) | 5d → 29d |  |
| EE-ROOF-1130 | Final Electrical Tie-In (Solar Panels) | 2026-09-04 → 2026-09-08 (+4d) | 2026-09-11 → 2026-09-14 (+3d) | 5d → 29d |  |
| EE-ROOF-1200 | Final Owner Walk (Punch List & Corrections) | 2026-09-14 → 2026-09-15 (+1d) | 2026-09-16 → 2026-09-17 (+1d) | 5d → 29d |  |
| 3 | **Interior Build-Out** | 2026-02-09 → 2026-03-10 (+29d) | 2026-09-16 → 2026-10-21 (+35d) |  |  |
| Level 1 Interior | **Level 1 Interior** | 2026-07-14 → 2026-07-15 (+1d) | 2026-09-02 → 2026-09-03 (+1d) |  |  |
| IB-L1IN-1000 | Layout & Framing (incl. backing, door frames) | 2026-07-14 → 2026-07-15 (+1d) | 2026-07-20 → 2026-07-21 (+1d) | 11d → 29d |  |
| IB-L1IN-1010 | Electrical Rough-In | 2026-07-21 → 2026-07-22 (+1d) | 2026-07-27 → 2026-07-28 (+1d) | 258d → 41d |  |
| IB-L1IN-1020 | Mechanical Rough-In | 2026-07-21 → 2026-07-22 (+1d) | 2026-07-27 → 2026-07-28 (+1d) | 258d → 41d |  |
| IB-L1IN-1030 | Plumbing Rough-In | 2026-07-21 → 2026-07-22 (+1d) | 2026-07-27 → 2026-07-28 (+1d) | 258d → 41d |  |
| IB-L1IN-1040 | Fire Supression Rough-In | 2026-07-21 → 2026-07-22 (+1d) | 2026-07-27 → 2026-07-28 (+1d) | 258d → 41d |  |
| IB-L1IN-1050 | Install Insulation | 2026-07-28 → 2026-07-29 (+1d) | 2026-07-29 → 2026-07-30 (+1d) | 258d → 41d | IB-L1IN-1040 → IB-L1IN-1040, EE-ROOF-1060 |
| IB-L1IN-1060 | Install Drywall | 2026-07-30 → 2026-07-31 (+1d) | 2026-08-04 → 2026-08-05 (+1d) | 258d → 41d |  |
| IB-L1IN-1070 | Tape & Mud Drywall | 2026-08-05 → 2026-08-06 (+1d) | 2026-08-11 → 2026-08-12 (+1d) | 258d → 41d |  |
| IB-L1IN-1080 | Prep & Paint | 2026-08-12 → 2026-08-13 (+1d) | 2026-08-14 → 2026-08-17 (+3d) | 258d → 41d |  |
| IB-L1IN-1090 | MEPF Trim-Out | 2026-08-17 → 2026-08-18 (+1d) | 2026-08-21 → 2026-08-24 (+3d) | 258d → 41d |  |
| IB-L1IN-1100 | Install Storage Doors & Hardware | 2026-08-24 → 2026-08-25 (+1d) | 2026-08-28 → 2026-08-31 (+3d) | 258d → 41d |  |
| 1 | **Restrooms (Mens & Womens)** | 2026-07-21 → 2026-07-22 (+1d) | 2026-08-19 → 2026-08-20 (+1d) |  |  |
| IB-L1RR-1000 | Framing (Metal Studs, Blocking) | 2026-07-21 → 2026-07-22 (+1d) | 2026-07-23 → 2026-07-24 (+1d) | 11d → 29d |  |
| IB-L1RR-1010 | MEPF Rough-In | 2026-07-24 → 2026-07-27 (+3d) | 2026-07-28 → 2026-07-29 (+1d) | 265d → 48d |  |
| IB-L1RR-1020 | City Inspection (Framing & MEPF Rough) | 2026-07-29 → 2026-07-30 (+1d) | 2026-07-29 → 2026-07-30 (+1d) | 265d → 48d |  |
| IB-L1RR-1030 | Install Insulation | 2026-07-30 → 2026-07-31 (+1d) | 2026-07-30 → 2026-07-31 (+1d) | 265d → 48d |  |
| IB-L1RR-1040 | Install Drywall | 2026-07-31 → 2026-08-03 (+3d) | 2026-08-03 → 2026-08-04 (+1d) | 265d → 48d |  |
| IB-L1RR-1050 | Tape & Mud Drywall | 2026-08-04 → 2026-08-05 (+1d) | 2026-08-06 → 2026-08-07 (+1d) | 265d → 48d |  |
| IB-L1RR-1060 | Painting | 2026-08-07 → 2026-08-10 (+3d) | 2026-08-10 → 2026-08-11 (+1d) | 265d → 48d |  |
| IB-L1RR-1070 | Install Restroom Fixtures & Partitions | 2026-08-11 → 2026-08-12 (+1d) | 2026-08-12 → 2026-08-13 (+1d) | 265d → 48d |  |
| IB-L1RR-1080 | Install Accessories (Grab Bars, Mirrors, Signs) | 2026-08-13 → 2026-08-14 (+1d) | 2026-08-14 → 2026-08-17 (+3d) | 265d → 48d |  |
| IB-L1RR-1090 | Final MEP Trim-Out | 2026-08-17 → 2026-08-18 (+1d) | 2026-08-18 → 2026-08-19 (+1d) | 265d → 48d |  |
| IB-L1RR-1100 | Final Clean | 2026-08-19 → 2026-08-20 (+1d) | 2026-08-19 → 2026-08-20 (+1d) | 265d → 48d |  |
| 2 | **Management Spaces (Rental Office, Storage, Break Room)** | 2026-07-24 → 2026-07-27 (+3d) | 2026-09-02 → 2026-09-03 (+1d) |  |  |
| IB-L1M\S-1000 | Layout & Framing (incl. backing, door frames) | 2026-07-24 → 2026-07-27 (+3d) | 2026-07-28 → 2026-07-29 (+1d) | 11d → 29d |  |
| IB-L1M\S-1010 | MEPF Rough-In | 2026-07-29 → 2026-07-30 (+1d) | 2026-07-31 → 2026-08-03 (+3d) | 11d → 35d |  |
| IB-L1M\S-1020 | City Inspection (Framing & MEPF) | 2026-08-03 → 2026-08-04 (+1d) | 2026-08-03 → 2026-08-04 (+1d) | 11d → 35d |  |
| IB-L1M\S-1030 | Install Insulation | 2026-08-04 → 2026-08-05 (+1d) | 2026-08-05 → 2026-08-06 (+1d) | 11d → 35d |  |
| IB-L1M\S-1040 | Install Drywall | 2026-08-06 → 2026-08-07 (+1d) | 2026-08-07 → 2026-08-10 (+3d) | 11d → 35d |  |
| IB-L1M\S-1050 | Tape & Mud Drywall | 2026-08-10 → 2026-08-11 (+1d) | 2026-08-12 → 2026-08-13 (+1d) | 11d → 35d |  |
| IB-L1M\S-1060 | Painting | 2026-08-13 → 2026-08-14 (+1d) | 2026-08-17 → 2026-08-18 (+1d) | 11d → 35d |  |
| IB-L1M\S-1070 | Install Ceiling Grid (Break Room) | 2026-08-18 → 2026-08-19 (+1d) | 2026-08-18 → 2026-08-19 (+1d) | 255d → 38d |  |
| IB-L1M\S-1080 | Install Base Trim | 2026-08-19 → 2026-08-20 (+1d) | 2026-08-19 → 2026-08-20 (+1d) | 255d → 38d |  |
| IB-L1M\S-1090 | Install Cabinets & Countertops (Break Room & Office) | 2026-08-20 → 2026-08-21 (+1d) | 2026-08-24 → 2026-08-25 (+1d) | 255d → 38d |  |

| ID | Task | Start | Finish | Total float | Predecessors |
| --- | --- | --- | --- | --- | --- |
| IB-L1M\S-1100 | Install Sink & Faucests (Break Room) | 2026-08-25 → 2026-08-26 (+1d) | 2026-08-25 → 2026-08-26 (+1d) | 255d → 38d |  |
| IB-L1M\S-1110 | Appliances (Microwave & Fridge) | 2026-08-26 → 2026-08-27 (+1d) | 2026-08-26 → 2026-08-27 (+1d) | 255d → 38d |  |
| IB-L1M\S-1120 | Interior Signage | 2026-08-27 → 2026-08-28 (+1d) | 2026-08-27 → 2026-08-28 (+1d) | 255d → 38d |  |
| IB-L1M\S-1130 | MEPF Trim-Out | 2026-08-28 → 2026-08-31 (+3d) | 2026-09-01 → 2026-09-02 (+1d) | 255d → 38d |  |
| IB-L1M\S-1140 | Final Clean | 2026-09-02 → 2026-09-03 (+1d) | 2026-09-02 → 2026-09-03 (+1d) | 255d → 38d |  |
| Level 2 Interior | **Level 2 Interior** | 2026-04-10 → 2026-07-15 (+96d) | 2026-05-28 → 2026-08-31 (+95d) |  |  |
| IB-L2IN-1000 | Layout & Framing (incl. backing, door frames) | 2026-04-10 → 2026-07-15 (+96d) | 2026-04-16 → 2026-07-21 (+96d) | 46d → 5d | FS-LVL3-1030 → FS-LVL3-1030, EE-ROOF-1060 |
| IB-L2IN-1010 | Electrical Rough-In | 2026-04-17 → 2026-07-22 (+96d) | 2026-04-23 → 2026-07-28 (+96d) | 46d → 5d |  |
| IB-L2IN-1020 | Mechanical Rough-In | 2026-04-17 → 2026-07-22 (+96d) | 2026-04-23 → 2026-07-28 (+96d) | 46d → 5d |  |
| IB-L2IN-1030 | Plumbing Rough-In | 2026-04-17 → 2026-07-22 (+96d) | 2026-04-23 → 2026-07-28 (+96d) | 46d → 5d |  |
| IB-L2IN-1040 | Fire Supression Rough-In | 2026-04-17 → 2026-07-22 (+96d) | 2026-04-23 → 2026-07-28 (+96d) | 46d → 5d |  |
| IB-L2IN-1050 | Install Insulation | 2026-04-24 → 2026-07-29 (+96d) | 2026-04-27 → 2026-07-30 (+94d) | 323d → 41d | IB-L2IN-1040 → IB-L2IN-1040, EE-ROOF-1060 |
| IB-L2IN-1060 | Install Drywall | 2026-04-28 → 2026-07-31 (+94d) | 2026-05-01 → 2026-08-05 (+96d) | 323d → 41d |  |
| IB-L2IN-1070 | Tape & Mud Drywall | 2026-05-04 → 2026-08-06 (+94d) | 2026-05-08 → 2026-08-12 (+96d) | 323d → 41d |  |
| IB-L2IN-1080 | Prep & Paint | 2026-05-11 → 2026-08-13 (+94d) | 2026-05-13 → 2026-08-17 (+96d) | 323d → 41d |  |
| IB-L2IN-1090 | MEPF Trim-Out | 2026-05-14 → 2026-08-18 (+96d) | 2026-05-20 → 2026-08-24 (+96d) | 323d → 41d |  |
| IB-L2IN-1100 | Install Storage Doors & Hardware | 2026-05-21 → 2026-08-25 (+96d) | 2026-05-28 → 2026-08-31 (+95d) | 323d → 41d |  |
| 3 | **Level 3 Interior** | 2026-05-13 → 2026-07-22 (+70d) | 2026-06-30 → 2026-09-08 (+70d) |  |  |
| IB-L3IN-1000 | Layout & Framing (incl. backing, door frames) | 2026-05-13 → 2026-07-22 (+70d) | 2026-05-19 → 2026-07-28 (+70d) | 300d → 36d |  |
| IB-L3IN-1010 | Electrical Rough-In | 2026-05-20 → 2026-07-29 (+70d) | 2026-05-27 → 2026-08-04 (+69d) | 300d → 36d |  |
| IB-L3IN-1020 | Mechanical Rough-In | 2026-05-20 → 2026-07-29 (+70d) | 2026-05-27 → 2026-08-04 (+69d) | 300d → 36d |  |
| IB-L3IN-1030 | Plumbing Rough-In | 2026-05-20 → 2026-07-29 (+70d) | 2026-05-27 → 2026-08-04 (+69d) | 300d → 36d |  |
| IB-L3IN-1040 | Fire Supression Rough-In | 2026-05-20 → 2026-07-29 (+70d) | 2026-05-27 → 2026-08-04 (+69d) | 300d → 36d |  |
| IB-L3IN-1050 | Install Insulation | 2026-05-28 → 2026-08-05 (+69d) | 2026-05-29 → 2026-08-06 (+69d) | 300d → 36d | IB-L3IN-1040 → IB-L3IN-1040, EE-ROOF-1060 |
| IB-L3IN-1060 | Install Drywall | 2026-06-01 → 2026-08-07 (+67d) | 2026-06-04 → 2026-08-12 (+69d) | 300d → 36d |  |
| IB-L3IN-1070 | Tape & Mud Drywall | 2026-06-05 → 2026-08-13 (+69d) | 2026-06-11 → 2026-08-19 (+69d) | 300d → 36d |  |
| IB-L3IN-1080 | Prep & Paint | 2026-06-12 → 2026-08-20 (+69d) | 2026-06-16 → 2026-08-24 (+69d) | 300d → 36d |  |
| IB-L3IN-1090 | MEPF Trim-Out | 2026-06-17 → 2026-08-25 (+69d) | 2026-06-23 → 2026-08-31 (+69d) | 300d → 36d |  |
| IB-L3IN-1100 | Install Storage Doors & Hardware | 2026-06-24 → 2026-09-01 (+69d) | 2026-06-30 → 2026-09-08 (+70d) | 300d → 36d |  |
| 1 | **Unisex Restroom** | 2026-05-20 → 2026-07-29 (+70d) | 2026-06-19 → 2026-08-27 (+69d) |  |  |
| IB-L3UN-1000 | Framing (Metal Studs, Blocking) | 2026-05-20 → 2026-07-29 (+70d) | 2026-05-22 → 2026-07-31 (+70d) | 307d → 43d |  |
| IB-L3UN-1010 | MEPF Rough-In | 2026-05-26 → 2026-08-03 (+69d) | 2026-05-28 → 2026-08-05 (+69d) | 307d → 43d |  |
| IB-L3UN-1020 | City Inspection (Framing & MEPF Rough) | 2026-05-29 → 2026-08-06 (+69d) | 2026-05-29 → 2026-08-06 (+69d) | 307d → 43d |  |
| IB-L3UN-1030 | Install Insulation | 2026-06-01 → 2026-08-07 (+67d) | 2026-06-01 → 2026-08-07 (+67d) | 307d → 43d |  |
| IB-L3UN-1040 | Install Drywall | 2026-06-02 → 2026-08-10 (+69d) | 2026-06-03 → 2026-08-11 (+69d) | 307d → 43d |  |
| IB-L3UN-1050 | Tape & Mud Drywall | 2026-06-04 → 2026-08-12 (+69d) | 2026-06-08 → 2026-08-14 (+67d) | 307d → 43d |  |
| IB-L3UN-1060 | Painting | 2026-06-09 → 2026-08-17 (+69d) | 2026-06-10 → 2026-08-18 (+69d) | 307d → 43d |  |
| IB-L3UN-1070 | Install Restroom Fixtures & Partitions | 2026-06-11 → 2026-08-19 (+69d) | 2026-06-12 → 2026-08-20 (+69d) | 307d → 43d |  |
| IB-L3UN-1080 | Install Accessories (Grab Bars, Mirrors, Signs) | 2026-06-15 → 2026-08-21 (+67d) | 2026-06-16 → 2026-08-24 (+69d) | 307d → 43d |  |
| IB-L3UN-1090 | Final MEP Trim-Out | 2026-06-17 → 2026-08-25 (+69d) | 2026-06-18 → 2026-08-26 (+69d) | 307d → 43d |  |
| IB-L3UN-1100 | Final Clean | 2026-06-19 → 2026-08-27 (+69d) | 2026-06-19 → 2026-08-27 (+69d) | 307d → 43d |  |
| 5 | **Level 4 Interior** | 2026-05-28 → 2026-05-29 (+1d) | 2026-07-15 → 2026-08-17 (+33d) |  |  |
| IB-L4IN-1000 | Layout & Framing (incl. backing, door frames) | 2026-05-28 → 2026-05-29 (+1d) | 2026-06-03 → 2026-06-04 (+1d) | 44d → 68d |  |
| IB-L4IN-1010 | Electrical Rough-In | 2026-06-04 → 2026-06-05 (+1d) | 2026-06-10 → 2026-06-11 (+1d) | 44d → 68d |  |
| IB-L4IN-1020 | Mechanical Rough-In | 2026-06-04 → 2026-06-05 (+1d) | 2026-06-10 → 2026-06-11 (+1d) | 44d → 68d |  |
| IB-L4IN-1030 | Plumbing Rough-In | 2026-06-04 → 2026-06-05 (+1d) | 2026-06-10 → 2026-06-11 (+1d) | 44d → 68d |  |
| IB-L4IN-1040 | Fire Supression Rough-In | 2026-06-04 → 2026-06-05 (+1d) | 2026-06-10 → 2026-06-11 (+1d) | 44d → 68d |  |
| IB-L4IN-1050 | Install Insulation | 2026-06-11 → 2026-07-15 (+34d) | 2026-06-12 → 2026-07-16 (+34d) | 44d → 46d | IB-L4IN-1040 → IB-L4IN-1040, EE-ROOF-1060 |
| IB-L4IN-1060 | Install Drywall | 2026-06-15 → 2026-07-17 (+32d) | 2026-06-18 → 2026-07-22 (+34d) | 44d → 46d |  |
| IB-L4IN-1070 | Tape & Mud Drywall | 2026-06-19 → 2026-07-23 (+34d) | 2026-06-25 → 2026-07-29 (+34d) | 44d → 46d |  |
| IB-L4IN-1080 | Prep & Paint | 2026-06-26 → 2026-07-30 (+34d) | 2026-06-30 → 2026-08-03 (+34d) | 44d → 46d |  |
| IB-L4IN-1090 | MEPF Trim-Out | 2026-07-01 → 2026-08-04 (+34d) | 2026-07-08 → 2026-08-10 (+33d) | 44d → 46d |  |
| IB-L4IN-1100 | Install Storage Doors & Hardware | 2026-07-09 → 2026-08-11 (+33d) | 2026-07-15 → 2026-08-17 (+33d) | 49d → 51d |  |
| 1 | **Janus Scope** | 2026-04-24 → 2026-07-29 (+96d) | 2026-09-08 → 2026-10-21 (+43d) |  |  |
| IB-JNUS-1000 | Level 2 Install (Diamond Plate, Turkey Wire, Misc.) | 2026-04-24 → 2026-07-29 (+96d) | 2026-05-14 → 2026-08-18 (+96d) | 46d → 5d |  |
| IB-JNUS-1010 | Level 3 Install (Diamond Plate, Turkey Wire, Misc.) | 2026-05-15 → 2026-08-19 (+96d) | 2026-06-05 → 2026-09-09 (+96d) | 46d → 5d |  |
| IB-JNUS-1020 | Level 4 Install (Diamond Plate, Turkey Wire, Misc.) | 2026-06-08 → 2026-09-10 (+94d) | 2026-06-26 → 2026-09-30 (+96d) | 46d → 5d |  |
| IB-JNUS-1030 | Level 1 Install (Diamond Plate, Turkey Wire, Misc.) | 2026-08-18 → 2026-10-01 (+44d) | 2026-09-08 → 2026-10-21 (+43d) | 11d → 5d |  |
| 2 | **Elevator Installation** | 2026-07-29 → 2026-07-30 (+1d) | 2026-09-16 → 2026-09-17 (+1d) |  |  |
| EL-INST-1000 | Evelvator Installation (incl. Equipment Room Buildout) | 2026-07-29 → 2026-07-30 (+1d) | 2026-09-16 → 2026-09-17 (+1d) | 246d → 29d |  |
| 4 | **Stairwells** | 2026-02-09 → 2026-03-10 (+29d) | 2026-02-27 → 2026-03-30 (+31d) |  |  |
| IB-STAR-1000 | Install Stairs & Railings | 2026-02-09 → 2026-03-10 (+29d) | 2026-02-20 → 2026-03-23 (+31d) | 386d → 149d |  |
| IB-STAR-1010 | Install Signage & Lighting | 2026-02-23 → 2026-03-24 (+29d) | 2026-02-25 → 2026-03-26 (+29d) | 386d → 149d |  |
| IB-STAR-1020 | Install Doors & Hardware | 2026-02-26 → 2026-03-27 (+29d) | 2026-02-27 → 2026-03-30 (+31d) | 386d → 149d |  |
| 4 | **Offsite** | 2026-07-06 → 2026-08-04 (+29d) | 2026-09-29 → 2026-10-28 (+29d) |  |  |
| 2 | **Sitework Finishes** | 2026-07-06 → 2026-08-04 (+29d) | 2026-09-29 → 2026-10-28 (+29d) |  |  |
| SW-FIN-1040 | Finish Grade Site (incl. bio ponds) | 2026-07-06 → 2026-08-04 (+29d) | 2026-07-10 → 2026-08-10 (+31d) |  | EE-WEST-1000 → EE-WEST-1000, EE-WEST-1080 |
| SW-FIN-1050 | Install Irrigation Sleeves (inc. bio ponds) | 2026-07-13 → 2026-08-11 (+29d) | 2026-07-14 → 2026-08-12 (+29d) |  |  |
| SW-FIN-1060 | Electrical Rough (Light Poles) | 2026-07-15 → 2026-08-13 (+29d) | 2026-07-21 → 2026-08-19 (+29d) |  |  |
| SW-FIN-1100 | Install Bollards (including footings) | 2026-07-22 → 2026-08-20 (+29d) | 2026-07-28 → 2026-08-26 (+29d) |  |  |

| ID | Task | Start | Finish | Total float | Predecessors |
| --- | --- | --- | --- | --- | --- |
| SW-FIN-1130 | FRP Concrete (Hardscape & Sidewalks) | 2026-07-29 → 2026-08-27 (+29d) | 2026-08-06 → 2026-09-04 (+29d) |  |  |
| SW-FIN-1140 | Install Irrigation | 2026-08-07 → 2026-09-08 (+32d) | 2026-08-20 → 2026-09-21 (+32d) |  |  |
| SW-FIN-1150 | Install Asphalt (Final Coat) | 2026-08-21 → 2026-09-22 (+32d) | 2026-08-21 → 2026-09-22 (+32d) |  |  |
| SW-FIN-1170 | Planting | 2026-08-24 → 2026-09-23 (+30d) | 2026-09-04 → 2026-10-06 (+32d) |  |  |
| SW-FIN-1171 | FRP Dumpster Enclosure | 2026-09-08 → 2026-10-07 (+29d) | 2026-09-16 → 2026-10-15 (+29d) |  |  |
| SW-FIN-1180 | Site Furnishings & Signage | 2026-09-17 → 2026-10-16 (+29d) | 2026-09-23 → 2026-10-22 (+29d) |  |  |
| SW-FIN-1190 | Final Clean | 2026-09-24 → 2026-10-23 (+29d) | 2026-09-24 → 2026-10-23 (+29d) | 237d → 0d |  |
| SW-FIN-1200 | Punch List | 2026-09-25 → 2026-10-26 (+31d) | 2026-09-29 → 2026-10-28 (+29d) | 237d → 0d |  |
| 1 | **Rutland Drive Improvements** | 2026-07-06 → 2026-08-04 (+29d) | 2026-09-25 → 2026-10-26 (+31d) |  |  |
| SW-RTLN-1000 | EPSC Install (Silt Fence, Inlet Protection) | 2026-07-06 → 2026-08-04 (+29d) | 2026-07-08 → 2026-08-06 (+29d) |  |  |
| SW-RTLN-1010 | Sawcut Asphalt & Demo Existing Curb | 2026-07-09 → 2026-08-07 (+29d) | 2026-07-13 → 2026-08-11 (+29d) |  |  |
| SW-RTLN-1020 | Temp Traffic Control Setup | 2026-07-14 → 2026-08-12 (+29d) | 2026-07-16 → 2026-08-14 (+29d) |  |  |
| SW-RTLN-1030 | Relocate Mailbox / Signs / Remove Conflicts | 2026-07-17 → 2026-08-17 (+31d) | 2026-07-20 → 2026-08-18 (+29d) |  |  |
| SW-RTLN-1040 | Trench & Install Storm Pipe | 2026-07-21 → 2026-08-19 (+29d) | 2026-07-30 → 2026-08-28 (+29d) |  |  |
| SW-RTLN-1050 | Set Curb Inlets, Junction Boxes, Headwalls | 2026-07-31 → 2026-08-31 (+31d) | 2026-08-07 → 2026-09-08 (+32d) |  |  |
| SW-RTLN-1060 | Backfill / Compact Drain Trenches | 2026-08-10 → 2026-09-09 (+30d) | 2026-08-12 → 2026-09-11 (+30d) |  |  |
| SW-RTLN-1070 | Subgrade Proofrool & Undercut / Backfill (if needed) | 2026-08-13 → 2026-09-14 (+32d) | 2026-08-17 → 2026-09-16 (+30d) |  |  |
| SW-RTLN-1080 | Place Aggregate Base | 2026-08-18 → 2026-09-17 (+30d) | 2026-08-21 → 2026-09-22 (+32d) |  |  |
| SW-RTLN-1090 | City Inspections (Proofrool, Storm, Curbs) | 2026-08-24 → 2026-09-23 (+30d) | 2026-08-25 → 2026-09-24 (+30d) |  |  |
| SW-RTLN-1100 | Install Curb & Gutter | 2026-08-26 → 2026-09-25 (+30d) | 2026-09-01 → 2026-10-01 (+30d) |  |  |
| SW-RTLN-1110 | Sidewalks & ADA Ramps | 2026-09-02 → 2026-10-02 (+30d) | 2026-09-08 → 2026-10-07 (+29d) |  |  |
| SW-RTLN-1120 | First Lift Asphalt (Binder Course) | 2026-09-09 → 2026-10-08 (+29d) | 2026-09-10 → 2026-10-09 (+29d) |  |  |
| SW-RTLN-1130 | Final Grading | 2026-09-11 → 2026-10-12 (+31d) | 2026-09-14 → 2026-10-13 (+29d) |  |  |
| SW-RTLN-1140 | Final Asphalt Surface Course | 2026-09-15 → 2026-10-14 (+29d) | 2026-09-15 → 2026-10-14 (+29d) |  |  |
| SW-RTLN-1150 | Permanent Signs & Striping | 2026-09-16 → 2026-10-15 (+29d) | 2026-09-17 → 2026-10-16 (+29d) |  |  |
| SW-RTLN-1160 | Site Cleanup & Final EPSC Removal | 2026-09-18 → 2026-10-19 (+31d) | 2026-09-21 → 2026-10-20 (+29d) |  |  |
| SW-RTLN-1170 | Punch List & Corrections | 2026-09-22 → 2026-10-21 (+29d) | 2026-09-23 → 2026-10-22 (+29d) | 239d → 2d |  |
| SW-RTLN-1180 | Final Owner Punch List | 2026-09-24 → 2026-10-23 (+29d) | 2026-09-25 → 2026-10-26 (+31d) | 239d → 2d |  |
| Closeout | **Closeout** | 2026-06-11 → 2026-06-12 (+1d) | 2026-09-24 → 2026-10-29 (+35d) |  |  |
| Commisioning | **Commissioning** | 2026-07-09 → 2026-08-11 (+33d) | 2026-07-15 → 2026-08-17 (+33d) |  |  |
| CO-CM-1000 | Start-Up & Testing | 2026-07-09 → 2026-08-11 (+33d) | 2026-07-15 → 2026-08-17 (+33d) | 44d → 46d |  |
| Building Finals | **Building Finals** | 2026-06-11 → 2026-06-12 (+1d) | 2026-09-24 → 2026-10-29 (+35d) |  |  |
| CO-BF-1000 | Rough Fire Sprinkler Inspection | 2026-06-11 → 2026-06-12 (+1d) | 2026-06-11 → 2026-06-12 (+1d) | 67d → 91d |  |
| CO-BF-1010 | Final Fire Sprinkler Inspection | 2026-07-16 → 2026-08-18 (+33d) | 2026-07-16 → 2026-08-18 (+33d) | 44d → 46d |  |
| CO-BF-1020 | Electrical Final | 2026-07-17 → 2026-08-19 (+33d) | 2026-07-17 → 2026-08-19 (+33d) | 44d → 46d |  |
| CO-BF-1030 | Plumbing Final | 2026-07-20 → 2026-08-20 (+31d) | 2026-07-20 → 2026-08-20 (+31d) | 44d → 46d |  |
| CO-BF-1040 | Mechanical Final | 2026-07-21 → 2026-08-21 (+31d) | 2026-07-21 → 2026-08-21 (+31d) | 44d → 46d |  |
| CO-BF-1050 | Fire Alarm Final | 2026-07-22 → 2026-08-24 (+33d) | 2026-07-22 → 2026-08-24 (+33d) | 44d → 46d |  |
| CO-BF-1060 | Building Final | 2026-09-24 → 2026-10-29 (+35d) | 2026-09-24 → 2026-10-29 (+35d) |  | CO-BF-1050, SW-RTLN-1160, SW-FIN-1180, IB-L4IN-1100, EE-ROOF-1200, IB-JNUS-1030 → CO-BF-1050, SW-RTLN-1160, SW-FIN-1180, IB-L4IN-1100, EE-ROOF-1200, IB-JNUS-1030, PS-CMIL-1010, EL-INST-1000, IB-L2IN-1100, IB-L3IN-1100, IB-L1IN-1100, FS-LVL1-1060, PS-PROC-1030 |
| 2 | **Warranty Work** | 2026-09-25 → 2026-10-30 (+35d) | 2027-09-09 → 2027-10-14 (+35d) |  |  |
| WW-WARR-1000 | 1st Quarter HVAC Maintenance | 2026-09-25 → 2026-10-30 (+35d) | 2026-12-21 → 2027-02-01 (+42d) |  |  |
| WW-WARR-1010 | 1st Quarter Landscape Maintenance | 2026-09-25 → 2026-10-30 (+35d) | 2026-12-21 → 2027-02-01 (+42d) |  |  |
| WW-WARR-1020 | 11-Month Warranty Walk | 2026-09-25 → 2026-10-30 (+35d) | 2027-08-11 → 2027-09-16 (+36d) |  |  |
| WW-WARR-1030 | 2nd Quarter HVAC Maintenance | 2026-12-22 → 2027-02-02 (+42d) | 2027-03-22 → 2027-04-26 (+35d) |  |  |
| WW-WARR-1040 | 2nd Quarter Landscape Maintenance | 2026-12-22 → 2027-02-02 (+42d) | 2027-03-22 → 2027-04-26 (+35d) |  |  |
| WW-WARR-1050 | 3rd Quarter HVAC Maintenance | 2027-03-23 → 2027-04-27 (+35d) | 2027-06-15 → 2027-07-21 (+36d) |  |  |
| WW-WARR-1060 | 3rd Quarter Landscape Maintenance | 2027-03-23 → 2027-04-27 (+35d) | 2027-06-15 → 2027-07-21 (+36d) |  |  |
| WW-WARR-1070 | 4th Quarter HVAC Maintenance | 2027-06-16 → 2027-07-22 (+36d) | 2027-09-09 → 2027-10-14 (+35d) |  |  |
| WW-WARR-1080 | 4th Quarter Landscape Maintenance | 2027-06-16 → 2027-07-22 (+36d) | 2027-09-09 → 2027-10-14 (+35d) |  |  |
| 5 | **Weather Impacts** | 2026-09-25 → 2026-10-30 (+35d) | 2026-10-22 → 2026-11-30 (+39d) |  |  |
| WI-WTHR-1000 | Rain Days | 2026-09-25 → 2026-10-30 (+35d) | 2026-10-22 → 2026-11-30 (+39d) |  |  |

## Version 3 (data date 2025-10-31, saved 2025-11-05, file update_2.xer)

Note of the change: Add all project schedule files to buckets - 13 projects, MPP+XER, baseline+updates

Last finish 2027-10-14 → 2027-11-02 (+19d). Complete tasks 10 → 15.

Added:

| ID | Task | Duration | Start | Finish | Predecessors |
| --- | --- | --- | --- | --- | --- |
| PS-CMIL-1180 | Building Permit Approval | 5d | 2025-10-23 A | 2025-11-06 | PS-CMIL-1040 SS |
| *SU-STWK-1110 | MTE Power Pole Relocation | 5d | 2025-10-28 A | 2025-11-10 | SU-STWK-1010 |
| *SU-STWK-1130 | Weather Delay 01 | 5d | 2025-10-29 A | 2025-10-29 A | SU-STWK-1000 |
| *SU-STWK-1120 | Remaining Rock Removal & Building Pad Prep | 7d | 2025-11-11 | 2025-11-19 | *SU-STWK-1110 |

Changed:

| ID | Task | Start | Finish | Duration | Complete | Total float | Predecessors |
| --- | --- | --- | --- | --- | --- | --- | --- |
| 3 | **Project Summary** |  | 2026-11-30 → 2026-12-16 (+16d) |  |  |  |  |
| 1 | **Contract Milestones** |  | 2026-11-30 → 2026-12-16 (+16d) |  |  |  |  |
| PS-CMIL-1010 | Project Open | 2026-10-28 → 2026-11-16 (+19d) | 2026-10-28 → 2026-11-16 (+19d) |  |  |  |  |
| PS-CMIL-1150 | Project SC - Before Weather Impacts | 2026-10-29 → 2026-11-17 (+19d) | 2026-10-29 → 2026-11-17 (+19d) |  |  |  |  |
| PS-CMIL-1160 | Anticipated Remaining Weather Impacts | 2026-10-30 → 2026-11-18 (+19d) | 2026-11-30 → 2026-12-16 (+16d) | 20d → 19d |  |  |  |
| PS-CMIL-1170 | Project Sustainability Complete - After Weather Impacts | 2026-11-30 → 2026-12-16 (+16d) | 2026-11-30 → 2026-12-16 (+16d) |  |  | 220d → 221d |  |
| 2 | **Construction Milestones** |  | 2026-10-23 → 2026-10-12 (-11d) |  |  |  |  |
| PS-CMIL-1060 | Permit Approved | 2025-10-01 → 2025-11-06 (+36d) | 2025-10-01 → 2025-11-06 (+36d) |  |  | 512d → 498d | PS-CMIL-1040 SS → PS-CMIL-1180 FF |
| PS-CMIL-1080 | Start of Foundations | 2026-01-12 → 2025-12-26 (-17d) | 2026-01-12 → 2025-12-26 (-17d) |  |  | 445d → 467d |  |
| PS-CMIL-1090 | Start of Elevated Structure | 2026-02-06 → 2026-01-26 (-11d) | 2026-02-06 → 2026-01-26 (-11d) |  |  | 427d → 449d |  |
| PS-CMIL-1100 | Stair & Elevator Cores Complete to Roof | 2026-03-09 → 2026-02-24 (-13d) | 2026-03-09 → 2026-02-24 (-13d) |  |  | 405d → 427d |  |
| PS-CMIL-1120 | Structure Complete | 2026-06-05 → 2026-05-22 (-14d) | 2026-06-05 → 2026-05-22 (-14d) |  |  | 342d → 364d |  |
| PS-CMIL-1130 | Building Dry In | 2026-07-14 → 2026-06-30 (-14d) | 2026-07-14 → 2026-06-30 (-14d) |  |  | 316d → 338d |  |
| PS-CMIL-1110 | Exterior Work Complete | 2026-10-07 → 2026-09-24 (-13d) | 2026-10-07 → 2026-09-24 (-13d) |  |  | 256d → 278d |  |
| PS-CMIL-1140 | Landscape & Hardscape Complete | 2026-10-23 → 2026-10-12 (-11d) | 2026-10-23 → 2026-10-12 (-11d) |  |  | 244d → 266d |  |
| 4 | **Pre-Construction** |  | 2025-10-21 → 2025-11-20 (+30d) |  |  |  |  |
| 1 | **Procurement** |  | 2025-10-21 → 2025-11-20 (+30d) |  |  |  |  |
| PS-PROC-1010 | Elevator | 2025-10-01 → 2025-10-31 (+30d) | 2025-10-07 → 2025-11-06 (+30d) |  |  | 256d → 247d |  |
| PS-PROC-1020 | Electric Room MDP | 2025-10-08 → 2025-11-07 (+30d) | 2025-10-14 → 2025-11-13 (+30d) |  |  | 256d → 247d |  |
| PS-PROC-1030 | Owner's Enabling Work | 2025-10-15 → 2025-11-14 (+30d) | 2025-10-21 → 2025-11-20 (+30d) |  |  | 256d → 247d |  |
| 1 | **Construction** |  | 2026-10-28 → 2026-11-16 (+19d) |  |  |  |  |
| MOB | **Mobilization** |  | 2025-11-07 → 2025-12-01 (+24d) |  |  |  |  |
| CN-MOBL-1050 | Set Field Office | 2025-11-04 → 2025-10-22 A (-13d) | 2025-11-04 → 2025-10-22 A (-13d) |  | 0% → 100% | 0d → none | CN-MOBL-1040 → CN-MOBL-1030 |
| CN-MOBL-1070 | Install Temp Toilets, Waste & Hand Wash Stations | 2025-11-07 → 2025-10-22 A (-16d) | 2025-11-07 → 2025-10-22 A (-16d) |  | 0% → 100% | 0d → none | CN-MOBL-1060 → CN-MOBL-1050 SS |
| CN-MOBL-1010 | Install Temp Fencing | 2025-10-29 → 2025-11-20 (+22d) | 2025-10-30 → 2025-11-21 (+22d) |  |  | 0d → 154d | SU-STWK-1010 → SU-STWK-1010, *SU-STWK-1120 |
| CN-MOBL-1040 | Install Temp Power | 2025-10-31 → 2025-11-24 (+24d) | 2025-11-03 → 2025-11-25 (+22d) |  |  | 0d → 154d | CN-MOBL-1010 → CN-MOBL-1070, CN-MOBL-1010 |
| CN-MOBL-1060 | Field Office MEP Hook-Up | 2025-11-05 → 2025-11-26 (+21d) | 2025-11-06 → 2025-12-01 (+25d) |  |  | 0d → 154d | CN-MOBL-1050 → CN-MOBL-1040 |
| Sitework | **Sitework & Utilities** |  | 2026-01-09 → 2026-01-23 (+14d) |  |  |  |  |
| SW | **Sitework** |  | 2026-01-09 → 2026-01-23 (+14d) |  |  |  |  |
| SU-STWK-1010 | Mass Excavation & Rock Removal |  | 2025-10-28 A |  | 0% → 100% | 0d → none |  |
| SU-STWK-1000 | Clear & Grub | 2025-10-24 A | 2025-10-28 A |  | 0% → 100% | 0d → none |  |
| SU-STWK-1020 | Building Pad Prep & Grading | 2025-10-29 → 2025-10-30 A (+1d) |  | 7d → 5d |  | 0d → 9d | SU-STWK-1010, SU-STWK-1000 → SU-STWK-1010, SU-STWK-1000, *SU-STWK-1130 |
| SU-STWK-1030 | Building Layout & Staking | 2025-11-07 → 2025-11-20 (+13d) | 2025-11-07 → 2025-11-20 (+13d) |  |  |  | SU-STWK-1020 → SU-STWK-1020, *SU-STWK-1120 |
| SU-STWK-1040 | Compact Subgrade | 2025-11-10 → 2025-11-21 (+11d) | 2025-11-12 → 2025-11-25 (+13d) |  |  |  | SU-STWK-1030, CN-MOBL-1070 → SU-STWK-1030 |
| SU-STWK-1050 | Install Stone Base | 2025-12-11 → 2025-12-26 (+15d) | 2025-12-15 → 2025-12-30 (+15d) |  |  | 0d → 125d |  |
| SU-STWK-1060 | Install Prime Coat, Binder, & Tack Coat | 2025-12-16 → 2026-01-02 (+17d) | 2025-12-17 → 2026-01-05 (+19d) |  |  | 0d → 125d |  |
| SU-STWK-1070 | Install Asphalt (Wearing Course) | 2025-12-18 → 2026-01-06 (+19d) | 2025-12-18 → 2026-01-06 (+19d) |  |  | 0d → 125d |  |
| SU-STWK-1080 | Form & Reinforce Curb & Gutter | 2025-12-19 → 2026-01-07 (+19d) | 2025-12-29 → 2026-01-13 (+15d) |  |  | 0d → 125d |  |
| SU-STWK-1090 | Pour Curb & Gutter | 2025-12-30 → 2026-01-14 (+15d) | 2026-01-02 → 2026-01-15 (+13d) |  |  | 0d → 125d |  |
| SU-STWK-1100 | Rough Grade Site | 2026-01-05 → 2026-01-16 (+11d) | 2026-01-09 → 2026-01-23 (+14d) |  |  | 0d → 125d | SU-STWK-1000, SU-STWK-1090 → SU-STWK-1000, SU-STWK-1090, CN-MOBL-1060 |
| SIte | **Site Utilities** | 2025-11-13 → 2025-11-26 (+13d) | 2025-12-10 → 2025-12-23 (+13d) |  |  |  |  |
| SU-SUTL-1000 | Cut, Cap, and Relocate Existing Utilities | 2025-11-13 → 2025-11-26 (+13d) | 2025-11-19 → 2025-12-04 (+15d) |  |  |  |  |
| SU-SUTL-1010 | Install Irrigation Sleeves | 2025-11-20 → 2025-12-05 (+15d) | 2025-11-24 → 2025-12-09 (+15d) |  |  |  |  |
| SU-SUTL-1020 | Install U.G. Sewer | 2025-11-25 → 2025-12-10 (+15d) | 2025-12-10 → 2025-12-23 (+13d) |  |  |  |  |
| SU-SUTL-1030 | Install U.G. Storm Drain | 2025-11-25 → 2025-12-10 (+15d) | 2025-12-10 → 2025-12-23 (+13d) |  |  |  |  |
| SU-SUTL-1040 | Install U.G. Electrical Duct Banks | 2025-11-25 → 2025-12-10 (+15d) | 2025-12-10 → 2025-12-23 (+13d) |  |  |  |  |
| SU-SUTL-1050 | Install U.G. Fire Water & Domestic | 2025-11-25 → 2025-12-10 (+15d) | 2025-12-10 → 2025-12-23 (+13d) |  |  |  |  |
| 1 | **Foundation & Structural** | 2026-01-12 → 2025-12-26 (-17d) | 2026-06-05 → 2026-05-22 (-14d) |  |  |  |  |
| 1 | **Level 1** | 2026-01-12 → 2025-12-26 (-17d) | 2026-03-09 → 2026-02-24 (-13d) |  |  |  |  |
| FS-LVL1-1000 | Footings & Foundation CIP Walls (includes elevator pit) | 2026-01-12 → 2025-12-26 (-17d) | 2026-02-16 → 2026-02-03 (-13d) |  |  |  | SU-STWK-1100 → SU-SUTL-1050, PS-CMIL-1060 |
| FS-LVL1-1010 | Underground MEPF Install (Pre-Pour) | 2026-01-20 → 2026-01-06 (-14d) | 2026-01-26 → 2026-01-12 (-14d) |  |  |  |  |
| FS-LVL1-1030 | Slab Prep & Pour (Pour A1) | 2026-01-27 → 2026-01-13 (-14d) | 2026-02-02 → 2026-01-20 (-13d) |  |  |  |  |
| FS-LVL1-1040 | Slab Prep & Pour (Pour A2) | 2026-02-03 → 2026-01-21 (-13d) | 2026-02-05 → 2026-01-23 (-13d) |  |  |  |  |
| FS-LVL1-1050 | Steel Erection (Colums & Beams) | 2026-02-06 → 2026-01-26 (-11d) | 2026-02-19 → 2026-02-06 (-13d) |  |  |  |  |
| FS-LVL1-1020 | Erect Stairs & Elevator Shafts (CMU Cores) | 2026-02-17 → 2026-02-04 (-13d) | 2026-03-09 → 2026-02-24 (-13d) |  |  | 149d → 171d |  |
| FS-LVL1-1060 | Fireproofing | 2026-02-20 → 2026-02-09 (-11d) | 2026-02-24 → 2026-02-11 (-13d) |  |  | 173d → 195d |  |
| 2 | **Level 2** | 2026-02-16 → 2026-02-03 (-13d) | 2026-03-24 → 2026-03-11 (-13d) |  |  |  |  |
| FS-LVL2-1000 | Install Metal Decking | 2026-02-16 → 2026-02-03 (-13d) | 2026-02-19 → 2026-02-06 (-13d) |  |  |  |  |
| FS-LVL2-1010 | MEPF Rough-In (Pre-Pour) | 2026-02-20 → 2026-02-09 (-11d) | 2026-02-26 → 2026-02-13 (-13d) |  |  |  |  |
| FS-LVL2-1020 | FRP Metal Deck Slab (Pour A1) | 2026-02-27 → 2026-02-16 (-11d) | 2026-03-05 → 2026-02-20 (-13d) |  |  |  |  |
| FS-LVL2-1030 | FRP Metal Deck Slab (Pour A2) | 2026-03-06 → 2026-02-23 (-11d) | 2026-03-10 → 2026-02-25 (-13d) |  |  |  |  |
| FS-LVL2-1040 | Layout & Erect Load Bearing Framing | 2026-03-11 → 2026-02-26 (-13d) | 2026-03-24 → 2026-03-11 (-13d) |  |  |  |  |
| 3 | **Level 3** | 2026-03-19 → 2026-03-06 (-13d) | 2026-04-24 → 2026-04-13 (-11d) |  |  |  |  |
| FS-LVL3-1000 | Install Metal Decking | 2026-03-19 → 2026-03-06 (-13d) | 2026-03-24 → 2026-03-11 (-13d) |  |  |  |  |
| FS-LVL3-1010 | MEPF Rough-In (Pre-Pour) | 2026-03-25 → 2026-03-12 (-13d) | 2026-03-31 → 2026-03-18 (-13d) |  |  |  |  |
| FS-LVL3-1020 | FRP Metal Deck Slab (Pour A1) | 2026-04-01 → 2026-03-19 (-13d) | 2026-04-07 → 2026-03-25 (-13d) |  |  |  |  |
| FS-LVL3-1030 | FRP Metal Deck Slab (Pour A2) | 2026-04-08 → 2026-03-26 (-13d) | 2026-04-10 → 2026-03-30 (-11d) |  |  |  |  |
| FS-LVL3-1040 | Layout & Erect Load Bearing Framing | 2026-04-13 → 2026-03-31 (-13d) | 2026-04-24 → 2026-04-13 (-11d) |  |  |  |  |
| 5 | **Level 4** | 2026-04-21 → 2026-04-08 (-13d) | 2026-05-28 → 2026-05-14 (-14d) |  |  |  |  |
| FS-LVL4-1000 | Install Metal Decking | 2026-04-21 → 2026-04-08 (-13d) | 2026-04-24 → 2026-04-13 (-11d) |  |  |  |  |

| ID | Task | Start | Finish | Total float |
| --- | --- | --- | --- | --- |
| FS-LVL4-1010 | MEPF Rough-In (Pre-Pour) | 2026-04-27 → 2026-04-14 (-13d) | 2026-05-01 → 2026-04-20 (-11d) |  |
| FS-LVL4-1020 | FRP Metal Deck Slab (Pour A1) | 2026-05-04 → 2026-04-21 (-13d) | 2026-05-08 → 2026-04-27 (-11d) |  |
| FS-LVL4-1030 | FRP Metal Deck Slab (Pour A2) | 2026-05-11 → 2026-04-28 (-13d) | 2026-05-13 → 2026-04-30 (-13d) |  |
| FS-LVL4-1040 | Layout & Erect Load Bearing Framing | 2026-05-14 → 2026-05-01 (-13d) | 2026-05-28 → 2026-05-14 (-14d) |  |
| 4 | **Roof** | 2026-05-22 → 2026-05-11 (-11d) | 2026-06-05 → 2026-05-22 (-14d) |  |
| FS-ROOF-1000 | Install Metal Decking | 2026-05-22 → 2026-05-11 (-11d) | 2026-05-28 → 2026-05-14 (-14d) |  |
| FS-ROOF-1010 | MEPF Rough-In (Stubups) | 2026-05-29 → 2026-05-15 (-14d) | 2026-06-02 → 2026-05-19 (-14d) |  |
| FS-ROOF-1020 | Layout & Frame Parapets | 2026-06-03 → 2026-05-20 (-14d) | 2026-06-05 → 2026-05-22 (-14d) |  |
| 2 | **Envelope & Exterior** | 2026-05-14 → 2026-05-01 (-13d) | 2026-10-19 → 2026-10-06 (-13d) |  |
| 0 | **North Elevation** | 2026-05-14 → 2026-05-01 (-13d) | 2026-09-03 → 2026-08-21 (-13d) |  |
| EE-NRTH-1000 | Layout & Exterior Framing (Level 1) | 2026-05-14 → 2026-05-01 (-13d) | 2026-05-20 → 2026-05-07 (-13d) |  |
| EE-NRTH-1010 | City Inspection (Rough Framing) | 2026-05-21 → 2026-05-08 (-13d) | 2026-05-21 → 2026-05-08 (-13d) |  |
| EE-NRTH-1020 | Electrical Rough-In | 2026-06-08 → 2026-05-26 (-13d) | 2026-06-12 → 2026-06-01 (-11d) |  |
| EE-NRTH-1030 | City Inspection (Electrical) | 2026-06-15 → 2026-06-02 (-13d) | 2026-06-15 → 2026-06-02 (-13d) | 7d → 29d |
| EE-NRTH-1040 | Install Exterior Sheathing | 2026-06-16 → 2026-06-03 (-13d) | 2026-06-22 → 2026-06-09 (-13d) | 7d → 29d |
| EE-NRTH-1050 | City Inspection (Screw Inspection) | 2026-06-23 → 2026-06-10 (-13d) | 2026-06-23 → 2026-06-10 (-13d) | 7d → 29d |
| EE-NRTH-1060 | Weather Barrier & Flashing | 2026-06-24 → 2026-06-11 (-13d) | 2026-06-30 → 2026-06-17 (-13d) | 7d → 29d |
| EE-NRTH-1070 | Install Rigid Insulation | 2026-07-01 → 2026-06-18 (-13d) | 2026-07-08 → 2026-06-24 (-14d) | 7d → 29d |
| EE-NRTH-1080 | Storefront, Windows & Metals | 2026-07-09 → 2026-06-25 (-14d) | 2026-07-13 → 2026-06-29 (-14d) | 7d → 29d |
| EE-NRTH-1090 | Install Brick Veneer | 2026-07-14 → 2026-06-30 (-14d) | 2026-08-03 → 2026-07-21 (-13d) | 7d → 29d |
| EE-NRTH-1100 | Install Canopies & Trim | 2026-08-04 → 2026-07-22 (-13d) | 2026-08-06 → 2026-07-24 (-13d) | 38d → 60d |
| EE-NRTH-1110 | Install Lighting Fixtures | 2026-08-07 → 2026-07-27 (-11d) | 2026-08-11 → 2026-07-29 (-13d) | 38d → 60d |
| EE-NRTH-1120 | Install Signage | 2026-08-12 → 2026-07-30 (-13d) | 2026-08-12 → 2026-07-30 (-13d) | 38d → 60d |
| EE-NRTH-1130 | Install Doors & Hardware | 2026-08-13 → 2026-07-31 (-13d) | 2026-08-14 → 2026-08-03 (-11d) | 38d → 60d |
| EE-NRTH-1140 | Install Downspouts | 2026-08-17 → 2026-08-04 (-13d) | 2026-08-17 → 2026-08-04 (-13d) | 38d → 60d |
| EE-NRTH-1150 | Final Paint | 2026-08-18 → 2026-08-05 (-13d) | 2026-08-20 → 2026-08-07 (-13d) | 38d → 60d |
| EE-NRTH-1160 | Punch List & Corrections | 2026-08-21 → 2026-08-10 (-11d) | 2026-08-27 → 2026-08-14 (-13d) | 38d → 60d |
| EE-NRTH-1170 | Final Owner Walk (Punch List & Corrections) | 2026-08-28 → 2026-08-17 (-11d) | 2026-09-03 → 2026-08-21 (-13d) | 38d → 60d |
| 2 | **East Elevation** | 2026-05-21 → 2026-05-08 (-13d) | 2026-09-09 → 2026-08-26 (-14d) |  |
| EE-EAST-1000 | Layout & Exterior Framing (Level 1) | 2026-05-21 → 2026-05-08 (-13d) | 2026-05-28 → 2026-05-14 (-14d) |  |
| EE-EAST-1010 | City Inspection (Rough Framing) | 2026-05-29 → 2026-05-15 (-14d) | 2026-05-29 → 2026-05-15 (-14d) |  |
| EE-EAST-1020 | Electrical Rough-In | 2026-06-15 → 2026-06-02 (-13d) | 2026-06-19 → 2026-06-08 (-11d) |  |
| EE-EAST-1030 | City Inspection (Electrical) | 2026-06-22 → 2026-06-09 (-13d) | 2026-06-22 → 2026-06-09 (-13d) | 17d → 39d |
| EE-EAST-1040 | Install Exterior Sheathing | 2026-06-23 → 2026-06-10 (-13d) | 2026-06-29 → 2026-06-16 (-13d) | 17d → 39d |
| EE-EAST-1050 | City Inspection (Screw Inspection) | 2026-06-30 → 2026-06-17 (-13d) | 2026-06-30 → 2026-06-17 (-13d) | 17d → 39d |
| EE-EAST-1060 | Weather Barrier & Flashing | 2026-07-01 → 2026-06-18 (-13d) | 2026-07-08 → 2026-06-24 (-14d) | 17d → 39d |
| EE-EAST-1070 | Install Rigid Insulation | 2026-07-09 → 2026-06-25 (-14d) | 2026-07-15 → 2026-07-01 (-14d) | 17d → 39d |
| EE-EAST-1080 | Install Windows & Metals | 2026-07-16 → 2026-07-02 (-14d) | 2026-07-20 → 2026-07-07 (-13d) | 17d → 39d |
| EE-EAST-1090 | Install Brick Veneer | 2026-08-04 → 2026-07-22 (-13d) | 2026-08-24 → 2026-08-11 (-13d) | 7d → 29d |
| EE-EAST-1100 | Install Signage | 2026-08-25 → 2026-08-12 (-13d) | 2026-08-25 → 2026-08-12 (-13d) | 35d → 57d |
| EE-EAST-1110 | Punch List & Corrections | 2026-08-26 → 2026-08-13 (-13d) | 2026-09-01 → 2026-08-19 (-13d) | 35d → 57d |
| EE-EAST-1120 | Final Owner Walk (Punch List & Corrections) | 2026-09-02 → 2026-08-20 (-13d) | 2026-09-09 → 2026-08-26 (-14d) | 35d → 57d |
| 5 | **South Elevation** | 2026-05-29 → 2026-05-15 (-14d) | 2026-10-07 → 2026-09-24 (-13d) |  |
| EE-SOTH-1000 | Layout & Exterior Framing (Level 1) | 2026-05-29 → 2026-05-15 (-14d) | 2026-06-04 → 2026-05-21 (-14d) |  |
| EE-SOTH-1010 | City Inspection (Rough Framing) | 2026-06-05 → 2026-05-22 (-14d) | 2026-06-05 → 2026-05-22 (-14d) |  |
| EE-SOTH-1020 | Electrical Rough-In | 2026-06-22 → 2026-06-09 (-13d) | 2026-06-26 → 2026-06-15 (-11d) |  |
| EE-SOTH-1030 | City Inspection (Electrical) | 2026-06-29 → 2026-06-16 (-13d) | 2026-06-29 → 2026-06-16 (-13d) | 30d → 52d |
| EE-SOTH-1040 | Install Exterior Sheathing | 2026-06-30 → 2026-06-17 (-13d) | 2026-07-07 → 2026-06-23 (-14d) | 30d → 52d |
| EE-SOTH-1050 | City Inspection (Screw Inspection) | 2026-07-08 → 2026-06-24 (-14d) | 2026-07-08 → 2026-06-24 (-14d) | 30d → 52d |
| EE-SOTH-1060 | Weather Barrier & Flashing | 2026-07-09 → 2026-06-25 (-14d) | 2026-07-15 → 2026-07-01 (-14d) | 30d → 52d |
| EE-SOTH-1070 | Install Rigid Insulation | 2026-07-16 → 2026-07-02 (-14d) | 2026-07-22 → 2026-07-09 (-13d) | 30d → 52d |
| EE-SOTH-1080 | Install Brick Veneer | 2026-08-25 → 2026-08-12 (-13d) | 2026-09-15 → 2026-09-01 (-14d) | 7d → 29d |
| EE-SOTH-1090 | Install Signage | 2026-09-16 → 2026-09-02 (-14d) | 2026-09-16 → 2026-09-02 (-14d) | 15d → 37d |
| EE-SOTH-1100 | Install Doors & Hardware | 2026-09-17 → 2026-09-03 (-14d) | 2026-09-17 → 2026-09-03 (-14d) | 15d → 37d |
| EE-SOTH-1110 | Install Downspouts | 2026-09-18 → 2026-09-04 (-14d) | 2026-09-21 → 2026-09-08 (-13d) | 15d → 37d |
| EE-SOTH-1120 | Final Paint | 2026-09-22 → 2026-09-09 (-13d) | 2026-09-23 → 2026-09-10 (-13d) | 15d → 37d |
| EE-SOTH-1130 | Punch List & Corrections | 2026-09-24 → 2026-09-11 (-13d) | 2026-09-30 → 2026-09-17 (-13d) | 15d → 37d |
| EE-SOTH-1140 | Final Owner Walk (Punch List & Corrections) | 2026-10-01 → 2026-09-18 (-13d) | 2026-10-07 → 2026-09-24 (-13d) | 15d → 37d |
| 1 | **West Elevation** | 2026-06-05 → 2026-05-22 (-14d) | 2026-10-19 → 2026-10-06 (-13d) |  |
| EE-WEST-1000 | Layout & Exterior Framing (Level 1) | 2026-06-05 → 2026-05-22 (-14d) | 2026-06-11 → 2026-05-29 (-13d) |  |
| EE-WEST-1010 | City Inspection (Rough Framing) | 2026-06-12 → 2026-06-01 (-11d) | 2026-06-12 → 2026-06-01 (-11d) |  |
| EE-WEST-1020 | Electrical Rough-In | 2026-06-29 → 2026-06-16 (-13d) | 2026-07-06 → 2026-06-22 (-14d) |  |
| EE-WEST-1030 | City Inspection (Electrical) | 2026-07-07 → 2026-06-23 (-14d) | 2026-07-07 → 2026-06-23 (-14d) |  |
| EE-WEST-1040 | Install Exterior Sheathing | 2026-07-08 → 2026-06-24 (-14d) | 2026-07-14 → 2026-06-30 (-14d) |  |
| EE-WEST-1050 | City Inspection (Screw Inspection) | 2026-07-15 → 2026-07-01 (-14d) | 2026-07-15 → 2026-07-01 (-14d) |  |
| EE-WEST-1060 | Weather Barrier & Flashing | 2026-07-16 → 2026-07-02 (-14d) | 2026-07-22 → 2026-07-09 (-13d) |  |
| EE-WEST-1070 | Install Rigid Insulation | 2026-07-23 → 2026-07-10 (-13d) | 2026-07-29 → 2026-07-16 (-13d) |  |
| EE-WEST-1080 | Install Windows & Metals | 2026-07-30 → 2026-07-17 (-13d) | 2026-08-03 → 2026-07-21 (-13d) |  |
| EE-WEST-1090 | Install Brick Veneer | 2026-09-16 → 2026-09-02 (-14d) | 2026-10-06 → 2026-09-23 (-13d) | 7d → 29d |
| EE-WEST-1100 | Install Signage | 2026-10-07 → 2026-09-24 (-13d) | 2026-10-07 → 2026-09-24 (-13d) | 7d → 29d |

| ID | Task | Start | Finish | Total float |
| --- | --- | --- | --- | --- |
| EE-WEST-1110 | Punch List & Corrections | 2026-10-08 → 2026-09-25 (-13d) | 2026-10-14 → 2026-10-01 (-13d) | 7d → 29d |
| EE-WEST-1120 | Final Owner Walk (Punch List & Corrections) | 2026-10-15 → 2026-10-02 (-13d) | 2026-10-19 → 2026-10-06 (-13d) | 7d → 29d |
| 3 | **Roof** | 2026-06-08 → 2026-05-26 (-13d) | 2026-09-17 → 2026-09-03 (-14d) |  |
| EE-ROOF-1000 | Clean & Prep Metal Deck | 2026-06-08 → 2026-05-26 (-13d) | 2026-06-09 → 2026-05-27 (-13d) | 5d → 27d |
| EE-ROOF-1010 | Stage Materials & Solar Rails (Crane) | 2026-06-10 → 2026-05-28 (-13d) | 2026-06-10 → 2026-05-28 (-13d) | 5d → 27d |
| EE-ROOF-1020 | Layout for Penetrations, Curb Blocking, Edge Metal | 2026-06-11 → 2026-05-29 (-13d) | 2026-06-12 → 2026-06-01 (-11d) | 5d → 27d |
| EE-ROOF-1030 | Install Blocking & Equipment Curbs | 2026-06-15 → 2026-06-02 (-13d) | 2026-06-17 → 2026-06-04 (-13d) | 5d → 27d |
| EE-ROOF-1040 | Install Rigid Insulation | 2026-06-18 → 2026-06-05 (-13d) | 2026-06-23 → 2026-06-10 (-13d) | 5d → 27d |
| EE-ROOF-1050 | Install Cover Board | 2026-06-24 → 2026-06-11 (-13d) | 2026-06-29 → 2026-06-16 (-13d) | 5d → 27d |
| EE-ROOF-1060 | Install TPO Roofing System (incl. boots, termination bars) | 2026-06-30 → 2026-06-17 (-13d) | 2026-07-14 → 2026-06-30 (-14d) | 5d → 27d |
| EE-ROOF-1070 | Install Edge Metal, Coping, Trim | 2026-07-15 → 2026-07-01 (-14d) | 2026-07-21 → 2026-07-08 (-13d) | 29d → 51d |
| EE-ROOF-1080 | Install Roof Drains, Vents, Mechanical Curbs | 2026-07-22 → 2026-07-09 (-13d) | 2026-07-28 → 2026-07-15 (-13d) | 29d → 51d |
| EE-ROOF-1090 | Install Electrical Conduit & Roof Mounted Boxes | 2026-07-29 → 2026-07-16 (-13d) | 2026-08-04 → 2026-07-22 (-13d) | 29d → 51d |
| EE-ROOF-1140 | Set Rooftop Units (RTU's & Splits) | 2026-07-29 → 2026-07-16 (-13d) | 2026-07-29 → 2026-07-16 (-13d) | 50d → 72d |
| EE-ROOF-1150 | Install Duct/Condensate/Vent Tie-Ins & Flashing | 2026-07-30 → 2026-07-17 (-13d) | 2026-08-03 → 2026-07-21 (-13d) | 50d → 72d |
| EE-ROOF-1160 | Startup/Controls/Balancing Prep | 2026-08-04 → 2026-07-22 (-13d) | 2026-08-06 → 2026-07-24 (-13d) | 50d → 72d |
| EE-ROOF-1100 | Install Solar Mounting Rails & Racking | 2026-08-05 → 2026-07-23 (-13d) | 2026-08-07 → 2026-07-27 (-11d) | 29d → 51d |
| EE-ROOF-1170 | Water Test / Leak Test | 2026-08-07 → 2026-07-27 (-11d) | 2026-08-07 → 2026-07-27 (-11d) | 50d → 72d |
| EE-ROOF-1110 | Mount Solar Panels | 2026-08-10 → 2026-07-28 (-13d) | 2026-08-28 → 2026-08-17 (-11d) | 29d → 51d |
| EE-ROOF-1180 | Roof Patches (If Any) | 2026-08-10 → 2026-07-28 (-13d) | 2026-08-10 → 2026-07-28 (-13d) | 50d → 72d |
| EE-ROOF-1190 | Punch List & Corrections | 2026-08-11 → 2026-07-29 (-13d) | 2026-08-13 → 2026-07-31 (-13d) | 50d → 72d |
| EE-ROOF-1120 | Run Electrical Conduit & Inverters to Roof | 2026-08-31 → 2026-08-18 (-13d) | 2026-09-04 → 2026-08-24 (-11d) | 29d → 51d |
| EE-ROOF-1130 | Final Electrical Tie-In (Solar Panels) | 2026-09-08 → 2026-08-25 (-14d) | 2026-09-14 → 2026-08-31 (-14d) | 29d → 51d |
| EE-ROOF-1200 | Final Owner Walk (Punch List & Corrections) | 2026-09-15 → 2026-09-01 (-14d) | 2026-09-17 → 2026-09-03 (-14d) | 29d → 51d |
| 3 | **Interior Build-Out** | 2026-03-10 → 2026-02-25 (-13d) | 2026-10-21 → 2026-10-08 (-13d) |  |
| Level 1 Interior | **Level 1 Interior** | 2026-07-15 → 2026-07-01 (-14d) | 2026-09-03 → 2026-08-21 (-13d) |  |
| IB-L1IN-1000 | Layout & Framing (incl. backing, door frames) | 2026-07-15 → 2026-07-01 (-14d) | 2026-07-21 → 2026-07-08 (-13d) | 29d → 51d |
| IB-L1IN-1010 | Electrical Rough-In | 2026-07-22 → 2026-07-09 (-13d) | 2026-07-28 → 2026-07-15 (-13d) | 41d → 63d |
| IB-L1IN-1020 | Mechanical Rough-In | 2026-07-22 → 2026-07-09 (-13d) | 2026-07-28 → 2026-07-15 (-13d) | 41d → 63d |
| IB-L1IN-1030 | Plumbing Rough-In | 2026-07-22 → 2026-07-09 (-13d) | 2026-07-28 → 2026-07-15 (-13d) | 41d → 63d |
| IB-L1IN-1040 | Fire Supression Rough-In | 2026-07-22 → 2026-07-09 (-13d) | 2026-07-28 → 2026-07-15 (-13d) | 41d → 63d |
| IB-L1IN-1050 | Install Insulation | 2026-07-29 → 2026-07-16 (-13d) | 2026-07-30 → 2026-07-17 (-13d) | 41d → 63d |
| IB-L1IN-1060 | Install Drywall | 2026-07-31 → 2026-07-20 (-11d) | 2026-08-05 → 2026-07-23 (-13d) | 41d → 63d |
| IB-L1IN-1070 | Tape & Mud Drywall | 2026-08-06 → 2026-07-24 (-13d) | 2026-08-12 → 2026-07-30 (-13d) | 41d → 63d |
| IB-L1IN-1080 | Prep & Paint | 2026-08-13 → 2026-07-31 (-13d) | 2026-08-17 → 2026-08-04 (-13d) | 41d → 63d |
| IB-L1IN-1090 | MEPF Trim-Out | 2026-08-18 → 2026-08-05 (-13d) | 2026-08-24 → 2026-08-11 (-13d) | 41d → 63d |
| IB-L1IN-1100 | Install Storage Doors & Hardware | 2026-08-25 → 2026-08-12 (-13d) | 2026-08-31 → 2026-08-18 (-13d) | 41d → 63d |
| 1 | **Restrooms (Mens & Womens)** | 2026-07-22 → 2026-07-09 (-13d) | 2026-08-20 → 2026-08-07 (-13d) |  |
| IB-L1RR-1000 | Framing (Metal Studs, Blocking) | 2026-07-22 → 2026-07-09 (-13d) | 2026-07-24 → 2026-07-13 (-11d) | 29d → 51d |
| IB-L1RR-1010 | MEPF Rough-In | 2026-07-27 → 2026-07-14 (-13d) | 2026-07-29 → 2026-07-16 (-13d) | 48d → 70d |
| IB-L1RR-1020 | City Inspection (Framing & MEPF Rough) | 2026-07-30 → 2026-07-17 (-13d) | 2026-07-30 → 2026-07-17 (-13d) | 48d → 70d |
| IB-L1RR-1030 | Install Insulation | 2026-07-31 → 2026-07-20 (-11d) | 2026-07-31 → 2026-07-20 (-11d) | 48d → 70d |
| IB-L1RR-1040 | Install Drywall | 2026-08-03 → 2026-07-21 (-13d) | 2026-08-04 → 2026-07-22 (-13d) | 48d → 70d |
| IB-L1RR-1050 | Tape & Mud Drywall | 2026-08-05 → 2026-07-23 (-13d) | 2026-08-07 → 2026-07-27 (-11d) | 48d → 70d |
| IB-L1RR-1060 | Painting | 2026-08-10 → 2026-07-28 (-13d) | 2026-08-11 → 2026-07-29 (-13d) | 48d → 70d |
| IB-L1RR-1070 | Install Restroom Fixtures & Partitions | 2026-08-12 → 2026-07-30 (-13d) | 2026-08-13 → 2026-07-31 (-13d) | 48d → 70d |
| IB-L1RR-1080 | Install Accessories (Grab Bars, Mirrors, Signs) | 2026-08-14 → 2026-08-03 (-11d) | 2026-08-17 → 2026-08-04 (-13d) | 48d → 70d |
| IB-L1RR-1090 | Final MEP Trim-Out | 2026-08-18 → 2026-08-05 (-13d) | 2026-08-19 → 2026-08-06 (-13d) | 48d → 70d |
| IB-L1RR-1100 | Final Clean | 2026-08-20 → 2026-08-07 (-13d) | 2026-08-20 → 2026-08-07 (-13d) | 48d → 70d |
| 2 | **Management Spaces (Rental Office, Storage, Break Room)** | 2026-07-27 → 2026-07-14 (-13d) | 2026-09-03 → 2026-08-21 (-13d) |  |
| IB-L1M\S-1000 | Layout & Framing (incl. backing, door frames) | 2026-07-27 → 2026-07-14 (-13d) | 2026-07-29 → 2026-07-16 (-13d) | 29d → 51d |
| IB-L1M\S-1010 | MEPF Rough-In | 2026-07-30 → 2026-07-17 (-13d) | 2026-08-03 → 2026-07-21 (-13d) | 35d → 57d |
| IB-L1M\S-1020 | City Inspection (Framing & MEPF) | 2026-08-04 → 2026-07-22 (-13d) | 2026-08-04 → 2026-07-22 (-13d) | 35d → 57d |
| IB-L1M\S-1030 | Install Insulation | 2026-08-05 → 2026-07-23 (-13d) | 2026-08-06 → 2026-07-24 (-13d) | 35d → 57d |
| IB-L1M\S-1040 | Install Drywall | 2026-08-07 → 2026-07-27 (-11d) | 2026-08-10 → 2026-07-28 (-13d) | 35d → 57d |
| IB-L1M\S-1050 | Tape & Mud Drywall | 2026-08-11 → 2026-07-29 (-13d) | 2026-08-13 → 2026-07-31 (-13d) | 35d → 57d |
| IB-L1M\S-1060 | Painting | 2026-08-14 → 2026-08-03 (-11d) | 2026-08-18 → 2026-08-05 (-13d) | 35d → 57d |
| IB-L1M\S-1070 | Install Ceiling Grid (Break Room) | 2026-08-19 → 2026-08-06 (-13d) | 2026-08-19 → 2026-08-06 (-13d) | 38d → 60d |
| IB-L1M\S-1080 | Install Base Trim | 2026-08-20 → 2026-08-07 (-13d) | 2026-08-20 → 2026-08-07 (-13d) | 38d → 60d |
| IB-L1M\S-1090 | Install Cabinets & Countertops (Break Room & Office) | 2026-08-21 → 2026-08-10 (-11d) | 2026-08-25 → 2026-08-12 (-13d) | 38d → 60d |
| IB-L1M\S-1100 | Install Sink & Faucests (Break Room) | 2026-08-26 → 2026-08-13 (-13d) | 2026-08-26 → 2026-08-13 (-13d) | 38d → 60d |
| IB-L1M\S-1110 | Appliances (Microwave & Fridge) | 2026-08-27 → 2026-08-14 (-13d) | 2026-08-27 → 2026-08-14 (-13d) | 38d → 60d |
| IB-L1M\S-1120 | Interior Signage | 2026-08-28 → 2026-08-17 (-11d) | 2026-08-28 → 2026-08-17 (-11d) | 38d → 60d |
| IB-L1M\S-1130 | MEPF Trim-Out | 2026-08-31 → 2026-08-18 (-13d) | 2026-09-02 → 2026-08-20 (-13d) | 38d → 60d |
| IB-L1M\S-1140 | Final Clean | 2026-09-03 → 2026-08-21 (-13d) | 2026-09-03 → 2026-08-21 (-13d) | 38d → 60d |
| Level 2 Interior | **Level 2 Interior** | 2026-07-15 → 2026-07-01 (-14d) | 2026-08-31 → 2026-08-18 (-13d) |  |
| IB-L2IN-1000 | Layout & Framing (incl. backing, door frames) | 2026-07-15 → 2026-07-01 (-14d) | 2026-07-21 → 2026-07-08 (-13d) | 5d → 27d |
| IB-L2IN-1010 | Electrical Rough-In | 2026-07-22 → 2026-07-09 (-13d) | 2026-07-28 → 2026-07-15 (-13d) | 5d → 27d |
| IB-L2IN-1020 | Mechanical Rough-In | 2026-07-22 → 2026-07-09 (-13d) | 2026-07-28 → 2026-07-15 (-13d) | 5d → 27d |
| IB-L2IN-1030 | Plumbing Rough-In | 2026-07-22 → 2026-07-09 (-13d) | 2026-07-28 → 2026-07-15 (-13d) | 5d → 27d |

| ID | Task | Start | Finish | Total float | Predecessors |
| --- | --- | --- | --- | --- | --- |
| IB-L2IN-1040 | Fire Supression Rough-In | 2026-07-22 → 2026-07-09 (-13d) | 2026-07-28 → 2026-07-15 (-13d) | 5d → 27d |  |
| IB-L2IN-1050 | Install Insulation | 2026-07-29 → 2026-07-16 (-13d) | 2026-07-30 → 2026-07-17 (-13d) | 41d → 63d |  |
| IB-L2IN-1060 | Install Drywall | 2026-07-31 → 2026-07-20 (-11d) | 2026-08-05 → 2026-07-23 (-13d) | 41d → 63d |  |
| IB-L2IN-1070 | Tape & Mud Drywall | 2026-08-06 → 2026-07-24 (-13d) | 2026-08-12 → 2026-07-30 (-13d) | 41d → 63d |  |
| IB-L2IN-1080 | Prep & Paint | 2026-08-13 → 2026-07-31 (-13d) | 2026-08-17 → 2026-08-04 (-13d) | 41d → 63d |  |
| IB-L2IN-1090 | MEPF Trim-Out | 2026-08-18 → 2026-08-05 (-13d) | 2026-08-24 → 2026-08-11 (-13d) | 41d → 63d |  |
| IB-L2IN-1100 | Install Storage Doors & Hardware | 2026-08-25 → 2026-08-12 (-13d) | 2026-08-31 → 2026-08-18 (-13d) | 41d → 63d |  |
| 3 | **Level 3 Interior** | 2026-07-22 → 2026-07-09 (-13d) | 2026-09-08 → 2026-08-25 (-14d) |  |  |
| IB-L3IN-1000 | Layout & Framing (incl. backing, door frames) | 2026-07-22 → 2026-07-09 (-13d) | 2026-07-28 → 2026-07-15 (-13d) | 36d → 58d |  |
| IB-L3IN-1010 | Electrical Rough-In | 2026-07-29 → 2026-07-16 (-13d) | 2026-08-04 → 2026-07-22 (-13d) | 36d → 58d |  |
| IB-L3IN-1020 | Mechanical Rough-In | 2026-07-29 → 2026-07-16 (-13d) | 2026-08-04 → 2026-07-22 (-13d) | 36d → 58d |  |
| IB-L3IN-1030 | Plumbing Rough-In | 2026-07-29 → 2026-07-16 (-13d) | 2026-08-04 → 2026-07-22 (-13d) | 36d → 58d |  |
| IB-L3IN-1040 | Fire Supression Rough-In | 2026-07-29 → 2026-07-16 (-13d) | 2026-08-04 → 2026-07-22 (-13d) | 36d → 58d |  |
| IB-L3IN-1050 | Install Insulation | 2026-08-05 → 2026-07-23 (-13d) | 2026-08-06 → 2026-07-24 (-13d) | 36d → 58d |  |
| IB-L3IN-1060 | Install Drywall | 2026-08-07 → 2026-07-27 (-11d) | 2026-08-12 → 2026-07-30 (-13d) | 36d → 58d |  |
| IB-L3IN-1070 | Tape & Mud Drywall | 2026-08-13 → 2026-07-31 (-13d) | 2026-08-19 → 2026-08-06 (-13d) | 36d → 58d |  |
| IB-L3IN-1080 | Prep & Paint | 2026-08-20 → 2026-08-07 (-13d) | 2026-08-24 → 2026-08-11 (-13d) | 36d → 58d |  |
| IB-L3IN-1090 | MEPF Trim-Out | 2026-08-25 → 2026-08-12 (-13d) | 2026-08-31 → 2026-08-18 (-13d) | 36d → 58d |  |
| IB-L3IN-1100 | Install Storage Doors & Hardware | 2026-09-01 → 2026-08-19 (-13d) | 2026-09-08 → 2026-08-25 (-14d) | 36d → 58d |  |
| 1 | **Unisex Restroom** | 2026-07-29 → 2026-07-16 (-13d) | 2026-08-27 → 2026-08-14 (-13d) |  |  |
| IB-L3UN-1000 | Framing (Metal Studs, Blocking) | 2026-07-29 → 2026-07-16 (-13d) | 2026-07-31 → 2026-07-20 (-11d) | 43d → 65d |  |
| IB-L3UN-1010 | MEPF Rough-In | 2026-08-03 → 2026-07-21 (-13d) | 2026-08-05 → 2026-07-23 (-13d) | 43d → 65d |  |
| IB-L3UN-1020 | City Inspection (Framing & MEPF Rough) | 2026-08-06 → 2026-07-24 (-13d) | 2026-08-06 → 2026-07-24 (-13d) | 43d → 65d |  |
| IB-L3UN-1030 | Install Insulation | 2026-08-07 → 2026-07-27 (-11d) | 2026-08-07 → 2026-07-27 (-11d) | 43d → 65d |  |
| IB-L3UN-1040 | Install Drywall | 2026-08-10 → 2026-07-28 (-13d) | 2026-08-11 → 2026-07-29 (-13d) | 43d → 65d |  |
| IB-L3UN-1050 | Tape & Mud Drywall | 2026-08-12 → 2026-07-30 (-13d) | 2026-08-14 → 2026-08-03 (-11d) | 43d → 65d |  |
| IB-L3UN-1060 | Painting | 2026-08-17 → 2026-08-04 (-13d) | 2026-08-18 → 2026-08-05 (-13d) | 43d → 65d |  |
| IB-L3UN-1070 | Install Restroom Fixtures & Partitions | 2026-08-19 → 2026-08-06 (-13d) | 2026-08-20 → 2026-08-07 (-13d) | 43d → 65d |  |
| IB-L3UN-1080 | Install Accessories (Grab Bars, Mirrors, Signs) | 2026-08-21 → 2026-08-10 (-11d) | 2026-08-24 → 2026-08-11 (-13d) | 43d → 65d |  |
| IB-L3UN-1090 | Final MEP Trim-Out | 2026-08-25 → 2026-08-12 (-13d) | 2026-08-26 → 2026-08-13 (-13d) | 43d → 65d |  |
| IB-L3UN-1100 | Final Clean | 2026-08-27 → 2026-08-14 (-13d) | 2026-08-27 → 2026-08-14 (-13d) | 43d → 65d |  |
| 5 | **Level 4 Interior** | 2026-05-29 → 2026-05-15 (-14d) | 2026-08-17 → 2026-08-04 (-13d) |  |  |
| IB-L4IN-1000 | Layout & Framing (incl. backing, door frames) | 2026-05-29 → 2026-05-15 (-14d) | 2026-06-04 → 2026-05-21 (-14d) | 68d → 90d |  |
| IB-L4IN-1010 | Electrical Rough-In | 2026-06-05 → 2026-05-22 (-14d) | 2026-06-11 → 2026-05-29 (-13d) | 68d → 90d |  |
| IB-L4IN-1020 | Mechanical Rough-In | 2026-06-05 → 2026-05-22 (-14d) | 2026-06-11 → 2026-05-29 (-13d) | 68d → 90d |  |
| IB-L4IN-1030 | Plumbing Rough-In | 2026-06-05 → 2026-05-22 (-14d) | 2026-06-11 → 2026-05-29 (-13d) | 68d → 90d |  |
| IB-L4IN-1040 | Fire Supression Rough-In | 2026-06-05 → 2026-05-22 (-14d) | 2026-06-11 → 2026-05-29 (-13d) | 68d → 90d |  |
| IB-L4IN-1050 | Install Insulation | 2026-07-15 → 2026-07-01 (-14d) | 2026-07-16 → 2026-07-02 (-14d) | 46d → 68d |  |
| IB-L4IN-1060 | Install Drywall | 2026-07-17 → 2026-07-06 (-11d) | 2026-07-22 → 2026-07-09 (-13d) | 46d → 68d |  |
| IB-L4IN-1070 | Tape & Mud Drywall | 2026-07-23 → 2026-07-10 (-13d) | 2026-07-29 → 2026-07-16 (-13d) | 46d → 68d |  |
| IB-L4IN-1080 | Prep & Paint | 2026-07-30 → 2026-07-17 (-13d) | 2026-08-03 → 2026-07-21 (-13d) | 46d → 68d |  |
| IB-L4IN-1090 | MEPF Trim-Out | 2026-08-04 → 2026-07-22 (-13d) | 2026-08-10 → 2026-07-28 (-13d) | 46d → 68d |  |
| IB-L4IN-1100 | Install Storage Doors & Hardware | 2026-08-11 → 2026-07-29 (-13d) | 2026-08-17 → 2026-08-04 (-13d) | 51d → 73d |  |
| 1 | **Janus Scope** | 2026-07-29 → 2026-07-16 (-13d) | 2026-10-21 → 2026-10-08 (-13d) |  |  |
| IB-JNUS-1000 | Level 2 Install (Diamond Plate, Turkey Wire, Misc.) | 2026-07-29 → 2026-07-16 (-13d) | 2026-08-18 → 2026-08-05 (-13d) | 5d → 27d |  |
| IB-JNUS-1010 | Level 3 Install (Diamond Plate, Turkey Wire, Misc.) | 2026-08-19 → 2026-08-06 (-13d) | 2026-09-09 → 2026-08-26 (-14d) | 5d → 27d |  |
| IB-JNUS-1020 | Level 4 Install (Diamond Plate, Turkey Wire, Misc.) | 2026-09-10 → 2026-08-27 (-14d) | 2026-09-30 → 2026-09-17 (-13d) | 5d → 27d |  |
| IB-JNUS-1030 | Level 1 Install (Diamond Plate, Turkey Wire, Misc.) | 2026-10-01 → 2026-09-18 (-13d) | 2026-10-21 → 2026-10-08 (-13d) | 5d → 27d |  |
| 2 | **Elevator Installation** | 2026-07-30 → 2026-07-17 (-13d) | 2026-09-17 → 2026-09-03 (-14d) |  |  |
| EL-INST-1000 | Evelvator Installation (incl. Equipment Room Buildout) | 2026-07-30 → 2026-07-17 (-13d) | 2026-09-17 → 2026-09-03 (-14d) | 29d → 51d |  |
| 4 | **Stairwells** | 2026-03-10 → 2026-02-25 (-13d) | 2026-03-30 → 2026-03-17 (-13d) |  |  |
| IB-STAR-1000 | Install Stairs & Railings | 2026-03-10 → 2026-02-25 (-13d) | 2026-03-23 → 2026-03-10 (-13d) | 149d → 171d |  |
| IB-STAR-1010 | Install Signage & Lighting | 2026-03-24 → 2026-03-11 (-13d) | 2026-03-26 → 2026-03-13 (-13d) | 149d → 171d |  |
| IB-STAR-1020 | Install Doors & Hardware | 2026-03-27 → 2026-03-16 (-11d) | 2026-03-30 → 2026-03-17 (-13d) | 149d → 171d |  |
| 4 | **Offsite** | 2026-08-04 → 2026-07-22 (-13d) | 2026-10-28 → 2026-11-16 (+19d) |  |  |
| 2 | **Sitework Finishes** | 2026-08-04 → 2026-07-22 (-13d) | 2026-10-28 → 2026-10-15 (-13d) |  |  |
| SW-FIN-1040 | Finish Grade Site (incl. bio ponds) | 2026-08-04 → 2026-07-22 (-13d) | 2026-08-10 → 2026-07-28 (-13d) |  | EE-WEST-1000, EE-WEST-1080 → EE-WEST-1000, EE-WEST-1080, SU-STWK-1100 |
| SW-FIN-1050 | Install Irrigation Sleeves (inc. bio ponds) | 2026-08-11 → 2026-07-29 (-13d) | 2026-08-12 → 2026-07-30 (-13d) |  |  |
| SW-FIN-1060 | Electrical Rough (Light Poles) | 2026-08-13 → 2026-07-31 (-13d) | 2026-08-19 → 2026-08-06 (-13d) |  |  |
| SW-FIN-1100 | Install Bollards (including footings) | 2026-08-20 → 2026-08-07 (-13d) | 2026-08-26 → 2026-08-13 (-13d) |  |  |
| SW-FIN-1130 | FRP Concrete (Hardscape & Sidewalks) | 2026-08-27 → 2026-08-14 (-13d) | 2026-09-04 → 2026-08-24 (-11d) |  |  |
| SW-FIN-1140 | Install Irrigation | 2026-09-08 → 2026-08-25 (-14d) | 2026-09-21 → 2026-09-08 (-13d) | 0d → 22d |  |
| SW-FIN-1150 | Install Asphalt (Final Coat) | 2026-09-22 → 2026-09-09 (-13d) | 2026-09-22 → 2026-09-09 (-13d) | 0d → 22d |  |
| SW-FIN-1170 | Planting | 2026-09-23 → 2026-09-10 (-13d) | 2026-10-06 → 2026-09-23 (-13d) | 0d → 22d |  |
| SW-FIN-1171 | FRP Dumpster Enclosure | 2026-10-07 → 2026-09-24 (-13d) | 2026-10-15 → 2026-10-02 (-13d) | 0d → 22d |  |
| SW-FIN-1180 | Site Furnishings & Signage | 2026-10-16 → 2026-10-05 (-11d) | 2026-10-22 → 2026-10-09 (-13d) | 0d → 22d |  |
| SW-FIN-1190 | Final Clean | 2026-10-23 → 2026-10-12 (-11d) | 2026-10-23 → 2026-10-12 (-11d) | 0d → 22d |  |
| SW-FIN-1200 | Punch List | 2026-10-26 → 2026-10-13 (-13d) | 2026-10-28 → 2026-10-15 (-13d) | 0d → 22d |  |
| 1 | **Rutland Drive Improvements** | 2026-08-04 → 2026-08-25 (+21d) | 2026-10-26 → 2026-11-16 (+21d) |  |  |
| SW-RTLN-1000 | EPSC Install (Silt Fence, Inlet Protection) | 2026-08-04 → 2026-08-25 (+21d) | 2026-08-06 → 2026-08-27 (+21d) | 2d → 0d | SW-FIN-1040 SS → SW-FIN-1040 SS, SW-FIN-1130 |

| ID | Task | Start | Finish | Total float |
| --- | --- | --- | --- | --- |
| SW-RTLN-1010 | Sawcut Asphalt & Demo Existing Curb | 2026-08-07 → 2026-08-28 (+21d) | 2026-08-11 → 2026-09-01 (+21d) | 2d → 0d |
| SW-RTLN-1020 | Temp Traffic Control Setup | 2026-08-12 → 2026-09-02 (+21d) | 2026-08-14 → 2026-09-04 (+21d) | 2d → 0d |
| SW-RTLN-1030 | Relocate Mailbox / Signs / Remove Conflicts | 2026-08-17 → 2026-09-08 (+22d) | 2026-08-18 → 2026-09-09 (+22d) | 2d → 0d |
| SW-RTLN-1040 | Trench & Install Storm Pipe | 2026-08-19 → 2026-09-10 (+22d) | 2026-08-28 → 2026-09-21 (+24d) | 2d → 0d |
| SW-RTLN-1050 | Set Curb Inlets, Junction Boxes, Headwalls | 2026-08-31 → 2026-09-22 (+22d) | 2026-09-08 → 2026-09-29 (+21d) | 2d → 0d |
| SW-RTLN-1060 | Backfill / Compact Drain Trenches | 2026-09-09 → 2026-09-30 (+21d) | 2026-09-11 → 2026-10-02 (+21d) | 2d → 0d |
| SW-RTLN-1070 | Subgrade Proofrool & Undercut / Backfill (if needed) | 2026-09-14 → 2026-10-05 (+21d) | 2026-09-16 → 2026-10-07 (+21d) | 2d → 0d |
| SW-RTLN-1080 | Place Aggregate Base | 2026-09-17 → 2026-10-08 (+21d) | 2026-09-22 → 2026-10-13 (+21d) | 2d → 0d |
| SW-RTLN-1090 | City Inspections (Proofrool, Storm, Curbs) | 2026-09-23 → 2026-10-14 (+21d) | 2026-09-24 → 2026-10-15 (+21d) | 2d → 0d |
| SW-RTLN-1100 | Install Curb & Gutter | 2026-09-25 → 2026-10-16 (+21d) | 2026-10-01 → 2026-10-22 (+21d) | 2d → 0d |
| SW-RTLN-1110 | Sidewalks & ADA Ramps | 2026-10-02 → 2026-10-23 (+21d) | 2026-10-07 → 2026-10-28 (+21d) | 2d → 0d |
| SW-RTLN-1120 | First Lift Asphalt (Binder Course) | 2026-10-08 → 2026-10-29 (+21d) | 2026-10-09 → 2026-10-30 (+21d) | 2d → 0d |
| SW-RTLN-1130 | Final Grading | 2026-10-12 → 2026-11-02 (+21d) | 2026-10-13 → 2026-11-03 (+21d) | 2d → 0d |
| SW-RTLN-1140 | Final Asphalt Surface Course | 2026-10-14 → 2026-11-04 (+21d) | 2026-10-14 → 2026-11-04 (+21d) | 2d → 0d |
| SW-RTLN-1150 | Permanent Signs & Striping | 2026-10-15 → 2026-11-05 (+21d) | 2026-10-16 → 2026-11-06 (+21d) | 2d → 0d |
| SW-RTLN-1160 | Site Cleanup & Final EPSC Removal | 2026-10-19 → 2026-11-09 (+21d) | 2026-10-20 → 2026-11-10 (+21d) | 2d → 0d |
| SW-RTLN-1170 | Punch List & Corrections | 2026-10-21 → 2026-11-11 (+21d) | 2026-10-22 → 2026-11-12 (+21d) | 2d → 0d |
| SW-RTLN-1180 | Final Owner Punch List | 2026-10-23 → 2026-11-13 (+21d) | 2026-10-26 → 2026-11-16 (+21d) | 2d → 0d |
| Closeout | **Closeout** | 2026-06-12 → 2026-06-01 (-11d) | 2026-10-29 → 2026-11-17 (+19d) |  |
| Commisioning | **Commissioning** | 2026-08-11 → 2026-07-29 (-13d) | 2026-08-17 → 2026-08-04 (-13d) |  |
| CO-CM-1000 | Start-Up & Testing | 2026-08-11 → 2026-07-29 (-13d) | 2026-08-17 → 2026-08-04 (-13d) | 46d → 68d |
| Building Finals | **Building Finals** | 2026-06-12 → 2026-06-01 (-11d) | 2026-10-29 → 2026-11-17 (+19d) |  |
| CO-BF-1000 | Rough Fire Sprinkler Inspection | 2026-06-12 → 2026-06-01 (-11d) | 2026-06-12 → 2026-06-01 (-11d) | 91d → 113d |
| CO-BF-1010 | Final Fire Sprinkler Inspection | 2026-08-18 → 2026-08-05 (-13d) | 2026-08-18 → 2026-08-05 (-13d) | 46d → 68d |
| CO-BF-1020 | Electrical Final | 2026-08-19 → 2026-08-06 (-13d) | 2026-08-19 → 2026-08-06 (-13d) | 46d → 68d |
| CO-BF-1030 | Plumbing Final | 2026-08-20 → 2026-08-07 (-13d) | 2026-08-20 → 2026-08-07 (-13d) | 46d → 68d |
| CO-BF-1040 | Mechanical Final | 2026-08-21 → 2026-08-10 (-11d) | 2026-08-21 → 2026-08-10 (-11d) | 46d → 68d |
| CO-BF-1050 | Fire Alarm Final | 2026-08-24 → 2026-08-11 (-13d) | 2026-08-24 → 2026-08-11 (-13d) | 46d → 68d |
| CO-BF-1060 | Building Final | 2026-10-29 → 2026-11-17 (+19d) | 2026-10-29 → 2026-11-17 (+19d) |  |
| 2 | **Warranty Work** | 2026-10-30 → 2026-11-18 (+19d) | 2027-10-14 → 2027-11-02 (+19d) |  |
| WW-WARR-1000 | 1st Quarter HVAC Maintenance | 2026-10-30 → 2026-11-18 (+19d) | 2027-02-01 → 2027-02-18 (+17d) |  |
| WW-WARR-1010 | 1st Quarter Landscape Maintenance | 2026-10-30 → 2026-11-18 (+19d) | 2027-02-01 → 2027-02-18 (+17d) |  |
| WW-WARR-1020 | 11-Month Warranty Walk | 2026-10-30 → 2026-11-18 (+19d) | 2027-09-16 → 2027-10-05 (+19d) |  |
| WW-WARR-1030 | 2nd Quarter HVAC Maintenance | 2027-02-02 → 2027-02-19 (+17d) | 2027-04-26 → 2027-05-13 (+17d) |  |
| WW-WARR-1040 | 2nd Quarter Landscape Maintenance | 2027-02-02 → 2027-02-19 (+17d) | 2027-04-26 → 2027-05-13 (+17d) |  |
| WW-WARR-1050 | 3rd Quarter HVAC Maintenance | 2027-04-27 → 2027-05-14 (+17d) | 2027-07-21 → 2027-08-09 (+19d) |  |
| WW-WARR-1060 | 3rd Quarter Landscape Maintenance | 2027-04-27 → 2027-05-14 (+17d) | 2027-07-21 → 2027-08-09 (+19d) |  |
| WW-WARR-1070 | 4th Quarter HVAC Maintenance | 2027-07-22 → 2027-08-10 (+19d) | 2027-10-14 → 2027-11-02 (+19d) |  |
| WW-WARR-1080 | 4th Quarter Landscape Maintenance | 2027-07-22 → 2027-08-10 (+19d) | 2027-10-14 → 2027-11-02 (+19d) |  |
| 5 | **Weather Impacts** | 2026-10-30 → 2026-11-18 (+19d) | 2026-11-30 → 2026-12-17 (+17d) |  |
| WI-WTHR-1000 | Rain Days | 2026-10-30 → 2026-11-18 (+19d) | 2026-11-30 → 2026-12-17 (+17d) |  |

## Version 4 (data date 2025-12-01, saved 2025-12-08, file update_3.xer)

Note of the change: Add all project schedule files to buckets - 13 projects, MPP+XER, baseline+updates

Last finish 2027-11-02 → 2027-11-03 (+1d). Complete tasks 15 → 22.

Added:

| ID | Task | Duration | Start | Finish | Predecessors |
| --- | --- | --- | --- | --- | --- |
| *SU-STWK-1140 | Weather Delay 02 | 1d | 2025-11-25 A | 2025-11-25 A | *SU-STWK-1120 |

Changed:

| ID | Task | Start | Finish | Duration | Complete | Total float | Predecessors |
| --- | --- | --- | --- | --- | --- | --- | --- |
| PS-CMIL-1010 | Project Open | 2026-11-16 → 2026-11-17 (+1d) | 2026-11-16 → 2026-11-17 (+1d) |  |  |  |  |
| PS-CMIL-1150 | Project SC - Before Weather Impacts | 2026-11-17 → 2026-11-18 (+1d) | 2026-11-17 → 2026-11-18 (+1d) |  |  | 220d → 222d |  |
| PS-CMIL-1160 | Anticipated Remaining Weather Impacts | 2026-11-18 → 2026-11-19 (+1d) |  | 19d → 18d |  | 220d → 222d |  |
| 2 | **Construction Milestones** |  | 2026-10-12 → 2026-10-13 (+1d) |  |  |  |  |
| PS-CMIL-1180 | Building Permit Approval |  | 2025-11-06 → 2025-11-07 A (+1d) |  | 0% → 100% | 518d → none |  |
| PS-CMIL-1060 | Permit Approved | 2025-11-06 → 2025-11-07 A (+1d) | 2025-11-06 → 2025-11-07 A (+1d) |  | 0% → 100% | 498d → none |  |
| PS-CMIL-1080 | Start of Foundations | 2025-12-26 → 2025-12-29 (+3d) | 2025-12-26 → 2025-12-29 (+3d) |  |  |  |  |
| PS-CMIL-1090 | Start of Elevated Structure | 2026-01-26 → 2026-01-27 (+1d) | 2026-01-26 → 2026-01-27 (+1d) |  |  |  |  |
| PS-CMIL-1100 | Stair & Elevator Cores Complete to Roof | 2026-02-24 → 2026-02-25 (+1d) | 2026-02-24 → 2026-02-25 (+1d) |  |  |  |  |
| PS-CMIL-1120 | Structure Complete | 2026-05-22 → 2026-05-26 (+4d) | 2026-05-22 → 2026-05-26 (+4d) |  |  |  |  |
| PS-CMIL-1130 | Building Dry In | 2026-06-30 → 2026-07-01 (+1d) | 2026-06-30 → 2026-07-01 (+1d) |  |  |  |  |
| PS-CMIL-1110 | Exterior Work Complete | 2026-09-24 → 2026-09-25 (+1d) | 2026-09-24 → 2026-09-25 (+1d) |  |  |  |  |
| PS-CMIL-1140 | Landscape & Hardscape Complete | 2026-10-12 → 2026-10-13 (+1d) | 2026-10-12 → 2026-10-13 (+1d) |  |  |  |  |
| 4 | **Pre-Construction** |  | 2025-11-20 → 2025-12-19 (+29d) |  |  |  |  |
| 1 | **Procurement** |  | 2025-11-20 → 2025-12-19 (+29d) |  |  |  |  |
| PS-PROC-1010 | Elevator | 2025-10-31 → 2025-12-01 (+31d) | 2025-11-06 → 2025-12-05 (+29d) |  |  | 247d → 229d |  |
| PS-PROC-1020 | Electric Room MDP | 2025-11-07 → 2025-12-08 (+31d) | 2025-11-13 → 2025-12-12 (+29d) |  |  | 247d → 229d |  |
| PS-PROC-1030 | Owner's Enabling Work | 2025-11-14 → 2025-12-15 (+31d) | 2025-11-20 → 2025-12-19 (+29d) |  |  | 247d → 229d |  |
| 1 | **Construction** |  | 2026-11-16 → 2026-11-17 (+1d) |  |  |  |  |
| MOB | **Mobilization** |  | 2025-12-01 → 2025-12-08 (+7d) |  |  |  |  |
| CN-MOBL-1010 | Install Temp Fencing | 2025-11-20 → 2025-12-01 (+11d) | 2025-11-21 → 2025-12-02 (+11d) |  |  | 154d → 150d |  |
| CN-MOBL-1040 | Install Temp Power | 2025-11-24 → 2025-12-03 (+9d) | 2025-11-25 → 2025-12-04 (+9d) |  |  | 154d → 150d |  |
| CN-MOBL-1060 | Field Office MEP Hook-Up | 2025-11-26 → 2025-12-05 (+9d) | 2025-12-01 → 2025-12-08 (+7d) |  |  | 154d → 150d |  |
| Sitework | **Sitework & Utilities** |  | 2026-01-23 → 2026-01-26 (+3d) |  |  |  |  |
| SW | **Sitework** |  | 2026-01-23 → 2026-01-26 (+3d) |  |  |  |  |
| *SU-STWK-1110 | MTE Power Pole Relocation |  | 2025-11-10 → 2025-11-11 A (+1d) |  | 0% → 100% | 0d → none |  |
| SU-STWK-1020 | Building Pad Prep & Grading |  | 2025-11-06 → 2025-11-14 A (+8d) |  | 0% → 100% | 9d → none |  |
| *SU-STWK-1120 | Remaining Rock Removal & Building Pad Prep | 2025-11-11 → 2025-11-12 A (+1d) | 2025-11-19 → 2025-11-21 A (+2d) | 7d → 4d | 0% → 100% | 0d → none |  |
| SU-STWK-1030 | Building Layout & Staking | 2025-11-20 → 2025-11-26 A (+6d) | 2025-11-20 → 2025-11-26 A (+6d) |  | 0% → 100% | 0d → none |  |
| SU-STWK-1040 | Compact Subgrade | 2025-11-21 → 2025-11-26 A (+5d) | 2025-11-25 → 2025-12-01 (+6d) |  | 0% → 67% |  |  |
| SU-STWK-1050 | Install Stone Base | 2025-12-26 → 2025-12-29 (+3d) | 2025-12-30 → 2026-01-02 (+3d) |  |  |  | SU-STWK-1040, SU-SUTL-1050 → SU-STWK-1040, SU-SUTL-1050, SU-SUTL-1010 |
| SU-STWK-1060 | Install Prime Coat, Binder, & Tack Coat | 2026-01-02 → 2026-01-05 (+3d) | 2026-01-05 → 2026-01-06 (+1d) |  |  |  |  |
| SU-STWK-1070 | Install Asphalt (Wearing Course) | 2026-01-06 → 2026-01-07 (+1d) | 2026-01-06 → 2026-01-07 (+1d) |  |  |  |  |
| SU-STWK-1080 | Form & Reinforce Curb & Gutter | 2026-01-07 → 2026-01-08 (+1d) | 2026-01-13 → 2026-01-14 (+1d) |  |  |  |  |
| SU-STWK-1090 | Pour Curb & Gutter | 2026-01-14 → 2026-01-15 (+1d) | 2026-01-15 → 2026-01-16 (+1d) |  |  |  |  |
| SU-STWK-1100 | Rough Grade Site | 2026-01-16 → 2026-01-20 (+4d) | 2026-01-23 → 2026-01-26 (+3d) |  |  |  |  |
| SIte | **Site Utilities** | 2025-11-26 → 2025-12-01 (+5d) | 2025-12-23 → 2025-12-26 (+3d) |  |  |  |  |
| SU-SUTL-1000 | Cut, Cap, and Relocate Existing Utilities | 2025-11-26 → 2025-12-01 A (+5d) | 2025-12-04 → 2025-12-05 (+1d) |  | 0% → 20% |  |  |
| SU-SUTL-1020 | Install U.G. Sewer | 2025-12-10 → 2025-12-08 (-2d) | 2025-12-23 → 2025-12-19 (-4d) |  |  |  | SU-SUTL-1010 → SU-SUTL-1000 |
| SU-SUTL-1030 | Install U.G. Storm Drain | 2025-12-10 → 2025-12-08 (-2d) | 2025-12-23 → 2025-12-19 (-4d) |  |  |  |  |
| SU-SUTL-1040 | Install U.G. Electrical Duct Banks | 2025-12-10 → 2025-12-08 (-2d) | 2025-12-23 → 2025-12-19 (-4d) |  |  |  |  |
| SU-SUTL-1050 | Install U.G. Fire Water & Domestic | 2025-12-10 → 2025-12-08 (-2d) | 2025-12-23 → 2025-12-19 (-4d) |  |  |  |  |
| SU-SUTL-1010 | Install Irrigation Sleeves | 2025-12-05 → 2025-12-22 (+17d) | 2025-12-09 → 2025-12-26 (+17d) |  |  |  | SU-SUTL-1000 → SU-SUTL-1050 |
| 1 | **Foundation & Structural** | 2025-12-26 → 2025-12-29 (+3d) | 2026-05-22 → 2026-05-26 (+4d) |  |  |  |  |
| 1 | **Level 1** | 2025-12-26 → 2025-12-29 (+3d) | 2026-02-24 → 2026-02-25 (+1d) |  |  |  |  |
| FS-LVL1-1000 | Footings & Foundation CIP Walls (includes elevator pit) | 2025-12-26 → 2025-12-29 (+3d) | 2026-02-03 → 2026-02-04 (+1d) |  |  |  | SU-SUTL-1050, PS-CMIL-1060 → SU-SUTL-1050, PS-CMIL-1060, SU-SUTL-1010 |
| FS-LVL1-1010 | Underground MEPF Install (Pre-Pour) | 2026-01-06 → 2026-01-07 (+1d) | 2026-01-12 → 2026-01-13 (+1d) |  |  |  |  |
| FS-LVL1-1030 | Slab Prep & Pour (Pour A1) | 2026-01-13 → 2026-01-14 (+1d) | 2026-01-20 → 2026-01-21 (+1d) |  |  |  |  |
| FS-LVL1-1040 | Slab Prep & Pour (Pour A2) | 2026-01-21 → 2026-01-22 (+1d) | 2026-01-23 → 2026-01-26 (+3d) |  |  |  |  |
| FS-LVL1-1050 | Steel Erection (Colums & Beams) | 2026-01-26 → 2026-01-27 (+1d) | 2026-02-06 → 2026-02-09 (+3d) |  |  |  |  |
| FS-LVL1-1020 | Erect Stairs & Elevator Shafts (CMU Cores) | 2026-02-04 → 2026-02-05 (+1d) | 2026-02-24 → 2026-02-25 (+1d) |  |  |  |  |
| FS-LVL1-1060 | Fireproofing | 2026-02-09 → 2026-02-10 (+1d) | 2026-02-11 → 2026-02-12 (+1d) |  |  |  |  |
| 2 | **Level 2** | 2026-02-03 → 2026-02-04 (+1d) | 2026-03-11 → 2026-03-12 (+1d) |  |  |  |  |
| FS-LVL2-1000 | Install Metal Decking | 2026-02-03 → 2026-02-04 (+1d) | 2026-02-06 → 2026-02-09 (+3d) |  |  |  |  |
| FS-LVL2-1010 | MEPF Rough-In (Pre-Pour) | 2026-02-09 → 2026-02-10 (+1d) | 2026-02-13 → 2026-02-16 (+3d) |  |  |  |  |
| FS-LVL2-1020 | FRP Metal Deck Slab (Pour A1) | 2026-02-16 → 2026-02-17 (+1d) | 2026-02-20 → 2026-02-23 (+3d) |  |  |  |  |
| FS-LVL2-1030 | FRP Metal Deck Slab (Pour A2) | 2026-02-23 → 2026-02-24 (+1d) | 2026-02-25 → 2026-02-26 (+1d) |  |  |  |  |
| FS-LVL2-1040 | Layout & Erect Load Bearing Framing | 2026-02-26 → 2026-02-27 (+1d) | 2026-03-11 → 2026-03-12 (+1d) |  |  |  |  |
| 3 | **Level 3** | 2026-03-06 → 2026-03-09 (+3d) | 2026-04-13 → 2026-04-14 (+1d) |  |  |  |  |
| FS-LVL3-1000 | Install Metal Decking | 2026-03-06 → 2026-03-09 (+3d) | 2026-03-11 → 2026-03-12 (+1d) |  |  |  |  |
| FS-LVL3-1010 | MEPF Rough-In (Pre-Pour) | 2026-03-12 → 2026-03-13 (+1d) | 2026-03-18 → 2026-03-19 (+1d) |  |  |  |  |
| FS-LVL3-1020 | FRP Metal Deck Slab (Pour A1) | 2026-03-19 → 2026-03-20 (+1d) | 2026-03-25 → 2026-03-26 (+1d) |  |  |  |  |
| FS-LVL3-1030 | FRP Metal Deck Slab (Pour A2) | 2026-03-26 → 2026-03-27 (+1d) | 2026-03-30 → 2026-03-31 (+1d) |  |  |  |  |
| FS-LVL3-1040 | Layout & Erect Load Bearing Framing | 2026-03-31 → 2026-04-01 (+1d) | 2026-04-13 → 2026-04-14 (+1d) |  |  |  |  |
| 5 | **Level 4** | 2026-04-08 → 2026-04-09 (+1d) | 2026-05-14 → 2026-05-15 (+1d) |  |  |  |  |
| FS-LVL4-1000 | Install Metal Decking | 2026-04-08 → 2026-04-09 (+1d) | 2026-04-13 → 2026-04-14 (+1d) |  |  |  |  |
| FS-LVL4-1010 | MEPF Rough-In (Pre-Pour) | 2026-04-14 → 2026-04-15 (+1d) | 2026-04-20 → 2026-04-21 (+1d) |  |  |  |  |
| FS-LVL4-1020 | FRP Metal Deck Slab (Pour A1) | 2026-04-21 → 2026-04-22 (+1d) | 2026-04-27 → 2026-04-28 (+1d) |  |  |  |  |
| FS-LVL4-1030 | FRP Metal Deck Slab (Pour A2) | 2026-04-28 → 2026-04-29 (+1d) | 2026-04-30 → 2026-05-01 (+1d) |  |  |  |  |
| FS-LVL4-1040 | Layout & Erect Load Bearing Framing | 2026-05-01 → 2026-05-04 (+3d) | 2026-05-14 → 2026-05-15 (+1d) |  |  |  |  |

| ID | Task | Start | Finish |
| --- | --- | --- | --- |
| 4 | **Roof** | 2026-05-11 → 2026-05-12 (+1d) | 2026-05-22 → 2026-05-26 (+4d) |
| FS-ROOF-1000 | Install Metal Decking | 2026-05-11 → 2026-05-12 (+1d) | 2026-05-14 → 2026-05-15 (+1d) |
| FS-ROOF-1010 | MEPF Rough-In (Stubups) | 2026-05-15 → 2026-05-18 (+3d) | 2026-05-19 → 2026-05-20 (+1d) |
| FS-ROOF-1020 | Layout & Frame Parapets | 2026-05-20 → 2026-05-21 (+1d) | 2026-05-22 → 2026-05-26 (+4d) |
| 2 | **Envelope & Exterior** | 2026-05-01 → 2026-05-04 (+3d) | 2026-10-06 → 2026-10-07 (+1d) |
| 0 | **North Elevation** | 2026-05-01 → 2026-05-04 (+3d) | 2026-08-21 → 2026-08-24 (+3d) |
| EE-NRTH-1000 | Layout & Exterior Framing (Level 1) | 2026-05-01 → 2026-05-04 (+3d) | 2026-05-07 → 2026-05-08 (+1d) |
| EE-NRTH-1010 | City Inspection (Rough Framing) | 2026-05-08 → 2026-05-11 (+3d) | 2026-05-08 → 2026-05-11 (+3d) |
| EE-NRTH-1020 | Electrical Rough-In | 2026-05-26 → 2026-05-27 (+1d) | 2026-06-01 → 2026-06-02 (+1d) |
| EE-NRTH-1030 | City Inspection (Electrical) | 2026-06-02 → 2026-06-03 (+1d) | 2026-06-02 → 2026-06-03 (+1d) |
| EE-NRTH-1040 | Install Exterior Sheathing | 2026-06-03 → 2026-06-04 (+1d) | 2026-06-09 → 2026-06-10 (+1d) |
| EE-NRTH-1050 | City Inspection (Screw Inspection) | 2026-06-10 → 2026-06-11 (+1d) | 2026-06-10 → 2026-06-11 (+1d) |
| EE-NRTH-1060 | Weather Barrier & Flashing | 2026-06-11 → 2026-06-12 (+1d) | 2026-06-17 → 2026-06-18 (+1d) |
| EE-NRTH-1070 | Install Rigid Insulation | 2026-06-18 → 2026-06-19 (+1d) | 2026-06-24 → 2026-06-25 (+1d) |
| EE-NRTH-1080 | Storefront, Windows & Metals | 2026-06-25 → 2026-06-26 (+1d) | 2026-06-29 → 2026-06-30 (+1d) |
| EE-NRTH-1090 | Install Brick Veneer | 2026-06-30 → 2026-07-01 (+1d) | 2026-07-21 → 2026-07-22 (+1d) |
| EE-NRTH-1100 | Install Canopies & Trim | 2026-07-22 → 2026-07-23 (+1d) | 2026-07-24 → 2026-07-27 (+3d) |
| EE-NRTH-1110 | Install Lighting Fixtures | 2026-07-27 → 2026-07-28 (+1d) | 2026-07-29 → 2026-07-30 (+1d) |
| EE-NRTH-1120 | Install Signage | 2026-07-30 → 2026-07-31 (+1d) | 2026-07-30 → 2026-07-31 (+1d) |
| EE-NRTH-1130 | Install Doors & Hardware | 2026-07-31 → 2026-08-03 (+3d) | 2026-08-03 → 2026-08-04 (+1d) |
| EE-NRTH-1140 | Install Downspouts | 2026-08-04 → 2026-08-05 (+1d) | 2026-08-04 → 2026-08-05 (+1d) |
| EE-NRTH-1150 | Final Paint | 2026-08-05 → 2026-08-06 (+1d) | 2026-08-07 → 2026-08-10 (+3d) |
| EE-NRTH-1160 | Punch List & Corrections | 2026-08-10 → 2026-08-11 (+1d) | 2026-08-14 → 2026-08-17 (+3d) |
| EE-NRTH-1170 | Final Owner Walk (Punch List & Corrections) | 2026-08-17 → 2026-08-18 (+1d) | 2026-08-21 → 2026-08-24 (+3d) |
| 2 | **East Elevation** | 2026-05-08 → 2026-05-11 (+3d) | 2026-08-26 → 2026-08-27 (+1d) |
| EE-EAST-1000 | Layout & Exterior Framing (Level 1) | 2026-05-08 → 2026-05-11 (+3d) | 2026-05-14 → 2026-05-15 (+1d) |
| EE-EAST-1010 | City Inspection (Rough Framing) | 2026-05-15 → 2026-05-18 (+3d) | 2026-05-15 → 2026-05-18 (+3d) |
| EE-EAST-1020 | Electrical Rough-In | 2026-06-02 → 2026-06-03 (+1d) | 2026-06-08 → 2026-06-09 (+1d) |
| EE-EAST-1030 | City Inspection (Electrical) | 2026-06-09 → 2026-06-10 (+1d) | 2026-06-09 → 2026-06-10 (+1d) |
| EE-EAST-1040 | Install Exterior Sheathing | 2026-06-10 → 2026-06-11 (+1d) | 2026-06-16 → 2026-06-17 (+1d) |
| EE-EAST-1050 | City Inspection (Screw Inspection) | 2026-06-17 → 2026-06-18 (+1d) | 2026-06-17 → 2026-06-18 (+1d) |
| EE-EAST-1060 | Weather Barrier & Flashing | 2026-06-18 → 2026-06-19 (+1d) | 2026-06-24 → 2026-06-25 (+1d) |
| EE-EAST-1070 | Install Rigid Insulation | 2026-06-25 → 2026-06-26 (+1d) | 2026-07-01 → 2026-07-02 (+1d) |
| EE-EAST-1080 | Install Windows & Metals | 2026-07-02 → 2026-07-06 (+4d) | 2026-07-07 → 2026-07-08 (+1d) |
| EE-EAST-1090 | Install Brick Veneer | 2026-07-22 → 2026-07-23 (+1d) | 2026-08-11 → 2026-08-12 (+1d) |
| EE-EAST-1100 | Install Signage | 2026-08-12 → 2026-08-13 (+1d) | 2026-08-12 → 2026-08-13 (+1d) |
| EE-EAST-1110 | Punch List & Corrections | 2026-08-13 → 2026-08-14 (+1d) | 2026-08-19 → 2026-08-20 (+1d) |
| EE-EAST-1120 | Final Owner Walk (Punch List & Corrections) | 2026-08-20 → 2026-08-21 (+1d) | 2026-08-26 → 2026-08-27 (+1d) |
| 5 | **South Elevation** | 2026-05-15 → 2026-05-18 (+3d) | 2026-09-24 → 2026-09-25 (+1d) |
| EE-SOTH-1000 | Layout & Exterior Framing (Level 1) | 2026-05-15 → 2026-05-18 (+3d) | 2026-05-21 → 2026-05-22 (+1d) |
| EE-SOTH-1010 | City Inspection (Rough Framing) | 2026-05-22 → 2026-05-26 (+4d) | 2026-05-22 → 2026-05-26 (+4d) |
| EE-SOTH-1020 | Electrical Rough-In | 2026-06-09 → 2026-06-10 (+1d) | 2026-06-15 → 2026-06-16 (+1d) |
| EE-SOTH-1030 | City Inspection (Electrical) | 2026-06-16 → 2026-06-17 (+1d) | 2026-06-16 → 2026-06-17 (+1d) |
| EE-SOTH-1040 | Install Exterior Sheathing | 2026-06-17 → 2026-06-18 (+1d) | 2026-06-23 → 2026-06-24 (+1d) |
| EE-SOTH-1050 | City Inspection (Screw Inspection) | 2026-06-24 → 2026-06-25 (+1d) | 2026-06-24 → 2026-06-25 (+1d) |
| EE-SOTH-1060 | Weather Barrier & Flashing | 2026-06-25 → 2026-06-26 (+1d) | 2026-07-01 → 2026-07-02 (+1d) |
| EE-SOTH-1070 | Install Rigid Insulation | 2026-07-02 → 2026-07-06 (+4d) | 2026-07-09 → 2026-07-10 (+1d) |
| EE-SOTH-1080 | Install Brick Veneer | 2026-08-12 → 2026-08-13 (+1d) | 2026-09-01 → 2026-09-02 (+1d) |
| EE-SOTH-1090 | Install Signage | 2026-09-02 → 2026-09-03 (+1d) | 2026-09-02 → 2026-09-03 (+1d) |
| EE-SOTH-1100 | Install Doors & Hardware | 2026-09-03 → 2026-09-04 (+1d) | 2026-09-03 → 2026-09-04 (+1d) |
| EE-SOTH-1110 | Install Downspouts | 2026-09-04 → 2026-09-08 (+4d) | 2026-09-08 → 2026-09-09 (+1d) |
| EE-SOTH-1120 | Final Paint | 2026-09-09 → 2026-09-10 (+1d) | 2026-09-10 → 2026-09-11 (+1d) |
| EE-SOTH-1130 | Punch List & Corrections | 2026-09-11 → 2026-09-14 (+3d) | 2026-09-17 → 2026-09-18 (+1d) |
| EE-SOTH-1140 | Final Owner Walk (Punch List & Corrections) | 2026-09-18 → 2026-09-21 (+3d) | 2026-09-24 → 2026-09-25 (+1d) |
| 1 | **West Elevation** | 2026-05-22 → 2026-05-26 (+4d) | 2026-10-06 → 2026-10-07 (+1d) |
| EE-WEST-1000 | Layout & Exterior Framing (Level 1) | 2026-05-22 → 2026-05-26 (+4d) | 2026-05-29 → 2026-06-01 (+3d) |
| EE-WEST-1010 | City Inspection (Rough Framing) | 2026-06-01 → 2026-06-02 (+1d) | 2026-06-01 → 2026-06-02 (+1d) |
| EE-WEST-1020 | Electrical Rough-In | 2026-06-16 → 2026-06-17 (+1d) | 2026-06-22 → 2026-06-23 (+1d) |
| EE-WEST-1030 | City Inspection (Electrical) | 2026-06-23 → 2026-06-24 (+1d) | 2026-06-23 → 2026-06-24 (+1d) |
| EE-WEST-1040 | Install Exterior Sheathing | 2026-06-24 → 2026-06-25 (+1d) | 2026-06-30 → 2026-07-01 (+1d) |
| EE-WEST-1050 | City Inspection (Screw Inspection) | 2026-07-01 → 2026-07-02 (+1d) | 2026-07-01 → 2026-07-02 (+1d) |
| EE-WEST-1060 | Weather Barrier & Flashing | 2026-07-02 → 2026-07-06 (+4d) | 2026-07-09 → 2026-07-10 (+1d) |
| EE-WEST-1070 | Install Rigid Insulation | 2026-07-10 → 2026-07-13 (+3d) | 2026-07-16 → 2026-07-17 (+1d) |
| EE-WEST-1080 | Install Windows & Metals | 2026-07-17 → 2026-07-20 (+3d) | 2026-07-21 → 2026-07-22 (+1d) |
| EE-WEST-1090 | Install Brick Veneer | 2026-09-02 → 2026-09-03 (+1d) | 2026-09-23 → 2026-09-24 (+1d) |
| EE-WEST-1100 | Install Signage | 2026-09-24 → 2026-09-25 (+1d) | 2026-09-24 → 2026-09-25 (+1d) |
| EE-WEST-1110 | Punch List & Corrections | 2026-09-25 → 2026-09-28 (+3d) | 2026-10-01 → 2026-10-02 (+1d) |
| EE-WEST-1120 | Final Owner Walk (Punch List & Corrections) | 2026-10-02 → 2026-10-05 (+3d) | 2026-10-06 → 2026-10-07 (+1d) |
| 3 | **Roof** | 2026-05-26 → 2026-05-27 (+1d) | 2026-09-03 → 2026-09-04 (+1d) |
| EE-ROOF-1000 | Clean & Prep Metal Deck | 2026-05-26 → 2026-05-27 (+1d) | 2026-05-27 → 2026-05-28 (+1d) |

| ID | Task | Start | Finish | Total float | Predecessors |
| --- | --- | --- | --- | --- | --- |
| EE-ROOF-1010 | Stage Materials & Solar Rails (Crane) | 2026-05-28 → 2026-05-29 (+1d) | 2026-05-28 → 2026-05-29 (+1d) |  |  |
| EE-ROOF-1020 | Layout for Penetrations, Curb Blocking, Edge Metal | 2026-05-29 → 2026-06-01 (+3d) | 2026-06-01 → 2026-06-02 (+1d) |  |  |
| EE-ROOF-1030 | Install Blocking & Equipment Curbs | 2026-06-02 → 2026-06-03 (+1d) | 2026-06-04 → 2026-06-05 (+1d) |  |  |
| EE-ROOF-1040 | Install Rigid Insulation | 2026-06-05 → 2026-06-08 (+3d) | 2026-06-10 → 2026-06-11 (+1d) |  |  |
| EE-ROOF-1050 | Install Cover Board | 2026-06-11 → 2026-06-12 (+1d) | 2026-06-16 → 2026-06-17 (+1d) |  |  |
| EE-ROOF-1060 | Install TPO Roofing System (incl. boots, termination bars) | 2026-06-17 → 2026-06-18 (+1d) | 2026-06-30 → 2026-07-01 (+1d) |  |  |
| EE-ROOF-1070 | Install Edge Metal, Coping, Trim | 2026-07-01 → 2026-07-02 (+1d) | 2026-07-08 → 2026-07-09 (+1d) |  |  |
| EE-ROOF-1080 | Install Roof Drains, Vents, Mechanical Curbs | 2026-07-09 → 2026-07-10 (+1d) | 2026-07-15 → 2026-07-16 (+1d) |  |  |
| EE-ROOF-1090 | Install Electrical Conduit & Roof Mounted Boxes | 2026-07-16 → 2026-07-17 (+1d) | 2026-07-22 → 2026-07-23 (+1d) |  |  |
| EE-ROOF-1140 | Set Rooftop Units (RTU's & Splits) | 2026-07-16 → 2026-07-17 (+1d) | 2026-07-16 → 2026-07-17 (+1d) |  |  |
| EE-ROOF-1150 | Install Duct/Condensate/Vent Tie-Ins & Flashing | 2026-07-17 → 2026-07-20 (+3d) | 2026-07-21 → 2026-07-22 (+1d) |  |  |
| EE-ROOF-1160 | Startup/Controls/Balancing Prep | 2026-07-22 → 2026-07-23 (+1d) | 2026-07-24 → 2026-07-27 (+3d) |  |  |
| EE-ROOF-1100 | Install Solar Mounting Rails & Racking | 2026-07-23 → 2026-07-24 (+1d) | 2026-07-27 → 2026-07-28 (+1d) |  |  |
| EE-ROOF-1170 | Water Test / Leak Test | 2026-07-27 → 2026-07-28 (+1d) | 2026-07-27 → 2026-07-28 (+1d) |  |  |
| EE-ROOF-1110 | Mount Solar Panels | 2026-07-28 → 2026-07-29 (+1d) | 2026-08-17 → 2026-08-18 (+1d) |  |  |
| EE-ROOF-1180 | Roof Patches (If Any) | 2026-07-28 → 2026-07-29 (+1d) | 2026-07-28 → 2026-07-29 (+1d) |  |  |
| EE-ROOF-1190 | Punch List & Corrections | 2026-07-29 → 2026-07-30 (+1d) | 2026-07-31 → 2026-08-03 (+3d) |  |  |
| EE-ROOF-1120 | Run Electrical Conduit & Inverters to Roof | 2026-08-18 → 2026-08-19 (+1d) | 2026-08-24 → 2026-08-25 (+1d) |  |  |
| EE-ROOF-1130 | Final Electrical Tie-In (Solar Panels) | 2026-08-25 → 2026-08-26 (+1d) | 2026-08-31 → 2026-09-01 (+1d) |  |  |
| EE-ROOF-1200 | Final Owner Walk (Punch List & Corrections) | 2026-09-01 → 2026-09-02 (+1d) | 2026-09-03 → 2026-09-04 (+1d) |  |  |
| 3 | **Interior Build-Out** | 2026-02-25 → 2026-02-26 (+1d) | 2026-10-08 → 2026-10-09 (+1d) |  |  |
| Level 2 Interior | **Level 2 Interior** | 2026-07-01 → 2026-07-02 (+1d) | 2026-08-18 → 2026-08-19 (+1d) |  |  |
| IB-L2IN-1000 | Layout & Framing (incl. backing, door frames) | 2026-07-01 → 2026-07-02 (+1d) | 2026-07-08 → 2026-07-09 (+1d) |  |  |
| IB-L2IN-1010 | Electrical Rough-In | 2026-07-09 → 2026-07-10 (+1d) | 2026-07-15 → 2026-07-16 (+1d) |  |  |
| IB-L2IN-1020 | Mechanical Rough-In | 2026-07-09 → 2026-07-10 (+1d) | 2026-07-15 → 2026-07-16 (+1d) |  |  |
| IB-L2IN-1030 | Plumbing Rough-In | 2026-07-09 → 2026-07-10 (+1d) | 2026-07-15 → 2026-07-16 (+1d) |  |  |
| IB-L2IN-1040 | Fire Supression Rough-In | 2026-07-09 → 2026-07-10 (+1d) | 2026-07-15 → 2026-07-16 (+1d) |  |  |
| IB-L2IN-1050 | Install Insulation | 2026-07-16 → 2026-07-17 (+1d) | 2026-07-17 → 2026-07-20 (+3d) |  |  |
| IB-L2IN-1060 | Install Drywall | 2026-07-20 → 2026-07-21 (+1d) | 2026-07-23 → 2026-07-24 (+1d) |  |  |
| IB-L2IN-1070 | Tape & Mud Drywall | 2026-07-24 → 2026-07-27 (+3d) | 2026-07-30 → 2026-07-31 (+1d) |  |  |
| IB-L2IN-1080 | Prep & Paint | 2026-07-31 → 2026-08-03 (+3d) | 2026-08-04 → 2026-08-05 (+1d) |  |  |
| IB-L2IN-1090 | MEPF Trim-Out | 2026-08-05 → 2026-08-06 (+1d) | 2026-08-11 → 2026-08-12 (+1d) |  |  |
| IB-L2IN-1100 | Install Storage Doors & Hardware | 2026-08-12 → 2026-08-13 (+1d) | 2026-08-18 → 2026-08-19 (+1d) |  |  |
| 3 | **Level 3 Interior** | 2026-07-09 → 2026-07-10 (+1d) | 2026-08-25 → 2026-08-26 (+1d) |  |  |
| IB-L3IN-1000 | Layout & Framing (incl. backing, door frames) | 2026-07-09 → 2026-07-10 (+1d) | 2026-07-15 → 2026-07-16 (+1d) | 58d → 36d |  |
| IB-L3IN-1010 | Electrical Rough-In | 2026-07-16 → 2026-07-17 (+1d) | 2026-07-22 → 2026-07-23 (+1d) |  |  |
| IB-L3IN-1020 | Mechanical Rough-In | 2026-07-16 → 2026-07-17 (+1d) | 2026-07-22 → 2026-07-23 (+1d) |  |  |
| IB-L3IN-1030 | Plumbing Rough-In | 2026-07-16 → 2026-07-17 (+1d) | 2026-07-22 → 2026-07-23 (+1d) |  |  |
| IB-L3IN-1040 | Fire Supression Rough-In | 2026-07-16 → 2026-07-17 (+1d) | 2026-07-22 → 2026-07-23 (+1d) |  |  |
| IB-L3IN-1050 | Install Insulation | 2026-07-23 → 2026-07-24 (+1d) | 2026-07-24 → 2026-07-27 (+3d) |  |  |
| IB-L3IN-1060 | Install Drywall | 2026-07-27 → 2026-07-28 (+1d) | 2026-07-30 → 2026-07-31 (+1d) |  |  |
| IB-L3IN-1070 | Tape & Mud Drywall | 2026-07-31 → 2026-08-03 (+3d) | 2026-08-06 → 2026-08-07 (+1d) |  |  |
| IB-L3IN-1080 | Prep & Paint | 2026-08-07 → 2026-08-10 (+3d) | 2026-08-11 → 2026-08-12 (+1d) |  |  |
| IB-L3IN-1090 | MEPF Trim-Out | 2026-08-12 → 2026-08-13 (+1d) | 2026-08-18 → 2026-08-19 (+1d) |  |  |
| IB-L3IN-1100 | Install Storage Doors & Hardware | 2026-08-19 → 2026-08-20 (+1d) | 2026-08-25 → 2026-08-26 (+1d) |  |  |
| 1 | **Unisex Restroom** | 2026-07-16 → 2026-07-17 (+1d) | 2026-08-14 → 2026-08-17 (+3d) |  |  |
| IB-L3UN-1000 | Framing (Metal Studs, Blocking) | 2026-07-16 → 2026-07-17 (+1d) | 2026-07-20 → 2026-07-21 (+1d) |  |  |
| IB-L3UN-1010 | MEPF Rough-In | 2026-07-21 → 2026-07-22 (+1d) | 2026-07-23 → 2026-07-24 (+1d) |  |  |
| IB-L3UN-1020 | City Inspection (Framing & MEPF Rough) | 2026-07-24 → 2026-07-27 (+3d) | 2026-07-24 → 2026-07-27 (+3d) |  |  |
| IB-L3UN-1030 | Install Insulation | 2026-07-27 → 2026-07-28 (+1d) | 2026-07-27 → 2026-07-28 (+1d) |  |  |
| IB-L3UN-1040 | Install Drywall | 2026-07-28 → 2026-07-29 (+1d) | 2026-07-29 → 2026-07-30 (+1d) |  |  |
| IB-L3UN-1050 | Tape & Mud Drywall | 2026-07-30 → 2026-07-31 (+1d) | 2026-08-03 → 2026-08-04 (+1d) |  |  |
| IB-L3UN-1060 | Painting | 2026-08-04 → 2026-08-05 (+1d) | 2026-08-05 → 2026-08-06 (+1d) |  |  |
| IB-L3UN-1070 | Install Restroom Fixtures & Partitions | 2026-08-06 → 2026-08-07 (+1d) | 2026-08-07 → 2026-08-10 (+3d) |  |  |
| IB-L3UN-1080 | Install Accessories (Grab Bars, Mirrors, Signs) | 2026-08-10 → 2026-08-11 (+1d) | 2026-08-11 → 2026-08-12 (+1d) |  |  |
| IB-L3UN-1090 | Final MEP Trim-Out | 2026-08-12 → 2026-08-13 (+1d) | 2026-08-13 → 2026-08-14 (+1d) |  |  |
| IB-L3UN-1100 | Final Clean | 2026-08-14 → 2026-08-17 (+3d) | 2026-08-14 → 2026-08-17 (+3d) |  |  |
| 5 | **Level 4 Interior** | 2026-05-15 → 2026-07-17 (+63d) | 2026-08-04 → 2026-09-02 (+29d) |  |  |
| IB-L4IN-1000 | Layout & Framing (incl. backing, door frames) | 2026-05-15 → 2026-07-17 (+63d) | 2026-05-21 → 2026-07-23 (+63d) | 90d → 36d | FS-ROOF-1000 → FS-ROOF-1000, IB-L3IN-1000 |
| IB-L4IN-1010 | Electrical Rough-In | 2026-05-22 → 2026-07-24 (+63d) | 2026-05-29 → 2026-07-30 (+62d) | 90d → 48d |  |
| IB-L4IN-1020 | Mechanical Rough-In | 2026-05-22 → 2026-07-24 (+63d) | 2026-05-29 → 2026-07-30 (+62d) | 90d → 48d |  |
| IB-L4IN-1030 | Plumbing Rough-In | 2026-05-22 → 2026-07-24 (+63d) | 2026-05-29 → 2026-07-30 (+62d) | 90d → 48d |  |
| IB-L4IN-1040 | Fire Supression Rough-In | 2026-05-22 → 2026-07-24 (+63d) | 2026-05-29 → 2026-07-30 (+62d) | 90d → 48d |  |
| IB-L4IN-1050 | Install Insulation | 2026-07-01 → 2026-07-31 (+30d) | 2026-07-02 → 2026-08-03 (+32d) | 68d → 48d |  |
| IB-L4IN-1060 | Install Drywall | 2026-07-06 → 2026-08-04 (+29d) | 2026-07-09 → 2026-08-07 (+29d) | 68d → 48d |  |
| IB-L4IN-1070 | Tape & Mud Drywall | 2026-07-10 → 2026-08-10 (+31d) | 2026-07-16 → 2026-08-14 (+29d) | 68d → 48d |  |
| IB-L4IN-1080 | Prep & Paint | 2026-07-17 → 2026-08-17 (+31d) | 2026-07-21 → 2026-08-19 (+29d) | 68d → 48d |  |
| IB-L4IN-1090 | MEPF Trim-Out | 2026-07-22 → 2026-08-20 (+29d) | 2026-07-28 → 2026-08-26 (+29d) | 68d → 48d |  |
| IB-L4IN-1100 | Install Storage Doors & Hardware | 2026-07-29 → 2026-08-27 (+29d) | 2026-08-04 → 2026-09-02 (+29d) | 73d → 53d |  |
| Level 1 Interior | **Level 1 Interior** | 2026-07-01 → 2026-07-24 (+23d) | 2026-08-21 → 2026-09-15 (+25d) |  |  |

| ID | Task | Start | Finish | Total float | Predecessors |
| --- | --- | --- | --- | --- | --- |
| IB-L1IN-1000 | Layout & Framing (incl. backing, door frames) | 2026-07-01 → 2026-07-24 (+23d) | 2026-07-08 → 2026-07-30 (+22d) | 51d → 36d | EE-ROOF-1060 → EE-ROOF-1060, IB-L4IN-1000 |
| IB-L1IN-1010 | Electrical Rough-In | 2026-07-09 → 2026-07-31 (+22d) | 2026-07-15 → 2026-08-06 (+22d) | 63d → 48d |  |
| IB-L1IN-1020 | Mechanical Rough-In | 2026-07-09 → 2026-07-31 (+22d) | 2026-07-15 → 2026-08-06 (+22d) | 63d → 48d |  |
| IB-L1IN-1030 | Plumbing Rough-In | 2026-07-09 → 2026-07-31 (+22d) | 2026-07-15 → 2026-08-06 (+22d) | 63d → 48d |  |
| IB-L1IN-1040 | Fire Supression Rough-In | 2026-07-09 → 2026-07-31 (+22d) | 2026-07-15 → 2026-08-06 (+22d) | 63d → 48d |  |
| IB-L1IN-1050 | Install Insulation | 2026-07-16 → 2026-08-07 (+22d) | 2026-07-17 → 2026-08-10 (+24d) | 63d → 48d |  |
| IB-L1IN-1060 | Install Drywall | 2026-07-20 → 2026-08-11 (+22d) | 2026-07-23 → 2026-08-14 (+22d) | 63d → 48d |  |
| IB-L1IN-1070 | Tape & Mud Drywall | 2026-07-24 → 2026-08-17 (+24d) | 2026-07-30 → 2026-08-21 (+22d) | 63d → 48d |  |
| IB-L1IN-1080 | Prep & Paint | 2026-07-31 → 2026-08-24 (+24d) | 2026-08-04 → 2026-08-26 (+22d) | 63d → 48d |  |
| IB-L1IN-1090 | MEPF Trim-Out | 2026-08-05 → 2026-08-27 (+22d) | 2026-08-11 → 2026-09-02 (+22d) | 63d → 48d |  |
| IB-L1IN-1100 | Install Storage Doors & Hardware | 2026-08-12 → 2026-09-03 (+22d) | 2026-08-18 → 2026-09-10 (+23d) | 63d → 48d |  |
| 1 | **Restrooms (Mens & Womens)** | 2026-07-09 → 2026-07-31 (+22d) | 2026-08-07 → 2026-08-31 (+24d) |  |  |
| IB-L1RR-1000 | Framing (Metal Studs, Blocking) | 2026-07-09 → 2026-07-31 (+22d) | 2026-07-13 → 2026-08-04 (+22d) | 51d → 36d |  |
| IB-L1RR-1010 | MEPF Rough-In | 2026-07-14 → 2026-08-05 (+22d) | 2026-07-16 → 2026-08-07 (+22d) | 70d → 55d |  |
| IB-L1RR-1020 | City Inspection (Framing & MEPF Rough) | 2026-07-17 → 2026-08-10 (+24d) | 2026-07-17 → 2026-08-10 (+24d) | 70d → 55d |  |
| IB-L1RR-1030 | Install Insulation | 2026-07-20 → 2026-08-11 (+22d) | 2026-07-20 → 2026-08-11 (+22d) | 70d → 55d |  |
| IB-L1RR-1040 | Install Drywall | 2026-07-21 → 2026-08-12 (+22d) | 2026-07-22 → 2026-08-13 (+22d) | 70d → 55d |  |
| IB-L1RR-1050 | Tape & Mud Drywall | 2026-07-23 → 2026-08-14 (+22d) | 2026-07-27 → 2026-08-18 (+22d) | 70d → 55d |  |
| IB-L1RR-1060 | Painting | 2026-07-28 → 2026-08-19 (+22d) | 2026-07-29 → 2026-08-20 (+22d) | 70d → 55d |  |
| IB-L1RR-1070 | Install Restroom Fixtures & Partitions | 2026-07-30 → 2026-08-21 (+22d) | 2026-07-31 → 2026-08-24 (+24d) | 70d → 55d |  |
| IB-L1RR-1080 | Install Accessories (Grab Bars, Mirrors, Signs) | 2026-08-03 → 2026-08-25 (+22d) | 2026-08-04 → 2026-08-26 (+22d) | 70d → 55d |  |
| IB-L1RR-1090 | Final MEP Trim-Out | 2026-08-05 → 2026-08-27 (+22d) | 2026-08-06 → 2026-08-28 (+22d) | 70d → 55d |  |
| IB-L1RR-1100 | Final Clean | 2026-08-07 → 2026-08-31 (+24d) | 2026-08-07 → 2026-08-31 (+24d) | 70d → 55d |  |
| 2 | **Management Spaces (Rental Office, Storage, Break Room)** | 2026-07-14 → 2026-08-05 (+22d) | 2026-08-21 → 2026-09-15 (+25d) |  |  |
| IB-L1M\S-1000 | Layout & Framing (incl. backing, door frames) | 2026-07-14 → 2026-08-05 (+22d) | 2026-07-16 → 2026-08-07 (+22d) | 51d → 36d |  |
| IB-L1M\S-1010 | MEPF Rough-In | 2026-07-17 → 2026-08-10 (+24d) | 2026-07-21 → 2026-08-12 (+22d) | 57d → 42d |  |
| IB-L1M\S-1020 | City Inspection (Framing & MEPF) | 2026-07-22 → 2026-08-13 (+22d) | 2026-07-22 → 2026-08-13 (+22d) | 57d → 42d |  |
| IB-L1M\S-1030 | Install Insulation | 2026-07-23 → 2026-08-14 (+22d) | 2026-07-24 → 2026-08-17 (+24d) | 57d → 42d |  |
| IB-L1M\S-1040 | Install Drywall | 2026-07-27 → 2026-08-18 (+22d) | 2026-07-28 → 2026-08-19 (+22d) | 57d → 42d |  |
| IB-L1M\S-1050 | Tape & Mud Drywall | 2026-07-29 → 2026-08-20 (+22d) | 2026-07-31 → 2026-08-24 (+24d) | 57d → 42d |  |
| IB-L1M\S-1060 | Painting | 2026-08-03 → 2026-08-25 (+22d) | 2026-08-05 → 2026-08-27 (+22d) | 57d → 42d |  |
| IB-L1M\S-1070 | Install Ceiling Grid (Break Room) | 2026-08-06 → 2026-08-28 (+22d) | 2026-08-06 → 2026-08-28 (+22d) | 60d → 45d |  |
| IB-L1M\S-1080 | Install Base Trim | 2026-08-07 → 2026-08-31 (+24d) | 2026-08-07 → 2026-08-31 (+24d) | 60d → 45d |  |
| IB-L1M\S-1090 | Install Cabinets & Countertops (Break Room & Office) | 2026-08-10 → 2026-09-01 (+22d) | 2026-08-12 → 2026-09-03 (+22d) | 60d → 45d |  |
| IB-L1M\S-1100 | Install Sink & Faucests (Break Room) | 2026-08-13 → 2026-09-04 (+22d) | 2026-08-13 → 2026-09-04 (+22d) | 60d → 45d |  |
| IB-L1M\S-1110 | Appliances (Microwave & Fridge) | 2026-08-14 → 2026-09-08 (+25d) | 2026-08-14 → 2026-09-08 (+25d) | 60d → 45d |  |
| IB-L1M\S-1120 | Interior Signage | 2026-08-17 → 2026-09-09 (+23d) | 2026-08-17 → 2026-09-09 (+23d) | 60d → 45d |  |
| IB-L1M\S-1130 | MEPF Trim-Out | 2026-08-18 → 2026-09-10 (+23d) | 2026-08-20 → 2026-09-14 (+25d) | 60d → 45d |  |
| IB-L1M\S-1140 | Final Clean | 2026-08-21 → 2026-09-15 (+25d) | 2026-08-21 → 2026-09-15 (+25d) | 60d → 45d |  |
| 1 | **Janus Scope** | 2026-07-16 → 2026-07-17 (+1d) | 2026-10-08 → 2026-10-09 (+1d) |  |  |
| IB-JNUS-1000 | Level 2 Install (Diamond Plate, Turkey Wire, Misc.) | 2026-07-16 → 2026-07-17 (+1d) | 2026-08-05 → 2026-08-06 (+1d) |  |  |
| IB-JNUS-1010 | Level 3 Install (Diamond Plate, Turkey Wire, Misc.) | 2026-08-06 → 2026-08-07 (+1d) | 2026-08-26 → 2026-08-27 (+1d) |  |  |
| IB-JNUS-1020 | Level 4 Install (Diamond Plate, Turkey Wire, Misc.) | 2026-08-27 → 2026-08-28 (+1d) | 2026-09-17 → 2026-09-18 (+1d) |  |  |
| IB-JNUS-1030 | Level 1 Install (Diamond Plate, Turkey Wire, Misc.) | 2026-09-18 → 2026-09-21 (+3d) | 2026-10-08 → 2026-10-09 (+1d) |  |  |
| 2 | **Elevator Installation** | 2026-07-17 → 2026-08-10 (+24d) | 2026-09-03 → 2026-09-28 (+25d) |  |  |
| EL-INST-1000 | Evelvator Installation (incl. Equipment Room Buildout) | 2026-07-17 → 2026-08-10 (+24d) | 2026-09-03 → 2026-09-28 (+25d) | 51d → 36d |  |
| 4 | **Stairwells** | 2026-02-25 → 2026-02-26 (+1d) | 2026-03-17 → 2026-03-18 (+1d) |  |  |
| IB-STAR-1000 | Install Stairs & Railings | 2026-02-25 → 2026-02-26 (+1d) | 2026-03-10 → 2026-03-11 (+1d) |  |  |
| IB-STAR-1010 | Install Signage & Lighting | 2026-03-11 → 2026-03-12 (+1d) | 2026-03-13 → 2026-03-16 (+3d) |  |  |
| IB-STAR-1020 | Install Doors & Hardware | 2026-03-16 → 2026-03-17 (+1d) | 2026-03-17 → 2026-03-18 (+1d) |  |  |
| 4 | **Offsite** | 2026-07-22 → 2026-07-23 (+1d) | 2026-11-16 → 2026-11-17 (+1d) |  |  |
| 2 | **Sitework Finishes** | 2026-07-22 → 2026-07-23 (+1d) | 2026-10-15 → 2026-10-16 (+1d) |  |  |
| SW-FIN-1040 | Finish Grade Site (incl. bio ponds) | 2026-07-22 → 2026-07-23 (+1d) | 2026-07-28 → 2026-07-29 (+1d) |  |  |
| SW-FIN-1050 | Install Irrigation Sleeves (inc. bio ponds) | 2026-07-29 → 2026-07-30 (+1d) | 2026-07-30 → 2026-07-31 (+1d) |  |  |
| SW-FIN-1060 | Electrical Rough (Light Poles) | 2026-07-31 → 2026-08-03 (+3d) | 2026-08-06 → 2026-08-07 (+1d) |  |  |
| SW-FIN-1100 | Install Bollards (including footings) | 2026-08-07 → 2026-08-10 (+3d) | 2026-08-13 → 2026-08-14 (+1d) |  |  |
| SW-FIN-1130 | FRP Concrete (Hardscape & Sidewalks) | 2026-08-14 → 2026-08-17 (+3d) | 2026-08-24 → 2026-08-25 (+1d) |  |  |
| SW-FIN-1140 | Install Irrigation | 2026-08-25 → 2026-08-26 (+1d) | 2026-09-08 → 2026-09-09 (+1d) |  |  |
| SW-FIN-1150 | Install Asphalt (Final Coat) | 2026-09-09 → 2026-09-10 (+1d) | 2026-09-09 → 2026-09-10 (+1d) |  |  |
| SW-FIN-1170 | Planting | 2026-09-10 → 2026-09-11 (+1d) | 2026-09-23 → 2026-09-24 (+1d) |  |  |
| SW-FIN-1171 | FRP Dumpster Enclosure | 2026-09-24 → 2026-09-25 (+1d) | 2026-10-02 → 2026-10-05 (+3d) |  |  |
| SW-FIN-1180 | Site Furnishings & Signage | 2026-10-05 → 2026-10-06 (+1d) | 2026-10-09 → 2026-10-12 (+3d) |  |  |
| SW-FIN-1190 | Final Clean | 2026-10-12 → 2026-10-13 (+1d) | 2026-10-12 → 2026-10-13 (+1d) |  |  |
| SW-FIN-1200 | Punch List | 2026-10-13 → 2026-10-14 (+1d) | 2026-10-15 → 2026-10-16 (+1d) |  |  |
| 1 | **Rutland Drive Improvements** | 2026-08-25 → 2026-08-26 (+1d) | 2026-11-16 → 2026-11-17 (+1d) |  |  |
| SW-RTLN-1000 | EPSC Install (Silt Fence, Inlet Protection) | 2026-08-25 → 2026-08-26 (+1d) | 2026-08-27 → 2026-08-28 (+1d) |  |  |
| SW-RTLN-1010 | Sawcut Asphalt & Demo Existing Curb | 2026-08-28 → 2026-08-31 (+3d) | 2026-09-01 → 2026-09-02 (+1d) |  |  |
| SW-RTLN-1020 | Temp Traffic Control Setup | 2026-09-02 → 2026-09-03 (+1d) | 2026-09-04 → 2026-09-08 (+4d) |  |  |
| SW-RTLN-1030 | Relocate Mailbox / Signs / Remove Conflicts | 2026-09-08 → 2026-09-09 (+1d) | 2026-09-09 → 2026-09-10 (+1d) |  |  |
| SW-RTLN-1040 | Trench & Install Storm Pipe | 2026-09-10 → 2026-09-11 (+1d) | 2026-09-21 → 2026-09-22 (+1d) |  |  |

| ID | Task | Start | Finish | Duration | Total float |
| --- | --- | --- | --- | --- | --- |
| SW-RTLN-1050 | Set Curb Inlets, Junction Boxes, Headwalls | 2026-09-22 → 2026-09-23 (+1d) | 2026-09-29 → 2026-09-30 (+1d) |  |  |
| SW-RTLN-1060 | Backfill / Compact Drain Trenches | 2026-09-30 → 2026-10-01 (+1d) | 2026-10-02 → 2026-10-05 (+3d) |  |  |
| SW-RTLN-1070 | Subgrade Proofrool & Undercut / Backfill (if needed) | 2026-10-05 → 2026-10-06 (+1d) | 2026-10-07 → 2026-10-08 (+1d) |  |  |
| SW-RTLN-1080 | Place Aggregate Base | 2026-10-08 → 2026-10-09 (+1d) | 2026-10-13 → 2026-10-14 (+1d) |  |  |
| SW-RTLN-1090 | City Inspections (Proofrool, Storm, Curbs) | 2026-10-14 → 2026-10-15 (+1d) | 2026-10-15 → 2026-10-16 (+1d) |  |  |
| SW-RTLN-1100 | Install Curb & Gutter | 2026-10-16 → 2026-10-19 (+3d) | 2026-10-22 → 2026-10-23 (+1d) |  |  |
| SW-RTLN-1110 | Sidewalks & ADA Ramps | 2026-10-23 → 2026-10-26 (+3d) | 2026-10-28 → 2026-10-29 (+1d) |  |  |
| SW-RTLN-1120 | First Lift Asphalt (Binder Course) | 2026-10-29 → 2026-10-30 (+1d) | 2026-10-30 → 2026-11-02 (+3d) |  |  |
| SW-RTLN-1130 | Final Grading | 2026-11-02 → 2026-11-03 (+1d) | 2026-11-03 → 2026-11-04 (+1d) |  |  |
| SW-RTLN-1140 | Final Asphalt Surface Course | 2026-11-04 → 2026-11-05 (+1d) | 2026-11-04 → 2026-11-05 (+1d) |  |  |
| SW-RTLN-1150 | Permanent Signs & Striping | 2026-11-05 → 2026-11-06 (+1d) | 2026-11-06 → 2026-11-09 (+3d) |  |  |
| SW-RTLN-1160 | Site Cleanup & Final EPSC Removal | 2026-11-09 → 2026-11-10 (+1d) | 2026-11-10 → 2026-11-11 (+1d) |  |  |
| SW-RTLN-1170 | Punch List & Corrections | 2026-11-11 → 2026-11-12 (+1d) | 2026-11-12 → 2026-11-13 (+1d) |  |  |
| SW-RTLN-1180 | Final Owner Punch List | 2026-11-13 → 2026-11-16 (+3d) | 2026-11-16 → 2026-11-17 (+1d) |  |  |
| Closeout | **Closeout** | 2026-06-01 → 2026-07-31 (+60d) | 2026-11-17 → 2026-11-18 (+1d) |  |  |
| Commisioning | **Commissioning** | 2026-07-29 → 2026-08-27 (+29d) | 2026-08-04 → 2026-09-02 (+29d) |  |  |
| CO-CM-1000 | Start-Up & Testing | 2026-07-29 → 2026-08-27 (+29d) | 2026-08-04 → 2026-09-02 (+29d) |  | 68d → 48d |
| Building Finals | **Building Finals** | 2026-06-01 → 2026-07-31 (+60d) | 2026-11-17 → 2026-11-18 (+1d) |  |  |
| CO-BF-1000 | Rough Fire Sprinkler Inspection | 2026-06-01 → 2026-07-31 (+60d) | 2026-06-01 → 2026-07-31 (+60d) |  | 113d → 71d |
| CO-BF-1010 | Final Fire Sprinkler Inspection | 2026-08-05 → 2026-09-03 (+29d) | 2026-08-05 → 2026-09-03 (+29d) |  | 68d → 48d |
| CO-BF-1020 | Electrical Final | 2026-08-06 → 2026-09-04 (+29d) | 2026-08-06 → 2026-09-04 (+29d) |  | 68d → 48d |
| CO-BF-1030 | Plumbing Final | 2026-08-07 → 2026-09-08 (+32d) | 2026-08-07 → 2026-09-08 (+32d) |  | 68d → 48d |
| CO-BF-1040 | Mechanical Final | 2026-08-10 → 2026-09-09 (+30d) | 2026-08-10 → 2026-09-09 (+30d) |  | 68d → 48d |
| CO-BF-1050 | Fire Alarm Final | 2026-08-11 → 2026-09-10 (+30d) | 2026-08-11 → 2026-09-10 (+30d) |  | 68d → 48d |
| CO-BF-1060 | Building Final | 2026-11-17 → 2026-11-18 (+1d) | 2026-11-17 → 2026-11-18 (+1d) |  |  |
| 2 | **Warranty Work** | 2026-11-18 → 2026-11-19 (+1d) | 2027-11-02 → 2027-11-03 (+1d) |  |  |
| WW-WARR-1000 | 1st Quarter HVAC Maintenance | 2026-11-18 → 2026-11-19 (+1d) | 2027-02-18 → 2027-02-19 (+1d) |  |  |
| WW-WARR-1010 | 1st Quarter Landscape Maintenance | 2026-11-18 → 2026-11-19 (+1d) | 2027-02-18 → 2027-02-19 (+1d) |  |  |
| WW-WARR-1020 | 11-Month Warranty Walk | 2026-11-18 → 2026-11-19 (+1d) | 2027-10-05 → 2027-10-06 (+1d) |  |  |
| WW-WARR-1030 | 2nd Quarter HVAC Maintenance | 2027-02-19 → 2027-02-22 (+3d) | 2027-05-13 → 2027-05-14 (+1d) |  |  |
| WW-WARR-1040 | 2nd Quarter Landscape Maintenance | 2027-02-19 → 2027-02-22 (+3d) | 2027-05-13 → 2027-05-14 (+1d) |  |  |
| WW-WARR-1050 | 3rd Quarter HVAC Maintenance | 2027-05-14 → 2027-05-17 (+3d) | 2027-08-09 → 2027-08-10 (+1d) |  |  |
| WW-WARR-1060 | 3rd Quarter Landscape Maintenance | 2027-05-14 → 2027-05-17 (+3d) | 2027-08-09 → 2027-08-10 (+1d) |  |  |
| WW-WARR-1070 | 4th Quarter HVAC Maintenance | 2027-08-10 → 2027-08-11 (+1d) | 2027-11-02 → 2027-11-03 (+1d) |  |  |
| WW-WARR-1080 | 4th Quarter Landscape Maintenance | 2027-08-10 → 2027-08-11 (+1d) | 2027-11-02 → 2027-11-03 (+1d) |  |  |
| 5 | **Weather Impacts** | 2026-11-18 → 2026-11-19 (+1d) | 2026-12-17 → 2026-12-16 (-1d) |  |  |
| WI-WTHR-1000 | Rain Days | 2026-11-18 → 2026-11-19 (+1d) | 2026-12-17 → 2026-12-16 (-1d) | 20d → 18d | 220d → 222d |

## Version 5 (data date 2026-01-02, saved 2026-01-09, file update_4.xer)

Note of the change: Add all project schedule files to buckets - 13 projects, MPP+XER, baseline+updates

Last finish 2027-11-03 → 2027-11-04 (+1d). Complete tasks 22 → 29.

Changed:

| ID | Task | Start | Finish | Duration | Complete | Total float | Predecessors |
| --- | --- | --- | --- | --- | --- | --- | --- |
| PS-CMIL-1010 | Project Open | 2026-11-17 → 2026-11-18 (+1d) | 2026-11-17 → 2026-11-18 (+1d) |  |  |  |  |
| PS-CMIL-1150 | Project SC - Before Weather Impacts | 2026-11-18 → 2026-11-19 (+1d) | 2026-11-18 → 2026-11-19 (+1d) |  |  | 222d → 223d |  |
| PS-CMIL-1160 | Anticipated Remaining Weather Impacts | 2026-11-19 → 2026-11-20 (+1d) |  | 18d → 17d |  | 222d → 223d |  |
| 2 | **Construction Milestones** |  | 2026-10-13 → 2026-10-14 (+1d) |  |  |  |  |
| PS-CMIL-1080 | Start of Foundations | 2025-12-29 → 2025-12-17 A (-12d) | 2025-12-29 → 2025-12-17 A (-12d) |  | 0% → 100% | 467d → none |  |
| PS-CMIL-1090 | Start of Elevated Structure | 2026-01-27 → 2026-02-09 (+13d) | 2026-01-27 → 2026-02-09 (+13d) |  |  | 449d → 441d |  |
| PS-CMIL-1100 | Stair & Elevator Cores Complete to Roof | 2026-02-25 → 2026-02-24 (-1d) | 2026-02-25 → 2026-02-24 (-1d) |  |  | 427d → 429d |  |
| PS-CMIL-1120 | Structure Complete | 2026-05-26 → 2026-05-27 (+1d) | 2026-05-26 → 2026-05-27 (+1d) |  |  |  |  |
| PS-CMIL-1130 | Building Dry In | 2026-07-01 → 2026-07-02 (+1d) | 2026-07-01 → 2026-07-02 (+1d) |  |  |  |  |
| PS-CMIL-1110 | Exterior Work Complete | 2026-09-25 → 2026-09-28 (+3d) | 2026-09-25 → 2026-09-28 (+3d) |  |  |  |  |
| PS-CMIL-1140 | Landscape & Hardscape Complete | 2026-10-13 → 2026-10-14 (+1d) | 2026-10-13 → 2026-10-14 (+1d) |  |  |  |  |
| 4 | **Pre-Construction** |  | 2025-12-19 → 2026-01-23 (+35d) |  |  |  |  |
| 1 | **Procurement** |  | 2025-12-19 → 2026-01-23 (+35d) |  |  |  |  |
| PS-PROC-1010 | Elevator | 2025-12-01 → 2026-01-02 (+32d) | 2025-12-05 → 2026-01-08 (+34d) |  |  | 229d → 210d |  |
| PS-PROC-1020 | Electric Room MDP | 2025-12-08 → 2026-01-09 (+32d) | 2025-12-12 → 2026-01-15 (+34d) |  |  | 229d → 210d |  |
| PS-PROC-1030 | Owner's Enabling Work | 2025-12-15 → 2026-01-16 (+32d) | 2025-12-19 → 2026-01-23 (+35d) |  |  | 229d → 210d |  |
| 1 | **Construction** |  | 2026-11-17 → 2026-11-18 (+1d) |  |  |  |  |
| MOB | **Mobilization** |  | 2025-12-08 → 2026-01-05 (+28d) |  |  |  |  |
| CN-MOBL-1040 | Install Temp Power | 2025-12-03 → 2025-12-08 A (+5d) | 2025-12-04 → 2025-12-09 A (+5d) |  | 0% → 100% | 150d → none | CN-MOBL-1070, CN-MOBL-1010 → CN-MOBL-1070 |
| CN-MOBL-1010 | Install Temp Fencing | 2025-12-01 → 2025-12-18 A (+17d) | 2025-12-02 → 2025-12-19 A (+17d) |  | 0% → 100% | 150d → none |  |
| CN-MOBL-1060 | Field Office MEP Hook-Up | 2025-12-05 → 2026-01-02 (+28d) | 2025-12-08 → 2026-01-05 (+28d) |  |  | 150d → 135d | CN-MOBL-1040 → CN-MOBL-1040, CN-MOBL-1010 |
| Sitework | **Sitework & Utilities** |  | 2026-01-26 → 2026-02-26 (+31d) |  |  |  |  |
| SW | **Sitework** |  | 2026-01-26 → 2026-02-26 (+31d) |  |  |  |  |
| SU-STWK-1040 | Compact Subgrade |  | 2025-12-01 → 2025-11-28 A (-3d) |  | 67% → 100% | 0d → none |  |
| SU-STWK-1050 | Install Stone Base | 2025-12-29 → 2026-02-03 (+36d) | 2026-01-02 → 2026-02-05 (+34d) |  |  | 125d → 103d |  |
| SU-STWK-1060 | Install Prime Coat, Binder, & Tack Coat | 2026-01-05 → 2026-02-06 (+32d) | 2026-01-06 → 2026-02-09 (+34d) |  |  | 125d → 103d |  |
| SU-STWK-1070 | Install Asphalt (Wearing Course) | 2026-01-07 → 2026-02-10 (+34d) | 2026-01-07 → 2026-02-10 (+34d) |  |  | 125d → 103d |  |
| SU-STWK-1080 | Form & Reinforce Curb & Gutter | 2026-01-08 → 2026-02-11 (+34d) | 2026-01-14 → 2026-02-17 (+34d) |  |  | 125d → 103d |  |
| SU-STWK-1090 | Pour Curb & Gutter | 2026-01-15 → 2026-02-18 (+34d) | 2026-01-16 → 2026-02-19 (+34d) |  |  | 125d → 103d |  |
| SU-STWK-1100 | Rough Grade Site | 2026-01-20 → 2026-02-20 (+31d) | 2026-01-26 → 2026-02-26 (+31d) |  |  | 125d → 103d |  |
| SIte | **Site Utilities** |  | 2025-12-26 → 2026-02-02 (+38d) |  |  |  |  |
| SU-SUTL-1000 | Cut, Cap, and Relocate Existing Utilities |  | 2025-12-05 A |  | 20% → 100% | 0d → none |  |
| SU-SUTL-1020 | Install U.G. Sewer | 2025-12-08 → 2025-12-01 A (-7d) | 2025-12-19 → 2025-12-04 A (-15d) |  | 0% → 100% | 0d → none |  |
| SU-SUTL-1030 | Install U.G. Storm Drain | 2025-12-08 → 2025-12-03 A (-5d) | 2025-12-19 → 2026-01-05 A (+17d) |  | 0% → 100% | 0d → none |  |
| SU-SUTL-1040 | Install U.G. Electrical Duct Banks | 2025-12-08 → 2026-01-06 A (+29d) | 2025-12-19 → 2026-01-13 (+25d) |  | 0% → 20% | 0d → 103d |  |
| SU-SUTL-1050 | Install U.G. Fire Water & Domestic | 2025-12-08 → 2026-01-14 (+37d) | 2025-12-19 → 2026-01-28 (+40d) |  |  | 0d → 103d | SU-SUTL-1040 SS → SU-SUTL-1040 |
| SU-SUTL-1010 | Install Irrigation Sleeves | 2025-12-22 → 2026-01-29 (+38d) | 2025-12-26 → 2026-02-02 (+38d) |  |  | 0d → 103d |  |
| 1 | **Foundation & Structural** | 2025-12-29 → 2025-12-17 (-12d) | 2026-05-26 → 2026-05-27 (+1d) |  |  |  |  |
| 1 | **Level 1** | 2025-12-29 → 2025-12-17 (-12d) |  |  |  |  |  |
| FS-LVL1-1000 | Footings & Foundation CIP Walls (includes elevator pit) | 2025-12-29 → 2025-12-17 A (-12d) | 2026-02-04 → 2026-01-27 (-8d) |  | 0% → 32% |  | SU-SUTL-1050, PS-CMIL-1060, SU-SUTL-1010 → PS-CMIL-1060, SU-STWK-1040 |
| FS-LVL1-1010 | Underground MEPF Install (Pre-Pour) | 2026-01-07 → 2026-01-06 A (-1d) | 2026-01-13 → 2026-01-06 (-7d) |  | 0% → 40% | 0d → 14d |  |
| FS-LVL1-1030 | Slab Prep & Pour (Pour A1) | 2026-01-14 → 2026-01-28 (+14d) | 2026-01-21 → 2026-02-03 (+13d) |  |  |  | FS-LVL1-1010 → FS-LVL1-1010, FS-LVL1-1000 |
| FS-LVL1-1020 | Erect Stairs & Elevator Shafts (CMU Cores) | 2026-02-05 → 2026-02-04 (-1d) | 2026-02-25 → 2026-02-24 (-1d) |  |  | 171d → 173d | FS-LVL1-1000 → FS-LVL1-1000, FS-LVL1-1030 |
| FS-LVL1-1040 | Slab Prep & Pour (Pour A2) | 2026-01-22 → 2026-02-04 (+13d) | 2026-01-26 → 2026-02-06 (+11d) |  |  |  |  |
| FS-LVL1-1050 | Steel Erection (Colums & Beams) | 2026-01-27 → 2026-02-09 (+13d) | 2026-02-09 → 2026-02-20 (+11d) |  |  |  |  |
| FS-LVL1-1060 | Fireproofing | 2026-02-10 → 2026-02-23 (+13d) | 2026-02-12 → 2026-02-25 (+13d) |  |  | 195d → 187d |  |
| 2 | **Level 2** | 2026-02-04 → 2026-02-17 (+13d) | 2026-03-12 → 2026-03-23 (+11d) |  |  |  |  |
| FS-LVL2-1000 | Install Metal Decking | 2026-02-04 → 2026-02-17 (+13d) | 2026-02-09 → 2026-02-20 (+11d) |  |  |  |  |
| FS-LVL2-1010 | MEPF Rough-In (Pre-Pour) | 2026-02-10 → 2026-02-19 (+9d) | 2026-02-16 → 2026-02-25 (+9d) |  |  |  | FS-LVL2-1000 → FS-LVL2-1000 SS+2d |
| FS-LVL2-1020 | FRP Metal Deck Slab (Pour A1) | 2026-02-17 → 2026-02-26 (+9d) | 2026-02-23 → 2026-03-04 (+9d) |  |  |  |  |
| FS-LVL2-1030 | FRP Metal Deck Slab (Pour A2) | 2026-02-24 → 2026-03-05 (+9d) | 2026-02-26 → 2026-03-09 (+11d) |  |  |  |  |
| FS-LVL2-1040 | Layout & Erect Load Bearing Framing | 2026-02-27 → 2026-03-10 (+11d) | 2026-03-12 → 2026-03-23 (+11d) |  |  |  |  |
| 3 | **Level 3** | 2026-03-09 → 2026-03-18 (+9d) | 2026-04-14 → 2026-04-21 (+7d) |  |  |  |  |
| FS-LVL3-1000 | Install Metal Decking | 2026-03-09 → 2026-03-18 (+9d) | 2026-03-12 → 2026-03-23 (+11d) |  |  |  |  |
| FS-LVL3-1010 | MEPF Rough-In (Pre-Pour) | 2026-03-13 → 2026-03-20 (+7d) | 2026-03-19 → 2026-03-26 (+7d) |  |  |  | FS-LVL3-1000 → FS-LVL3-1000 SS+2d |
| FS-LVL3-1020 | FRP Metal Deck Slab (Pour A1) | 2026-03-20 → 2026-03-27 (+7d) | 2026-03-26 → 2026-04-02 (+7d) |  |  |  |  |
| FS-LVL3-1030 | FRP Metal Deck Slab (Pour A2) | 2026-03-27 → 2026-04-03 (+7d) | 2026-03-31 → 2026-04-07 (+7d) |  |  |  |  |
| FS-LVL3-1040 | Layout & Erect Load Bearing Framing | 2026-04-01 → 2026-04-08 (+7d) | 2026-04-14 → 2026-04-21 (+7d) |  |  |  |  |
| 5 | **Level 4** | 2026-04-09 → 2026-04-16 (+7d) | 2026-05-15 → 2026-05-20 (+5d) |  |  |  |  |
| FS-LVL4-1000 | Install Metal Decking | 2026-04-09 → 2026-04-16 (+7d) | 2026-04-14 → 2026-04-21 (+7d) |  |  |  |  |
| FS-LVL4-1010 | MEPF Rough-In (Pre-Pour) | 2026-04-15 → 2026-04-20 (+5d) | 2026-04-21 → 2026-04-24 (+3d) |  |  |  | FS-LVL4-1000 → FS-LVL4-1000 SS+2d |
| FS-LVL4-1020 | FRP Metal Deck Slab (Pour A1) | 2026-04-22 → 2026-04-27 (+5d) | 2026-04-28 → 2026-05-01 (+3d) |  |  |  |  |
| FS-LVL4-1030 | FRP Metal Deck Slab (Pour A2) | 2026-04-29 → 2026-05-04 (+5d) | 2026-05-01 → 2026-05-06 (+5d) |  |  |  |  |
| FS-LVL4-1040 | Layout & Erect Load Bearing Framing | 2026-05-04 → 2026-05-07 (+3d) | 2026-05-15 → 2026-05-20 (+5d) |  |  |  |  |
| 4 | **Roof** | 2026-05-12 → 2026-05-15 (+3d) | 2026-05-26 → 2026-05-27 (+1d) |  |  |  |  |
| FS-ROOF-1000 | Install Metal Decking | 2026-05-12 → 2026-05-15 (+3d) | 2026-05-15 → 2026-05-20 (+5d) |  |  |  |  |
| FS-ROOF-1010 | MEPF Rough-In (Stubups) | 2026-05-18 → 2026-05-19 (+1d) | 2026-05-20 → 2026-05-21 (+1d) |  |  |  | FS-ROOF-1000 → FS-ROOF-1000 SS+2d |
| FS-ROOF-1020 | Layout & Frame Parapets | 2026-05-21 → 2026-05-22 (+1d) | 2026-05-26 → 2026-05-27 (+1d) |  |  |  |  |
| 2 | **Envelope & Exterior** | 2026-05-04 → 2026-05-07 (+3d) | 2026-10-07 → 2026-10-08 (+1d) |  |  |  |  |
| 0 | **North Elevation** | 2026-05-04 → 2026-05-07 (+3d) | 2026-08-24 → 2026-08-25 (+1d) |  |  |  |  |

| ID | Task | Start | Finish | Total float |
| --- | --- | --- | --- | --- |
| EE-NRTH-1000 | Layout & Exterior Framing (Level 1) | 2026-05-04 → 2026-05-07 (+3d) | 2026-05-08 → 2026-05-13 (+5d) | 10d → 8d |
| EE-NRTH-1010 | City Inspection (Rough Framing) | 2026-05-11 → 2026-05-14 (+3d) | 2026-05-11 → 2026-05-14 (+3d) | 10d → 8d |
| EE-NRTH-1020 | Electrical Rough-In | 2026-05-27 → 2026-05-28 (+1d) | 2026-06-02 → 2026-06-03 (+1d) |  |
| EE-NRTH-1030 | City Inspection (Electrical) | 2026-06-03 → 2026-06-04 (+1d) | 2026-06-03 → 2026-06-04 (+1d) |  |
| EE-NRTH-1040 | Install Exterior Sheathing | 2026-06-04 → 2026-06-05 (+1d) | 2026-06-10 → 2026-06-11 (+1d) |  |
| EE-NRTH-1050 | City Inspection (Screw Inspection) | 2026-06-11 → 2026-06-12 (+1d) | 2026-06-11 → 2026-06-12 (+1d) |  |
| EE-NRTH-1060 | Weather Barrier & Flashing | 2026-06-12 → 2026-06-15 (+3d) | 2026-06-18 → 2026-06-19 (+1d) |  |
| EE-NRTH-1070 | Install Rigid Insulation | 2026-06-19 → 2026-06-22 (+3d) | 2026-06-25 → 2026-06-26 (+1d) |  |
| EE-NRTH-1080 | Storefront, Windows & Metals | 2026-06-26 → 2026-06-29 (+3d) | 2026-06-30 → 2026-07-01 (+1d) |  |
| EE-NRTH-1090 | Install Brick Veneer | 2026-07-01 → 2026-07-02 (+1d) | 2026-07-22 → 2026-07-23 (+1d) |  |
| EE-NRTH-1100 | Install Canopies & Trim | 2026-07-23 → 2026-07-24 (+1d) | 2026-07-27 → 2026-07-28 (+1d) |  |
| EE-NRTH-1110 | Install Lighting Fixtures | 2026-07-28 → 2026-07-29 (+1d) | 2026-07-30 → 2026-07-31 (+1d) |  |
| EE-NRTH-1120 | Install Signage | 2026-07-31 → 2026-08-03 (+3d) | 2026-07-31 → 2026-08-03 (+3d) |  |
| EE-NRTH-1130 | Install Doors & Hardware | 2026-08-03 → 2026-08-04 (+1d) | 2026-08-04 → 2026-08-05 (+1d) |  |
| EE-NRTH-1140 | Install Downspouts | 2026-08-05 → 2026-08-06 (+1d) | 2026-08-05 → 2026-08-06 (+1d) |  |
| EE-NRTH-1150 | Final Paint | 2026-08-06 → 2026-08-07 (+1d) | 2026-08-10 → 2026-08-11 (+1d) |  |
| EE-NRTH-1160 | Punch List & Corrections | 2026-08-11 → 2026-08-12 (+1d) | 2026-08-17 → 2026-08-18 (+1d) |  |
| EE-NRTH-1170 | Final Owner Walk (Punch List & Corrections) | 2026-08-18 → 2026-08-19 (+1d) | 2026-08-24 → 2026-08-25 (+1d) |  |
| 2 | **East Elevation** | 2026-05-11 → 2026-05-14 (+3d) | 2026-08-27 → 2026-08-28 (+1d) |  |
| EE-EAST-1000 | Layout & Exterior Framing (Level 1) | 2026-05-11 → 2026-05-14 (+3d) | 2026-05-15 → 2026-05-20 (+5d) | 10d → 8d |
| EE-EAST-1010 | City Inspection (Rough Framing) | 2026-05-18 → 2026-05-21 (+3d) | 2026-05-18 → 2026-05-21 (+3d) | 10d → 8d |
| EE-EAST-1020 | Electrical Rough-In | 2026-06-03 → 2026-06-04 (+1d) | 2026-06-09 → 2026-06-10 (+1d) |  |
| EE-EAST-1030 | City Inspection (Electrical) | 2026-06-10 → 2026-06-11 (+1d) | 2026-06-10 → 2026-06-11 (+1d) |  |
| EE-EAST-1040 | Install Exterior Sheathing | 2026-06-11 → 2026-06-12 (+1d) | 2026-06-17 → 2026-06-18 (+1d) |  |
| EE-EAST-1050 | City Inspection (Screw Inspection) | 2026-06-18 → 2026-06-19 (+1d) | 2026-06-18 → 2026-06-19 (+1d) |  |
| EE-EAST-1060 | Weather Barrier & Flashing | 2026-06-19 → 2026-06-22 (+3d) | 2026-06-25 → 2026-06-26 (+1d) |  |
| EE-EAST-1070 | Install Rigid Insulation | 2026-06-26 → 2026-06-29 (+3d) | 2026-07-02 → 2026-07-06 (+4d) |  |
| EE-EAST-1080 | Install Windows & Metals | 2026-07-06 → 2026-07-07 (+1d) | 2026-07-08 → 2026-07-09 (+1d) |  |
| EE-EAST-1090 | Install Brick Veneer | 2026-07-23 → 2026-07-24 (+1d) | 2026-08-12 → 2026-08-13 (+1d) |  |
| EE-EAST-1100 | Install Signage | 2026-08-13 → 2026-08-14 (+1d) | 2026-08-13 → 2026-08-14 (+1d) |  |
| EE-EAST-1110 | Punch List & Corrections | 2026-08-14 → 2026-08-17 (+3d) | 2026-08-20 → 2026-08-21 (+1d) |  |
| EE-EAST-1120 | Final Owner Walk (Punch List & Corrections) | 2026-08-21 → 2026-08-24 (+3d) | 2026-08-27 → 2026-08-28 (+1d) |  |
| 5 | **South Elevation** | 2026-05-18 → 2026-05-21 (+3d) | 2026-09-25 → 2026-09-28 (+3d) |  |
| EE-SOTH-1000 | Layout & Exterior Framing (Level 1) | 2026-05-18 → 2026-05-21 (+3d) | 2026-05-22 → 2026-05-28 (+6d) | 10d → 8d |
| EE-SOTH-1010 | City Inspection (Rough Framing) | 2026-05-26 → 2026-05-29 (+3d) | 2026-05-26 → 2026-05-29 (+3d) | 10d → 8d |
| EE-SOTH-1020 | Electrical Rough-In | 2026-06-10 → 2026-06-11 (+1d) | 2026-06-16 → 2026-06-17 (+1d) |  |
| EE-SOTH-1030 | City Inspection (Electrical) | 2026-06-17 → 2026-06-18 (+1d) | 2026-06-17 → 2026-06-18 (+1d) |  |
| EE-SOTH-1040 | Install Exterior Sheathing | 2026-06-18 → 2026-06-19 (+1d) | 2026-06-24 → 2026-06-25 (+1d) |  |
| EE-SOTH-1050 | City Inspection (Screw Inspection) | 2026-06-25 → 2026-06-26 (+1d) | 2026-06-25 → 2026-06-26 (+1d) |  |
| EE-SOTH-1060 | Weather Barrier & Flashing | 2026-06-26 → 2026-06-29 (+3d) | 2026-07-02 → 2026-07-06 (+4d) |  |
| EE-SOTH-1070 | Install Rigid Insulation | 2026-07-06 → 2026-07-07 (+1d) | 2026-07-10 → 2026-07-13 (+3d) |  |
| EE-SOTH-1080 | Install Brick Veneer | 2026-08-13 → 2026-08-14 (+1d) | 2026-09-02 → 2026-09-03 (+1d) |  |
| EE-SOTH-1090 | Install Signage | 2026-09-03 → 2026-09-04 (+1d) | 2026-09-03 → 2026-09-04 (+1d) |  |
| EE-SOTH-1100 | Install Doors & Hardware | 2026-09-04 → 2026-09-08 (+4d) | 2026-09-04 → 2026-09-08 (+4d) |  |
| EE-SOTH-1110 | Install Downspouts | 2026-09-08 → 2026-09-09 (+1d) | 2026-09-09 → 2026-09-10 (+1d) |  |
| EE-SOTH-1120 | Final Paint | 2026-09-10 → 2026-09-11 (+1d) | 2026-09-11 → 2026-09-14 (+3d) |  |
| EE-SOTH-1130 | Punch List & Corrections | 2026-09-14 → 2026-09-15 (+1d) | 2026-09-18 → 2026-09-21 (+3d) |  |
| EE-SOTH-1140 | Final Owner Walk (Punch List & Corrections) | 2026-09-21 → 2026-09-22 (+1d) | 2026-09-25 → 2026-09-28 (+3d) |  |
| 1 | **West Elevation** | 2026-05-26 → 2026-05-29 (+3d) | 2026-10-07 → 2026-10-08 (+1d) |  |
| EE-WEST-1000 | Layout & Exterior Framing (Level 1) | 2026-05-26 → 2026-05-29 (+3d) | 2026-06-01 → 2026-06-04 (+3d) | 10d → 8d |
| EE-WEST-1010 | City Inspection (Rough Framing) | 2026-06-02 → 2026-06-05 (+3d) | 2026-06-02 → 2026-06-05 (+3d) | 10d → 8d |
| EE-WEST-1020 | Electrical Rough-In | 2026-06-17 → 2026-06-18 (+1d) | 2026-06-23 → 2026-06-24 (+1d) |  |
| EE-WEST-1030 | City Inspection (Electrical) | 2026-06-24 → 2026-06-25 (+1d) | 2026-06-24 → 2026-06-25 (+1d) |  |
| EE-WEST-1040 | Install Exterior Sheathing | 2026-06-25 → 2026-06-26 (+1d) | 2026-07-01 → 2026-07-02 (+1d) |  |
| EE-WEST-1050 | City Inspection (Screw Inspection) | 2026-07-02 → 2026-07-06 (+4d) | 2026-07-02 → 2026-07-06 (+4d) |  |
| EE-WEST-1060 | Weather Barrier & Flashing | 2026-07-06 → 2026-07-07 (+1d) | 2026-07-10 → 2026-07-13 (+3d) |  |
| EE-WEST-1070 | Install Rigid Insulation | 2026-07-13 → 2026-07-14 (+1d) | 2026-07-17 → 2026-07-20 (+3d) |  |
| EE-WEST-1080 | Install Windows & Metals | 2026-07-20 → 2026-07-21 (+1d) | 2026-07-22 → 2026-07-23 (+1d) |  |
| EE-WEST-1090 | Install Brick Veneer | 2026-09-03 → 2026-09-04 (+1d) | 2026-09-24 → 2026-09-25 (+1d) |  |
| EE-WEST-1100 | Install Signage | 2026-09-25 → 2026-09-28 (+3d) | 2026-09-25 → 2026-09-28 (+3d) |  |
| EE-WEST-1110 | Punch List & Corrections | 2026-09-28 → 2026-09-29 (+1d) | 2026-10-02 → 2026-10-05 (+3d) |  |
| EE-WEST-1120 | Final Owner Walk (Punch List & Corrections) | 2026-10-05 → 2026-10-06 (+1d) | 2026-10-07 → 2026-10-08 (+1d) |  |
| 3 | **Roof** | 2026-05-27 → 2026-05-28 (+1d) | 2026-09-04 → 2026-09-08 (+4d) |  |
| EE-ROOF-1000 | Clean & Prep Metal Deck | 2026-05-27 → 2026-05-28 (+1d) | 2026-05-28 → 2026-05-29 (+1d) |  |
| EE-ROOF-1010 | Stage Materials & Solar Rails (Crane) | 2026-05-29 → 2026-06-01 (+3d) | 2026-05-29 → 2026-06-01 (+3d) |  |
| EE-ROOF-1020 | Layout for Penetrations, Curb Blocking, Edge Metal | 2026-06-01 → 2026-06-02 (+1d) | 2026-06-02 → 2026-06-03 (+1d) |  |
| EE-ROOF-1030 | Install Blocking & Equipment Curbs | 2026-06-03 → 2026-06-04 (+1d) | 2026-06-05 → 2026-06-08 (+3d) |  |
| EE-ROOF-1040 | Install Rigid Insulation | 2026-06-08 → 2026-06-09 (+1d) | 2026-06-11 → 2026-06-12 (+1d) |  |
| EE-ROOF-1050 | Install Cover Board | 2026-06-12 → 2026-06-15 (+3d) | 2026-06-17 → 2026-06-18 (+1d) |  |
| EE-ROOF-1060 | Install TPO Roofing System (incl. boots, termination bars) | 2026-06-18 → 2026-06-19 (+1d) | 2026-07-01 → 2026-07-02 (+1d) |  |

| ID | Task | Start | Finish |
| --- | --- | --- | --- |
| EE-ROOF-1070 | Install Edge Metal, Coping, Trim | 2026-07-02 → 2026-07-06 (+4d) | 2026-07-09 → 2026-07-10 (+1d) |
| EE-ROOF-1080 | Install Roof Drains, Vents, Mechanical Curbs | 2026-07-10 → 2026-07-13 (+3d) | 2026-07-16 → 2026-07-17 (+1d) |
| EE-ROOF-1090 | Install Electrical Conduit & Roof Mounted Boxes | 2026-07-17 → 2026-07-20 (+3d) | 2026-07-23 → 2026-07-24 (+1d) |
| EE-ROOF-1140 | Set Rooftop Units (RTU's & Splits) | 2026-07-17 → 2026-07-20 (+3d) | 2026-07-17 → 2026-07-20 (+3d) |
| EE-ROOF-1150 | Install Duct/Condensate/Vent Tie-Ins & Flashing | 2026-07-20 → 2026-07-21 (+1d) | 2026-07-22 → 2026-07-23 (+1d) |
| EE-ROOF-1160 | Startup/Controls/Balancing Prep | 2026-07-23 → 2026-07-24 (+1d) | 2026-07-27 → 2026-07-28 (+1d) |
| EE-ROOF-1100 | Install Solar Mounting Rails & Racking | 2026-07-24 → 2026-07-27 (+3d) | 2026-07-28 → 2026-07-29 (+1d) |
| EE-ROOF-1170 | Water Test / Leak Test | 2026-07-28 → 2026-07-29 (+1d) | 2026-07-28 → 2026-07-29 (+1d) |
| EE-ROOF-1110 | Mount Solar Panels | 2026-07-29 → 2026-07-30 (+1d) | 2026-08-18 → 2026-08-19 (+1d) |
| EE-ROOF-1180 | Roof Patches (If Any) | 2026-07-29 → 2026-07-30 (+1d) | 2026-07-29 → 2026-07-30 (+1d) |
| EE-ROOF-1190 | Punch List & Corrections | 2026-07-30 → 2026-07-31 (+1d) | 2026-08-03 → 2026-08-04 (+1d) |
| EE-ROOF-1120 | Run Electrical Conduit & Inverters to Roof | 2026-08-19 → 2026-08-20 (+1d) | 2026-08-25 → 2026-08-26 (+1d) |
| EE-ROOF-1130 | Final Electrical Tie-In (Solar Panels) | 2026-08-26 → 2026-08-27 (+1d) | 2026-09-01 → 2026-09-02 (+1d) |
| EE-ROOF-1200 | Final Owner Walk (Punch List & Corrections) | 2026-09-02 → 2026-09-03 (+1d) | 2026-09-04 → 2026-09-08 (+4d) |
| 3 | **Interior Build-Out** | 2026-02-26 → 2026-02-25 (-1d) | 2026-10-09 → 2026-10-12 (+3d) |
| Level 2 Interior | **Level 2 Interior** | 2026-07-02 → 2026-07-06 (+4d) | 2026-08-19 → 2026-08-20 (+1d) |
| IB-L2IN-1000 | Layout & Framing (incl. backing, door frames) | 2026-07-02 → 2026-07-06 (+4d) | 2026-07-09 → 2026-07-10 (+1d) |
| IB-L2IN-1010 | Electrical Rough-In | 2026-07-10 → 2026-07-13 (+3d) | 2026-07-16 → 2026-07-17 (+1d) |
| IB-L2IN-1020 | Mechanical Rough-In | 2026-07-10 → 2026-07-13 (+3d) | 2026-07-16 → 2026-07-17 (+1d) |
| IB-L2IN-1030 | Plumbing Rough-In | 2026-07-10 → 2026-07-13 (+3d) | 2026-07-16 → 2026-07-17 (+1d) |
| IB-L2IN-1040 | Fire Supression Rough-In | 2026-07-10 → 2026-07-13 (+3d) | 2026-07-16 → 2026-07-17 (+1d) |
| IB-L2IN-1050 | Install Insulation | 2026-07-17 → 2026-07-20 (+3d) | 2026-07-20 → 2026-07-21 (+1d) |
| IB-L2IN-1060 | Install Drywall | 2026-07-21 → 2026-07-22 (+1d) | 2026-07-24 → 2026-07-27 (+3d) |
| IB-L2IN-1070 | Tape & Mud Drywall | 2026-07-27 → 2026-07-28 (+1d) | 2026-07-31 → 2026-08-03 (+3d) |
| IB-L2IN-1080 | Prep & Paint | 2026-08-03 → 2026-08-04 (+1d) | 2026-08-05 → 2026-08-06 (+1d) |
| IB-L2IN-1090 | MEPF Trim-Out | 2026-08-06 → 2026-08-07 (+1d) | 2026-08-12 → 2026-08-13 (+1d) |
| IB-L2IN-1100 | Install Storage Doors & Hardware | 2026-08-13 → 2026-08-14 (+1d) | 2026-08-19 → 2026-08-20 (+1d) |
| 3 | **Level 3 Interior** | 2026-07-10 → 2026-07-13 (+3d) | 2026-08-26 → 2026-08-27 (+1d) |
| IB-L3IN-1000 | Layout & Framing (incl. backing, door frames) | 2026-07-10 → 2026-07-13 (+3d) | 2026-07-16 → 2026-07-17 (+1d) |
| IB-L3IN-1010 | Electrical Rough-In | 2026-07-17 → 2026-07-20 (+3d) | 2026-07-23 → 2026-07-24 (+1d) |
| IB-L3IN-1020 | Mechanical Rough-In | 2026-07-17 → 2026-07-20 (+3d) | 2026-07-23 → 2026-07-24 (+1d) |
| IB-L3IN-1030 | Plumbing Rough-In | 2026-07-17 → 2026-07-20 (+3d) | 2026-07-23 → 2026-07-24 (+1d) |
| IB-L3IN-1040 | Fire Supression Rough-In | 2026-07-17 → 2026-07-20 (+3d) | 2026-07-23 → 2026-07-24 (+1d) |
| IB-L3IN-1050 | Install Insulation | 2026-07-24 → 2026-07-27 (+3d) | 2026-07-27 → 2026-07-28 (+1d) |
| IB-L3IN-1060 | Install Drywall | 2026-07-28 → 2026-07-29 (+1d) | 2026-07-31 → 2026-08-03 (+3d) |
| IB-L3IN-1070 | Tape & Mud Drywall | 2026-08-03 → 2026-08-04 (+1d) | 2026-08-07 → 2026-08-10 (+3d) |
| IB-L3IN-1080 | Prep & Paint | 2026-08-10 → 2026-08-11 (+1d) | 2026-08-12 → 2026-08-13 (+1d) |
| IB-L3IN-1090 | MEPF Trim-Out | 2026-08-13 → 2026-08-14 (+1d) | 2026-08-19 → 2026-08-20 (+1d) |
| IB-L3IN-1100 | Install Storage Doors & Hardware | 2026-08-20 → 2026-08-21 (+1d) | 2026-08-26 → 2026-08-27 (+1d) |
| 1 | **Unisex Restroom** | 2026-07-17 → 2026-07-20 (+3d) | 2026-08-17 → 2026-08-18 (+1d) |
| IB-L3UN-1000 | Framing (Metal Studs, Blocking) | 2026-07-17 → 2026-07-20 (+3d) | 2026-07-21 → 2026-07-22 (+1d) |
| IB-L3UN-1010 | MEPF Rough-In | 2026-07-22 → 2026-07-23 (+1d) | 2026-07-24 → 2026-07-27 (+3d) |
| IB-L3UN-1020 | City Inspection (Framing & MEPF Rough) | 2026-07-27 → 2026-07-28 (+1d) | 2026-07-27 → 2026-07-28 (+1d) |
| IB-L3UN-1030 | Install Insulation | 2026-07-28 → 2026-07-29 (+1d) | 2026-07-28 → 2026-07-29 (+1d) |
| IB-L3UN-1040 | Install Drywall | 2026-07-29 → 2026-07-30 (+1d) | 2026-07-30 → 2026-07-31 (+1d) |
| IB-L3UN-1050 | Tape & Mud Drywall | 2026-07-31 → 2026-08-03 (+3d) | 2026-08-04 → 2026-08-05 (+1d) |
| IB-L3UN-1060 | Painting | 2026-08-05 → 2026-08-06 (+1d) | 2026-08-06 → 2026-08-07 (+1d) |
| IB-L3UN-1070 | Install Restroom Fixtures & Partitions | 2026-08-07 → 2026-08-10 (+3d) | 2026-08-10 → 2026-08-11 (+1d) |
| IB-L3UN-1080 | Install Accessories (Grab Bars, Mirrors, Signs) | 2026-08-11 → 2026-08-12 (+1d) | 2026-08-12 → 2026-08-13 (+1d) |
| IB-L3UN-1090 | Final MEP Trim-Out | 2026-08-13 → 2026-08-14 (+1d) | 2026-08-14 → 2026-08-17 (+3d) |
| IB-L3UN-1100 | Final Clean | 2026-08-17 → 2026-08-18 (+1d) | 2026-08-17 → 2026-08-18 (+1d) |
| 5 | **Level 4 Interior** | 2026-07-17 → 2026-07-20 (+3d) | 2026-09-02 → 2026-09-03 (+1d) |
| IB-L4IN-1000 | Layout & Framing (incl. backing, door frames) | 2026-07-17 → 2026-07-20 (+3d) | 2026-07-23 → 2026-07-24 (+1d) |
| IB-L4IN-1010 | Electrical Rough-In | 2026-07-24 → 2026-07-27 (+3d) | 2026-07-30 → 2026-07-31 (+1d) |
| IB-L4IN-1020 | Mechanical Rough-In | 2026-07-24 → 2026-07-27 (+3d) | 2026-07-30 → 2026-07-31 (+1d) |
| IB-L4IN-1030 | Plumbing Rough-In | 2026-07-24 → 2026-07-27 (+3d) | 2026-07-30 → 2026-07-31 (+1d) |
| IB-L4IN-1040 | Fire Supression Rough-In | 2026-07-24 → 2026-07-27 (+3d) | 2026-07-30 → 2026-07-31 (+1d) |
| IB-L4IN-1050 | Install Insulation | 2026-07-31 → 2026-08-03 (+3d) | 2026-08-03 → 2026-08-04 (+1d) |
| IB-L4IN-1060 | Install Drywall | 2026-08-04 → 2026-08-05 (+1d) | 2026-08-07 → 2026-08-10 (+3d) |
| IB-L4IN-1070 | Tape & Mud Drywall | 2026-08-10 → 2026-08-11 (+1d) | 2026-08-14 → 2026-08-17 (+3d) |
| IB-L4IN-1080 | Prep & Paint | 2026-08-17 → 2026-08-18 (+1d) | 2026-08-19 → 2026-08-20 (+1d) |
| IB-L4IN-1090 | MEPF Trim-Out | 2026-08-20 → 2026-08-21 (+1d) | 2026-08-26 → 2026-08-27 (+1d) |
| IB-L4IN-1100 | Install Storage Doors & Hardware | 2026-08-27 → 2026-08-28 (+1d) | 2026-09-02 → 2026-09-03 (+1d) |
| Level 1 Interior | **Level 1 Interior** | 2026-07-24 → 2026-07-27 (+3d) | 2026-09-15 → 2026-09-16 (+1d) |
| IB-L1IN-1000 | Layout & Framing (incl. backing, door frames) | 2026-07-24 → 2026-07-27 (+3d) | 2026-07-30 → 2026-07-31 (+1d) |
| IB-L1IN-1010 | Electrical Rough-In | 2026-07-31 → 2026-08-03 (+3d) | 2026-08-06 → 2026-08-07 (+1d) |
| IB-L1IN-1020 | Mechanical Rough-In | 2026-07-31 → 2026-08-03 (+3d) | 2026-08-06 → 2026-08-07 (+1d) |
| IB-L1IN-1030 | Plumbing Rough-In | 2026-07-31 → 2026-08-03 (+3d) | 2026-08-06 → 2026-08-07 (+1d) |
| IB-L1IN-1040 | Fire Supression Rough-In | 2026-07-31 → 2026-08-03 (+3d) | 2026-08-06 → 2026-08-07 (+1d) |
| IB-L1IN-1050 | Install Insulation | 2026-08-07 → 2026-08-10 (+3d) | 2026-08-10 → 2026-08-11 (+1d) |

| ID | Task | Start | Finish | Total float |
| --- | --- | --- | --- | --- |
| IB-L1IN-1060 | Install Drywall | 2026-08-11 → 2026-08-12 (+1d) | 2026-08-14 → 2026-08-17 (+3d) |  |
| IB-L1IN-1070 | Tape & Mud Drywall | 2026-08-17 → 2026-08-18 (+1d) | 2026-08-21 → 2026-08-24 (+3d) |  |
| IB-L1IN-1080 | Prep & Paint | 2026-08-24 → 2026-08-25 (+1d) | 2026-08-26 → 2026-08-27 (+1d) |  |
| IB-L1IN-1090 | MEPF Trim-Out | 2026-08-27 → 2026-08-28 (+1d) | 2026-09-02 → 2026-09-03 (+1d) |  |
| IB-L1IN-1100 | Install Storage Doors & Hardware | 2026-09-03 → 2026-09-04 (+1d) | 2026-09-10 → 2026-09-11 (+1d) |  |
| 1 | **Restrooms (Mens & Womens)** | 2026-07-31 → 2026-08-03 (+3d) | 2026-08-31 → 2026-09-01 (+1d) |  |
| IB-L1RR-1000 | Framing (Metal Studs, Blocking) | 2026-07-31 → 2026-08-03 (+3d) | 2026-08-04 → 2026-08-05 (+1d) |  |
| IB-L1RR-1010 | MEPF Rough-In | 2026-08-05 → 2026-08-06 (+1d) | 2026-08-07 → 2026-08-10 (+3d) |  |
| IB-L1RR-1020 | City Inspection (Framing & MEPF Rough) | 2026-08-10 → 2026-08-11 (+1d) | 2026-08-10 → 2026-08-11 (+1d) |  |
| IB-L1RR-1030 | Install Insulation | 2026-08-11 → 2026-08-12 (+1d) | 2026-08-11 → 2026-08-12 (+1d) |  |
| IB-L1RR-1040 | Install Drywall | 2026-08-12 → 2026-08-13 (+1d) | 2026-08-13 → 2026-08-14 (+1d) |  |
| IB-L1RR-1050 | Tape & Mud Drywall | 2026-08-14 → 2026-08-17 (+3d) | 2026-08-18 → 2026-08-19 (+1d) |  |
| IB-L1RR-1060 | Painting | 2026-08-19 → 2026-08-20 (+1d) | 2026-08-20 → 2026-08-21 (+1d) |  |
| IB-L1RR-1070 | Install Restroom Fixtures & Partitions | 2026-08-21 → 2026-08-24 (+3d) | 2026-08-24 → 2026-08-25 (+1d) |  |
| IB-L1RR-1080 | Install Accessories (Grab Bars, Mirrors, Signs) | 2026-08-25 → 2026-08-26 (+1d) | 2026-08-26 → 2026-08-27 (+1d) |  |
| IB-L1RR-1090 | Final MEP Trim-Out | 2026-08-27 → 2026-08-28 (+1d) | 2026-08-28 → 2026-08-31 (+3d) |  |
| IB-L1RR-1100 | Final Clean | 2026-08-31 → 2026-09-01 (+1d) | 2026-08-31 → 2026-09-01 (+1d) |  |
| 2 | **Management Spaces (Rental Office, Storage, Break Room)** | 2026-08-05 → 2026-08-06 (+1d) | 2026-09-15 → 2026-09-16 (+1d) |  |
| IB-L1M\S-1000 | Layout & Framing (incl. backing, door frames) | 2026-08-05 → 2026-08-06 (+1d) | 2026-08-07 → 2026-08-10 (+3d) |  |
| IB-L1M\S-1010 | MEPF Rough-In | 2026-08-10 → 2026-08-11 (+1d) | 2026-08-12 → 2026-08-13 (+1d) |  |
| IB-L1M\S-1020 | City Inspection (Framing & MEPF) | 2026-08-13 → 2026-08-14 (+1d) | 2026-08-13 → 2026-08-14 (+1d) |  |
| IB-L1M\S-1030 | Install Insulation | 2026-08-14 → 2026-08-17 (+3d) | 2026-08-17 → 2026-08-18 (+1d) |  |
| IB-L1M\S-1040 | Install Drywall | 2026-08-18 → 2026-08-19 (+1d) | 2026-08-19 → 2026-08-20 (+1d) |  |
| IB-L1M\S-1050 | Tape & Mud Drywall | 2026-08-20 → 2026-08-21 (+1d) | 2026-08-24 → 2026-08-25 (+1d) |  |
| IB-L1M\S-1060 | Painting | 2026-08-25 → 2026-08-26 (+1d) | 2026-08-27 → 2026-08-28 (+1d) |  |
| IB-L1M\S-1070 | Install Ceiling Grid (Break Room) | 2026-08-28 → 2026-08-31 (+3d) | 2026-08-28 → 2026-08-31 (+3d) |  |
| IB-L1M\S-1080 | Install Base Trim | 2026-08-31 → 2026-09-01 (+1d) | 2026-08-31 → 2026-09-01 (+1d) |  |
| IB-L1M\S-1090 | Install Cabinets & Countertops (Break Room & Office) | 2026-09-01 → 2026-09-02 (+1d) | 2026-09-03 → 2026-09-04 (+1d) |  |
| IB-L1M\S-1100 | Install Sink & Faucests (Break Room) | 2026-09-04 → 2026-09-08 (+4d) | 2026-09-04 → 2026-09-08 (+4d) |  |
| IB-L1M\S-1110 | Appliances (Microwave & Fridge) | 2026-09-08 → 2026-09-09 (+1d) | 2026-09-08 → 2026-09-09 (+1d) |  |
| IB-L1M\S-1120 | Interior Signage | 2026-09-09 → 2026-09-10 (+1d) | 2026-09-09 → 2026-09-10 (+1d) |  |
| IB-L1M\S-1130 | MEPF Trim-Out | 2026-09-10 → 2026-09-11 (+1d) | 2026-09-14 → 2026-09-15 (+1d) |  |
| IB-L1M\S-1140 | Final Clean | 2026-09-15 → 2026-09-16 (+1d) | 2026-09-15 → 2026-09-16 (+1d) |  |
| 1 | **Janus Scope** | 2026-07-17 → 2026-07-20 (+3d) | 2026-10-09 → 2026-10-12 (+3d) |  |
| IB-JNUS-1000 | Level 2 Install (Diamond Plate, Turkey Wire, Misc.) | 2026-07-17 → 2026-07-20 (+3d) | 2026-08-06 → 2026-08-07 (+1d) |  |
| IB-JNUS-1010 | Level 3 Install (Diamond Plate, Turkey Wire, Misc.) | 2026-08-07 → 2026-08-10 (+3d) | 2026-08-27 → 2026-08-28 (+1d) |  |
| IB-JNUS-1020 | Level 4 Install (Diamond Plate, Turkey Wire, Misc.) | 2026-08-28 → 2026-08-31 (+3d) | 2026-09-18 → 2026-09-21 (+3d) |  |
| IB-JNUS-1030 | Level 1 Install (Diamond Plate, Turkey Wire, Misc.) | 2026-09-21 → 2026-09-22 (+1d) | 2026-10-09 → 2026-10-12 (+3d) |  |
| 2 | **Elevator Installation** | 2026-08-10 → 2026-08-11 (+1d) | 2026-09-28 → 2026-09-29 (+1d) |  |
| EL-INST-1000 | Evelvator Installation (incl. Equipment Room Buildout) | 2026-08-10 → 2026-08-11 (+1d) | 2026-09-28 → 2026-09-29 (+1d) |  |
| 4 | **Stairwells** | 2026-02-26 → 2026-02-25 (-1d) | 2026-03-18 → 2026-03-17 (-1d) |  |
| IB-STAR-1000 | Install Stairs & Railings | 2026-02-26 → 2026-02-25 (-1d) | 2026-03-11 → 2026-03-10 (-1d) | 171d → 173d |
| IB-STAR-1010 | Install Signage & Lighting | 2026-03-12 → 2026-03-11 (-1d) | 2026-03-16 → 2026-03-13 (-3d) | 171d → 173d |
| IB-STAR-1020 | Install Doors & Hardware | 2026-03-17 → 2026-03-16 (-1d) | 2026-03-18 → 2026-03-17 (-1d) | 171d → 173d |
| 4 | **Offsite** | 2026-07-23 → 2026-07-24 (+1d) | 2026-11-17 → 2026-11-18 (+1d) |  |
| 2 | **Sitework Finishes** | 2026-07-23 → 2026-07-24 (+1d) | 2026-10-16 → 2026-10-19 (+3d) |  |
| SW-FIN-1040 | Finish Grade Site (incl. bio ponds) | 2026-07-23 → 2026-07-24 (+1d) | 2026-07-29 → 2026-07-30 (+1d) |  |
| SW-FIN-1050 | Install Irrigation Sleeves (inc. bio ponds) | 2026-07-30 → 2026-07-31 (+1d) | 2026-07-31 → 2026-08-03 (+3d) |  |
| SW-FIN-1060 | Electrical Rough (Light Poles) | 2026-08-03 → 2026-08-04 (+1d) | 2026-08-07 → 2026-08-10 (+3d) |  |
| SW-FIN-1100 | Install Bollards (including footings) | 2026-08-10 → 2026-08-11 (+1d) | 2026-08-14 → 2026-08-17 (+3d) |  |
| SW-FIN-1130 | FRP Concrete (Hardscape & Sidewalks) | 2026-08-17 → 2026-08-18 (+1d) | 2026-08-25 → 2026-08-26 (+1d) |  |
| SW-FIN-1140 | Install Irrigation | 2026-08-26 → 2026-08-27 (+1d) | 2026-09-09 → 2026-09-10 (+1d) |  |
| SW-FIN-1150 | Install Asphalt (Final Coat) | 2026-09-10 → 2026-09-11 (+1d) | 2026-09-10 → 2026-09-11 (+1d) |  |
| SW-FIN-1170 | Planting | 2026-09-11 → 2026-09-14 (+3d) | 2026-09-24 → 2026-09-25 (+1d) |  |
| SW-FIN-1171 | FRP Dumpster Enclosure | 2026-09-25 → 2026-09-28 (+3d) | 2026-10-05 → 2026-10-06 (+1d) |  |
| SW-FIN-1180 | Site Furnishings & Signage | 2026-10-06 → 2026-10-07 (+1d) | 2026-10-12 → 2026-10-13 (+1d) |  |
| SW-FIN-1190 | Final Clean | 2026-10-13 → 2026-10-14 (+1d) | 2026-10-13 → 2026-10-14 (+1d) |  |
| SW-FIN-1200 | Punch List | 2026-10-14 → 2026-10-15 (+1d) | 2026-10-16 → 2026-10-19 (+3d) |  |
| 1 | **Rutland Drive Improvements** | 2026-08-26 → 2026-08-27 (+1d) | 2026-11-17 → 2026-11-18 (+1d) |  |
| SW-RTLN-1000 | EPSC Install (Silt Fence, Inlet Protection) | 2026-08-26 → 2026-08-27 (+1d) | 2026-08-28 → 2026-08-31 (+3d) |  |
| SW-RTLN-1010 | Sawcut Asphalt & Demo Existing Curb | 2026-08-31 → 2026-09-01 (+1d) | 2026-09-02 → 2026-09-03 (+1d) |  |
| SW-RTLN-1020 | Temp Traffic Control Setup | 2026-09-03 → 2026-09-04 (+1d) | 2026-09-08 → 2026-09-09 (+1d) |  |
| SW-RTLN-1030 | Relocate Mailbox / Signs / Remove Conflicts | 2026-09-09 → 2026-09-10 (+1d) | 2026-09-10 → 2026-09-11 (+1d) |  |
| SW-RTLN-1040 | Trench & Install Storm Pipe | 2026-09-11 → 2026-09-14 (+3d) | 2026-09-22 → 2026-09-23 (+1d) |  |
| SW-RTLN-1050 | Set Curb Inlets, Junction Boxes, Headwalls | 2026-09-23 → 2026-09-24 (+1d) | 2026-09-30 → 2026-10-01 (+1d) |  |
| SW-RTLN-1060 | Backfill / Compact Drain Trenches | 2026-10-01 → 2026-10-02 (+1d) | 2026-10-05 → 2026-10-06 (+1d) |  |
| SW-RTLN-1070 | Subgrade Proofrool & Undercut / Backfill (if needed) | 2026-10-06 → 2026-10-07 (+1d) | 2026-10-08 → 2026-10-09 (+1d) |  |
| SW-RTLN-1080 | Place Aggregate Base | 2026-10-09 → 2026-10-12 (+3d) | 2026-10-14 → 2026-10-15 (+1d) |  |
| SW-RTLN-1090 | City Inspections (Proofrool, Storm, Curbs) | 2026-10-15 → 2026-10-16 (+1d) | 2026-10-16 → 2026-10-19 (+3d) |  |
| SW-RTLN-1100 | Install Curb & Gutter | 2026-10-19 → 2026-10-20 (+1d) | 2026-10-23 → 2026-10-26 (+3d) |  |

| ID | Task | Start | Finish | Duration | Total float |
| --- | --- | --- | --- | --- | --- |
| SW-RTLN-1110 | Sidewalks & ADA Ramps | 2026-10-26 → 2026-10-27 (+1d) | 2026-10-29 → 2026-10-30 (+1d) |  |  |
| SW-RTLN-1120 | First Lift Asphalt (Binder Course) | 2026-10-30 → 2026-11-02 (+3d) | 2026-11-02 → 2026-11-03 (+1d) |  |  |
| SW-RTLN-1130 | Final Grading | 2026-11-03 → 2026-11-04 (+1d) | 2026-11-04 → 2026-11-05 (+1d) |  |  |
| SW-RTLN-1140 | Final Asphalt Surface Course | 2026-11-05 → 2026-11-06 (+1d) | 2026-11-05 → 2026-11-06 (+1d) |  |  |
| SW-RTLN-1150 | Permanent Signs & Striping | 2026-11-06 → 2026-11-09 (+3d) | 2026-11-09 → 2026-11-10 (+1d) |  |  |
| SW-RTLN-1160 | Site Cleanup & Final EPSC Removal | 2026-11-10 → 2026-11-11 (+1d) | 2026-11-11 → 2026-11-12 (+1d) |  |  |
| SW-RTLN-1170 | Punch List & Corrections | 2026-11-12 → 2026-11-13 (+1d) | 2026-11-13 → 2026-11-16 (+3d) |  |  |
| SW-RTLN-1180 | Final Owner Punch List | 2026-11-16 → 2026-11-17 (+1d) | 2026-11-17 → 2026-11-18 (+1d) |  |  |
| Closeout | **Closeout** | 2026-07-31 → 2026-08-03 (+3d) | 2026-11-18 → 2026-11-19 (+1d) |  |  |
| Commisioning | **Commissioning** | 2026-08-27 → 2026-08-28 (+1d) | 2026-09-02 → 2026-09-03 (+1d) |  |  |
| CO-CM-1000 | Start-Up & Testing | 2026-08-27 → 2026-08-28 (+1d) | 2026-09-02 → 2026-09-03 (+1d) |  |  |
| Building Finals | **Building Finals** | 2026-07-31 → 2026-08-03 (+3d) | 2026-11-18 → 2026-11-19 (+1d) |  |  |
| CO-BF-1000 | Rough Fire Sprinkler Inspection | 2026-07-31 → 2026-08-03 (+3d) | 2026-07-31 → 2026-08-03 (+3d) |  |  |
| CO-BF-1010 | Final Fire Sprinkler Inspection | 2026-09-03 → 2026-09-04 (+1d) | 2026-09-03 → 2026-09-04 (+1d) |  |  |
| CO-BF-1020 | Electrical Final | 2026-09-04 → 2026-09-08 (+4d) | 2026-09-04 → 2026-09-08 (+4d) |  |  |
| CO-BF-1030 | Plumbing Final | 2026-09-08 → 2026-09-09 (+1d) | 2026-09-08 → 2026-09-09 (+1d) |  |  |
| CO-BF-1040 | Mechanical Final | 2026-09-09 → 2026-09-10 (+1d) | 2026-09-09 → 2026-09-10 (+1d) |  |  |
| CO-BF-1050 | Fire Alarm Final | 2026-09-10 → 2026-09-11 (+1d) | 2026-09-10 → 2026-09-11 (+1d) |  |  |
| CO-BF-1060 | Building Final | 2026-11-18 → 2026-11-19 (+1d) | 2026-11-18 → 2026-11-19 (+1d) |  |  |
| 2 | **Warranty Work** | 2026-11-19 → 2026-11-20 (+1d) | 2027-11-03 → 2027-11-04 (+1d) |  |  |
| WW-WARR-1000 | 1st Quarter HVAC Maintenance | 2026-11-19 → 2026-11-20 (+1d) | 2027-02-19 → 2027-02-22 (+3d) |  |  |
| WW-WARR-1010 | 1st Quarter Landscape Maintenance | 2026-11-19 → 2026-11-20 (+1d) | 2027-02-19 → 2027-02-22 (+3d) |  |  |
| WW-WARR-1020 | 11-Month Warranty Walk | 2026-11-19 → 2026-11-20 (+1d) | 2027-10-06 → 2027-10-07 (+1d) |  |  |
| WW-WARR-1030 | 2nd Quarter HVAC Maintenance | 2027-02-22 → 2027-02-23 (+1d) | 2027-05-14 → 2027-05-17 (+3d) |  |  |
| WW-WARR-1040 | 2nd Quarter Landscape Maintenance | 2027-02-22 → 2027-02-23 (+1d) | 2027-05-14 → 2027-05-17 (+3d) |  |  |
| WW-WARR-1050 | 3rd Quarter HVAC Maintenance | 2027-05-17 → 2027-05-18 (+1d) | 2027-08-10 → 2027-08-11 (+1d) |  |  |
| WW-WARR-1060 | 3rd Quarter Landscape Maintenance | 2027-05-17 → 2027-05-18 (+1d) | 2027-08-10 → 2027-08-11 (+1d) |  |  |
| WW-WARR-1070 | 4th Quarter HVAC Maintenance | 2027-08-11 → 2027-08-12 (+1d) | 2027-11-03 → 2027-11-04 (+1d) |  |  |
| WW-WARR-1080 | 4th Quarter Landscape Maintenance | 2027-08-11 → 2027-08-12 (+1d) | 2027-11-03 → 2027-11-04 (+1d) |  |  |
| 5 | **Weather Impacts** | 2026-11-19 → 2026-11-20 (+1d) |  |  |  |
| WI-WTHR-1000 | Rain Days | 2026-11-19 → 2026-11-20 (+1d) |  | 18d → 17d | 222d → 223d |

## Version 6 (data date 2026-01-31, saved 2026-02-16, file update_5.xer)

Note of the change: Add all project schedule files to buckets - 13 projects, MPP+XER, baseline+updates

Last finish 2027-11-04 → 2027-11-15 (+11d). Complete tasks 29 → 43.

Added:

| ID | Task | Duration | Start | Finish | Predecessors |
| --- | --- | --- | --- | --- | --- |
| PS-CMIL-1190 | Public Storage Final Acceptance | 0d | 2026-12-02 | 2026-12-02 | PS-CMIL-1010, SW-RTLN-1180, SW-FIN-1200, PS-CMIL-1170 FF, IB-STAR-1050 FF, EE-WEST-1120 FF, EE-SOTH-1140 FF, EE-EAST-1120 FF, EE-NRTH-1170 FF, IB-L1IN-1120 FF, IB-L4IN-1120 FF, IB-L3UN-1110 FF, IB-L3IN-1120 FF, IB-L2IN-1120 FF |
| PS-PROC-1040 | Submit and Approve Site Utilities | 5d | 2025-10-17 A | 2025-10-31 A | PS-PROC-1000 |
| PS-PROC-1200 | Procure Site Utility Materials | 5d | 2025-10-31 A | 2025-11-07 A | PS-PROC-1040 |
| PS-PROC-1060 | Submit and Approve Electrical | 5d | 2025-12-05 A | 2026-01-19 A | PS-PROC-1000 |
| PS-PROC-1210 | Procure Concrete Rebar | 5d | 2025-12-08 A | 2025-12-16 A | PS-PROC-1010 |
| PS-PROC-1080 | Submit and Approve Plumbing Fixtures | 15d | 2025-12-12 A | 2026-02-13 | PS-PROC-1000 |
| PS-PROC-1050 | Submit and Approve Steel | 5d | 2025-12-15 A | 2026-01-09 A | PS-PROC-1000 |
| PS-PROC-1100 | Submit and Approve Masonry | 15d | 2025-12-15 A | 2026-01-07 A | PS-PROC-1000 |
| PS-PROC-1240 | Procure CMU Block | 25d | 2026-01-12 A | 2026-01-30 A | PS-PROC-1100 |
| PS-PROC-1300 | Submit and Approve Brick Veneer | 20d | 2026-01-12 A | 2026-02-27 | PS-PROC-1000 |
| PS-PROC-1180 | Submit and Approve Fireproofing | 15d | 2026-01-16 A | 2026-02-24 | PS-PROC-1000 |
| PS-PROC-1250 | Procure CFMF | 20d | 2026-01-16 A | 2026-02-17 | PS-PROC-1050 |
| PS-PROC-1070 | Submit and Approve HVAC | 20d | 2026-01-26 A | 2026-02-13 | PS-PROC-1000 |
| PS-PROC-1220 | Procure Light Fixtures | 60d | 2026-01-30 A | 2026-04-10 | PS-PROC-1060 |
| PS-PROC-1110 | Submit and Approve Drywall / Ceilings | 15d | 2026-02-02 A | 2026-02-20 | PS-PROC-1000 |
| PS-PROC-1140 | Submit and Approve Glazing | 20d | 2026-02-02 A | 2026-02-13 | PS-PROC-1000 |
| PS-PROC-1150 | Submit and Approve D/F/HW | 15d | 2026-02-10 | 2026-03-02 | PS-PROC-1000 FS+85d |
| PS-PROC-1130 | Submit and Approve Roofing | 15d | 2026-02-11 | 2026-03-03 | PS-PROC-1000 FS+86d |
| PS-PROC-1230 | Procure HVAC Equipment and Fab Ductwork | 55d | 2026-02-16 | 2026-05-01 | PS-PROC-1070 |
| PS-PROC-1270 | Procure Storefront / Glazing | 40d | 2026-02-16 | 2026-04-10 | PS-PROC-1140 |
| PS-PROC-1350 | Procure Plumbing Fixtures | 25d | 2026-02-16 | 2026-03-20 | PS-PROC-1080 |
| PS-PROC-1120 | Submit and Approve Floor Finishes | 15d | 2026-02-17 | 2026-03-09 | PS-PROC-1000 FS+90d |
| PS-PROC-1360 | Procure Ceilings | 25d | 2026-02-23 | 2026-03-27 | PS-PROC-1110 |
| PS-PROC-1340 | Procure Fireproofing / Intumescent | 15d | 2026-02-25 | 2026-03-17 | PS-PROC-1180 |
| PS-PROC-1370 | Procure Brick Veneer | 80d | 2026-03-02 | 2026-06-19 | PS-PROC-1300 |
| PS-PROC-1160 | Submit and Approve Toilet Accessories | 15d | 2026-03-03 | 2026-03-23 | PS-PROC-1000 FS+100d |
| PS-PROC-1170 | Submit and Approve Specialties | 15d | 2026-03-03 | 2026-03-23 | PS-PROC-1000 FS+100d |
| PS-PROC-1280 | Procure D/F/HW | 30d | 2026-03-03 | 2026-04-13 | PS-PROC-1150 |
| PS-PROC-1260 | Procure Roofing | 15d | 2026-03-04 | 2026-03-24 | PS-PROC-1130 |
| PS-PROC-1290 | Procure Finishes | 25d | 2026-03-10 | 2026-04-13 | PS-PROC-1120 |
| PS-PROC-1190 | Submit and Approve Appliances | 15d | 2026-03-17 | 2026-04-06 | PS-PROC-1000 FS+110d |
| PS-PROC-1310 | Procure Toilet Accessories | 20d | 2026-03-24 | 2026-04-20 | PS-PROC-1160 |
| PS-PROC-1320 | Procure Specialties | 20d | 2026-03-24 | 2026-04-20 | PS-PROC-1170 |
| PS-PROC-1330 | Procure Appliances | 20d | 2026-04-07 | 2026-05-04 | PS-PROC-1190 |
| IB-L2IN-1110 | Final Clean and Punchlist | 5d | 2026-08-31 | 2026-09-04 | IB-L2IN-1100 |
| IB-L2IN-1120 | Punchlist Completion and Signoff | 5d | 2026-09-07 | 2026-09-11 | IB-L2IN-1110 |
| IB-L3IN-1110 | Final Clean and Punchlist | 2d | 2026-09-07 | 2026-09-08 | IB-L3IN-1100 |
| IB-L3IN-1120 | Punchlist Completion and Signoff | 5d | 2026-09-09 | 2026-09-15 | IB-L3IN-1110 |
| IB-L3UN-1110 | Punchlist Completion and Signoff | 5d | 2026-08-28 | 2026-09-03 | IB-L3UN-1100 |
| IB-L4IN-1110 | Final Clean and Punchlist | 2d | 2026-09-15 | 2026-09-16 | IB-L4IN-1100 |
| IB-L4IN-1120 | Punchlist Completion and Signoff | 5d | 2026-09-17 | 2026-09-23 | IB-L4IN-1110 |
| IB-L1IN-1110 | Final Clean and Punchlist | 2d | 2026-09-22 | 2026-09-23 | IB-L1IN-1100 |
| IB-L1IN-1120 | Punchlist Completion and Signoff | 5d | 2026-09-24 | 2026-09-30 | IB-L1IN-1110 |
| IB-L1RR-1110 | Punchlist Completion and Signoff | 5d | 2026-09-14 | 2026-09-18 | IB-L1RR-1100 |
| IB-L1M\S-1150 | Punchlist Completion and Signoff | 5d | 2026-09-28 | 2026-10-02 | IB-L1M\S-1140 |
| IB-STAR-1030 | Paint Stairs and Railings | 5d | 2026-04-14 | 2026-04-20 | IB-STAR-1020 |
| IB-STAR-1040 | Clean Stairwells and Punchlist | 5d | 2026-04-21 | 2026-04-27 | IB-STAR-1030 |
| IB-STAR-1050 | Punchlist and Signoff on Stairwells | 5d | 2026-04-28 | 2026-05-04 | IB-STAR-1040 |
| 4 | **Outside Primary Footprint** |  | 2026-07-31 | 2026-11-23 |  |
| 5 | **Weather Impacts & Delays** |  | 2025-10-29 | 2026-01-30 |  |
| x.WI-WTHR-1010 | Weather Impact No. 01 - Rain Delay (1 Work Day) | 1d | 2025-10-29 A | 2025-10-29 A |  |
| x.WI-WTHR-1020 | Weather Impact No. 02 - Rain Delay (1 Work Day) | 5d | 2025-11-25 A | 2025-11-25 A | *SU-STWK-1120 |
| x.WI-WTHR-1030 | Weather Impact No. 03 - Rain Delay (1 Work Day) | 5d | 2025-12-18 A | 2025-12-18 A | SU-SUTL-1030 |
| x.WI-WTHR-1040 | Weather Impact No. 04 - Rain Delay (1 Work Day) | 5d | 2026-01-09 A | 2026-01-09 A | SU-SUTL-1040 |
| x.WI-WTHR-1050 | Weather Impact No. 05 - Snow & Ice Delay (5 Work Days) | 5d | 2026-01-26 A | 2026-01-30 A |  |

Removed: *SU-STWK-1130 Weather Delay 01; *SU-STWK-1140 Weather Delay 02; Offsite; Weather Impacts; WI-WTHR-1000 Rain Days

Changed:

| ID | Task | Start | Finish | Duration | Complete | Total float | Predecessors | Other |
| --- | --- | --- | --- | --- | --- | --- | --- | --- |
| 3 | **Project Summary** |  | 2026-12-16 → 2026-12-07 (-9d) |  |  |  |  |  |
| 1 | **Contract Milestones** |  | 2026-12-16 → 2026-12-07 (-9d) |  |  |  |  |  |
| PS-CMIL-1010 | Project Substantial Completion | 2026-11-18 → 2026-11-13 (-5d) | 2026-11-18 → 2026-11-13 (-5d) |  |  |  | EE-NRTH-1170 FF, EE-EAST-1120 FF, EE-SOTH-1140 FF, EE-WEST-1120 FF, SW-FIN-1200 FF, SW-RTLN-1180 FF, IB-L3UN-1100 FF, IB-STAR-1020 FF, IB-L1RR-1100 FF, IB-L1M\S-1140 FF → CO-BF-1060 FF | was named Project Open |
| PS-CMIL-1160 | Remaining Weather Allowance (Originally 20 Days) | 2026-11-20 → 2026-11-16 (-4d) | 2026-12-16 → 2026-12-02 (-14d) | 17d → 11d |  | 223d → 0d | PS-CMIL-1150 → PS-CMIL-1010 | was named Anticipated Remaining Weather Impacts |
| PS-CMIL-1170 | Project Substantial Completion with Weather Projection | 2026-12-16 → 2026-12-02 (-14d) | 2026-12-16 → 2026-12-02 (-14d) |  |  | 223d → 0d |  | was named Project Sustainability Complete - After Weather Impacts |
| PS-CMIL-1150 | Contractual Substantial Completion Date | 2026-11-19 → 2026-12-07 (+18d) | 2026-11-19 → 2026-12-07 (+18d) |  |  | 223d → 237d | CO-BF-1060 FF → PS-CMIL-1040 SF+311d | was named Project SC - Before Weather Impacts |
| 2 | **Construction Milestones** |  | 2026-10-14 → 2026-10-22 (+8d) |  |  |  |  |  |
| PS-CMIL-1090 | Start of Elevated Structure | 2026-02-09 → 2026-02-16 (+7d) | 2026-02-09 → 2026-02-16 (+7d) |  |  | 441d → 191d | FS-LVL1-1050 SS → FS-LVL1-1050 SS, PS-CMIL-1080 SS |  |
| PS-CMIL-1100 | Stair & Elevator Cores Complete to Roof | 2026-02-24 → 2026-02-27 (+3d) | 2026-02-24 → 2026-02-27 (+3d) |  |  | 429d → 181d | FS-LVL1-1020 FF → FS-LVL1-1020 FF, PS-CMIL-1090 |  |
| PS-CMIL-1120 | Structure Complete | 2026-05-27 → 2026-06-03 (+7d) | 2026-05-27 → 2026-06-03 (+7d) |  |  | 364d → 114d | FS-ROOF-1020 FF → FS-ROOF-1020 FF, PS-CMIL-1100 FF |  |
| PS-CMIL-1130 | Building Dry In | 2026-07-02 → 2026-07-13 (+11d) | 2026-07-02 → 2026-07-13 (+11d) |  |  | 338d → 87d | EE-ROOF-1060 FF → EE-ROOF-1060 FF, PS-CMIL-1120 FF |  |
| PS-CMIL-1110 | Exterior Work Complete | 2026-09-28 → 2026-10-05 (+7d) | 2026-09-28 → 2026-10-05 (+7d) |  |  | 278d → 28d | EE-WEST-1100 FF → EE-WEST-1100 FF, PS-CMIL-1130 FF |  |
| PS-CMIL-1140 | Landscape & Hardscape Complete | 2026-10-14 → 2026-10-22 (+8d) | 2026-10-14 → 2026-10-22 (+8d) |  |  | 266d → 15d | SW-FIN-1190 FF → SW-FIN-1190 FF, PS-CMIL-1110 FF |  |
| 4 | **Pre-Construction** |  | 2026-01-23 → 2026-06-19 (+147d) |  |  |  |  |  |
| 1 | **Procurement** |  | 2026-01-23 → 2026-06-19 (+147d) |  |  |  |  |  |
| PS-PROC-1000 | Award Contractors |  |  |  |  |  |  | was named Contracting of Early Trades |
| PS-PROC-1010 | Submit and Approve Concrete Submittals | 2026-01-02 → 2025-11-17 A (-46d) | 2026-01-08 → 2025-12-05 A (-34d) |  | 0% → 100% | 210d → none |  | was named Elevator |
| PS-PROC-1030 | Procure Structural Steel | 2026-01-16 → 2026-01-12 A (-4d) | 2026-01-23 → 2026-02-02 A (+10d) |  | 0% → 100% | 210d → none | PS-PROC-1020 → PS-PROC-1050 | was named Owner's Enabling Work |
| PS-PROC-1020 | Procure Electric Room MDP | 2026-01-09 → 2026-03-03 (+53d) | 2026-01-15 → 2026-04-27 (+102d) | 5d → 40d |  | 210d → 105d | PS-PROC-1010 → PS-PROC-1000 FS+100d, PS-PROC-1060 | was named Electric Room MDP |
| 1 | **Construction** |  | 2026-11-18 → 2026-11-23 (+5d) |  |  |  |  |  |
| CN-MOBL-1060 | Field Office MEP Hook-Up | 2026-01-02 A | 2026-01-05 A |  | 0% → 100% | 135d → none |  |  |
| Sitework | **Sitework & Utilities** |  | 2026-02-26 → 2026-03-20 (+22d) |  |  |  |  |  |
| SW | **Sitework** |  | 2026-02-26 → 2026-03-20 (+22d) |  |  |  |  |  |
| SU-STWK-1020 | Building Pad Prep & Grading |  |  |  |  |  | SU-STWK-1010, SU-STWK-1000, Weather Delay 01 → SU-STWK-1010, SU-STWK-1000, x.WI-WTHR-1010 |  |
| SU-STWK-1030 | Building Layout & Staking |  |  |  |  |  | SU-STWK-1020, *SU-STWK-1120 → SU-STWK-1020, *SU-STWK-1120, x.WI-WTHR-1020 |  |
| SU-STWK-1050 | Install Site Stone Base | 2026-02-03 → 2026-02-19 (+16d) | 2026-02-05 → 2026-02-26 (+21d) | 3d → 6d |  | 103d → 92d |  | was named Install Stone Base |
| SU-STWK-1060 | Install Prime Coat, Binder, & Tack Coat | 2026-02-06 → 2026-02-27 (+21d) | 2026-02-09 → 2026-03-03 (+22d) | 2d → 3d |  | 103d → 92d |  |  |
| SU-STWK-1070 | Install Asphalt (Wearing Course) | 2026-02-10 → 2026-03-04 (+22d) | 2026-02-10 → 2026-03-04 (+22d) |  |  | 103d → 92d |  |  |
| SU-STWK-1080 | Form & Reinforce Curb & Gutter | 2026-02-11 → 2026-03-05 (+22d) | 2026-02-17 → 2026-03-11 (+22d) |  |  | 103d → 92d |  |  |
| SU-STWK-1090 | Pour Curb & Gutter | 2026-02-18 → 2026-03-12 (+22d) | 2026-02-19 → 2026-03-13 (+22d) |  |  | 103d → 92d |  |  |
| SU-STWK-1100 | Rough Grade Site | 2026-02-20 → 2026-03-16 (+24d) | 2026-02-26 → 2026-03-20 (+22d) |  |  | 103d → 92d |  |  |
| SIte | **Site Utilities** |  | 2026-02-02 → 2026-02-18 (+16d) |  |  |  |  |  |
| SU-SUTL-1020 | Install U.G. Sewer |  |  |  |  |  | SU-SUTL-1000 → SU-SUTL-1000, PS-PROC-1200 |  |
| SU-SUTL-1040 | Install U.G. Electrical Duct Banks |  | 2026-01-13 → 2026-01-23 A (+10d) |  | 20% → 100% | 103d → none |  |  |
| SU-SUTL-1050 | Install U.G. Fire Water & Domestic | 2026-01-14 → 2026-02-02 (+19d) | 2026-01-28 → 2026-02-13 (+16d) |  |  | 103d → 92d |  |  |
| SU-SUTL-1010 | Install Irrigation Sleeves | 2026-01-29 → 2026-02-16 (+18d) | 2026-02-02 → 2026-02-18 (+16d) |  |  | 103d → 92d |  |  |
| 1 | **Foundation & Structural** |  | 2026-05-27 → 2026-06-03 (+7d) |  |  |  |  |  |
| 1 | **Level 1** |  | 2026-02-25 → 2026-03-20 (+23d) |  |  |  |  |  |
| FS-LVL1-1000 | Footings & Foundation CIP Walls (includes elevator pit) |  | 2026-01-27 → 2026-02-17 (+21d) |  | 32% → 52% |  | PS-CMIL-1060, SU-STWK-1040 → PS-CMIL-1060, SU-STWK-1040, x.WI-WTHR-1030, x.WI-WTHR-1040, x.WI-WTHR-1050, PS-PROC-1210 |  |
| FS-LVL1-1010 | Underground MEPF Install (Pre-Pour) |  | 2026-01-06 → 2026-02-04 (+29d) |  |  | 14d → 0d | FS-LVL1-1000 SS+5d → FS-LVL1-1000 SS+5d, x.WI-WTHR-1040, x.WI-WTHR-1050 |  |
| FS-LVL1-1030 | Slab Prep & Pour (Pour A1) | 2026-01-28 → 2026-02-02 (+5d) | 2026-02-03 → 2026-02-11 (+8d) | 5d → 8d |  |  | FS-LVL1-1010, FS-LVL1-1000 → FS-LVL1-1010 SS, FS-LVL1-1000 SS |  |
| FS-LVL1-1020 | Erect Stairs & Elevator Shafts (CMU Cores) | 2026-02-04 → 2026-02-09 (+5d) | 2026-02-24 → 2026-02-27 (+3d) |  |  | 173d → 91d | FS-LVL1-1000, FS-LVL1-1030 → FS-LVL1-1030 SS+5d |  |
| FS-LVL1-1040 | Slab Prep & Pour (Pour A2) | 2026-02-04 → 2026-02-12 (+8d) | 2026-02-06 → 2026-02-16 (+10d) |  |  |  |  |  |
| FS-LVL1-1050 | Steel Erection (Columns & Beams) | 2026-02-09 → 2026-02-16 (+7d) | 2026-02-20 → 2026-02-27 (+7d) |  |  |  | FS-LVL1-1040 → FS-LVL1-1040 FS-1d, FS-LVL1-1030, PS-PROC-1030 | was named Steel Erection (Colums & Beams) |
| FS-LVL1-1060 | Fireproofing | 2026-02-23 → 2026-03-18 (+23d) | 2026-02-25 → 2026-03-20 (+23d) |  |  | 187d → 120d | FS-LVL1-1050, FS-LVL2-1000 → FS-LVL1-1050, FS-LVL2-1000, PS-PROC-1340 |  |
| 2 | **Level 2** | 2026-02-17 → 2026-02-24 (+7d) | 2026-03-23 → 2026-03-30 (+7d) |  |  |  |  |  |
| FS-LVL2-1000 | Install Metal Decking | 2026-02-17 → 2026-02-24 (+7d) | 2026-02-20 → 2026-02-27 (+7d) |  |  |  |  |  |
| FS-LVL2-1010 | MEPF Rough-In (Pre-Pour) | 2026-02-19 → 2026-02-26 (+7d) | 2026-02-25 → 2026-03-04 (+7d) |  |  |  |  |  |
| FS-LVL2-1020 | FRP Metal Deck Slab (Pour A1) | 2026-02-26 → 2026-03-05 (+7d) | 2026-03-04 → 2026-03-11 (+7d) |  |  |  | FS-LVL2-1010 → FS-LVL2-1010, PS-PROC-1250 |  |
| FS-LVL2-1030 | FRP Metal Deck Slab (Pour A2) | 2026-03-05 → 2026-03-12 (+7d) | 2026-03-09 → 2026-03-16 (+7d) |  |  |  |  |  |
| FS-LVL2-1040 | Layout & Erect Load Bearing Framing | 2026-03-10 → 2026-03-17 (+7d) | 2026-03-23 → 2026-03-30 (+7d) |  |  |  |  |  |
| 3 | **Level 3** | 2026-03-18 → 2026-03-25 (+7d) | 2026-04-21 → 2026-04-28 (+7d) |  |  |  |  |  |
| FS-LVL3-1000 | Install Metal Decking | 2026-03-18 → 2026-03-25 (+7d) | 2026-03-23 → 2026-03-30 (+7d) |  |  |  |  |  |
| FS-LVL3-1010 | MEPF Rough-In (Pre-Pour) | 2026-03-20 → 2026-03-27 (+7d) | 2026-03-26 → 2026-04-02 (+7d) |  |  |  |  |  |
| FS-LVL3-1020 | FRP Metal Deck Slab (Pour A1) | 2026-03-27 → 2026-04-03 (+7d) | 2026-04-02 → 2026-04-09 (+7d) |  |  |  |  |  |
| FS-LVL3-1030 | FRP Metal Deck Slab (Pour A2) | 2026-04-03 → 2026-04-10 (+7d) | 2026-04-07 → 2026-04-14 (+7d) |  |  |  |  |  |
| FS-LVL3-1040 | Layout & Erect Load Bearing Framing | 2026-04-08 → 2026-04-15 (+7d) | 2026-04-21 → 2026-04-28 (+7d) |  |  |  |  |  |
| 5 | **Level 4** | 2026-04-16 → 2026-04-23 (+7d) | 2026-05-20 → 2026-05-28 (+8d) |  |  |  |  |  |
| FS-LVL4-1000 | Install Metal Decking | 2026-04-16 → 2026-04-23 (+7d) | 2026-04-21 → 2026-04-28 (+7d) |  |  |  |  |  |
| FS-LVL4-1010 | MEPF Rough-In (Pre-Pour) | 2026-04-20 → 2026-04-27 (+7d) | 2026-04-24 → 2026-05-01 (+7d) |  |  |  |  |  |
| FS-LVL4-1020 | FRP Metal Deck Slab (Pour A1) | 2026-04-27 → 2026-05-04 (+7d) | 2026-05-01 → 2026-05-08 (+7d) |  |  |  |  |  |
| FS-LVL4-1030 | FRP Metal Deck Slab (Pour A2) | 2026-05-04 → 2026-05-11 (+7d) | 2026-05-06 → 2026-05-13 (+7d) |  |  |  |  |  |
| FS-LVL4-1040 | Layout & Erect Load Bearing Framing | 2026-05-07 → 2026-05-14 (+7d) | 2026-05-20 → 2026-05-28 (+8d) |  |  |  |  |  |
| 4 | **Roof** | 2026-05-15 → 2026-05-22 (+7d) | 2026-05-27 → 2026-06-03 (+7d) |  |  |  |  |  |
| FS-ROOF-1000 | Install Metal Decking | 2026-05-15 → 2026-05-22 (+7d) | 2026-05-20 → 2026-05-28 (+8d) |  |  |  |  |  |
| FS-ROOF-1010 | MEPF Rough-In (Stubups) | 2026-05-19 → 2026-05-27 (+8d) | 2026-05-21 → 2026-05-29 (+8d) |  |  |  |  |  |
| FS-ROOF-1020 | Layout & Frame Parapets | 2026-05-22 → 2026-06-01 (+10d) | 2026-05-27 → 2026-06-03 (+7d) |  |  |  |  |  |
| 2 | **Envelope & Exterior** | 2026-05-07 → 2026-05-14 (+7d) | 2026-10-08 → 2026-10-15 (+7d) |  |  |  |  |  |
| 0 | **North Elevation** | 2026-05-07 → 2026-05-14 (+7d) | 2026-08-25 → 2026-09-01 (+7d) |  |  |  |  |  |
| EE-NRTH-1000 | Layout & Exterior Framing (Level 1) | 2026-05-07 → 2026-05-14 (+7d) | 2026-05-13 → 2026-05-20 (+7d) |  |  |  |  |  |

| ID | Task | Start | Finish | Duration | Total float | Predecessors |
| --- | --- | --- | --- | --- | --- | --- |
| EE-NRTH-1010 | City Inspection (Rough Framing) | 2026-05-14 → 2026-05-21 (+7d) | 2026-05-14 → 2026-05-21 (+7d) |  |  |  |
| EE-NRTH-1020 | Electrical Rough-In | 2026-05-28 → 2026-06-04 (+7d) | 2026-06-03 → 2026-06-10 (+7d) |  |  |  |
| EE-NRTH-1030 | City Inspection (Electrical) | 2026-06-04 → 2026-06-11 (+7d) | 2026-06-04 → 2026-06-11 (+7d) |  | 29d → 23d |  |
| EE-NRTH-1040 | Install Exterior Sheathing | 2026-06-05 → 2026-06-12 (+7d) | 2026-06-11 → 2026-06-18 (+7d) |  | 29d → 23d |  |
| EE-NRTH-1050 | City Inspection (Screw Inspection) | 2026-06-12 → 2026-06-19 (+7d) | 2026-06-12 → 2026-06-19 (+7d) |  | 29d → 23d |  |
| EE-NRTH-1060 | Weather Barrier & Flashing | 2026-06-15 → 2026-06-22 (+7d) | 2026-06-19 → 2026-06-26 (+7d) |  | 29d → 23d |  |
| EE-NRTH-1070 | Install Rigid Insulation | 2026-06-22 → 2026-06-29 (+7d) | 2026-06-26 → 2026-07-06 (+10d) |  | 29d → 23d |  |
| EE-NRTH-1080 | Storefront, Windows & Metals | 2026-06-29 → 2026-07-07 (+8d) | 2026-07-01 → 2026-07-09 (+8d) |  | 29d → 23d | EE-NRTH-1070 → EE-NRTH-1070, PS-PROC-1270 |
| EE-NRTH-1090 | Install Brick Veneer | 2026-07-02 → 2026-07-10 (+8d) | 2026-07-23 → 2026-07-30 (+7d) |  | 29d → 23d | EE-NRTH-1080 → EE-NRTH-1080, PS-PROC-1240, PS-PROC-1370 |
| EE-NRTH-1100 | Install Canopies & Trim | 2026-07-24 → 2026-07-31 (+7d) | 2026-07-28 → 2026-08-04 (+7d) |  | 60d → 56d |  |
| EE-NRTH-1110 | Install Lighting Fixtures | 2026-07-29 → 2026-08-05 (+7d) | 2026-07-31 → 2026-08-07 (+7d) |  | 60d → 56d |  |
| EE-NRTH-1120 | Install Signage | 2026-08-03 → 2026-08-10 (+7d) | 2026-08-03 → 2026-08-10 (+7d) |  | 60d → 56d |  |
| EE-NRTH-1130 | Install Doors & Hardware | 2026-08-04 → 2026-08-11 (+7d) | 2026-08-05 → 2026-08-12 (+7d) |  | 60d → 56d |  |
| EE-NRTH-1140 | Install Downspouts | 2026-08-06 → 2026-08-13 (+7d) | 2026-08-06 → 2026-08-13 (+7d) |  | 60d → 56d |  |
| EE-NRTH-1150 | Final Paint | 2026-08-07 → 2026-08-14 (+7d) | 2026-08-11 → 2026-08-18 (+7d) |  | 60d → 56d |  |
| EE-NRTH-1160 | Punch List & Corrections | 2026-08-12 → 2026-08-19 (+7d) | 2026-08-18 → 2026-08-25 (+7d) |  | 60d → 56d |  |
| EE-NRTH-1170 | Final Owner Walk (Punch List & Corrections) | 2026-08-19 → 2026-08-26 (+7d) | 2026-08-25 → 2026-09-01 (+7d) |  | 60d → 93d |  |
| 2 | **East Elevation** | 2026-05-14 → 2026-05-21 (+7d) | 2026-08-28 → 2026-09-04 (+7d) |  |  |  |
| EE-EAST-1000 | Layout & Exterior Framing (Level 1) | 2026-05-14 → 2026-05-21 (+7d) | 2026-05-20 → 2026-05-28 (+8d) |  |  |  |
| EE-EAST-1010 | City Inspection (Rough Framing) | 2026-05-21 → 2026-05-29 (+8d) | 2026-05-21 → 2026-05-29 (+8d) |  |  |  |
| EE-EAST-1020 | Electrical Rough-In | 2026-06-04 → 2026-06-11 (+7d) | 2026-06-10 → 2026-06-17 (+7d) |  |  |  |
| EE-EAST-1030 | City Inspection (Electrical) | 2026-06-11 → 2026-06-18 (+7d) | 2026-06-11 → 2026-06-18 (+7d) |  | 39d → 33d |  |
| EE-EAST-1040 | Install Exterior Sheathing | 2026-06-12 → 2026-06-19 (+7d) | 2026-06-18 → 2026-06-25 (+7d) |  | 39d → 33d |  |
| EE-EAST-1050 | City Inspection (Screw Inspection) | 2026-06-19 → 2026-06-26 (+7d) | 2026-06-19 → 2026-06-26 (+7d) |  | 39d → 33d |  |
| EE-EAST-1060 | Weather Barrier & Flashing | 2026-06-22 → 2026-06-29 (+7d) | 2026-06-26 → 2026-07-06 (+10d) |  | 39d → 33d |  |
| EE-EAST-1070 | Install Rigid Insulation | 2026-06-29 → 2026-07-07 (+8d) | 2026-07-06 → 2026-07-13 (+7d) |  | 39d → 33d |  |
| EE-EAST-1080 | Install Windows & Metals | 2026-07-07 → 2026-07-14 (+7d) | 2026-07-09 → 2026-07-16 (+7d) |  | 39d → 33d |  |
| EE-EAST-1090 | Install Brick Veneer | 2026-07-24 → 2026-07-31 (+7d) | 2026-08-13 → 2026-08-20 (+7d) |  | 29d → 23d |  |
| EE-EAST-1100 | Install Signage | 2026-08-14 → 2026-08-21 (+7d) | 2026-08-14 → 2026-08-21 (+7d) |  | 57d → 53d |  |
| EE-EAST-1110 | Punch List & Corrections | 2026-08-17 → 2026-08-24 (+7d) | 2026-08-21 → 2026-08-28 (+7d) |  | 57d → 53d |  |
| EE-EAST-1120 | Final Owner Walk (Punch List & Corrections) | 2026-08-24 → 2026-08-31 (+7d) | 2026-08-28 → 2026-09-04 (+7d) |  | 57d → 90d |  |
| 5 | **South Elevation** | 2026-05-21 → 2026-05-29 (+8d) | 2026-09-28 → 2026-10-05 (+7d) |  |  |  |
| EE-SOTH-1000 | Layout & Exterior Framing (Level 1) | 2026-05-21 → 2026-05-29 (+8d) | 2026-05-28 → 2026-06-04 (+7d) |  |  |  |
| EE-SOTH-1010 | City Inspection (Rough Framing) | 2026-05-29 → 2026-06-05 (+7d) | 2026-05-29 → 2026-06-05 (+7d) |  |  |  |
| EE-SOTH-1020 | Electrical Rough-In | 2026-06-11 → 2026-06-18 (+7d) | 2026-06-17 → 2026-06-24 (+7d) |  |  |  |
| EE-SOTH-1030 | City Inspection (Electrical) | 2026-06-18 → 2026-06-25 (+7d) | 2026-06-18 → 2026-06-25 (+7d) |  | 52d → 46d |  |
| EE-SOTH-1040 | Install Exterior Sheathing | 2026-06-19 → 2026-06-26 (+7d) | 2026-06-25 → 2026-07-02 (+7d) |  | 52d → 46d |  |
| EE-SOTH-1050 | City Inspection (Screw Inspection) | 2026-06-26 → 2026-07-06 (+10d) | 2026-06-26 → 2026-07-06 (+10d) |  | 52d → 46d |  |
| EE-SOTH-1060 | Weather Barrier & Flashing | 2026-06-29 → 2026-07-07 (+8d) | 2026-07-06 → 2026-07-13 (+7d) |  | 52d → 46d |  |
| EE-SOTH-1070 | Install Rigid Insulation | 2026-07-07 → 2026-07-14 (+7d) | 2026-07-13 → 2026-07-20 (+7d) |  | 52d → 46d |  |
| EE-SOTH-1080 | Install Brick Veneer | 2026-08-14 → 2026-08-21 (+7d) | 2026-09-03 → 2026-09-11 (+8d) |  | 29d → 23d |  |
| EE-SOTH-1090 | Install Signage | 2026-09-04 → 2026-09-14 (+10d) | 2026-09-04 → 2026-09-14 (+10d) |  | 37d → 33d |  |
| EE-SOTH-1100 | Install Doors & Hardware | 2026-09-08 → 2026-09-15 (+7d) | 2026-09-08 → 2026-09-15 (+7d) |  | 37d → 33d |  |
| EE-SOTH-1110 | Install Downspouts | 2026-09-09 → 2026-09-16 (+7d) | 2026-09-10 → 2026-09-17 (+7d) |  | 37d → 33d |  |
| EE-SOTH-1120 | Final Paint | 2026-09-11 → 2026-09-18 (+7d) | 2026-09-14 → 2026-09-21 (+7d) |  | 37d → 33d |  |
| EE-SOTH-1130 | Punch List & Corrections | 2026-09-15 → 2026-09-22 (+7d) | 2026-09-21 → 2026-09-28 (+7d) |  | 37d → 33d |  |
| EE-SOTH-1140 | Final Owner Walk (Punch List & Corrections) | 2026-09-22 → 2026-09-29 (+7d) | 2026-09-28 → 2026-10-05 (+7d) |  | 37d → 70d |  |
| 1 | **West Elevation** | 2026-05-29 → 2026-06-05 (+7d) | 2026-10-08 → 2026-10-15 (+7d) |  |  |  |
| EE-WEST-1000 | Layout & Exterior Framing (Level 1) | 2026-05-29 → 2026-06-05 (+7d) | 2026-06-04 → 2026-06-11 (+7d) |  |  |  |
| EE-WEST-1010 | City Inspection (Rough Framing) | 2026-06-05 → 2026-06-12 (+7d) | 2026-06-05 → 2026-06-12 (+7d) |  |  |  |
| EE-WEST-1020 | Electrical Rough-In | 2026-06-18 → 2026-06-25 (+7d) | 2026-06-24 → 2026-07-01 (+7d) |  |  |  |
| EE-WEST-1030 | City Inspection (Electrical) | 2026-06-25 → 2026-07-02 (+7d) | 2026-06-25 → 2026-07-02 (+7d) |  |  |  |
| EE-WEST-1040 | Install Exterior Sheathing | 2026-06-26 → 2026-07-06 (+10d) | 2026-07-02 → 2026-07-10 (+8d) |  |  |  |
| EE-WEST-1050 | City Inspection (Screw Inspection) | 2026-07-06 → 2026-07-13 (+7d) | 2026-07-06 → 2026-07-13 (+7d) |  |  |  |
| EE-WEST-1060 | Weather Barrier & Flashing | 2026-07-07 → 2026-07-14 (+7d) | 2026-07-13 → 2026-07-20 (+7d) |  |  |  |
| EE-WEST-1070 | Install Rigid Insulation | 2026-07-14 → 2026-07-21 (+7d) | 2026-07-20 → 2026-07-27 (+7d) |  |  |  |
| EE-WEST-1080 | Install Windows & Metals | 2026-07-21 → 2026-07-28 (+7d) | 2026-07-23 → 2026-07-30 (+7d) |  |  |  |
| EE-WEST-1090 | Install Brick Veneer | 2026-09-04 → 2026-09-14 (+10d) | 2026-09-25 → 2026-10-02 (+7d) |  | 29d → 23d |  |
| EE-WEST-1100 | Install Signage | 2026-09-28 → 2026-10-05 (+7d) | 2026-09-28 → 2026-10-05 (+7d) |  | 29d → 23d |  |
| EE-WEST-1110 | Punch List & Corrections | 2026-09-29 → 2026-10-06 (+7d) | 2026-10-05 → 2026-10-12 (+7d) |  | 29d → 23d |  |
| EE-WEST-1120 | Final Owner Walk (Punch List & Corrections) | 2026-10-06 → 2026-10-13 (+7d) | 2026-10-08 → 2026-10-15 (+7d) |  | 29d → 62d |  |
| 3 | **Roof** | 2026-05-28 → 2026-06-04 (+7d) | 2026-09-08 → 2026-09-25 (+17d) |  |  |  |
| EE-ROOF-1000 | Clean & Prep Metal Deck | 2026-05-28 → 2026-06-04 (+7d) | 2026-05-29 → 2026-06-05 (+7d) |  | 27d → 17d |  |
| EE-ROOF-1010 | Stage Materials & Solar Rails (Crane) | 2026-06-01 → 2026-06-08 (+7d) | 2026-06-01 → 2026-06-09 (+8d) | 1d → 2d | 27d → 17d |  |
| EE-ROOF-1020 | Layout for Penetrations, Curb Blocking, Edge Metal | 2026-06-02 → 2026-06-10 (+8d) | 2026-06-03 → 2026-06-11 (+8d) |  | 27d → 17d |  |
| EE-ROOF-1030 | Install Blocking & Equipment Curbs | 2026-06-04 → 2026-06-12 (+8d) | 2026-06-08 → 2026-06-16 (+8d) |  | 27d → 17d |  |
| EE-ROOF-1040 | Install Rigid Insulation | 2026-06-09 → 2026-06-17 (+8d) | 2026-06-12 → 2026-06-22 (+10d) |  | 27d → 17d |  |
| EE-ROOF-1050 | Install Cover Board | 2026-06-15 → 2026-06-23 (+8d) | 2026-06-18 → 2026-06-26 (+8d) |  | 27d → 17d | EE-ROOF-1040 → EE-ROOF-1040, PS-PROC-1260 |
| EE-ROOF-1060 | Install TPO Roofing System (incl. boots, termination bars) | 2026-06-19 → 2026-06-29 (+10d) | 2026-07-02 → 2026-07-13 (+11d) |  | 27d → 17d |  |
| EE-ROOF-1070 | Install Edge Metal, Coping, Trim | 2026-07-06 → 2026-07-14 (+8d) | 2026-07-10 → 2026-07-20 (+10d) |  | 51d → 34d |  |

| ID | Task | Start | Finish | Duration | Total float | Predecessors | Other |
| --- | --- | --- | --- | --- | --- | --- | --- |
| EE-ROOF-1080 | Install Roof Drains, Vents, Mechanical Curbs | 2026-07-13 → 2026-07-21 (+8d) | 2026-07-17 → 2026-07-27 (+10d) |  | 51d → 34d |  |  |
| EE-ROOF-1090 | Install Electrical Conduit & Roof Mounted Boxes | 2026-07-20 → 2026-07-28 (+8d) | 2026-07-24 → 2026-08-03 (+10d) |  | 51d → 34d |  |  |
| EE-ROOF-1140 | Set Rooftop Units (RTU's & Splits) | 2026-07-20 → 2026-07-28 (+8d) | 2026-07-20 → 2026-07-28 (+8d) |  | 72d → 55d | EE-ROOF-1080 → EE-ROOF-1080, PS-PROC-1230 |  |
| EE-ROOF-1150 | Install Duct/Condensate/Vent Tie-Ins & Flashing | 2026-07-21 → 2026-07-29 (+8d) | 2026-07-23 → 2026-07-31 (+8d) |  | 72d → 55d |  |  |
| EE-ROOF-1160 | Startup/Controls/Balancing Prep | 2026-07-24 → 2026-08-03 (+10d) | 2026-07-28 → 2026-08-05 (+8d) |  | 72d → 55d |  |  |
| EE-ROOF-1100 | Install Solar Mounting Rails & Racking | 2026-07-27 → 2026-08-04 (+8d) | 2026-07-29 → 2026-08-06 (+8d) |  | 51d → 34d |  |  |
| EE-ROOF-1170 | Water Test / Leak Test | 2026-07-29 → 2026-08-06 (+8d) | 2026-07-29 → 2026-08-06 (+8d) |  | 72d → 55d |  |  |
| EE-ROOF-1110 | Mount Solar Panels | 2026-07-30 → 2026-08-07 (+8d) | 2026-08-19 → 2026-08-27 (+8d) |  | 51d → 34d |  |  |
| EE-ROOF-1180 | Roof Patches (If Any) | 2026-07-30 → 2026-08-07 (+8d) | 2026-07-30 → 2026-08-07 (+8d) |  | 72d → 55d |  |  |
| EE-ROOF-1190 | Punch List & Corrections | 2026-07-31 → 2026-08-10 (+10d) | 2026-08-04 → 2026-08-12 (+8d) |  | 72d → 55d |  |  |
| EE-ROOF-1120 | Run Electrical Conduit & Inverters to Roof | 2026-08-20 → 2026-08-28 (+8d) | 2026-08-26 → 2026-09-03 (+8d) |  | 51d → 34d |  |  |
| EE-ROOF-1130 | Final Electrical Tie-In (Solar Panels) | 2026-08-27 → 2026-09-04 (+8d) | 2026-09-02 → 2026-09-11 (+9d) |  | 51d → 34d |  |  |
| EE-ROOF-1200 | Final Owner Walk (Punch List & Corrections) | 2026-09-03 → 2026-09-14 (+11d) | 2026-09-08 → 2026-09-25 (+17d) | 3d → 10d | 51d → 34d |  |  |
| 3 | **Interior Build-Out** | 2026-02-25 → 2026-03-02 (+5d) | 2026-10-12 → 2026-10-20 (+8d) |  |  |  |  |
| Level 2 Interior | **Level 2 Interior** | 2026-07-06 → 2026-07-14 (+8d) | 2026-08-20 → 2026-09-11 (+22d) |  |  |  |  |
| IB-L2IN-1000 | Layout & Framing (incl. backing, door frames) | 2026-07-06 → 2026-07-14 (+8d) | 2026-07-10 → 2026-07-20 (+10d) |  | 27d → 17d | FS-LVL3-1030, EE-ROOF-1060 → FS-LVL3-1030, EE-ROOF-1060, IB-STAR-1000, PS-PROC-1280 |  |
| IB-L2IN-1010 | Electrical Rough-In | 2026-07-13 → 2026-07-21 (+8d) | 2026-07-17 → 2026-07-27 (+10d) |  | 27d → 17d |  |  |
| IB-L2IN-1020 | Mechanical Rough-In | 2026-07-13 → 2026-07-21 (+8d) | 2026-07-17 → 2026-07-27 (+10d) |  | 27d → 17d | IB-L2IN-1010 SS → IB-L2IN-1010 SS, PS-PROC-1230 |  |
| IB-L2IN-1030 | Plumbing Rough-In | 2026-07-13 → 2026-07-21 (+8d) | 2026-07-17 → 2026-07-27 (+10d) |  | 27d → 17d |  |  |
| IB-L2IN-1040 | Fire Supression Rough-In | 2026-07-13 → 2026-07-21 (+8d) | 2026-07-17 → 2026-07-27 (+10d) |  | 27d → 17d |  |  |
| IB-L2IN-1050 | Install Insulation | 2026-07-20 → 2026-07-28 (+8d) | 2026-07-21 → 2026-07-29 (+8d) |  | 63d → 48d |  |  |
| IB-L2IN-1060 | Install Drywall | 2026-07-22 → 2026-07-30 (+8d) | 2026-07-27 → 2026-08-04 (+8d) |  | 63d → 48d |  |  |
| IB-L2IN-1070 | Tape & Mud Drywall | 2026-07-28 → 2026-08-05 (+8d) | 2026-08-03 → 2026-08-11 (+8d) |  | 63d → 48d |  |  |
| IB-L2IN-1080 | Prep & Paint | 2026-08-04 → 2026-08-12 (+8d) | 2026-08-06 → 2026-08-14 (+8d) |  | 63d → 48d |  |  |
| IB-L2IN-1090 | MEPF Trim-Out | 2026-08-07 → 2026-08-17 (+10d) | 2026-08-13 → 2026-08-21 (+8d) |  | 63d → 48d | IB-L2IN-1080 → IB-L2IN-1080, PS-PROC-1220 |  |
| IB-L2IN-1100 | Install Storage Doors & Hardware | 2026-08-14 → 2026-08-24 (+10d) | 2026-08-20 → 2026-08-28 (+8d) |  | 63d → 48d |  |  |
| 3 | **Level 3 Interior** | 2026-07-13 → 2026-07-21 (+8d) | 2026-08-27 → 2026-09-15 (+19d) |  |  |  |  |
| IB-L3IN-1000 | Layout & Framing (incl. backing, door frames) | 2026-07-13 → 2026-07-21 (+8d) | 2026-07-17 → 2026-07-27 (+10d) |  | 36d → 26d |  |  |
| IB-L3IN-1010 | Electrical Rough-In | 2026-07-20 → 2026-07-28 (+8d) | 2026-07-24 → 2026-08-03 (+10d) |  | 58d → 46d |  |  |
| IB-L3IN-1020 | Mechanical Rough-In | 2026-07-20 → 2026-07-28 (+8d) | 2026-07-24 → 2026-08-03 (+10d) |  | 58d → 46d |  |  |
| IB-L3IN-1030 | Plumbing Rough-In | 2026-07-20 → 2026-07-28 (+8d) | 2026-07-24 → 2026-08-03 (+10d) |  | 58d → 46d |  |  |
| IB-L3IN-1040 | Fire Supression Rough-In | 2026-07-20 → 2026-07-28 (+8d) | 2026-07-24 → 2026-08-03 (+10d) |  | 58d → 46d |  |  |
| IB-L3IN-1050 | Install Insulation | 2026-07-27 → 2026-08-04 (+8d) | 2026-07-28 → 2026-08-05 (+8d) |  | 58d → 46d |  |  |
| IB-L3IN-1060 | Install Drywall | 2026-07-29 → 2026-08-06 (+8d) | 2026-08-03 → 2026-08-11 (+8d) |  | 58d → 46d |  |  |
| IB-L3IN-1070 | Tape & Mud Drywall | 2026-08-04 → 2026-08-12 (+8d) | 2026-08-10 → 2026-08-18 (+8d) |  | 58d → 46d |  |  |
| IB-L3IN-1080 | Prep & Paint | 2026-08-11 → 2026-08-19 (+8d) | 2026-08-13 → 2026-08-21 (+8d) |  | 58d → 46d |  |  |
| IB-L3IN-1090 | MEPF Trim-Out | 2026-08-14 → 2026-08-24 (+10d) | 2026-08-20 → 2026-08-28 (+8d) |  | 58d → 46d |  |  |
| IB-L3IN-1100 | Install Storage Doors & Hardware | 2026-08-21 → 2026-08-31 (+10d) | 2026-08-27 → 2026-09-04 (+8d) |  | 58d → 46d |  |  |
| 1 | **Unisex Restroom** | 2026-07-20 → 2026-07-28 (+8d) | 2026-08-18 → 2026-09-03 (+16d) |  |  |  |  |
| IB-L3UN-1000 | Framing (Metal Studs, Blocking) | 2026-07-20 → 2026-07-28 (+8d) | 2026-07-22 → 2026-07-30 (+8d) |  | 65d → 33d |  |  |
| IB-L3UN-1010 | MEPF Rough-In | 2026-07-23 → 2026-07-31 (+8d) | 2026-07-27 → 2026-08-04 (+8d) |  | 65d → 51d |  |  |
| IB-L3UN-1020 | City Inspection (Framing & MEPF Rough) | 2026-07-28 → 2026-08-05 (+8d) | 2026-07-28 → 2026-08-05 (+8d) |  | 65d → 52d |  |  |
| IB-L3UN-1030 | Install Insulation | 2026-07-29 → 2026-08-06 (+8d) | 2026-07-29 → 2026-08-06 (+8d) |  | 65d → 52d |  |  |
| IB-L3UN-1040 | Install Drywall | 2026-07-30 → 2026-08-07 (+8d) | 2026-07-31 → 2026-08-10 (+10d) |  | 65d → 52d |  |  |
| IB-L3UN-1050 | Tape & Mud Drywall | 2026-08-03 → 2026-08-11 (+8d) | 2026-08-05 → 2026-08-13 (+8d) |  | 65d → 54d |  |  |
| IB-L3UN-1060 | Painting | 2026-08-06 → 2026-08-14 (+8d) | 2026-08-07 → 2026-08-17 (+10d) |  | 65d → 54d |  |  |
| IB-L3UN-1070 | Install Restroom Fixtures & Partitions | 2026-08-10 → 2026-08-18 (+8d) | 2026-08-11 → 2026-08-19 (+8d) |  | 65d → 54d | IB-L3UN-1060 → IB-L3UN-1060, PS-PROC-1350 |  |
| IB-L3UN-1080 | Install Accessories (Grab Bars, Mirrors, Signs) | 2026-08-12 → 2026-08-20 (+8d) | 2026-08-13 → 2026-08-21 (+8d) |  | 65d → 54d | IB-L3UN-1070 → IB-L3UN-1070, PS-PROC-1310 |  |
| IB-L3UN-1090 | Final MEP Trim-Out | 2026-08-14 → 2026-08-24 (+10d) | 2026-08-17 → 2026-08-25 (+8d) |  | 65d → 54d |  |  |
| IB-L3UN-1100 | Final Clean and Punchlist | 2026-08-18 → 2026-08-26 (+8d) | 2026-08-18 → 2026-08-27 (+9d) | 1d → 2d | 65d → 54d |  | was named Final Clean |
| 5 | **Level 4 Interior** | 2026-07-20 → 2026-07-28 (+8d) | 2026-09-03 → 2026-09-23 (+20d) |  |  |  |  |
| IB-L4IN-1000 | Layout & Framing (incl. backing, door frames) | 2026-07-20 → 2026-07-28 (+8d) | 2026-07-24 → 2026-08-03 (+10d) |  | 36d → 26d |  |  |
| IB-L4IN-1010 | Electrical Rough-In | 2026-07-27 → 2026-08-04 (+8d) | 2026-07-31 → 2026-08-10 (+10d) |  | 48d → 33d |  |  |
| IB-L4IN-1020 | Mechanical Rough-In | 2026-07-27 → 2026-08-04 (+8d) | 2026-07-31 → 2026-08-10 (+10d) |  | 48d → 33d |  |  |
| IB-L4IN-1030 | Plumbing Rough-In | 2026-07-27 → 2026-08-04 (+8d) | 2026-07-31 → 2026-08-10 (+10d) |  | 48d → 33d |  |  |
| IB-L4IN-1040 | Fire Supression Rough-In | 2026-07-27 → 2026-08-04 (+8d) | 2026-07-31 → 2026-08-10 (+10d) |  | 48d → 33d |  |  |
| IB-L4IN-1050 | Install Insulation | 2026-08-03 → 2026-08-11 (+8d) | 2026-08-04 → 2026-08-12 (+8d) |  | 48d → 33d |  |  |
| IB-L4IN-1060 | Install Drywall | 2026-08-05 → 2026-08-13 (+8d) | 2026-08-10 → 2026-08-18 (+8d) |  | 48d → 33d |  |  |
| IB-L4IN-1070 | Tape & Mud Drywall | 2026-08-11 → 2026-08-19 (+8d) | 2026-08-17 → 2026-08-25 (+8d) |  | 48d → 33d |  |  |
| IB-L4IN-1080 | Prep & Paint | 2026-08-18 → 2026-08-26 (+8d) | 2026-08-20 → 2026-08-28 (+8d) |  | 48d → 33d |  |  |
| IB-L4IN-1090 | MEPF Trim-Out | 2026-08-21 → 2026-08-31 (+10d) | 2026-08-27 → 2026-09-04 (+8d) |  | 48d → 33d |  |  |
| IB-L4IN-1100 | Install Storage Doors & Hardware | 2026-08-28 → 2026-09-08 (+11d) | 2026-09-03 → 2026-09-14 (+11d) |  | 53d → 41d |  |  |
| Level 1 Interior | **Level 1 Interior** | 2026-07-27 → 2026-08-04 (+8d) | 2026-09-16 → 2026-10-02 (+16d) |  |  |  |  |
| IB-L1IN-1000 | Layout & Framing (incl. backing, door frames) | 2026-07-27 → 2026-08-04 (+8d) | 2026-07-31 → 2026-08-10 (+10d) |  | 36d → 26d | EE-ROOF-1060, IB-L4IN-1000 → EE-ROOF-1060, IB-L4IN-1000, FS-LVL1-1060 |  |
| IB-L1IN-1010 | Electrical Rough-In | 2026-08-03 → 2026-08-11 (+8d) | 2026-08-07 → 2026-08-17 (+10d) |  | 48d → 36d |  |  |
| IB-L1IN-1020 | Mechanical Rough-In | 2026-08-03 → 2026-08-11 (+8d) | 2026-08-07 → 2026-08-17 (+10d) |  | 48d → 36d |  |  |
| IB-L1IN-1030 | Plumbing Rough-In | 2026-08-03 → 2026-08-11 (+8d) | 2026-08-07 → 2026-08-17 (+10d) |  | 48d → 36d |  |  |
| IB-L1IN-1040 | Fire Supression Rough-In | 2026-08-03 → 2026-08-11 (+8d) | 2026-08-07 → 2026-08-17 (+10d) |  | 48d → 36d |  |  |
| IB-L1IN-1050 | Install Insulation | 2026-08-10 → 2026-08-18 (+8d) | 2026-08-11 → 2026-08-19 (+8d) |  | 48d → 36d |  |  |
| IB-L1IN-1060 | Install Drywall | 2026-08-12 → 2026-08-20 (+8d) | 2026-08-17 → 2026-08-25 (+8d) |  | 48d → 36d |  |  |

| ID | Task | Start | Finish | Duration | Total float | Predecessors | Other |
| --- | --- | --- | --- | --- | --- | --- | --- |
| IB-L1IN-1070 | Tape & Mud Drywall | 2026-08-18 → 2026-08-26 (+8d) | 2026-08-24 → 2026-09-01 (+8d) |  | 48d → 36d |  |  |
| IB-L1IN-1080 | Prep & Paint | 2026-08-25 → 2026-09-02 (+8d) | 2026-08-27 → 2026-09-04 (+8d) |  | 48d → 36d |  |  |
| IB-L1IN-1090 | MEPF Trim-Out | 2026-08-28 → 2026-09-08 (+11d) | 2026-09-03 → 2026-09-14 (+11d) |  | 48d → 36d |  |  |
| IB-L1IN-1100 | Install Storage Doors & Hardware | 2026-09-04 → 2026-09-15 (+11d) | 2026-09-11 → 2026-09-21 (+10d) |  | 48d → 36d |  |  |
| 1 | **Restrooms (Mens & Womens)** | 2026-08-03 → 2026-08-11 (+8d) | 2026-09-01 → 2026-09-18 (+17d) |  |  |  |  |
| IB-L1RR-1000 | Framing (Metal Studs, Blocking) | 2026-08-03 → 2026-08-11 (+8d) | 2026-08-05 → 2026-08-13 (+8d) |  | 36d → 26d | IB-L1IN-1000 → IB-L1IN-1000, IB-L3UN-1000 |  |
| IB-L1RR-1010 | MEPF Rough-In | 2026-08-06 → 2026-08-14 (+8d) | 2026-08-10 → 2026-08-18 (+8d) |  | 55d → 44d | IB-L1RR-1000 → IB-L1RR-1000, IB-L3UN-1010 |  |
| IB-L1RR-1020 | City Inspection (Framing & MEPF Rough) | 2026-08-11 → 2026-08-19 (+8d) | 2026-08-11 → 2026-08-19 (+8d) |  | 55d → 44d | IB-L1RR-1010 → IB-L1RR-1010, IB-L3UN-1020 SS |  |
| IB-L1RR-1030 | Install Insulation | 2026-08-12 → 2026-08-20 (+8d) | 2026-08-12 → 2026-08-20 (+8d) |  | 55d → 44d |  |  |
| IB-L1RR-1040 | Install Drywall | 2026-08-13 → 2026-08-21 (+8d) | 2026-08-14 → 2026-08-24 (+10d) |  | 55d → 44d | IB-L1RR-1030 → IB-L1RR-1030, IB-L3UN-1040 |  |
| IB-L1RR-1050 | Tape & Mud Drywall | 2026-08-17 → 2026-08-25 (+8d) | 2026-08-19 → 2026-08-27 (+8d) |  | 55d → 44d |  |  |
| IB-L1RR-1060 | Painting | 2026-08-20 → 2026-08-28 (+8d) | 2026-08-21 → 2026-08-31 (+10d) |  | 55d → 44d | IB-L1RR-1050 → IB-L1RR-1050, PS-PROC-1290 |  |
| IB-L1RR-1070 | Install Restroom Fixtures & Partitions | 2026-08-24 → 2026-09-01 (+8d) | 2026-08-25 → 2026-09-02 (+8d) |  | 55d → 44d |  |  |
| IB-L1RR-1080 | Install Accessories (Grab Bars, Mirrors, Signs) | 2026-08-26 → 2026-09-03 (+8d) | 2026-08-27 → 2026-09-04 (+8d) |  | 55d → 44d | IB-L1RR-1070 → IB-L1RR-1070, PS-PROC-1320 |  |
| IB-L1RR-1090 | Final MEP Trim-Out | 2026-08-28 → 2026-09-08 (+11d) | 2026-08-31 → 2026-09-09 (+9d) |  | 55d → 44d |  |  |
| IB-L1RR-1100 | Final Clean and Punclist | 2026-09-01 → 2026-09-10 (+9d) | 2026-09-01 → 2026-09-11 (+10d) | 1d → 2d | 55d → 44d |  | was named Final Clean |
| 2 | **Management Spaces (Rental Office, Storage, Break Room)** | 2026-08-06 → 2026-08-14 (+8d) | 2026-09-16 → 2026-10-02 (+16d) |  |  |  |  |
| IB-L1M\S-1000 | Layout & Framing (incl. backing, door frames) | 2026-08-06 → 2026-08-14 (+8d) | 2026-08-10 → 2026-08-18 (+8d) |  | 36d → 26d |  |  |
| IB-L1M\S-1010 | MEPF Rough-In | 2026-08-11 → 2026-08-19 (+8d) | 2026-08-13 → 2026-08-21 (+8d) |  | 42d → 32d |  |  |
| IB-L1M\S-1020 | City Inspection (Framing & MEPF) | 2026-08-14 → 2026-08-24 (+10d) | 2026-08-14 → 2026-08-24 (+10d) |  | 42d → 32d |  |  |
| IB-L1M\S-1030 | Install Insulation | 2026-08-17 → 2026-08-25 (+8d) | 2026-08-18 → 2026-08-26 (+8d) |  | 42d → 32d |  |  |
| IB-L1M\S-1040 | Install Drywall | 2026-08-19 → 2026-08-27 (+8d) | 2026-08-20 → 2026-08-28 (+8d) |  | 42d → 32d |  |  |
| IB-L1M\S-1050 | Tape & Mud Drywall | 2026-08-21 → 2026-08-31 (+10d) | 2026-08-25 → 2026-09-02 (+8d) |  | 42d → 32d |  |  |
| IB-L1M\S-1060 | Painting | 2026-08-26 → 2026-09-03 (+8d) | 2026-08-28 → 2026-09-08 (+11d) |  | 42d → 32d |  |  |
| IB-L1M\S-1070 | Install Ceiling Grid (Break Room) | 2026-08-31 → 2026-09-09 (+9d) | 2026-08-31 → 2026-09-09 (+9d) |  | 45d → 34d | IB-L1M\S-1060 → IB-L1M\S-1060, PS-PROC-1360 |  |
| IB-L1M\S-1080 | Install Base Trim | 2026-09-01 → 2026-09-10 (+9d) | 2026-09-01 → 2026-09-10 (+9d) |  | 45d → 34d | IB-L1M\S-1070 → IB-L1M\S-1070, PS-PROC-1290 |  |
| IB-L1M\S-1090 | Install Cabinets & Countertops (Break Room & Office) | 2026-09-02 → 2026-09-11 (+9d) | 2026-09-04 → 2026-09-15 (+11d) |  | 45d → 34d |  |  |
| IB-L1M\S-1100 | Install Sink & Faucests (Break Room) | 2026-09-08 → 2026-09-16 (+8d) | 2026-09-08 → 2026-09-16 (+8d) |  | 45d → 34d |  |  |
| IB-L1M\S-1110 | Appliances (Microwave & Fridge) | 2026-09-09 → 2026-09-17 (+8d) | 2026-09-09 → 2026-09-17 (+8d) |  | 45d → 34d | IB-L1M\S-1100 → IB-L1M\S-1100, PS-PROC-1330 |  |
| IB-L1M\S-1120 | Interior Signage | 2026-09-10 → 2026-09-18 (+8d) | 2026-09-10 → 2026-09-18 (+8d) |  | 45d → 34d |  |  |
| IB-L1M\S-1130 | MEPF Trim-Out | 2026-09-11 → 2026-09-21 (+10d) | 2026-09-15 → 2026-09-23 (+8d) |  | 45d → 34d |  |  |
| IB-L1M\S-1140 | Final Clean and Punchlist | 2026-09-16 → 2026-09-24 (+8d) | 2026-09-16 → 2026-09-25 (+9d) | 1d → 2d | 45d → 34d |  | was named Final Clean |
| 1 | **Janus Scope** | 2026-07-20 → 2026-07-28 (+8d) | 2026-10-12 → 2026-10-20 (+8d) |  |  |  |  |
| IB-JNUS-1000 | Level 2 Install (Diamond Plate, Turkey Wire, Misc.) | 2026-07-20 → 2026-07-28 (+8d) | 2026-08-07 → 2026-08-17 (+10d) |  | 27d → 17d |  |  |
| IB-JNUS-1010 | Level 3 Install (Diamond Plate, Turkey Wire, Misc.) | 2026-08-10 → 2026-08-18 (+8d) | 2026-08-28 → 2026-09-08 (+11d) |  | 27d → 17d |  |  |
| IB-JNUS-1020 | Level 4 Install (Diamond Plate, Turkey Wire, Misc.) | 2026-08-31 → 2026-09-09 (+9d) | 2026-09-21 → 2026-09-29 (+8d) |  | 27d → 17d |  |  |
| IB-JNUS-1030 | Level 1 Install (Diamond Plate, Turkey Wire, Misc.) | 2026-09-22 → 2026-09-30 (+8d) | 2026-10-12 → 2026-10-20 (+8d) |  | 27d → 17d |  |  |
| 2 | **Elevator Installation** | 2026-08-11 → 2026-08-19 (+8d) | 2026-09-29 → 2026-10-07 (+8d) |  |  |  |  |
| EL-INST-1000 | Evelvator Installation (incl. Equipment Room Buildout) | 2026-08-11 → 2026-08-19 (+8d) | 2026-09-29 → 2026-10-07 (+8d) |  | 36d → 26d | IB-L1M\S-1000 → IB-L1M\S-1000, PS-PROC-1020 |  |
| 4 | **Stairwells** | 2026-02-25 → 2026-03-02 (+5d) | 2026-03-17 → 2026-05-04 (+48d) |  |  |  |  |
| IB-STAR-1000 | Install Stairs & Railings | 2026-02-25 → 2026-03-02 (+5d) | 2026-03-10 → 2026-03-27 (+17d) | 10d → 20d | 173d → 91d |  |  |
| IB-STAR-1010 | Install Signage & Lighting | 2026-03-11 → 2026-03-30 (+19d) | 2026-03-13 → 2026-04-07 (+25d) | 3d → 7d | 173d → 140d |  |  |
| IB-STAR-1020 | Install Doors & Hardware | 2026-03-16 → 2026-04-08 (+23d) | 2026-03-17 → 2026-04-13 (+27d) | 2d → 4d | 173d → 140d |  |  |
| 2 | **Sitework Finishes** | 2026-07-24 → 2026-07-31 (+7d) | 2026-10-19 → 2026-10-27 (+8d) |  |  |  |  |
| SW-FIN-1040 | Finish Grade Site (incl. bio ponds) | 2026-07-24 → 2026-07-31 (+7d) | 2026-07-30 → 2026-08-06 (+7d) |  |  |  |  |
| SW-FIN-1050 | Install Irrigation Sleeves (inc. bio ponds) | 2026-07-31 → 2026-08-07 (+7d) | 2026-08-03 → 2026-08-10 (+7d) |  |  |  |  |
| SW-FIN-1060 | Electrical Rough (Light Poles) | 2026-08-04 → 2026-08-11 (+7d) | 2026-08-10 → 2026-08-17 (+7d) |  |  |  |  |
| SW-FIN-1100 | Install Bollards (including footings) | 2026-08-11 → 2026-08-18 (+7d) | 2026-08-17 → 2026-08-24 (+7d) |  |  |  |  |
| SW-FIN-1130 | FRP Concrete (Hardscape & Sidewalks) | 2026-08-18 → 2026-08-25 (+7d) | 2026-08-26 → 2026-09-02 (+7d) |  |  |  |  |
| SW-FIN-1140 | Install Irrigation | 2026-08-27 → 2026-09-03 (+7d) | 2026-09-10 → 2026-09-17 (+7d) |  | 22d → 15d |  |  |
| SW-FIN-1150 | Install Asphalt (Final Coat) | 2026-09-11 → 2026-09-18 (+7d) | 2026-09-11 → 2026-09-18 (+7d) |  | 22d → 15d |  |  |
| SW-FIN-1170 | Planting | 2026-09-14 → 2026-09-21 (+7d) | 2026-09-25 → 2026-10-02 (+7d) |  | 22d → 15d |  |  |
| SW-FIN-1171 | FRP Dumpster Enclosure | 2026-09-28 → 2026-10-05 (+7d) | 2026-10-06 → 2026-10-13 (+7d) |  | 22d → 15d |  |  |
| SW-FIN-1180 | Site Furnishings & Signage | 2026-10-07 → 2026-10-14 (+7d) | 2026-10-13 → 2026-10-20 (+7d) |  | 22d → 15d |  |  |
| SW-FIN-1190 | Final Clean and Punchlist Sitework | 2026-10-14 → 2026-10-21 (+7d) | 2026-10-14 → 2026-10-22 (+8d) | 1d → 2d | 22d → 15d |  | was named Final Clean |
| SW-FIN-1200 | Punch List Completion and Signoff | 2026-10-15 → 2026-10-23 (+8d) | 2026-10-19 → 2026-10-27 (+8d) |  | 22d → 54d |  | was named Punch List |
| 1 | **Rutland Drive Improvements** |  | 2026-11-18 → 2026-11-23 (+5d) |  |  |  |  |
| SW-RTLN-1000 | EPSC Install (Silt Fence, Inlet Protection) |  |  |  |  | SW-FIN-1040 SS, SW-FIN-1130 → SW-FIN-1040, SW-FIN-1130 SS+2d |  |
| SW-RTLN-1170 | Rutland Drive Punchlist Walk |  |  |  | 0d → 35d |  | was named Punch List & Corrections |
| SW-RTLN-1180 | Rutland Drive Punchlist Completion and Signoff |  | 2026-11-18 → 2026-11-23 (+5d) | 2d → 5d | 0d → 35d |  | was named Final Owner Punch List |
| Closeout | **Closeout** | 2026-08-03 → 2026-08-11 (+8d) | 2026-11-19 → 2026-11-13 (-6d) |  |  |  |  |
| Commisioning | **Commissioning** | 2026-08-28 → 2026-09-08 (+11d) | 2026-09-03 → 2026-09-21 (+18d) |  |  |  |  |
| CO-CM-1000 | Start-Up & Testing | 2026-08-28 → 2026-09-08 (+11d) | 2026-09-03 → 2026-09-21 (+18d) | 5d → 10d | 48d → 33d |  |  |
| Building Finals | **Building Finals** | 2026-08-03 → 2026-08-11 (+8d) | 2026-11-19 → 2026-11-13 (-6d) |  |  |  |  |
| CO-BF-1000 | Rough Fire Sprinkler Inspection | 2026-08-03 → 2026-08-11 (+8d) | 2026-08-03 → 2026-08-11 (+8d) |  | 71d → 61d |  |  |
| CO-BF-1010 | Final Fire Sprinkler Inspection | 2026-09-04 → 2026-09-22 (+18d) | 2026-09-04 → 2026-09-22 (+18d) |  | 48d → 33d |  |  |
| CO-BF-1020 | Electrical Final Inspection | 2026-09-08 → 2026-09-23 (+15d) | 2026-09-08 → 2026-09-23 (+15d) |  | 48d → 33d |  | was named Electrical Final |
| CO-BF-1030 | Plumbing Final Inspection | 2026-09-09 → 2026-09-24 (+15d) | 2026-09-09 → 2026-09-24 (+15d) |  | 48d → 33d |  | was named Plumbing Final |
| CO-BF-1040 | Mechanical Final Inspection | 2026-09-10 → 2026-09-25 (+15d) | 2026-09-10 → 2026-09-25 (+15d) |  | 48d → 33d |  | was named Mechanical Final |
| CO-BF-1050 | Fire Alarm Final Inspection | 2026-09-11 → 2026-09-28 (+17d) | 2026-09-11 → 2026-09-28 (+17d) |  | 48d → 33d |  | was named Fire Alarm Final |

| ID | Task | Start | Finish | Duration | Total float | Predecessors | Other |
| --- | --- | --- | --- | --- | --- | --- | --- |
| CO-BF-1060 | Building Final Occupancy Inspection (Substantial Completion) | 2026-11-19 → 2026-11-13 (-6d) | 2026-11-19 → 2026-11-13 (-6d) |  |  | CO-BF-1050, SW-RTLN-1160, SW-FIN-1180, IB-L4IN-1100, EE-ROOF-1200, IB-JNUS-1030, PS-CMIL-1010, EL-INST-1000, IB-L2IN-1100, IB-L3IN-1100, IB-L1IN-1100, FS-LVL1-1060, PS-PROC-1030 → CO-BF-1050, SW-RTLN-1160, SW-FIN-1180, IB-L4IN-1100, EE-ROOF-1200, IB-JNUS-1030, EL-INST-1000, PS-CMIL-1140, IB-L1M\S-1140, IB-L1RR-1100, IB-L3UN-1100, IB-STAR-1020, IB-STAR-1040, SW-FIN-1190, IB-JNUS-1000, IB-JNUS-1010, IB-JNUS-1020, IB-L1IN-1110, IB-L4IN-1110, IB-L3IN-1110, IB-L2IN-1110, EE-SOTH-1130, EE-EAST-1110, EE-NRTH-1160, EE-WEST-1110 | was named Building Final |
| 2 | **Warranty Work** | 2026-11-20 → 2026-12-03 (+13d) | 2027-11-04 → 2027-11-15 (+11d) |  |  |  |  |
| WW-WARR-1000 | 1st Quarter HVAC Maintenance | 2026-11-20 → 2026-12-03 (+13d) | 2027-02-22 → 2027-03-03 (+9d) |  |  | CO-BF-1060 → CO-BF-1060, PS-CMIL-1190 FF+30d, PS-CMIL-1170 |  |
| WW-WARR-1010 | 1st Quarter Landscape Maintenance | 2026-11-20 → 2026-12-03 (+13d) | 2027-02-22 → 2027-03-03 (+9d) |  |  | CO-BF-1060 → CO-BF-1060, PS-CMIL-1190 FF+30d, PS-CMIL-1170 |  |
| WW-WARR-1030 | 2nd Quarter HVAC Maintenance | 2027-02-23 → 2027-03-04 (+9d) | 2027-05-17 → 2027-05-26 (+9d) |  |  |  |  |
| WW-WARR-1040 | 2nd Quarter Landscape Maintenance | 2027-02-23 → 2027-03-04 (+9d) | 2027-05-17 → 2027-05-26 (+9d) |  |  |  |  |
| WW-WARR-1050 | 3rd Quarter HVAC Maintenance | 2027-05-18 → 2027-05-27 (+9d) | 2027-08-11 → 2027-08-20 (+9d) |  |  |  |  |
| WW-WARR-1060 | 3rd Quarter Landscape Maintenance | 2027-05-18 → 2027-05-27 (+9d) | 2027-08-11 → 2027-08-20 (+9d) |  |  |  |  |
| WW-WARR-1070 | 4th Quarter HVAC Maintenance | 2027-08-12 → 2027-08-23 (+11d) | 2027-11-04 → 2027-11-15 (+11d) |  |  |  |  |
| WW-WARR-1080 | 4th Quarter Landscape Maintenance | 2027-08-12 → 2027-08-23 (+11d) | 2027-11-04 → 2027-11-15 (+11d) |  |  |  |  |
| WW-WARR-1020 | 11-Month Warranty Walk | 2026-11-20 → 2027-10-04 (+318d) | 2027-10-07 → 2027-10-08 (+1d) | 220d → 5d | 20d → 26d | CO-BF-1060 → CO-BF-1060 FS+220d |  |

## Version 7 (data date 2026-02-24, saved 2026-03-10, file update_7.xer)

Note of the change: Add all project schedule files to buckets - 13 projects, MPP+XER, baseline+updates

Last finish 2027-11-15 → 2027-11-12 (-3d). Complete tasks 43 → 47.

Changed:

| ID | Task | Start | Finish | Duration | Complete | Total float | Predecessors |
| --- | --- | --- | --- | --- | --- | --- | --- |
| PS-CMIL-1010 | Project Substantial Completion | 2026-11-13 → 2026-11-12 (-1d) | 2026-11-13 → 2026-11-12 (-1d) |  |  |  |  |
| PS-CMIL-1160 | Remaining Weather Allowance (Originally 20 Days) | 2026-11-16 → 2026-11-13 (-3d) | 2026-12-02 → 2026-12-01 (-1d) |  |  |  |  |
| PS-CMIL-1170 | Project Substantial Completion with Weather Projection | 2026-12-02 → 2026-12-01 (-1d) | 2026-12-02 → 2026-12-01 (-1d) |  |  |  |  |
| PS-CMIL-1190 | Public Storage Final Acceptance | 2026-12-02 → 2026-12-01 (-1d) | 2026-12-02 → 2026-12-01 (-1d) |  |  |  |  |
| 2 | **Construction Milestones** |  | 2026-10-22 → 2026-11-02 (+11d) |  |  |  |  |
| PS-CMIL-1090 | Start of Elevated Structure | 2026-02-16 → 2026-03-16 (+28d) | 2026-02-16 → 2026-03-16 (+28d) |  |  | 191d → 170d |  |
| PS-CMIL-1100 | Stair & Elevator Cores Complete to Roof | 2026-02-27 → 2026-03-16 (+17d) | 2026-02-27 → 2026-03-16 (+17d) |  |  | 181d → 170d |  |
| PS-CMIL-1120 | Structure Complete | 2026-06-03 → 2026-07-01 (+28d) | 2026-06-03 → 2026-07-01 (+28d) |  |  | 114d → 93d |  |
| PS-CMIL-1130 | Building Dry In | 2026-07-13 → 2026-08-10 (+28d) | 2026-07-13 → 2026-08-10 (+28d) |  |  | 87d → 66d |  |
| PS-CMIL-1110 | Exterior Work Complete | 2026-10-05 → 2026-11-02 (+28d) | 2026-10-05 → 2026-11-02 (+28d) |  |  | 28d → 7d |  |
| PS-CMIL-1140 | Landscape & Hardscape Complete | 2026-10-22 → 2026-11-02 (+11d) | 2026-10-22 → 2026-11-02 (+11d) |  |  | 15d → 7d |  |
| 4 | **Pre-Construction** |  | 2026-06-19 → 2026-06-29 (+10d) |  |  |  |  |
| 1 | **Procurement** |  | 2026-06-19 → 2026-06-29 (+10d) |  |  |  |  |
| PS-PROC-1080 | Submit and Approve Plumbing Fixtures |  | 2026-02-13 → 2026-03-09 (+24d) |  |  | 161d → 144d |  |
| PS-PROC-1020 | Procure Electric Room MDP | 2026-03-03 → 2026-01-05 A (-57d) | 2026-04-27 → 2026-04-20 (-7d) |  |  | 105d → 109d | PS-PROC-1000 FS+100d, PS-PROC-1060 → PS-PROC-1060, PS-PROC-1000 |
| PS-PROC-1300 | Submit and Approve Brick Veneer |  | 2026-02-27 → 2026-03-09 (+10d) |  | 0% → 50% | 37d → 30d |  |
| PS-PROC-1180 | Submit and Approve Fireproofing |  | 2026-02-24 A |  | 0% → 100% | 122d → none |  |
| PS-PROC-1250 | Procure CFMF |  | 2026-02-17 → 2026-02-12 A (-5d) |  | 40% → 100% | 11d → none |  |
| PS-PROC-1070 | Submit and Approve HVAC |  | 2026-02-13 A |  | 50% → 100% | 73d → none |  |
| PS-PROC-1220 | Procure Light Fixtures |  | 2026-04-10 → 2026-04-20 (+10d) |  | 17% → 33% | 139d → 132d |  |
| PS-PROC-1110 | Submit and Approve Drywall / Ceilings |  | 2026-02-20 → 2026-03-02 (+10d) |  | 0% → 67% | 151d → 144d |  |
| PS-PROC-1140 | Submit and Approve Glazing |  | 2026-02-13 → 2026-02-09 A (-4d) |  | 50% → 100% | 84d → none |  |
| PS-PROC-1150 | Submit and Approve D/F/HW | 2026-02-10 → 2026-02-12 A (+2d) |  |  | 0% → 67% | 82d → 75d |  |
| PS-PROC-1130 | Submit and Approve Roofing | 2026-02-11 → 2026-02-16 A (+5d) | 2026-03-03 → 2026-03-09 (+6d) |  | 0% → 33% | 82d → 81d |  |
| PS-PROC-1230 | Procure HVAC Equipment and Fab Ductwork | 2026-02-16 → 2026-02-20 A (+4d) | 2026-05-01 → 2026-05-07 (+6d) |  | 0% → 4% | 73d → 62d |  |
| PS-PROC-1270 | Procure Storefront / Glazing | 2026-02-16 → 2026-02-24 (+8d) | 2026-04-10 → 2026-04-20 (+10d) |  |  | 84d → 77d |  |
| PS-PROC-1340 | Procure Fireproofing / Intumescent | 2026-02-25 → 2026-02-27 (+2d) | 2026-03-17 → 2026-03-19 (+2d) |  |  | 122d → 119d | PS-PROC-1180 → PS-PROC-1180 FS+3d |
| PS-PROC-1360 | Procure Ceilings | 2026-02-23 → 2026-03-03 (+8d) | 2026-03-27 → 2026-04-06 (+10d) |  |  | 151d → 144d |  |
| PS-PROC-1260 | Procure Roofing | 2026-03-04 → 2026-03-10 (+6d) | 2026-03-24 → 2026-03-30 (+6d) |  |  | 82d → 81d |  |
| PS-PROC-1350 | Procure Plumbing Fixtures | 2026-02-16 → 2026-03-10 (+22d) | 2026-03-20 → 2026-04-13 (+24d) |  |  | 161d → 144d |  |
| PS-PROC-1370 | Procure Brick Veneer | 2026-03-02 → 2026-03-10 (+8d) | 2026-06-19 → 2026-06-29 (+10d) |  |  | 37d → 30d |  |
| PS-PROC-1120 | Submit and Approve Floor Finishes | 2026-02-17 → 2026-03-17 (+28d) | 2026-03-09 → 2026-04-06 (+28d) |  |  | 141d → 120d | PS-PROC-1000 FS+90d → PS-PROC-1000 FS+110d |
| PS-PROC-1290 | Procure Finishes | 2026-03-10 → 2026-04-07 (+28d) | 2026-04-13 → 2026-05-11 (+28d) |  |  | 141d → 120d |  |
| 1 | **Construction** |  | 2026-11-23 → 2026-11-12 (-11d) |  |  |  |  |
| Sitework | **Sitework & Utilities** |  | 2026-03-20 → 2026-04-13 (+24d) |  |  |  |  |
| SW | **Sitework** |  | 2026-03-20 → 2026-04-13 (+24d) |  |  |  |  |
| SU-STWK-1050 | Install Site Stone Base | 2026-02-19 → 2026-03-13 (+22d) | 2026-02-26 → 2026-03-20 (+22d) |  |  | 92d → 75d |  |
| SU-STWK-1060 | Install Prime Coat, Binder, & Tack Coat | 2026-02-27 → 2026-03-23 (+24d) | 2026-03-03 → 2026-03-25 (+22d) |  |  | 92d → 75d |  |
| SU-STWK-1070 | Install Asphalt (Wearing Course) | 2026-03-04 → 2026-03-26 (+22d) | 2026-03-04 → 2026-03-26 (+22d) |  |  | 92d → 75d |  |
| SU-STWK-1080 | Form & Reinforce Curb & Gutter | 2026-03-05 → 2026-03-27 (+22d) | 2026-03-11 → 2026-04-02 (+22d) |  |  | 92d → 75d |  |
| SU-STWK-1090 | Pour Curb & Gutter | 2026-03-12 → 2026-04-03 (+22d) | 2026-03-13 → 2026-04-06 (+24d) |  |  | 92d → 75d |  |
| SU-STWK-1100 | Rough Grade Site | 2026-03-16 → 2026-04-07 (+22d) | 2026-03-20 → 2026-04-13 (+24d) |  |  | 92d → 75d |  |
| SIte | **Site Utilities** |  | 2026-02-18 → 2026-03-12 (+22d) |  |  |  |  |
| SU-SUTL-1050 | Install U.G. Fire Water & Domestic | 2026-02-02 → 2026-02-24 (+22d) | 2026-02-13 → 2026-03-09 (+24d) |  |  | 92d → 75d |  |
| SU-SUTL-1010 | Install Irrigation Sleeves | 2026-02-16 → 2026-03-10 (+22d) | 2026-02-18 → 2026-03-12 (+22d) |  |  | 92d → 75d |  |
| 1 | **Foundation & Structural** |  | 2026-06-03 → 2026-07-01 (+28d) |  |  |  |  |
| 1 | **Level 1** |  | 2026-03-20 → 2026-04-01 (+12d) |  |  |  |  |
| FS-LVL1-1000 | Footings & Foundation CIP Walls (includes elevator pit) |  | 2026-02-17 → 2026-03-06 (+17d) |  | 52% → 64% |  |  |
| FS-LVL1-1010 | Underground MEPF Install (Pre-Pour) |  | 2026-02-04 → 2026-03-04 (+28d) |  | 40% → 0% |  |  |
| FS-LVL1-1020 | Erect Stairs & Elevator Shafts (CMU Cores) | 2026-02-09 → 2026-02-12 A (+3d) | 2026-02-27 → 2026-03-02 (+3d) |  | 0% → 67% | 91d → 15d | FS-LVL1-1030 SS+5d → FS-LVL1-1000 SS+8d |
| FS-LVL1-1030 | Slab Prep & Pour (Pour A1) | 2026-02-02 → 2026-03-09 (+35d) | 2026-02-11 → 2026-03-11 (+28d) | 8d → 3d |  |  | FS-LVL1-1010 SS, FS-LVL1-1000 SS → FS-LVL1-1000, FS-LVL1-1010 FF+5d |
| FS-LVL1-1040 | Slab Prep & Pour (Pour A2) | 2026-02-12 → 2026-03-12 (+28d) | 2026-02-16 → 2026-03-16 (+28d) |  |  |  |  |
| FS-LVL1-1050 | Steel Erection (Columns & Beams) | 2026-02-16 → 2026-03-16 (+28d) | 2026-02-27 → 2026-03-27 (+28d) |  |  |  |  |
| FS-LVL1-1060 | Fireproofing | 2026-03-18 → 2026-03-30 (+12d) | 2026-03-20 → 2026-04-01 (+12d) |  |  | 120d → 111d |  |
| 2 | **Level 2** | 2026-02-24 → 2026-03-24 (+28d) | 2026-03-30 → 2026-04-27 (+28d) |  |  |  |  |
| FS-LVL2-1000 | Install Metal Decking | 2026-02-24 → 2026-03-24 (+28d) | 2026-02-27 → 2026-03-27 (+28d) |  |  |  | FS-LVL1-1050 FF → FS-LVL1-1050 FF, FS-LVL1-1020 |
| FS-LVL2-1010 | MEPF Rough-In (Pre-Pour) | 2026-02-26 → 2026-03-26 (+28d) | 2026-03-04 → 2026-04-01 (+28d) |  |  |  |  |
| FS-LVL2-1020 | FRP Metal Deck Slab (Pour A1) | 2026-03-05 → 2026-04-02 (+28d) | 2026-03-11 → 2026-04-08 (+28d) |  |  |  |  |
| FS-LVL2-1030 | FRP Metal Deck Slab (Pour A2) | 2026-03-12 → 2026-04-09 (+28d) | 2026-03-16 → 2026-04-13 (+28d) |  |  |  |  |
| FS-LVL2-1040 | Layout & Erect Load Bearing Framing | 2026-03-17 → 2026-04-14 (+28d) | 2026-03-30 → 2026-04-27 (+28d) |  |  |  |  |
| 3 | **Level 3** | 2026-03-25 → 2026-04-22 (+28d) | 2026-04-28 → 2026-05-27 (+29d) |  |  |  |  |
| FS-LVL3-1000 | Install Metal Decking | 2026-03-25 → 2026-04-22 (+28d) | 2026-03-30 → 2026-04-27 (+28d) |  |  |  |  |
| FS-LVL3-1010 | MEPF Rough-In (Pre-Pour) | 2026-03-27 → 2026-04-24 (+28d) | 2026-04-02 → 2026-04-30 (+28d) |  |  |  |  |
| FS-LVL3-1020 | FRP Metal Deck Slab (Pour A1) | 2026-04-03 → 2026-05-01 (+28d) | 2026-04-09 → 2026-05-07 (+28d) |  |  |  |  |
| FS-LVL3-1030 | FRP Metal Deck Slab (Pour A2) | 2026-04-10 → 2026-05-08 (+28d) | 2026-04-14 → 2026-05-12 (+28d) |  |  |  |  |
| FS-LVL3-1040 | Layout & Erect Load Bearing Framing | 2026-04-15 → 2026-05-13 (+28d) | 2026-04-28 → 2026-05-27 (+29d) |  |  |  |  |
| 5 | **Level 4** | 2026-04-23 → 2026-05-21 (+28d) | 2026-05-28 → 2026-06-25 (+28d) |  |  |  |  |
| FS-LVL4-1000 | Install Metal Decking | 2026-04-23 → 2026-05-21 (+28d) | 2026-04-28 → 2026-05-27 (+29d) |  |  |  |  |
| FS-LVL4-1010 | MEPF Rough-In (Pre-Pour) | 2026-04-27 → 2026-05-26 (+29d) | 2026-05-01 → 2026-06-01 (+31d) |  |  |  |  |
| FS-LVL4-1020 | FRP Metal Deck Slab (Pour A1) | 2026-05-04 → 2026-06-02 (+29d) | 2026-05-08 → 2026-06-08 (+31d) |  |  |  |  |

| ID | Task | Start | Finish | Total float |
| --- | --- | --- | --- | --- |
| FS-LVL4-1030 | FRP Metal Deck Slab (Pour A2) | 2026-05-11 → 2026-06-09 (+29d) | 2026-05-13 → 2026-06-11 (+29d) |  |
| FS-LVL4-1040 | Layout & Erect Load Bearing Framing | 2026-05-14 → 2026-06-12 (+29d) | 2026-05-28 → 2026-06-25 (+28d) |  |
| 4 | **Roof** | 2026-05-22 → 2026-06-22 (+31d) | 2026-06-03 → 2026-07-01 (+28d) |  |
| FS-ROOF-1000 | Install Metal Decking | 2026-05-22 → 2026-06-22 (+31d) | 2026-05-28 → 2026-06-25 (+28d) |  |
| FS-ROOF-1010 | MEPF Rough-In (Stubups) | 2026-05-27 → 2026-06-24 (+28d) | 2026-05-29 → 2026-06-26 (+28d) |  |
| FS-ROOF-1020 | Layout & Frame Parapets | 2026-06-01 → 2026-06-29 (+28d) | 2026-06-03 → 2026-07-01 (+28d) |  |
| 2 | **Envelope & Exterior** | 2026-05-14 → 2026-06-12 (+29d) | 2026-10-15 → 2026-11-12 (+28d) |  |
| 0 | **North Elevation** | 2026-05-14 → 2026-06-12 (+29d) | 2026-09-01 → 2026-09-30 (+29d) |  |
| EE-NRTH-1000 | Layout & Exterior Framing (Level 1) | 2026-05-14 → 2026-06-12 (+29d) | 2026-05-20 → 2026-06-18 (+29d) | 8d → 10d |
| EE-NRTH-1010 | City Inspection (Rough Framing) | 2026-05-21 → 2026-06-19 (+29d) | 2026-05-21 → 2026-06-19 (+29d) | 8d → 10d |
| EE-NRTH-1020 | Electrical Rough-In | 2026-06-04 → 2026-07-02 (+28d) | 2026-06-10 → 2026-07-09 (+29d) | 0d → 2d |
| EE-NRTH-1030 | City Inspection (Electrical) | 2026-06-11 → 2026-07-10 (+29d) | 2026-06-11 → 2026-07-10 (+29d) | 23d → 2d |
| EE-NRTH-1040 | Install Exterior Sheathing | 2026-06-12 → 2026-07-13 (+31d) | 2026-06-18 → 2026-07-17 (+29d) | 23d → 2d |
| EE-NRTH-1050 | City Inspection (Screw Inspection) | 2026-06-19 → 2026-07-20 (+31d) | 2026-06-19 → 2026-07-20 (+31d) | 23d → 2d |
| EE-NRTH-1060 | Weather Barrier & Flashing | 2026-06-22 → 2026-07-21 (+29d) | 2026-06-26 → 2026-07-27 (+31d) | 23d → 2d |
| EE-NRTH-1070 | Install Rigid Insulation | 2026-06-29 → 2026-07-28 (+29d) | 2026-07-06 → 2026-08-03 (+28d) | 23d → 2d |
| EE-NRTH-1080 | Storefront, Windows & Metals | 2026-07-07 → 2026-08-04 (+28d) | 2026-07-09 → 2026-08-06 (+28d) | 23d → 2d |
| EE-NRTH-1090 | Install Brick Veneer | 2026-07-10 → 2026-08-07 (+28d) | 2026-07-30 → 2026-08-27 (+28d) | 23d → 2d |
| EE-NRTH-1100 | Install Canopies & Trim | 2026-07-31 → 2026-08-28 (+28d) | 2026-08-04 → 2026-09-01 (+28d) | 56d → 35d |
| EE-NRTH-1110 | Install Lighting Fixtures | 2026-08-05 → 2026-09-02 (+28d) | 2026-08-07 → 2026-09-04 (+28d) | 56d → 35d |
| EE-NRTH-1120 | Install Signage | 2026-08-10 → 2026-09-08 (+29d) | 2026-08-10 → 2026-09-08 (+29d) | 56d → 35d |
| EE-NRTH-1130 | Install Doors & Hardware | 2026-08-11 → 2026-09-09 (+29d) | 2026-08-12 → 2026-09-10 (+29d) | 56d → 35d |
| EE-NRTH-1140 | Install Downspouts | 2026-08-13 → 2026-09-11 (+29d) | 2026-08-13 → 2026-09-11 (+29d) | 56d → 35d |
| EE-NRTH-1150 | Final Paint | 2026-08-14 → 2026-09-14 (+31d) | 2026-08-18 → 2026-09-16 (+29d) | 56d → 35d |
| EE-NRTH-1160 | Punch List & Corrections | 2026-08-19 → 2026-09-17 (+29d) | 2026-08-25 → 2026-09-23 (+29d) | 56d → 35d |
| EE-NRTH-1170 | Final Owner Walk (Punch List & Corrections) | 2026-08-26 → 2026-09-24 (+29d) | 2026-09-01 → 2026-09-30 (+29d) | 93d → 72d |
| 2 | **East Elevation** | 2026-05-21 → 2026-06-19 (+29d) | 2026-09-04 → 2026-10-05 (+31d) |  |
| EE-EAST-1000 | Layout & Exterior Framing (Level 1) | 2026-05-21 → 2026-06-19 (+29d) | 2026-05-28 → 2026-06-25 (+28d) | 8d → 13d |
| EE-EAST-1010 | City Inspection (Rough Framing) | 2026-05-29 → 2026-06-26 (+28d) | 2026-05-29 → 2026-06-26 (+28d) | 8d → 20d |
| EE-EAST-1020 | Electrical Rough-In | 2026-06-11 → 2026-07-10 (+29d) | 2026-06-17 → 2026-07-16 (+29d) | 0d → 12d |
| EE-EAST-1030 | City Inspection (Electrical) | 2026-06-18 → 2026-07-17 (+29d) | 2026-06-18 → 2026-07-17 (+29d) | 33d → 12d |
| EE-EAST-1040 | Install Exterior Sheathing | 2026-06-19 → 2026-07-20 (+31d) | 2026-06-25 → 2026-07-24 (+29d) | 33d → 12d |
| EE-EAST-1050 | City Inspection (Screw Inspection) | 2026-06-26 → 2026-07-27 (+31d) | 2026-06-26 → 2026-07-27 (+31d) | 33d → 12d |
| EE-EAST-1060 | Weather Barrier & Flashing | 2026-06-29 → 2026-07-28 (+29d) | 2026-07-06 → 2026-08-03 (+28d) | 33d → 12d |
| EE-EAST-1070 | Install Rigid Insulation | 2026-07-07 → 2026-08-04 (+28d) | 2026-07-13 → 2026-08-10 (+28d) | 33d → 12d |
| EE-EAST-1080 | Install Windows & Metals | 2026-07-14 → 2026-08-11 (+28d) | 2026-07-16 → 2026-08-13 (+28d) | 33d → 12d |
| EE-EAST-1090 | Install Brick Veneer | 2026-07-31 → 2026-08-28 (+28d) | 2026-08-20 → 2026-09-18 (+29d) | 23d → 2d |
| EE-EAST-1100 | Install Signage | 2026-08-21 → 2026-09-21 (+31d) | 2026-08-21 → 2026-09-21 (+31d) | 53d → 32d |
| EE-EAST-1110 | Punch List & Corrections | 2026-08-24 → 2026-09-22 (+29d) | 2026-08-28 → 2026-09-28 (+31d) | 53d → 32d |
| EE-EAST-1120 | Final Owner Walk (Punch List & Corrections) | 2026-08-31 → 2026-09-29 (+29d) | 2026-09-04 → 2026-10-05 (+31d) | 90d → 69d |
| 5 | **South Elevation** | 2026-05-29 → 2026-06-26 (+28d) | 2026-10-05 → 2026-11-02 (+28d) |  |
| EE-SOTH-1000 | Layout & Exterior Framing (Level 1) | 2026-05-29 → 2026-06-26 (+28d) | 2026-06-04 → 2026-07-02 (+28d) | 8d → 13d |
| EE-SOTH-1010 | City Inspection (Rough Framing) | 2026-06-05 → 2026-07-06 (+31d) | 2026-06-05 → 2026-07-06 (+31d) | 8d → 33d |
| EE-SOTH-1020 | Electrical Rough-In | 2026-06-18 → 2026-07-17 (+29d) | 2026-06-24 → 2026-07-23 (+29d) | 0d → 25d |
| EE-SOTH-1030 | City Inspection (Electrical) | 2026-06-25 → 2026-07-24 (+29d) | 2026-06-25 → 2026-07-24 (+29d) | 46d → 25d |
| EE-SOTH-1040 | Install Exterior Sheathing | 2026-06-26 → 2026-07-27 (+31d) | 2026-07-02 → 2026-07-31 (+29d) | 46d → 25d |
| EE-SOTH-1050 | City Inspection (Screw Inspection) | 2026-07-06 → 2026-08-03 (+28d) | 2026-07-06 → 2026-08-03 (+28d) | 46d → 25d |
| EE-SOTH-1060 | Weather Barrier & Flashing | 2026-07-07 → 2026-08-04 (+28d) | 2026-07-13 → 2026-08-10 (+28d) | 46d → 25d |
| EE-SOTH-1070 | Install Rigid Insulation | 2026-07-14 → 2026-08-11 (+28d) | 2026-07-20 → 2026-08-17 (+28d) | 46d → 25d |
| EE-SOTH-1080 | Install Brick Veneer | 2026-08-21 → 2026-09-21 (+31d) | 2026-09-11 → 2026-10-09 (+28d) | 23d → 2d |
| EE-SOTH-1090 | Install Signage | 2026-09-14 → 2026-10-12 (+28d) | 2026-09-14 → 2026-10-12 (+28d) | 33d → 12d |
| EE-SOTH-1100 | Install Doors & Hardware | 2026-09-15 → 2026-10-13 (+28d) | 2026-09-15 → 2026-10-13 (+28d) | 33d → 12d |
| EE-SOTH-1110 | Install Downspouts | 2026-09-16 → 2026-10-14 (+28d) | 2026-09-17 → 2026-10-15 (+28d) | 33d → 12d |
| EE-SOTH-1120 | Final Paint | 2026-09-18 → 2026-10-16 (+28d) | 2026-09-21 → 2026-10-19 (+28d) | 33d → 12d |
| EE-SOTH-1130 | Punch List & Corrections | 2026-09-22 → 2026-10-20 (+28d) | 2026-09-28 → 2026-10-26 (+28d) | 33d → 12d |
| EE-SOTH-1140 | Final Owner Walk (Punch List & Corrections) | 2026-09-29 → 2026-10-27 (+28d) | 2026-10-05 → 2026-11-02 (+28d) | 70d → 49d |
| 1 | **West Elevation** | 2026-06-05 → 2026-07-06 (+31d) | 2026-10-15 → 2026-11-12 (+28d) |  |
| EE-WEST-1000 | Layout & Exterior Framing (Level 1) | 2026-06-05 → 2026-07-06 (+31d) | 2026-06-11 → 2026-07-10 (+29d) | 8d → 13d |
| EE-WEST-1010 | City Inspection (Rough Framing) | 2026-06-12 → 2026-07-13 (+31d) | 2026-06-12 → 2026-07-13 (+31d) | 8d → 40d |
| EE-WEST-1020 | Electrical Rough-In | 2026-06-25 → 2026-07-24 (+29d) | 2026-07-01 → 2026-07-30 (+29d) | 0d → 32d |
| EE-WEST-1030 | City Inspection (Electrical) | 2026-07-02 → 2026-07-31 (+29d) | 2026-07-02 → 2026-07-31 (+29d) | 0d → 32d |
| EE-WEST-1040 | Install Exterior Sheathing | 2026-07-06 → 2026-08-03 (+28d) | 2026-07-10 → 2026-08-07 (+28d) | 0d → 32d |
| EE-WEST-1050 | City Inspection (Screw Inspection) | 2026-07-13 → 2026-08-10 (+28d) | 2026-07-13 → 2026-08-10 (+28d) | 0d → 32d |
| EE-WEST-1060 | Weather Barrier & Flashing | 2026-07-14 → 2026-08-11 (+28d) | 2026-07-20 → 2026-08-17 (+28d) | 0d → 32d |
| EE-WEST-1070 | Install Rigid Insulation | 2026-07-21 → 2026-08-18 (+28d) | 2026-07-27 → 2026-08-24 (+28d) | 0d → 32d |
| EE-WEST-1080 | Install Windows & Metals | 2026-07-28 → 2026-08-25 (+28d) | 2026-07-30 → 2026-08-27 (+28d) | 0d → 32d |
| EE-WEST-1090 | Install Brick Veneer | 2026-09-14 → 2026-10-12 (+28d) | 2026-10-02 → 2026-10-30 (+28d) | 23d → 2d |
| EE-WEST-1100 | Install Signage | 2026-10-05 → 2026-11-02 (+28d) | 2026-10-05 → 2026-11-02 (+28d) | 23d → 2d |
| EE-WEST-1110 | Punch List & Corrections | 2026-10-06 → 2026-11-03 (+28d) | 2026-10-12 → 2026-11-09 (+28d) | 23d → 2d |
| EE-WEST-1120 | Final Owner Walk (Punch List & Corrections) | 2026-10-13 → 2026-11-10 (+28d) | 2026-10-15 → 2026-11-12 (+28d) | 62d → 41d |

| ID | Task | Start | Finish | Total float | Predecessors |
| --- | --- | --- | --- | --- | --- |
| 3 | **Roof** | 2026-06-04 → 2026-07-02 (+28d) | 2026-09-25 → 2026-10-23 (+28d) |  |  |
| EE-ROOF-1000 | Clean & Prep Metal Deck | 2026-06-04 → 2026-07-02 (+28d) | 2026-06-05 → 2026-07-06 (+31d) | 17d → 0d |  |
| EE-ROOF-1010 | Stage Materials & Solar Rails (Crane) | 2026-06-08 → 2026-07-07 (+29d) | 2026-06-09 → 2026-07-08 (+29d) | 17d → 0d |  |
| EE-ROOF-1020 | Layout for Penetrations, Curb Blocking, Edge Metal | 2026-06-10 → 2026-07-09 (+29d) | 2026-06-11 → 2026-07-10 (+29d) | 17d → 0d |  |
| EE-ROOF-1030 | Install Blocking & Equipment Curbs | 2026-06-12 → 2026-07-13 (+31d) | 2026-06-16 → 2026-07-15 (+29d) | 17d → 0d |  |
| EE-ROOF-1040 | Install Rigid Insulation | 2026-06-17 → 2026-07-16 (+29d) | 2026-06-22 → 2026-07-21 (+29d) | 17d → 0d |  |
| EE-ROOF-1050 | Install Cover Board | 2026-06-23 → 2026-07-22 (+29d) | 2026-06-26 → 2026-07-27 (+31d) | 17d → 0d |  |
| EE-ROOF-1060 | Install TPO Roofing System (incl. boots, termination bars) | 2026-06-29 → 2026-07-28 (+29d) | 2026-07-13 → 2026-08-10 (+28d) | 17d → 0d |  |
| EE-ROOF-1070 | Install Edge Metal, Coping, Trim | 2026-07-14 → 2026-08-11 (+28d) | 2026-07-20 → 2026-08-17 (+28d) | 34d → 13d |  |
| EE-ROOF-1080 | Install Roof Drains, Vents, Mechanical Curbs | 2026-07-21 → 2026-08-18 (+28d) | 2026-07-27 → 2026-08-24 (+28d) | 34d → 13d |  |
| EE-ROOF-1090 | Install Electrical Conduit & Roof Mounted Boxes | 2026-07-28 → 2026-08-25 (+28d) | 2026-08-03 → 2026-08-31 (+28d) | 34d → 13d |  |
| EE-ROOF-1140 | Set Rooftop Units (RTU's & Splits) | 2026-07-28 → 2026-08-25 (+28d) | 2026-07-28 → 2026-08-25 (+28d) | 55d → 34d |  |
| EE-ROOF-1150 | Install Duct/Condensate/Vent Tie-Ins & Flashing | 2026-07-29 → 2026-08-26 (+28d) | 2026-07-31 → 2026-08-28 (+28d) | 55d → 34d |  |
| EE-ROOF-1160 | Startup/Controls/Balancing Prep | 2026-08-03 → 2026-08-31 (+28d) | 2026-08-05 → 2026-09-02 (+28d) | 55d → 34d |  |
| EE-ROOF-1100 | Install Solar Mounting Rails & Racking | 2026-08-04 → 2026-09-01 (+28d) | 2026-08-06 → 2026-09-03 (+28d) | 34d → 13d |  |
| EE-ROOF-1170 | Water Test / Leak Test | 2026-08-06 → 2026-09-03 (+28d) | 2026-08-06 → 2026-09-03 (+28d) | 55d → 34d |  |
| EE-ROOF-1110 | Mount Solar Panels | 2026-08-07 → 2026-09-04 (+28d) | 2026-08-27 → 2026-09-25 (+29d) | 34d → 13d |  |
| EE-ROOF-1180 | Roof Patches (If Any) | 2026-08-07 → 2026-09-04 (+28d) | 2026-08-07 → 2026-09-04 (+28d) | 55d → 34d |  |
| EE-ROOF-1190 | Punch List & Corrections | 2026-08-10 → 2026-09-08 (+29d) | 2026-08-12 → 2026-09-10 (+29d) | 55d → 34d |  |
| EE-ROOF-1120 | Run Electrical Conduit & Inverters to Roof | 2026-08-28 → 2026-09-28 (+31d) | 2026-09-03 → 2026-10-02 (+29d) | 34d → 13d |  |
| EE-ROOF-1130 | Final Electrical Tie-In (Solar Panels) | 2026-09-04 → 2026-10-05 (+31d) | 2026-09-11 → 2026-10-09 (+28d) | 34d → 13d |  |
| EE-ROOF-1200 | Final Owner Walk (Punch List & Corrections) | 2026-09-14 → 2026-10-12 (+28d) | 2026-09-25 → 2026-10-23 (+28d) | 34d → 13d |  |
| 3 | **Interior Build-Out** | 2026-03-02 → 2026-03-03 (+1d) | 2026-10-20 → 2026-11-11 (+22d) |  |  |
| Level 2 Interior | **Level 2 Interior** | 2026-07-14 → 2026-06-26 (-18d) | 2026-09-11 → 2026-09-28 (+17d) |  |  |
| IB-L2IN-1000 | Layout & Framing (incl. backing, door frames) | 2026-07-14 → 2026-06-26 (-18d) | 2026-07-20 → 2026-07-02 (-18d) | 17d → 21d | FS-LVL3-1030, EE-ROOF-1060, IB-STAR-1000, PS-PROC-1280 → PS-PROC-1280, IB-STAR-1000, FS-LVL3-1030, FS-ROOF-1000 |
| IB-L2IN-1010 | Electrical Rough-In | 2026-07-21 → 2026-07-06 (-15d) | 2026-07-27 → 2026-07-10 (-17d) | 17d → 21d |  |
| IB-L2IN-1020 | Mechanical Rough-In | 2026-07-21 → 2026-07-06 (-15d) | 2026-07-27 → 2026-07-10 (-17d) | 17d → 21d |  |
| IB-L2IN-1030 | Plumbing Rough-In | 2026-07-21 → 2026-07-06 (-15d) | 2026-07-27 → 2026-07-10 (-17d) | 17d → 21d |  |
| IB-L2IN-1040 | Fire Supression Rough-In | 2026-07-21 → 2026-07-06 (-15d) | 2026-07-27 → 2026-07-10 (-17d) | 17d → 21d |  |
| IB-L2IN-1050 | Install Insulation | 2026-07-28 → 2026-08-11 (+14d) | 2026-07-29 → 2026-08-12 (+14d) | 48d → 0d |  |
| IB-L2IN-1060 | Install Drywall | 2026-07-30 → 2026-08-13 (+14d) | 2026-08-04 → 2026-08-18 (+14d) | 48d → 0d |  |
| IB-L2IN-1070 | Tape & Mud Drywall | 2026-08-05 → 2026-08-19 (+14d) | 2026-08-11 → 2026-08-25 (+14d) | 48d → 37d |  |
| IB-L2IN-1080 | Prep & Paint | 2026-08-12 → 2026-08-26 (+14d) | 2026-08-14 → 2026-08-28 (+14d) | 48d → 37d |  |
| IB-L2IN-1090 | MEPF Trim-Out | 2026-08-17 → 2026-08-31 (+14d) | 2026-08-21 → 2026-09-04 (+14d) | 48d → 37d |  |
| IB-L2IN-1100 | Install Storage Doors & Hardware | 2026-08-24 → 2026-09-08 (+15d) | 2026-08-28 → 2026-09-14 (+17d) | 48d → 37d |  |
| IB-L2IN-1110 | Final Clean and Punchlist | 2026-08-31 → 2026-09-15 (+15d) | 2026-09-04 → 2026-09-21 (+17d) | 49d → 37d |  |
| IB-L2IN-1120 | Punchlist Completion and Signoff | 2026-09-07 → 2026-09-22 (+15d) | 2026-09-11 → 2026-09-28 (+17d) | 93d → 81d |  |
| 3 | **Level 3 Interior** | 2026-07-21 → 2026-07-06 (-15d) | 2026-09-15 → 2026-09-23 (+8d) |  |  |
| IB-L3IN-1000 | Layout & Framing (incl. backing, door frames) | 2026-07-21 → 2026-07-06 (-15d) | 2026-07-27 → 2026-07-10 (-17d) | 26d → 36d |  |
| IB-L3IN-1010 | Electrical Rough-In | 2026-07-28 → 2026-07-13 (-15d) | 2026-08-03 → 2026-07-17 (-17d) | 46d → 56d |  |
| IB-L3IN-1020 | Mechanical Rough-In | 2026-07-28 → 2026-07-13 (-15d) | 2026-08-03 → 2026-07-17 (-17d) | 46d → 56d |  |
| IB-L3IN-1030 | Plumbing Rough-In | 2026-07-28 → 2026-07-13 (-15d) | 2026-08-03 → 2026-07-17 (-17d) | 46d → 56d |  |
| IB-L3IN-1040 | Fire Supression Rough-In | 2026-07-28 → 2026-07-13 (-15d) | 2026-08-03 → 2026-07-17 (-17d) | 46d → 56d |  |
| IB-L3IN-1050 | Install Insulation | 2026-08-04 → 2026-08-11 (+7d) | 2026-08-05 → 2026-08-12 (+7d) | 46d → 40d |  |
| IB-L3IN-1060 | Install Drywall | 2026-08-06 → 2026-08-13 (+7d) | 2026-08-11 → 2026-08-18 (+7d) | 46d → 40d |  |
| IB-L3IN-1070 | Tape & Mud Drywall | 2026-08-12 → 2026-08-19 (+7d) | 2026-08-18 → 2026-08-25 (+7d) | 46d → 40d |  |
| IB-L3IN-1080 | Prep & Paint | 2026-08-19 → 2026-08-26 (+7d) | 2026-08-21 → 2026-08-28 (+7d) | 46d → 40d |  |
| IB-L3IN-1090 | MEPF Trim-Out | 2026-08-24 → 2026-08-31 (+7d) | 2026-08-28 → 2026-09-04 (+7d) | 46d → 40d |  |
| IB-L3IN-1100 | Install Storage Doors & Hardware | 2026-08-31 → 2026-09-08 (+8d) | 2026-09-04 → 2026-09-14 (+10d) | 46d → 40d |  |
| IB-L3IN-1110 | Final Clean and Punchlist | 2026-09-07 → 2026-09-15 (+8d) | 2026-09-08 → 2026-09-16 (+8d) | 47d → 40d |  |
| IB-L3IN-1120 | Punchlist Completion and Signoff | 2026-09-09 → 2026-09-17 (+8d) | 2026-09-15 → 2026-09-23 (+8d) | 91d → 84d |  |
| 1 | **Unisex Restroom** | 2026-07-28 → 2026-07-13 (-15d) | 2026-09-03 → 2026-08-19 (-15d) |  |  |
| IB-L3UN-1000 | Framing (Metal Studs, Blocking) | 2026-07-28 → 2026-07-13 (-15d) | 2026-07-30 → 2026-07-15 (-15d) | 33d → 43d |  |
| IB-L3UN-1010 | MEPF Rough-In | 2026-07-31 → 2026-07-16 (-15d) | 2026-08-04 → 2026-07-20 (-15d) | 51d → 61d |  |
| IB-L3UN-1020 | City Inspection (Framing & MEPF Rough) | 2026-08-05 → 2026-07-21 (-15d) | 2026-08-05 → 2026-07-21 (-15d) | 52d → 62d |  |
| IB-L3UN-1030 | Install Insulation | 2026-08-06 → 2026-07-22 (-15d) | 2026-08-06 → 2026-07-22 (-15d) | 52d → 62d |  |
| IB-L3UN-1040 | Install Drywall | 2026-08-07 → 2026-07-23 (-15d) | 2026-08-10 → 2026-07-24 (-17d) | 52d → 62d |  |
| IB-L3UN-1050 | Tape & Mud Drywall | 2026-08-11 → 2026-07-27 (-15d) | 2026-08-13 → 2026-07-29 (-15d) | 54d → 64d |  |
| IB-L3UN-1060 | Painting | 2026-08-14 → 2026-07-30 (-15d) | 2026-08-17 → 2026-07-31 (-17d) | 54d → 64d |  |
| IB-L3UN-1070 | Install Restroom Fixtures & Partitions | 2026-08-18 → 2026-08-03 (-15d) | 2026-08-19 → 2026-08-04 (-15d) | 54d → 64d |  |
| IB-L3UN-1080 | Install Accessories (Grab Bars, Mirrors, Signs) | 2026-08-20 → 2026-08-05 (-15d) | 2026-08-21 → 2026-08-06 (-15d) | 54d → 64d |  |
| IB-L3UN-1090 | Final MEP Trim-Out | 2026-08-24 → 2026-08-07 (-17d) | 2026-08-25 → 2026-08-10 (-15d) | 54d → 64d |  |
| IB-L3UN-1100 | Final Clean and Punchlist | 2026-08-26 → 2026-08-11 (-15d) | 2026-08-27 → 2026-08-12 (-15d) | 54d → 64d |  |
| IB-L3UN-1110 | Punchlist Completion and Signoff | 2026-08-28 → 2026-08-13 (-15d) | 2026-09-03 → 2026-08-19 (-15d) | 99d → 109d |  |
| 5 | **Level 4 Interior** | 2026-07-28 → 2026-07-13 (-15d) |  |  |  |
| IB-L4IN-1000 | Layout & Framing (incl. backing, door frames) | 2026-07-28 → 2026-07-13 (-15d) | 2026-08-03 → 2026-07-17 (-17d) | 26d → 36d |  |
| IB-L4IN-1010 | Electrical Rough-In | 2026-08-04 → 2026-07-20 (-15d) | 2026-08-10 → 2026-07-24 (-17d) | 33d → 43d |  |
| IB-L4IN-1020 | Mechanical Rough-In | 2026-08-04 → 2026-07-20 (-15d) | 2026-08-10 → 2026-07-24 (-17d) | 33d → 43d |  |
| IB-L4IN-1030 | Plumbing Rough-In | 2026-08-04 → 2026-07-20 (-15d) | 2026-08-10 → 2026-07-24 (-17d) | 33d → 43d |  |
| IB-L4IN-1040 | Fire Supression Rough-In | 2026-08-04 → 2026-07-20 (-15d) | 2026-08-10 → 2026-07-24 (-17d) | 33d → 43d |  |

| ID | Task | Start | Finish | Total float | Predecessors |
| --- | --- | --- | --- | --- | --- |
| Level 1 Interior | **Level 1 Interior** | 2026-08-04 → 2026-08-11 (+7d) | 2026-10-02 → 2026-10-09 (+7d) |  |  |
| IB-L1IN-1000 | Layout & Framing (incl. backing, door frames) | 2026-08-04 → 2026-08-11 (+7d) | 2026-08-10 → 2026-08-17 (+7d) | 26d → 20d |  |
| IB-L1IN-1010 | Electrical Rough-In | 2026-08-11 → 2026-08-18 (+7d) | 2026-08-17 → 2026-08-24 (+7d) | 36d → 30d |  |
| IB-L1IN-1020 | Mechanical Rough-In | 2026-08-11 → 2026-08-18 (+7d) | 2026-08-17 → 2026-08-24 (+7d) | 36d → 30d |  |
| IB-L1IN-1030 | Plumbing Rough-In | 2026-08-11 → 2026-08-18 (+7d) | 2026-08-17 → 2026-08-24 (+7d) | 36d → 30d |  |
| IB-L1IN-1040 | Fire Supression Rough-In | 2026-08-11 → 2026-08-18 (+7d) | 2026-08-17 → 2026-08-24 (+7d) | 36d → 30d |  |
| IB-L1IN-1050 | Install Insulation | 2026-08-18 → 2026-08-25 (+7d) | 2026-08-19 → 2026-08-26 (+7d) | 36d → 30d |  |
| IB-L1IN-1060 | Install Drywall | 2026-08-20 → 2026-08-27 (+7d) | 2026-08-25 → 2026-09-01 (+7d) | 36d → 30d |  |
| IB-L1IN-1070 | Tape & Mud Drywall | 2026-08-26 → 2026-09-02 (+7d) | 2026-09-01 → 2026-09-09 (+8d) | 36d → 30d |  |
| IB-L1IN-1080 | Prep & Paint | 2026-09-02 → 2026-09-10 (+8d) | 2026-09-04 → 2026-09-14 (+10d) | 36d → 30d |  |
| IB-L1IN-1090 | MEPF Trim-Out | 2026-09-08 → 2026-09-15 (+7d) | 2026-09-14 → 2026-09-21 (+7d) | 36d → 30d |  |
| IB-L1IN-1100 | Install Storage Doors & Hardware | 2026-09-15 → 2026-09-22 (+7d) | 2026-09-21 → 2026-09-28 (+7d) | 36d → 30d |  |
| IB-L1IN-1110 | Final Clean and Punchlist | 2026-09-22 → 2026-09-29 (+7d) | 2026-09-23 → 2026-09-30 (+7d) | 36d → 30d |  |
| IB-L1IN-1120 | Punchlist Completion and Signoff | 2026-09-24 → 2026-10-01 (+7d) | 2026-09-30 → 2026-10-07 (+7d) | 80d → 74d |  |
| 1 | **Restrooms (Mens & Womens)** | 2026-08-11 → 2026-08-18 (+7d) | 2026-09-18 → 2026-09-25 (+7d) |  |  |
| IB-L1RR-1000 | Framing (Metal Studs, Blocking) | 2026-08-11 → 2026-08-18 (+7d) | 2026-08-13 → 2026-08-20 (+7d) | 26d → 20d |  |
| IB-L1RR-1010 | MEPF Rough-In | 2026-08-14 → 2026-08-21 (+7d) | 2026-08-18 → 2026-08-25 (+7d) | 44d → 38d |  |
| IB-L1RR-1020 | City Inspection (Framing & MEPF Rough) | 2026-08-19 → 2026-08-26 (+7d) | 2026-08-19 → 2026-08-26 (+7d) | 44d → 38d |  |
| IB-L1RR-1030 | Install Insulation | 2026-08-20 → 2026-08-27 (+7d) | 2026-08-20 → 2026-08-27 (+7d) | 44d → 38d |  |
| IB-L1RR-1040 | Install Drywall | 2026-08-21 → 2026-08-28 (+7d) | 2026-08-24 → 2026-08-31 (+7d) | 44d → 38d |  |
| IB-L1RR-1050 | Tape & Mud Drywall | 2026-08-25 → 2026-09-01 (+7d) | 2026-08-27 → 2026-09-03 (+7d) | 44d → 38d |  |
| IB-L1RR-1060 | Painting | 2026-08-28 → 2026-09-04 (+7d) | 2026-08-31 → 2026-09-08 (+8d) | 44d → 38d |  |
| IB-L1RR-1070 | Install Restroom Fixtures & Partitions | 2026-09-01 → 2026-09-09 (+8d) | 2026-09-02 → 2026-09-10 (+8d) | 44d → 38d |  |
| IB-L1RR-1080 | Install Accessories (Grab Bars, Mirrors, Signs) | 2026-09-03 → 2026-09-11 (+8d) | 2026-09-04 → 2026-09-14 (+10d) | 44d → 38d |  |
| IB-L1RR-1090 | Final MEP Trim-Out | 2026-09-08 → 2026-09-15 (+7d) | 2026-09-09 → 2026-09-16 (+7d) | 44d → 38d |  |
| IB-L1RR-1100 | Final Clean and Punclist | 2026-09-10 → 2026-09-17 (+7d) | 2026-09-11 → 2026-09-18 (+7d) | 44d → 38d |  |
| IB-L1RR-1110 | Punchlist Completion and Signoff | 2026-09-14 → 2026-09-21 (+7d) | 2026-09-18 → 2026-09-25 (+7d) | 301d → 295d |  |
| 2 | **Management Spaces (Rental Office, Storage, Break Room)** | 2026-08-14 → 2026-08-21 (+7d) | 2026-10-02 → 2026-10-09 (+7d) |  |  |
| IB-L1M\S-1000 | Layout & Framing (incl. backing, door frames) | 2026-08-14 → 2026-08-21 (+7d) | 2026-08-18 → 2026-08-25 (+7d) | 26d → 20d |  |
| IB-L1M\S-1010 | MEPF Rough-In | 2026-08-19 → 2026-08-26 (+7d) | 2026-08-21 → 2026-08-28 (+7d) | 32d → 26d |  |
| IB-L1M\S-1020 | City Inspection (Framing & MEPF) | 2026-08-24 → 2026-08-31 (+7d) | 2026-08-24 → 2026-08-31 (+7d) | 32d → 26d |  |
| IB-L1M\S-1030 | Install Insulation | 2026-08-25 → 2026-09-01 (+7d) | 2026-08-26 → 2026-09-02 (+7d) | 32d → 26d |  |
| IB-L1M\S-1040 | Install Drywall | 2026-08-27 → 2026-09-03 (+7d) | 2026-08-28 → 2026-09-04 (+7d) | 32d → 26d |  |
| IB-L1M\S-1050 | Tape & Mud Drywall | 2026-08-31 → 2026-09-08 (+8d) | 2026-09-02 → 2026-09-10 (+8d) | 32d → 26d |  |
| IB-L1M\S-1060 | Painting | 2026-09-03 → 2026-09-11 (+8d) | 2026-09-08 → 2026-09-15 (+7d) | 32d → 26d |  |
| IB-L1M\S-1070 | Install Ceiling Grid (Break Room) | 2026-09-09 → 2026-09-16 (+7d) | 2026-09-09 → 2026-09-16 (+7d) | 34d → 28d |  |
| IB-L1M\S-1080 | Install Base Trim | 2026-09-10 → 2026-09-17 (+7d) | 2026-09-10 → 2026-09-17 (+7d) | 34d → 28d |  |
| IB-L1M\S-1090 | Install Cabinets & Countertops (Break Room & Office) | 2026-09-11 → 2026-09-18 (+7d) | 2026-09-15 → 2026-09-22 (+7d) | 34d → 28d |  |
| IB-L1M\S-1100 | Install Sink & Faucests (Break Room) | 2026-09-16 → 2026-09-23 (+7d) | 2026-09-16 → 2026-09-23 (+7d) | 34d → 28d |  |
| IB-L1M\S-1110 | Appliances (Microwave & Fridge) | 2026-09-17 → 2026-09-24 (+7d) | 2026-09-17 → 2026-09-24 (+7d) | 34d → 28d |  |
| IB-L1M\S-1120 | Interior Signage | 2026-09-18 → 2026-09-25 (+7d) | 2026-09-18 → 2026-09-25 (+7d) | 34d → 28d |  |
| IB-L1M\S-1130 | MEPF Trim-Out | 2026-09-21 → 2026-09-28 (+7d) | 2026-09-23 → 2026-09-30 (+7d) | 34d → 28d |  |
| IB-L1M\S-1140 | Final Clean and Punchlist | 2026-09-24 → 2026-10-01 (+7d) | 2026-09-25 → 2026-10-02 (+7d) | 34d → 28d |  |
| IB-L1M\S-1150 | Punchlist Completion and Signoff | 2026-09-28 → 2026-10-05 (+7d) | 2026-10-02 → 2026-10-09 (+7d) | 291d → 285d |  |
| 1 | **Janus Scope** | 2026-07-28 → 2026-08-19 (+22d) | 2026-10-20 → 2026-11-11 (+22d) |  |  |
| IB-JNUS-1000 | Level 2 Install (Diamond Plate, Turkey Wire, Misc.) | 2026-07-28 → 2026-08-19 (+22d) | 2026-08-17 → 2026-09-09 (+23d) | 17d → 0d | IB-L2IN-1000, IB-L2IN-1040 → IB-L2IN-1000, IB-L2IN-1060 |
| IB-JNUS-1010 | Level 3 Install (Diamond Plate, Turkey Wire, Misc.) | 2026-08-18 → 2026-09-10 (+23d) | 2026-09-08 → 2026-09-30 (+22d) | 17d → 0d |  |
| IB-JNUS-1020 | Level 4 Install (Diamond Plate, Turkey Wire, Misc.) | 2026-09-09 → 2026-10-01 (+22d) | 2026-09-29 → 2026-10-21 (+22d) | 17d → 0d |  |
| IB-JNUS-1030 | Level 1 Install (Diamond Plate, Turkey Wire, Misc.) | 2026-09-30 → 2026-10-22 (+22d) | 2026-10-20 → 2026-11-11 (+22d) | 17d → 0d |  |
| 2 | **Elevator Installation** | 2026-08-19 → 2026-08-26 (+7d) | 2026-10-07 → 2026-10-14 (+7d) |  |  |
| EL-INST-1000 | Evelvator Installation (incl. Equipment Room Buildout) | 2026-08-19 → 2026-08-26 (+7d) | 2026-10-07 → 2026-10-14 (+7d) | 26d → 20d |  |
| 4 | **Stairwells** | 2026-03-02 → 2026-03-03 (+1d) | 2026-05-04 → 2026-05-05 (+1d) |  |  |
| IB-STAR-1000 | Install Stairs & Railings | 2026-03-02 → 2026-03-03 (+1d) | 2026-03-27 → 2026-03-30 (+3d) | 91d → 83d |  |
| IB-STAR-1010 | Install Signage & Lighting | 2026-03-30 → 2026-03-31 (+1d) | 2026-04-07 → 2026-04-08 (+1d) | 140d → 138d |  |
| IB-STAR-1020 | Install Doors & Hardware | 2026-04-08 → 2026-04-09 (+1d) | 2026-04-13 → 2026-04-14 (+1d) | 140d → 138d |  |
| IB-STAR-1030 | Paint Stairs and Railings | 2026-04-14 → 2026-04-15 (+1d) | 2026-04-20 → 2026-04-21 (+1d) | 143d → 141d |  |
| IB-STAR-1040 | Clean Stairwells and Punchlist | 2026-04-21 → 2026-04-22 (+1d) | 2026-04-27 → 2026-04-28 (+1d) | 143d → 141d |  |
| IB-STAR-1050 | Punchlist and Signoff on Stairwells | 2026-04-28 → 2026-04-29 (+1d) | 2026-05-04 → 2026-05-05 (+1d) | 187d → 185d |  |
| 4 | **Outside Primary Footprint** | 2026-07-31 → 2026-07-13 (-18d) | 2026-11-23 → 2026-11-03 (-20d) |  |  |
| 2 | **Sitework Finishes** | 2026-07-31 → 2026-07-13 (-18d) | 2026-10-27 → 2026-10-07 (-20d) |  |  |
| SW-FIN-1040 | Finish Grade Site (incl. bio ponds) | 2026-07-31 → 2026-07-13 (-18d) | 2026-08-06 → 2026-07-17 (-20d) | 0d → 13d | EE-WEST-1000, EE-WEST-1080, SU-STWK-1100 → SU-STWK-1100, EE-WEST-1000, FS-ROOF-1000 |
| SW-FIN-1050 | Install Irrigation Sleeves (inc. bio ponds) | 2026-08-07 → 2026-07-20 (-18d) | 2026-08-10 → 2026-07-21 (-20d) | 0d → 13d |  |
| SW-FIN-1060 | Electrical Rough (Light Poles) | 2026-08-11 → 2026-07-22 (-20d) | 2026-08-17 → 2026-07-28 (-20d) | 0d → 13d |  |
| SW-FIN-1100 | Install Bollards (including footings) | 2026-08-18 → 2026-07-29 (-20d) | 2026-08-24 → 2026-08-04 (-20d) | 0d → 13d |  |
| SW-FIN-1130 | FRP Concrete (Hardscape & Sidewalks) | 2026-08-25 → 2026-08-05 (-20d) | 2026-09-02 → 2026-08-13 (-20d) | 0d → 13d |  |
| SW-FIN-1140 | Install Irrigation | 2026-09-03 → 2026-08-14 (-20d) | 2026-09-17 → 2026-08-27 (-21d) | 15d → 28d |  |
| SW-FIN-1150 | Install Asphalt (Final Coat) | 2026-09-18 → 2026-08-28 (-21d) | 2026-09-18 → 2026-08-28 (-21d) | 15d → 28d |  |
| SW-FIN-1170 | Planting | 2026-09-21 → 2026-08-31 (-21d) | 2026-10-02 → 2026-09-14 (-18d) | 15d → 28d |  |
| SW-FIN-1171 | FRP Dumpster Enclosure | 2026-10-05 → 2026-09-15 (-20d) | 2026-10-13 → 2026-09-23 (-20d) | 15d → 28d |  |
| SW-FIN-1180 | Site Furnishings & Signage | 2026-10-14 → 2026-09-24 (-20d) | 2026-10-20 → 2026-09-30 (-20d) | 15d → 28d |  |

| ID | Task | Start | Finish | Total float | Predecessors |
| --- | --- | --- | --- | --- | --- |
| SW-FIN-1190 | Final Clean and Punchlist Sitework | 2026-10-21 → 2026-10-01 (-20d) | 2026-10-22 → 2026-10-02 (-20d) | 15d → 28d |  |
| SW-FIN-1200 | Punch List Completion and Signoff | 2026-10-23 → 2026-10-05 (-18d) | 2026-10-27 → 2026-10-07 (-20d) | 54d → 67d |  |
| 1 | **Rutland Drive Improvements** | 2026-08-27 → 2026-08-07 (-20d) | 2026-11-23 → 2026-11-03 (-20d) |  |  |
| SW-RTLN-1000 | EPSC Install (Silt Fence, Inlet Protection) | 2026-08-27 → 2026-08-07 (-20d) | 2026-08-31 → 2026-08-11 (-20d) | 0d → 13d |  |
| SW-RTLN-1010 | Sawcut Asphalt & Demo Existing Curb | 2026-09-01 → 2026-08-12 (-20d) | 2026-09-03 → 2026-08-14 (-20d) | 0d → 13d |  |
| SW-RTLN-1020 | Temp Traffic Control Setup | 2026-09-04 → 2026-08-17 (-18d) | 2026-09-09 → 2026-08-19 (-21d) | 0d → 13d |  |
| SW-RTLN-1030 | Relocate Mailbox / Signs / Remove Conflicts | 2026-09-10 → 2026-08-20 (-21d) | 2026-09-11 → 2026-08-21 (-21d) | 0d → 13d |  |
| SW-RTLN-1040 | Trench & Install Storm Pipe | 2026-09-14 → 2026-08-24 (-21d) | 2026-09-23 → 2026-09-02 (-21d) | 0d → 13d |  |
| SW-RTLN-1050 | Set Curb Inlets, Junction Boxes, Headwalls | 2026-09-24 → 2026-09-03 (-21d) | 2026-10-01 → 2026-09-11 (-20d) | 0d → 13d |  |
| SW-RTLN-1060 | Backfill / Compact Drain Trenches | 2026-10-02 → 2026-09-14 (-18d) | 2026-10-06 → 2026-09-16 (-20d) | 0d → 13d |  |
| SW-RTLN-1070 | Subgrade Proofrool & Undercut / Backfill (if needed) | 2026-10-07 → 2026-09-17 (-20d) | 2026-10-09 → 2026-09-21 (-18d) | 0d → 13d |  |
| SW-RTLN-1080 | Place Aggregate Base | 2026-10-12 → 2026-09-22 (-20d) | 2026-10-15 → 2026-09-25 (-20d) | 0d → 13d |  |
| SW-RTLN-1090 | City Inspections (Proofrool, Storm, Curbs) | 2026-10-16 → 2026-09-28 (-18d) | 2026-10-19 → 2026-09-29 (-20d) | 0d → 13d |  |
| SW-RTLN-1100 | Install Curb & Gutter | 2026-10-20 → 2026-09-30 (-20d) | 2026-10-26 → 2026-10-06 (-20d) | 0d → 13d |  |
| SW-RTLN-1110 | Sidewalks & ADA Ramps | 2026-10-27 → 2026-10-07 (-20d) | 2026-10-30 → 2026-10-12 (-18d) | 0d → 13d |  |
| SW-RTLN-1120 | First Lift Asphalt (Binder Course) | 2026-11-02 → 2026-10-13 (-20d) | 2026-11-03 → 2026-10-14 (-20d) | 0d → 13d |  |
| SW-RTLN-1130 | Final Grading | 2026-11-04 → 2026-10-15 (-20d) | 2026-11-05 → 2026-10-16 (-20d) | 0d → 13d |  |
| SW-RTLN-1140 | Final Asphalt Surface Course | 2026-11-06 → 2026-10-19 (-18d) | 2026-11-06 → 2026-10-19 (-18d) | 0d → 13d |  |
| SW-RTLN-1150 | Permanent Signs & Striping | 2026-11-09 → 2026-10-20 (-20d) | 2026-11-10 → 2026-10-21 (-20d) | 0d → 13d |  |
| SW-RTLN-1160 | Site Cleanup & Final EPSC Removal | 2026-11-11 → 2026-10-22 (-20d) | 2026-11-12 → 2026-10-23 (-20d) | 0d → 13d |  |
| SW-RTLN-1170 | Rutland Drive Punchlist Walk | 2026-11-13 → 2026-10-26 (-18d) | 2026-11-16 → 2026-10-27 (-20d) | 35d → 48d |  |
| SW-RTLN-1180 | Rutland Drive Punchlist Completion and Signoff | 2026-11-17 → 2026-10-28 (-20d) | 2026-11-23 → 2026-11-03 (-20d) | 35d → 48d |  |
| Closeout | **Closeout** | 2026-08-11 → 2026-07-27 (-15d) | 2026-11-13 → 2026-11-12 (-1d) |  |  |
| Building Finals | **Building Finals** | 2026-08-11 → 2026-07-27 (-15d) | 2026-11-13 → 2026-11-12 (-1d) |  |  |
| CO-BF-1000 | Rough Fire Sprinkler Inspection | 2026-08-11 → 2026-07-27 (-15d) | 2026-08-11 → 2026-07-27 (-15d) | 61d → 71d |  |
| CO-BF-1060 | Building Final Occupancy Inspection (Substantial Completion) | 2026-11-13 → 2026-11-12 (-1d) | 2026-11-13 → 2026-11-12 (-1d) |  |  |
| 2 | **Warranty Work** | 2026-12-03 → 2026-12-02 (-1d) | 2027-11-15 → 2027-11-12 (-3d) |  |  |
| WW-WARR-1000 | 1st Quarter HVAC Maintenance | 2026-12-03 → 2026-12-02 (-1d) | 2027-03-03 → 2027-03-02 (-1d) |  |  |
| WW-WARR-1010 | 1st Quarter Landscape Maintenance | 2026-12-03 → 2026-12-02 (-1d) | 2027-03-03 → 2027-03-02 (-1d) |  |  |
| WW-WARR-1030 | 2nd Quarter HVAC Maintenance | 2027-03-04 → 2027-03-03 (-1d) | 2027-05-26 → 2027-05-25 (-1d) |  |  |
| WW-WARR-1040 | 2nd Quarter Landscape Maintenance | 2027-03-04 → 2027-03-03 (-1d) | 2027-05-26 → 2027-05-25 (-1d) |  |  |
| WW-WARR-1050 | 3rd Quarter HVAC Maintenance | 2027-05-27 → 2027-05-26 (-1d) | 2027-08-20 → 2027-08-19 (-1d) |  |  |
| WW-WARR-1060 | 3rd Quarter Landscape Maintenance | 2027-05-27 → 2027-05-26 (-1d) | 2027-08-20 → 2027-08-19 (-1d) |  |  |
| WW-WARR-1070 | 4th Quarter HVAC Maintenance | 2027-08-23 → 2027-08-20 (-3d) | 2027-11-15 → 2027-11-12 (-3d) |  |  |
| WW-WARR-1080 | 4th Quarter Landscape Maintenance | 2027-08-23 → 2027-08-20 (-3d) | 2027-11-15 → 2027-11-12 (-3d) |  |  |
| WW-WARR-1020 | 11-Month Warranty Walk | 2027-10-04 → 2027-10-01 (-3d) | 2027-10-08 → 2027-10-07 (-1d) |  |  |
| x.WI-WTHR-1050 | Weather Impact No. 05 - Snow & Ice Delay (5 Work Days) |  |  |  | none → x.WI-WTHR-1040 |

## Version 8 (data date 2026-03-30, saved 2026-03-30, file update_8.xer)

Note of the change: Update Meridian UP04 and Mt. Juliet UP08 schedule files

Last finish 2027-11-12 → 2027-11-18 (+6d). Complete tasks 47 → 53.

Added:

| ID | Task | Duration | Start | Finish | Predecessors |
| --- | --- | --- | --- | --- | --- |
| *SU-SUTL-1060 | West Wilson Precon & Procurement | 5d | 2026-03-25 A | 2026-04-03 | SU-SUTL-1040 |
| FS-LVL1-1080 | North Footings & Foundations | 3d | 2026-03-30 A | 2026-04-01 | FS-LVL1-1040 |
| FS-LVL1-1070 | Slab Prep & Pour (Pour A3) | 2d | 2026-04-02 | 2026-04-03 | FS-LVL1-1040, FS-LVL1-1080, FS-LVL1-1010 |

Changed:

| ID | Task | Start | Finish | Duration | Complete | Total float | Predecessors |
| --- | --- | --- | --- | --- | --- | --- | --- |
| PS-CMIL-1010 | Project Substantial Completion | 2026-11-12 → 2026-11-18 (+6d) | 2026-11-12 → 2026-11-18 (+6d) |  |  |  |  |
| PS-CMIL-1160 | Remaining Weather Allowance (Originally 20 Days) | 2026-11-13 → 2026-11-19 (+6d) | 2026-12-01 → 2026-12-07 (+6d) |  |  |  |  |
| PS-CMIL-1170 | Project Substantial Completion with Weather Projection | 2026-12-01 → 2026-12-07 (+6d) | 2026-12-01 → 2026-12-07 (+6d) |  |  |  |  |
| PS-CMIL-1190 | Public Storage Final Acceptance | 2026-12-01 → 2026-12-07 (+6d) | 2026-12-01 → 2026-12-07 (+6d) |  |  |  |  |
| 2 | **Construction Milestones** |  | 2026-11-02 → 2026-11-06 (+4d) |  |  |  |  |
| PS-CMIL-1090 | Start of Elevated Structure | 2026-03-16 → 2026-03-26 A (+10d) | 2026-03-16 → 2026-03-26 A (+10d) |  | 0% → 100% | 170d → none |  |
| PS-CMIL-1100 | Stair & Elevator Cores Complete to Roof | 2026-03-16 → 2026-03-27 A (+11d) | 2026-03-16 → 2026-03-27 A (+11d) |  | 0% → 100% | 170d → none |  |
| PS-CMIL-1120 | Structure Complete | 2026-07-01 → 2026-07-08 (+7d) | 2026-07-01 → 2026-07-08 (+7d) |  |  |  |  |
| PS-CMIL-1130 | Building Dry In | 2026-08-10 → 2026-08-14 (+4d) | 2026-08-10 → 2026-08-14 (+4d) |  |  |  |  |
| PS-CMIL-1110 | Exterior Work Complete | 2026-11-02 → 2026-11-06 (+4d) | 2026-11-02 → 2026-11-06 (+4d) |  |  |  |  |
| PS-CMIL-1140 | Landscape & Hardscape Complete | 2026-11-02 → 2026-11-06 (+4d) | 2026-11-02 → 2026-11-06 (+4d) |  |  |  |  |
| 4 | **Pre-Construction** |  | 2026-06-29 → 2026-07-31 (+32d) |  |  |  |  |
| 1 | **Procurement** |  | 2026-06-29 → 2026-07-31 (+32d) |  |  |  |  |
| PS-PROC-1080 | Submit and Approve Plumbing Fixtures |  | 2026-03-09 → 2026-04-03 (+25d) |  | 33% → 67% | 144d → 129d |  |
| PS-PROC-1020 | Procure Electric Room MDP |  | 2026-04-20 → 2026-05-08 (+18d) |  | 0% → 25% | 109d → 99d |  |
| PS-PROC-1300 | Submit and Approve Brick Veneer |  | 2026-03-09 → 2026-04-10 (+32d) |  |  | 30d → 10d |  |
| PS-PROC-1220 | Procure Light Fixtures |  | 2026-04-20 → 2026-05-08 (+18d) |  | 33% → 50% | 132d → 122d |  |
| PS-PROC-1110 | Submit and Approve Drywall / Ceilings |  | 2026-03-02 → 2026-04-03 (+32d) |  |  | 144d → 119d |  |
| PS-PROC-1150 | Submit and Approve D/F/HW |  | 2026-03-02 → 2026-04-03 (+32d) |  |  | 75d → 55d |  |
| PS-PROC-1130 | Submit and Approve Roofing |  | 2026-03-09 → 2026-04-10 (+32d) |  |  | 81d → 61d |  |
| PS-PROC-1230 | Procure HVAC Equipment and Fab Ductwork |  | 2026-05-07 → 2026-05-22 (+15d) |  | 4% → 27% | 62d → 55d |  |
| PS-PROC-1120 | Submit and Approve Floor Finishes | 2026-03-17 → 2026-03-30 (+13d) | 2026-04-06 → 2026-04-17 (+11d) |  |  | 120d → 110d |  |
| PS-PROC-1160 | Submit and Approve Toilet Accessories | 2026-03-03 → 2026-03-30 (+27d) | 2026-03-23 → 2026-04-17 (+25d) |  |  | 141d → 126d |  |
| PS-PROC-1170 | Submit and Approve Specialties | 2026-03-03 → 2026-03-30 (+27d) | 2026-03-23 → 2026-04-17 (+25d) |  |  | 141d → 121d |  |
| PS-PROC-1190 | Submit and Approve Appliances | 2026-03-17 → 2026-03-30 (+13d) | 2026-04-06 → 2026-04-17 (+11d) |  |  | 130d → 120d |  |
| PS-PROC-1270 | Procure Storefront / Glazing | 2026-02-24 → 2026-03-30 (+34d) | 2026-04-20 → 2026-05-22 (+32d) |  |  | 77d → 57d |  |
| PS-PROC-1340 | Procure Fireproofing / Intumescent | 2026-02-27 → 2026-03-30 (+31d) | 2026-03-19 → 2026-04-17 (+29d) |  |  | 119d → 103d |  |
| PS-PROC-1280 | Procure D/F/HW | 2026-03-03 → 2026-04-06 (+34d) | 2026-04-13 → 2026-05-15 (+32d) |  |  | 75d → 55d |  |
| PS-PROC-1350 | Procure Plumbing Fixtures | 2026-03-10 → 2026-04-06 (+27d) | 2026-04-13 → 2026-05-08 (+25d) |  |  | 144d → 129d |  |
| PS-PROC-1360 | Procure Ceilings | 2026-03-03 → 2026-04-06 (+34d) | 2026-04-06 → 2026-05-08 (+32d) |  |  | 144d → 119d |  |
| PS-PROC-1260 | Procure Roofing | 2026-03-10 → 2026-04-13 (+34d) | 2026-03-30 → 2026-05-01 (+32d) |  |  | 81d → 61d |  |
| PS-PROC-1370 | Procure Brick Veneer | 2026-03-10 → 2026-04-13 (+34d) | 2026-06-29 → 2026-07-31 (+32d) |  |  | 30d → 10d |  |
| PS-PROC-1290 | Procure Finishes | 2026-04-07 → 2026-04-20 (+13d) | 2026-05-11 → 2026-05-22 (+11d) |  |  | 120d → 110d |  |
| PS-PROC-1310 | Procure Toilet Accessories | 2026-03-24 → 2026-04-20 (+27d) | 2026-04-20 → 2026-05-15 (+25d) |  |  | 141d → 126d |  |
| PS-PROC-1320 | Procure Specialties | 2026-03-24 → 2026-04-20 (+27d) | 2026-04-20 → 2026-05-15 (+25d) |  |  | 141d → 121d |  |
| PS-PROC-1330 | Procure Appliances | 2026-04-07 → 2026-04-20 (+13d) | 2026-05-04 → 2026-05-15 (+11d) |  |  | 130d → 120d |  |
| 1 | **Construction** |  | 2026-11-12 → 2026-11-18 (+6d) |  |  |  |  |
| Sitework | **Sitework & Utilities** |  | 2026-04-13 → 2026-05-22 (+39d) |  |  |  |  |
| SW | **Sitework** |  | 2026-04-13 → 2026-05-22 (+39d) |  |  |  |  |
| SU-STWK-1050 | Install Site Stone Base | 2026-03-13 → 2026-04-23 (+41d) | 2026-03-20 → 2026-04-30 (+41d) |  |  | 75d → 50d |  |
| SU-STWK-1060 | Install Prime Coat, Binder, & Tack Coat | 2026-03-23 → 2026-05-01 (+39d) | 2026-03-25 → 2026-05-05 (+41d) |  |  | 75d → 50d |  |
| SU-STWK-1070 | Install Asphalt (Wearing Course) | 2026-03-26 → 2026-05-06 (+41d) | 2026-03-26 → 2026-05-06 (+41d) |  |  | 75d → 50d |  |
| SU-STWK-1080 | Form & Reinforce Curb & Gutter | 2026-03-27 → 2026-05-07 (+41d) | 2026-04-02 → 2026-05-13 (+41d) |  |  | 75d → 50d |  |
| SU-STWK-1090 | Pour Curb & Gutter | 2026-04-03 → 2026-05-14 (+41d) | 2026-04-06 → 2026-05-15 (+39d) |  |  | 75d → 50d |  |
| SU-STWK-1100 | Rough Grade Site | 2026-04-07 → 2026-05-18 (+41d) | 2026-04-13 → 2026-05-22 (+39d) |  |  | 75d → 50d |  |
| SIte | **Site Utilities** |  | 2026-03-12 → 2026-04-22 (+41d) |  |  |  |  |
| SU-SUTL-1050 | Install U.G. Fire Water & Domestic | 2026-02-24 → 2026-04-06 (+41d) | 2026-03-09 → 2026-04-17 (+39d) |  |  | 75d → 50d | SU-SUTL-1040 → SU-SUTL-1040, *SU-SUTL-1060 |
| SU-SUTL-1010 | Install Irrigation Sleeves | 2026-03-10 → 2026-04-20 (+41d) | 2026-03-12 → 2026-04-22 (+41d) |  |  | 75d → 50d |  |
| 1 | **Foundation & Structural** |  | 2026-07-01 → 2026-07-08 (+7d) |  |  |  |  |
| 1 | **Level 1** |  | 2026-04-01 → 2026-04-22 (+21d) |  |  |  |  |
| FS-LVL1-1000 | Footings & Foundation CIP Walls (includes elevator pit) |  | 2026-03-06 → 2026-03-23 A (+17d) |  | 64% → 100% | 0d → none |  |
| FS-LVL1-1010 | Underground MEPF Install (Pre-Pour) |  | 2026-03-04 → 2026-03-31 (+27d) |  | 0% → 60% |  |  |
| FS-LVL1-1020 | Erect Stairs & Elevator Shafts (CMU Cores) |  | 2026-03-02 → 2026-03-27 A (+25d) |  | 67% → 100% | 15d → none |  |
| FS-LVL1-1030 | Slab Prep & Pour (Pour A1) | 2026-03-09 → 2026-03-17 A (+8d) | 2026-03-11 → 2026-03-17 A (+6d) |  | 0% → 100% | 0d → none | FS-LVL1-1000, FS-LVL1-1010 FF+5d → FS-LVL1-1010 SS, FS-LVL1-1000 |
| FS-LVL1-1040 | Slab Prep & Pour (Pour A2) | 2026-03-12 → 2026-03-26 A (+14d) | 2026-03-16 → 2026-03-26 A (+10d) | 3d → 2d | 0% → 100% | 0d → none | FS-LVL1-1030 → FS-LVL1-1030 FS+5d, FS-LVL1-1010 SS |
| FS-LVL1-1050 | Steel Erection (Columns & Beams) | 2026-03-16 → 2026-03-26 A (+10d) | 2026-03-27 → 2026-04-08 (+12d) |  | 0% → 20% |  | PS-PROC-1030, FS-LVL1-1030, FS-LVL1-1040 FS-1d → FS-LVL1-1030, PS-PROC-1030, FS-LVL1-1040 SS |
| FS-LVL1-1060 | Fireproofing | 2026-03-30 → 2026-04-20 (+21d) | 2026-04-01 → 2026-04-22 (+21d) |  |  | 111d → 100d |  |
| 2 | **Level 2** | 2026-03-24 → 2026-04-06 (+13d) | 2026-04-27 → 2026-05-01 (+4d) |  |  |  |  |
| FS-LVL2-1000 | Install Metal Decking | 2026-03-24 → 2026-04-06 (+13d) | 2026-03-27 → 2026-04-09 (+13d) |  |  |  | FS-LVL1-1050 FF, FS-LVL1-1020 → FS-LVL1-1020, FS-LVL1-1050 SS+7d, FS-LVL1-1070 |
| FS-LVL2-1010 | MEPF Rough-In (Pre-Pour) | 2026-03-26 → 2026-04-08 (+13d) | 2026-04-01 → 2026-04-13 (+12d) |  |  |  |  |
| FS-LVL2-1020 | FRP Metal Deck Slab (Pour A1) | 2026-04-02 → 2026-04-10 (+8d) | 2026-04-08 → 2026-04-15 (+7d) |  |  |  | PS-PROC-1250, FS-LVL2-1010 → FS-LVL2-1010 SS+2d, PS-PROC-1250 |
| FS-LVL2-1030 | FRP Metal Deck Slab (Pour A2) | 2026-04-09 → 2026-04-16 (+7d) | 2026-04-13 → 2026-04-18 (+5d) |  |  |  |  |
| FS-LVL2-1040 | Layout & Erect Load Bearing Framing | 2026-04-14 → 2026-04-20 (+6d) | 2026-04-27 → 2026-05-01 (+4d) |  |  |  |  |
| 3 | **Level 3** | 2026-04-22 → 2026-04-28 (+6d) | 2026-05-27 → 2026-06-02 (+6d) |  |  |  |  |
| FS-LVL3-1000 | Install Metal Decking | 2026-04-22 → 2026-04-28 (+6d) | 2026-04-27 → 2026-05-01 (+4d) |  |  |  |  |
| FS-LVL3-1010 | MEPF Rough-In (Pre-Pour) | 2026-04-24 → 2026-04-30 (+6d) | 2026-04-30 → 2026-05-06 (+6d) |  |  |  |  |
| FS-LVL3-1020 | FRP Metal Deck Slab (Pour A1) | 2026-05-01 → 2026-05-07 (+6d) | 2026-05-07 → 2026-05-13 (+6d) |  |  |  |  |
| FS-LVL3-1030 | FRP Metal Deck Slab (Pour A2) | 2026-05-08 → 2026-05-14 (+6d) | 2026-05-12 → 2026-05-18 (+6d) |  |  |  |  |
| FS-LVL3-1040 | Layout & Erect Load Bearing Framing | 2026-05-13 → 2026-05-19 (+6d) | 2026-05-27 → 2026-06-02 (+6d) |  |  |  |  |
| 5 | **Level 4** | 2026-05-21 → 2026-05-28 (+7d) | 2026-06-25 → 2026-07-01 (+6d) |  |  |  |  |

| ID | Task | Start | Finish |
| --- | --- | --- | --- |
| FS-LVL4-1000 | Install Metal Decking | 2026-05-21 → 2026-05-28 (+7d) | 2026-05-27 → 2026-06-02 (+6d) |
| FS-LVL4-1010 | MEPF Rough-In (Pre-Pour) | 2026-05-26 → 2026-06-01 (+6d) | 2026-06-01 → 2026-06-05 (+4d) |
| FS-LVL4-1020 | FRP Metal Deck Slab (Pour A1) | 2026-06-02 → 2026-06-08 (+6d) | 2026-06-08 → 2026-06-12 (+4d) |
| FS-LVL4-1030 | FRP Metal Deck Slab (Pour A2) | 2026-06-09 → 2026-06-15 (+6d) | 2026-06-11 → 2026-06-17 (+6d) |
| FS-LVL4-1040 | Layout & Erect Load Bearing Framing | 2026-06-12 → 2026-06-18 (+6d) | 2026-06-25 → 2026-07-01 (+6d) |
| 4 | **Roof** | 2026-06-22 → 2026-06-26 (+4d) | 2026-07-01 → 2026-07-08 (+7d) |
| FS-ROOF-1000 | Install Metal Decking | 2026-06-22 → 2026-06-26 (+4d) | 2026-06-25 → 2026-07-01 (+6d) |
| FS-ROOF-1010 | MEPF Rough-In (Stubups) | 2026-06-24 → 2026-06-30 (+6d) | 2026-06-26 → 2026-07-02 (+6d) |
| FS-ROOF-1020 | Layout & Frame Parapets | 2026-06-29 → 2026-07-06 (+7d) | 2026-07-01 → 2026-07-08 (+7d) |
| 2 | **Envelope & Exterior** | 2026-06-12 → 2026-06-18 (+6d) | 2026-11-12 → 2026-11-18 (+6d) |
| 0 | **North Elevation** | 2026-06-12 → 2026-06-18 (+6d) | 2026-09-30 → 2026-10-06 (+6d) |
| EE-NRTH-1000 | Layout & Exterior Framing (Level 1) | 2026-06-12 → 2026-06-18 (+6d) | 2026-06-18 → 2026-06-24 (+6d) |
| EE-NRTH-1010 | City Inspection (Rough Framing) | 2026-06-19 → 2026-06-25 (+6d) | 2026-06-19 → 2026-06-25 (+6d) |
| EE-NRTH-1020 | Electrical Rough-In | 2026-07-02 → 2026-07-09 (+7d) | 2026-07-09 → 2026-07-15 (+6d) |
| EE-NRTH-1030 | City Inspection (Electrical) | 2026-07-10 → 2026-07-16 (+6d) | 2026-07-10 → 2026-07-16 (+6d) |
| EE-NRTH-1040 | Install Exterior Sheathing | 2026-07-13 → 2026-07-17 (+4d) | 2026-07-17 → 2026-07-23 (+6d) |
| EE-NRTH-1050 | City Inspection (Screw Inspection) | 2026-07-20 → 2026-07-24 (+4d) | 2026-07-20 → 2026-07-24 (+4d) |
| EE-NRTH-1060 | Weather Barrier & Flashing | 2026-07-21 → 2026-07-27 (+6d) | 2026-07-27 → 2026-07-31 (+4d) |
| EE-NRTH-1070 | Install Rigid Insulation | 2026-07-28 → 2026-08-03 (+6d) | 2026-08-03 → 2026-08-07 (+4d) |
| EE-NRTH-1080 | Storefront, Windows & Metals | 2026-08-04 → 2026-08-10 (+6d) | 2026-08-06 → 2026-08-12 (+6d) |
| EE-NRTH-1090 | Install Brick Veneer | 2026-08-07 → 2026-08-13 (+6d) | 2026-08-27 → 2026-09-02 (+6d) |
| EE-NRTH-1100 | Install Canopies & Trim | 2026-08-28 → 2026-09-03 (+6d) | 2026-09-01 → 2026-09-08 (+7d) |
| EE-NRTH-1110 | Install Lighting Fixtures | 2026-09-02 → 2026-09-09 (+7d) | 2026-09-04 → 2026-09-11 (+7d) |
| EE-NRTH-1120 | Install Signage | 2026-09-08 → 2026-09-14 (+6d) | 2026-09-08 → 2026-09-14 (+6d) |
| EE-NRTH-1130 | Install Doors & Hardware | 2026-09-09 → 2026-09-15 (+6d) | 2026-09-10 → 2026-09-16 (+6d) |
| EE-NRTH-1140 | Install Downspouts | 2026-09-11 → 2026-09-17 (+6d) | 2026-09-11 → 2026-09-17 (+6d) |
| EE-NRTH-1150 | Final Paint | 2026-09-14 → 2026-09-18 (+4d) | 2026-09-16 → 2026-09-22 (+6d) |
| EE-NRTH-1160 | Punch List & Corrections | 2026-09-17 → 2026-09-23 (+6d) | 2026-09-23 → 2026-09-29 (+6d) |
| EE-NRTH-1170 | Final Owner Walk (Punch List & Corrections) | 2026-09-24 → 2026-09-30 (+6d) | 2026-09-30 → 2026-10-06 (+6d) |
| 2 | **East Elevation** | 2026-06-19 → 2026-06-25 (+6d) | 2026-10-05 → 2026-10-09 (+4d) |
| EE-EAST-1000 | Layout & Exterior Framing (Level 1) | 2026-06-19 → 2026-06-25 (+6d) | 2026-06-25 → 2026-07-01 (+6d) |
| EE-EAST-1010 | City Inspection (Rough Framing) | 2026-06-26 → 2026-07-02 (+6d) | 2026-06-26 → 2026-07-02 (+6d) |
| EE-EAST-1020 | Electrical Rough-In | 2026-07-10 → 2026-07-16 (+6d) | 2026-07-16 → 2026-07-22 (+6d) |
| EE-EAST-1030 | City Inspection (Electrical) | 2026-07-17 → 2026-07-23 (+6d) | 2026-07-17 → 2026-07-23 (+6d) |
| EE-EAST-1040 | Install Exterior Sheathing | 2026-07-20 → 2026-07-24 (+4d) | 2026-07-24 → 2026-07-30 (+6d) |
| EE-EAST-1050 | City Inspection (Screw Inspection) | 2026-07-27 → 2026-07-31 (+4d) | 2026-07-27 → 2026-07-31 (+4d) |
| EE-EAST-1060 | Weather Barrier & Flashing | 2026-07-28 → 2026-08-03 (+6d) | 2026-08-03 → 2026-08-07 (+4d) |
| EE-EAST-1070 | Install Rigid Insulation | 2026-08-04 → 2026-08-10 (+6d) | 2026-08-10 → 2026-08-14 (+4d) |
| EE-EAST-1080 | Install Windows & Metals | 2026-08-11 → 2026-08-17 (+6d) | 2026-08-13 → 2026-08-19 (+6d) |
| EE-EAST-1090 | Install Brick Veneer | 2026-08-28 → 2026-09-03 (+6d) | 2026-09-18 → 2026-09-24 (+6d) |
| EE-EAST-1100 | Install Signage | 2026-09-21 → 2026-09-25 (+4d) | 2026-09-21 → 2026-09-25 (+4d) |
| EE-EAST-1110 | Punch List & Corrections | 2026-09-22 → 2026-09-28 (+6d) | 2026-09-28 → 2026-10-02 (+4d) |
| EE-EAST-1120 | Final Owner Walk (Punch List & Corrections) | 2026-09-29 → 2026-10-05 (+6d) | 2026-10-05 → 2026-10-09 (+4d) |
| 5 | **South Elevation** | 2026-06-26 → 2026-07-02 (+6d) | 2026-11-02 → 2026-11-06 (+4d) |
| EE-SOTH-1000 | Layout & Exterior Framing (Level 1) | 2026-06-26 → 2026-07-02 (+6d) | 2026-07-02 → 2026-07-09 (+7d) |
| EE-SOTH-1010 | City Inspection (Rough Framing) | 2026-07-06 → 2026-07-10 (+4d) | 2026-07-06 → 2026-07-10 (+4d) |
| EE-SOTH-1020 | Electrical Rough-In | 2026-07-17 → 2026-07-23 (+6d) | 2026-07-23 → 2026-07-29 (+6d) |
| EE-SOTH-1030 | City Inspection (Electrical) | 2026-07-24 → 2026-07-30 (+6d) | 2026-07-24 → 2026-07-30 (+6d) |
| EE-SOTH-1040 | Install Exterior Sheathing | 2026-07-27 → 2026-07-31 (+4d) | 2026-07-31 → 2026-08-06 (+6d) |
| EE-SOTH-1050 | City Inspection (Screw Inspection) | 2026-08-03 → 2026-08-07 (+4d) | 2026-08-03 → 2026-08-07 (+4d) |
| EE-SOTH-1060 | Weather Barrier & Flashing | 2026-08-04 → 2026-08-10 (+6d) | 2026-08-10 → 2026-08-14 (+4d) |
| EE-SOTH-1070 | Install Rigid Insulation | 2026-08-11 → 2026-08-17 (+6d) | 2026-08-17 → 2026-08-21 (+4d) |
| EE-SOTH-1080 | Install Brick Veneer | 2026-09-21 → 2026-09-25 (+4d) | 2026-10-09 → 2026-10-15 (+6d) |
| EE-SOTH-1090 | Install Signage | 2026-10-12 → 2026-10-16 (+4d) | 2026-10-12 → 2026-10-16 (+4d) |
| EE-SOTH-1100 | Install Doors & Hardware | 2026-10-13 → 2026-10-19 (+6d) | 2026-10-13 → 2026-10-19 (+6d) |
| EE-SOTH-1110 | Install Downspouts | 2026-10-14 → 2026-10-20 (+6d) | 2026-10-15 → 2026-10-21 (+6d) |
| EE-SOTH-1120 | Final Paint | 2026-10-16 → 2026-10-22 (+6d) | 2026-10-19 → 2026-10-23 (+4d) |
| EE-SOTH-1130 | Punch List & Corrections | 2026-10-20 → 2026-10-26 (+6d) | 2026-10-26 → 2026-10-30 (+4d) |
| EE-SOTH-1140 | Final Owner Walk (Punch List & Corrections) | 2026-10-27 → 2026-11-02 (+6d) | 2026-11-02 → 2026-11-06 (+4d) |
| 1 | **West Elevation** | 2026-07-06 → 2026-07-10 (+4d) | 2026-11-12 → 2026-11-18 (+6d) |
| EE-WEST-1000 | Layout & Exterior Framing (Level 1) | 2026-07-06 → 2026-07-10 (+4d) | 2026-07-10 → 2026-07-16 (+6d) |
| EE-WEST-1010 | City Inspection (Rough Framing) | 2026-07-13 → 2026-07-17 (+4d) | 2026-07-13 → 2026-07-17 (+4d) |
| EE-WEST-1020 | Electrical Rough-In | 2026-07-24 → 2026-07-30 (+6d) | 2026-07-30 → 2026-08-05 (+6d) |
| EE-WEST-1030 | City Inspection (Electrical) | 2026-07-31 → 2026-08-06 (+6d) | 2026-07-31 → 2026-08-06 (+6d) |
| EE-WEST-1040 | Install Exterior Sheathing | 2026-08-03 → 2026-08-07 (+4d) | 2026-08-07 → 2026-08-13 (+6d) |
| EE-WEST-1050 | City Inspection (Screw Inspection) | 2026-08-10 → 2026-08-14 (+4d) | 2026-08-10 → 2026-08-14 (+4d) |
| EE-WEST-1060 | Weather Barrier & Flashing | 2026-08-11 → 2026-08-17 (+6d) | 2026-08-17 → 2026-08-21 (+4d) |
| EE-WEST-1070 | Install Rigid Insulation | 2026-08-18 → 2026-08-24 (+6d) | 2026-08-24 → 2026-08-28 (+4d) |
| EE-WEST-1080 | Install Windows & Metals | 2026-08-25 → 2026-08-31 (+6d) | 2026-08-27 → 2026-09-02 (+6d) |
| EE-WEST-1090 | Install Brick Veneer | 2026-10-12 → 2026-10-16 (+4d) | 2026-10-30 → 2026-11-05 (+6d) |

| ID | Task | Start | Finish | Total float |
| --- | --- | --- | --- | --- |
| EE-WEST-1100 | Install Signage | 2026-11-02 → 2026-11-06 (+4d) | 2026-11-02 → 2026-11-06 (+4d) |  |
| EE-WEST-1110 | Punch List & Corrections | 2026-11-03 → 2026-11-09 (+6d) | 2026-11-09 → 2026-11-13 (+4d) |  |
| EE-WEST-1120 | Final Owner Walk (Punch List & Corrections) | 2026-11-10 → 2026-11-16 (+6d) | 2026-11-12 → 2026-11-18 (+6d) |  |
| 3 | **Roof** | 2026-07-02 → 2026-07-09 (+7d) | 2026-10-23 → 2026-10-29 (+6d) |  |
| EE-ROOF-1000 | Clean & Prep Metal Deck | 2026-07-02 → 2026-07-09 (+7d) | 2026-07-06 → 2026-07-10 (+4d) |  |
| EE-ROOF-1010 | Stage Materials & Solar Rails (Crane) | 2026-07-07 → 2026-07-13 (+6d) | 2026-07-08 → 2026-07-14 (+6d) |  |
| EE-ROOF-1020 | Layout for Penetrations, Curb Blocking, Edge Metal | 2026-07-09 → 2026-07-15 (+6d) | 2026-07-10 → 2026-07-16 (+6d) |  |
| EE-ROOF-1030 | Install Blocking & Equipment Curbs | 2026-07-13 → 2026-07-17 (+4d) | 2026-07-15 → 2026-07-21 (+6d) |  |
| EE-ROOF-1040 | Install Rigid Insulation | 2026-07-16 → 2026-07-22 (+6d) | 2026-07-21 → 2026-07-27 (+6d) |  |
| EE-ROOF-1050 | Install Cover Board | 2026-07-22 → 2026-07-28 (+6d) | 2026-07-27 → 2026-07-31 (+4d) |  |
| EE-ROOF-1060 | Install TPO Roofing System (incl. boots, termination bars) | 2026-07-28 → 2026-08-03 (+6d) | 2026-08-10 → 2026-08-14 (+4d) |  |
| EE-ROOF-1070 | Install Edge Metal, Coping, Trim | 2026-08-11 → 2026-08-17 (+6d) | 2026-08-17 → 2026-08-21 (+4d) |  |
| EE-ROOF-1080 | Install Roof Drains, Vents, Mechanical Curbs | 2026-08-18 → 2026-08-24 (+6d) | 2026-08-24 → 2026-08-28 (+4d) |  |
| EE-ROOF-1090 | Install Electrical Conduit & Roof Mounted Boxes | 2026-08-25 → 2026-08-31 (+6d) | 2026-08-31 → 2026-09-04 (+4d) |  |
| EE-ROOF-1140 | Set Rooftop Units (RTU's & Splits) | 2026-08-25 → 2026-08-31 (+6d) | 2026-08-25 → 2026-08-31 (+6d) |  |
| EE-ROOF-1150 | Install Duct/Condensate/Vent Tie-Ins & Flashing | 2026-08-26 → 2026-09-01 (+6d) | 2026-08-28 → 2026-09-03 (+6d) |  |
| EE-ROOF-1160 | Startup/Controls/Balancing Prep | 2026-08-31 → 2026-09-04 (+4d) | 2026-09-02 → 2026-09-09 (+7d) |  |
| EE-ROOF-1100 | Install Solar Mounting Rails & Racking | 2026-09-01 → 2026-09-08 (+7d) | 2026-09-03 → 2026-09-10 (+7d) |  |
| EE-ROOF-1170 | Water Test / Leak Test | 2026-09-03 → 2026-09-10 (+7d) | 2026-09-03 → 2026-09-10 (+7d) |  |
| EE-ROOF-1110 | Mount Solar Panels | 2026-09-04 → 2026-09-11 (+7d) | 2026-09-25 → 2026-10-01 (+6d) |  |
| EE-ROOF-1180 | Roof Patches (If Any) | 2026-09-04 → 2026-09-11 (+7d) | 2026-09-04 → 2026-09-11 (+7d) |  |
| EE-ROOF-1190 | Punch List & Corrections | 2026-09-08 → 2026-09-14 (+6d) | 2026-09-10 → 2026-09-16 (+6d) |  |
| EE-ROOF-1120 | Run Electrical Conduit & Inverters to Roof | 2026-09-28 → 2026-10-02 (+4d) | 2026-10-02 → 2026-10-08 (+6d) |  |
| EE-ROOF-1130 | Final Electrical Tie-In (Solar Panels) | 2026-10-05 → 2026-10-09 (+4d) | 2026-10-09 → 2026-10-15 (+6d) |  |
| EE-ROOF-1200 | Final Owner Walk (Punch List & Corrections) | 2026-10-12 → 2026-10-16 (+4d) | 2026-10-23 → 2026-10-29 (+6d) |  |
| 3 | **Interior Build-Out** | 2026-03-03 → 2026-04-09 (+37d) | 2026-11-11 → 2026-11-17 (+6d) |  |
| Level 2 Interior | **Level 2 Interior** | 2026-06-26 → 2026-07-02 (+6d) | 2026-09-28 → 2026-10-02 (+4d) |  |
| IB-L2IN-1000 | Layout & Framing (incl. backing, door frames) | 2026-06-26 → 2026-07-02 (+6d) | 2026-07-02 → 2026-07-09 (+7d) |  |
| IB-L2IN-1010 | Electrical Rough-In | 2026-07-06 → 2026-07-10 (+4d) | 2026-07-10 → 2026-07-16 (+6d) |  |
| IB-L2IN-1020 | Mechanical Rough-In | 2026-07-06 → 2026-07-10 (+4d) | 2026-07-10 → 2026-07-16 (+6d) |  |
| IB-L2IN-1030 | Plumbing Rough-In | 2026-07-06 → 2026-07-10 (+4d) | 2026-07-10 → 2026-07-16 (+6d) |  |
| IB-L2IN-1040 | Fire Supression Rough-In | 2026-07-06 → 2026-07-10 (+4d) | 2026-07-10 → 2026-07-16 (+6d) |  |
| IB-L2IN-1050 | Install Insulation | 2026-08-11 → 2026-08-17 (+6d) | 2026-08-12 → 2026-08-18 (+6d) |  |
| IB-L2IN-1060 | Install Drywall | 2026-08-13 → 2026-08-19 (+6d) | 2026-08-18 → 2026-08-24 (+6d) |  |
| IB-L2IN-1070 | Tape & Mud Drywall | 2026-08-19 → 2026-08-25 (+6d) | 2026-08-25 → 2026-08-31 (+6d) |  |
| IB-L2IN-1080 | Prep & Paint | 2026-08-26 → 2026-09-01 (+6d) | 2026-08-28 → 2026-09-03 (+6d) |  |
| IB-L2IN-1090 | MEPF Trim-Out | 2026-08-31 → 2026-09-04 (+4d) | 2026-09-04 → 2026-09-11 (+7d) |  |
| IB-L2IN-1100 | Install Storage Doors & Hardware | 2026-09-08 → 2026-09-14 (+6d) | 2026-09-14 → 2026-09-18 (+4d) |  |
| IB-L2IN-1110 | Final Clean and Punchlist | 2026-09-15 → 2026-09-21 (+6d) | 2026-09-21 → 2026-09-25 (+4d) |  |
| IB-L2IN-1120 | Punchlist Completion and Signoff | 2026-09-22 → 2026-09-28 (+6d) | 2026-09-28 → 2026-10-02 (+4d) |  |
| 3 | **Level 3 Interior** | 2026-07-06 → 2026-07-10 (+4d) | 2026-09-23 → 2026-09-29 (+6d) |  |
| IB-L3IN-1000 | Layout & Framing (incl. backing, door frames) | 2026-07-06 → 2026-07-10 (+4d) | 2026-07-10 → 2026-07-16 (+6d) |  |
| IB-L3IN-1010 | Electrical Rough-In | 2026-07-13 → 2026-07-17 (+4d) | 2026-07-17 → 2026-07-23 (+6d) |  |
| IB-L3IN-1020 | Mechanical Rough-In | 2026-07-13 → 2026-07-17 (+4d) | 2026-07-17 → 2026-07-23 (+6d) |  |
| IB-L3IN-1030 | Plumbing Rough-In | 2026-07-13 → 2026-07-17 (+4d) | 2026-07-17 → 2026-07-23 (+6d) |  |
| IB-L3IN-1040 | Fire Supression Rough-In | 2026-07-13 → 2026-07-17 (+4d) | 2026-07-17 → 2026-07-23 (+6d) |  |
| IB-L3IN-1050 | Install Insulation | 2026-08-11 → 2026-08-17 (+6d) | 2026-08-12 → 2026-08-18 (+6d) |  |
| IB-L3IN-1060 | Install Drywall | 2026-08-13 → 2026-08-19 (+6d) | 2026-08-18 → 2026-08-24 (+6d) |  |
| IB-L3IN-1070 | Tape & Mud Drywall | 2026-08-19 → 2026-08-25 (+6d) | 2026-08-25 → 2026-08-31 (+6d) |  |
| IB-L3IN-1080 | Prep & Paint | 2026-08-26 → 2026-09-01 (+6d) | 2026-08-28 → 2026-09-03 (+6d) |  |
| IB-L3IN-1090 | MEPF Trim-Out | 2026-08-31 → 2026-09-04 (+4d) | 2026-09-04 → 2026-09-11 (+7d) |  |
| IB-L3IN-1100 | Install Storage Doors & Hardware | 2026-09-08 → 2026-09-14 (+6d) | 2026-09-14 → 2026-09-18 (+4d) |  |
| IB-L3IN-1110 | Final Clean and Punchlist | 2026-09-15 → 2026-09-21 (+6d) | 2026-09-16 → 2026-09-22 (+6d) |  |
| IB-L3IN-1120 | Punchlist Completion and Signoff | 2026-09-17 → 2026-09-23 (+6d) | 2026-09-23 → 2026-09-29 (+6d) |  |
| 1 | **Unisex Restroom** | 2026-07-13 → 2026-07-17 (+4d) | 2026-08-19 → 2026-08-25 (+6d) |  |
| IB-L3UN-1000 | Framing (Metal Studs, Blocking) | 2026-07-13 → 2026-07-17 (+4d) | 2026-07-15 → 2026-07-21 (+6d) |  |
| IB-L3UN-1010 | MEPF Rough-In | 2026-07-16 → 2026-07-22 (+6d) | 2026-07-20 → 2026-07-24 (+4d) | 61d → 56d |
| IB-L3UN-1020 | City Inspection (Framing & MEPF Rough) | 2026-07-21 → 2026-07-27 (+6d) | 2026-07-21 → 2026-07-27 (+6d) | 62d → 57d |
| IB-L3UN-1030 | Install Insulation | 2026-07-22 → 2026-07-28 (+6d) | 2026-07-22 → 2026-07-28 (+6d) | 62d → 57d |
| IB-L3UN-1040 | Install Drywall | 2026-07-23 → 2026-07-29 (+6d) | 2026-07-24 → 2026-07-30 (+6d) | 62d → 57d |
| IB-L3UN-1050 | Tape & Mud Drywall | 2026-07-27 → 2026-07-31 (+4d) | 2026-07-29 → 2026-08-04 (+6d) |  |
| IB-L3UN-1060 | Painting | 2026-07-30 → 2026-08-05 (+6d) | 2026-07-31 → 2026-08-06 (+6d) |  |
| IB-L3UN-1070 | Install Restroom Fixtures & Partitions | 2026-08-03 → 2026-08-07 (+4d) | 2026-08-04 → 2026-08-10 (+6d) |  |
| IB-L3UN-1080 | Install Accessories (Grab Bars, Mirrors, Signs) | 2026-08-05 → 2026-08-11 (+6d) | 2026-08-06 → 2026-08-12 (+6d) |  |
| IB-L3UN-1090 | Final MEP Trim-Out | 2026-08-07 → 2026-08-13 (+6d) | 2026-08-10 → 2026-08-14 (+4d) |  |
| IB-L3UN-1100 | Final Clean and Punchlist | 2026-08-11 → 2026-08-17 (+6d) | 2026-08-12 → 2026-08-18 (+6d) |  |
| IB-L3UN-1110 | Punchlist Completion and Signoff | 2026-08-13 → 2026-08-19 (+6d) | 2026-08-19 → 2026-08-25 (+6d) |  |
| 5 | **Level 4 Interior** | 2026-07-13 → 2026-07-17 (+4d) | 2026-09-23 → 2026-09-29 (+6d) |  |
| IB-L4IN-1000 | Layout & Framing (incl. backing, door frames) | 2026-07-13 → 2026-07-17 (+4d) | 2026-07-17 → 2026-07-23 (+6d) |  |
| IB-L4IN-1010 | Electrical Rough-In | 2026-07-20 → 2026-07-24 (+4d) | 2026-07-24 → 2026-07-30 (+6d) |  |

| ID | Task | Start | Finish | Total float | Predecessors |
| --- | --- | --- | --- | --- | --- |
| IB-L4IN-1020 | Mechanical Rough-In | 2026-07-20 → 2026-07-24 (+4d) | 2026-07-24 → 2026-07-30 (+6d) |  |  |
| IB-L4IN-1030 | Plumbing Rough-In | 2026-07-20 → 2026-07-24 (+4d) | 2026-07-24 → 2026-07-30 (+6d) |  |  |
| IB-L4IN-1040 | Fire Supression Rough-In | 2026-07-20 → 2026-07-24 (+4d) | 2026-07-24 → 2026-07-30 (+6d) |  |  |
| IB-L4IN-1050 | Install Insulation | 2026-08-11 → 2026-08-17 (+6d) | 2026-08-12 → 2026-08-18 (+6d) |  |  |
| IB-L4IN-1060 | Install Drywall | 2026-08-13 → 2026-08-19 (+6d) | 2026-08-18 → 2026-08-24 (+6d) |  |  |
| IB-L4IN-1070 | Tape & Mud Drywall | 2026-08-19 → 2026-08-25 (+6d) | 2026-08-25 → 2026-08-31 (+6d) |  |  |
| IB-L4IN-1080 | Prep & Paint | 2026-08-26 → 2026-09-01 (+6d) | 2026-08-28 → 2026-09-03 (+6d) |  |  |
| IB-L4IN-1090 | MEPF Trim-Out | 2026-08-31 → 2026-09-04 (+4d) | 2026-09-04 → 2026-09-11 (+7d) |  |  |
| IB-L4IN-1100 | Install Storage Doors & Hardware | 2026-09-08 → 2026-09-14 (+6d) | 2026-09-14 → 2026-09-18 (+4d) |  |  |
| IB-L4IN-1110 | Final Clean and Punchlist | 2026-09-15 → 2026-09-21 (+6d) | 2026-09-16 → 2026-09-22 (+6d) |  |  |
| IB-L4IN-1120 | Punchlist Completion and Signoff | 2026-09-17 → 2026-09-23 (+6d) | 2026-09-23 → 2026-09-29 (+6d) |  |  |
| Level 1 Interior | **Level 1 Interior** | 2026-08-11 → 2026-08-17 (+6d) | 2026-10-09 → 2026-10-15 (+6d) |  |  |
| IB-L1IN-1000 | Layout & Framing (incl. backing, door frames) | 2026-08-11 → 2026-08-17 (+6d) | 2026-08-17 → 2026-08-21 (+4d) |  |  |
| IB-L1IN-1010 | Electrical Rough-In | 2026-08-18 → 2026-08-24 (+6d) | 2026-08-24 → 2026-08-28 (+4d) |  |  |
| IB-L1IN-1020 | Mechanical Rough-In | 2026-08-18 → 2026-08-24 (+6d) | 2026-08-24 → 2026-08-28 (+4d) |  |  |
| IB-L1IN-1030 | Plumbing Rough-In | 2026-08-18 → 2026-08-24 (+6d) | 2026-08-24 → 2026-08-28 (+4d) |  |  |
| IB-L1IN-1040 | Fire Supression Rough-In | 2026-08-18 → 2026-08-24 (+6d) | 2026-08-24 → 2026-08-28 (+4d) |  |  |
| IB-L1IN-1050 | Install Insulation | 2026-08-25 → 2026-08-31 (+6d) | 2026-08-26 → 2026-09-01 (+6d) |  |  |
| IB-L1IN-1060 | Install Drywall | 2026-08-27 → 2026-09-02 (+6d) | 2026-09-01 → 2026-09-08 (+7d) |  |  |
| IB-L1IN-1070 | Tape & Mud Drywall | 2026-09-02 → 2026-09-09 (+7d) | 2026-09-09 → 2026-09-15 (+6d) |  |  |
| IB-L1IN-1080 | Prep & Paint | 2026-09-10 → 2026-09-16 (+6d) | 2026-09-14 → 2026-09-18 (+4d) |  |  |
| IB-L1IN-1090 | MEPF Trim-Out | 2026-09-15 → 2026-09-21 (+6d) | 2026-09-21 → 2026-09-25 (+4d) |  |  |
| IB-L1IN-1100 | Install Storage Doors & Hardware | 2026-09-22 → 2026-09-28 (+6d) | 2026-09-28 → 2026-10-02 (+4d) |  |  |
| IB-L1IN-1110 | Final Clean and Punchlist | 2026-09-29 → 2026-10-05 (+6d) | 2026-09-30 → 2026-10-06 (+6d) |  |  |
| IB-L1IN-1120 | Punchlist Completion and Signoff | 2026-10-01 → 2026-10-07 (+6d) | 2026-10-07 → 2026-10-13 (+6d) |  |  |
| 1 | **Restrooms (Mens & Womens)** | 2026-08-18 → 2026-08-24 (+6d) | 2026-09-25 → 2026-10-01 (+6d) |  |  |
| IB-L1RR-1000 | Framing (Metal Studs, Blocking) | 2026-08-18 → 2026-08-24 (+6d) | 2026-08-20 → 2026-08-26 (+6d) |  |  |
| IB-L1RR-1010 | MEPF Rough-In | 2026-08-21 → 2026-08-27 (+6d) | 2026-08-25 → 2026-08-31 (+6d) | 38d → 33d |  |
| IB-L1RR-1020 | City Inspection (Framing & MEPF Rough) | 2026-08-26 → 2026-09-01 (+6d) | 2026-08-26 → 2026-09-01 (+6d) | 38d → 33d |  |
| IB-L1RR-1030 | Install Insulation | 2026-08-27 → 2026-09-02 (+6d) | 2026-08-27 → 2026-09-02 (+6d) | 38d → 33d |  |
| IB-L1RR-1040 | Install Drywall | 2026-08-28 → 2026-09-03 (+6d) | 2026-08-31 → 2026-09-04 (+4d) | 38d → 33d |  |
| IB-L1RR-1050 | Tape & Mud Drywall | 2026-09-01 → 2026-09-08 (+7d) | 2026-09-03 → 2026-09-10 (+7d) | 38d → 33d |  |
| IB-L1RR-1060 | Painting | 2026-09-04 → 2026-09-11 (+7d) | 2026-09-08 → 2026-09-14 (+6d) | 38d → 33d |  |
| IB-L1RR-1070 | Install Restroom Fixtures & Partitions | 2026-09-09 → 2026-09-15 (+6d) | 2026-09-10 → 2026-09-16 (+6d) | 38d → 33d |  |
| IB-L1RR-1080 | Install Accessories (Grab Bars, Mirrors, Signs) | 2026-09-11 → 2026-09-17 (+6d) | 2026-09-14 → 2026-09-18 (+4d) | 38d → 33d |  |
| IB-L1RR-1090 | Final MEP Trim-Out | 2026-09-15 → 2026-09-21 (+6d) | 2026-09-16 → 2026-09-22 (+6d) | 38d → 33d |  |
| IB-L1RR-1100 | Final Clean and Punclist | 2026-09-17 → 2026-09-23 (+6d) | 2026-09-18 → 2026-09-24 (+6d) | 38d → 33d |  |
| IB-L1RR-1110 | Punchlist Completion and Signoff | 2026-09-21 → 2026-09-25 (+4d) | 2026-09-25 → 2026-10-01 (+6d) | 295d → 33d |  |
| 2 | **Management Spaces (Rental Office, Storage, Break Room)** | 2026-08-21 → 2026-08-27 (+6d) | 2026-10-09 → 2026-10-15 (+6d) |  |  |
| IB-L1M\S-1000 | Layout & Framing (incl. backing, door frames) | 2026-08-21 → 2026-08-27 (+6d) | 2026-08-25 → 2026-08-31 (+6d) |  |  |
| IB-L1M\S-1010 | MEPF Rough-In | 2026-08-26 → 2026-09-01 (+6d) | 2026-08-28 → 2026-09-03 (+6d) | 26d → 23d |  |
| IB-L1M\S-1020 | City Inspection (Framing & MEPF) | 2026-08-31 → 2026-09-04 (+4d) | 2026-08-31 → 2026-09-04 (+4d) | 26d → 23d |  |
| IB-L1M\S-1030 | Install Insulation | 2026-09-01 → 2026-09-08 (+7d) | 2026-09-02 → 2026-09-09 (+7d) | 26d → 23d |  |
| IB-L1M\S-1040 | Install Drywall | 2026-09-03 → 2026-09-10 (+7d) | 2026-09-04 → 2026-09-11 (+7d) | 26d → 23d |  |
| IB-L1M\S-1050 | Tape & Mud Drywall | 2026-09-08 → 2026-09-14 (+6d) | 2026-09-10 → 2026-09-16 (+6d) | 26d → 23d |  |
| IB-L1M\S-1060 | Painting | 2026-09-11 → 2026-09-17 (+6d) | 2026-09-15 → 2026-09-21 (+6d) | 26d → 23d |  |
| IB-L1M\S-1070 | Install Ceiling Grid (Break Room) | 2026-09-16 → 2026-09-22 (+6d) | 2026-09-16 → 2026-09-22 (+6d) | 28d → 23d |  |
| IB-L1M\S-1080 | Install Base Trim | 2026-09-17 → 2026-09-23 (+6d) | 2026-09-17 → 2026-09-23 (+6d) | 28d → 23d |  |
| IB-L1M\S-1090 | Install Cabinets & Countertops (Break Room & Office) | 2026-09-18 → 2026-09-24 (+6d) | 2026-09-22 → 2026-09-28 (+6d) | 28d → 23d |  |
| IB-L1M\S-1100 | Install Sink & Faucests (Break Room) | 2026-09-23 → 2026-09-29 (+6d) | 2026-09-23 → 2026-09-29 (+6d) | 28d → 23d |  |
| IB-L1M\S-1110 | Appliances (Microwave & Fridge) | 2026-09-24 → 2026-09-30 (+6d) | 2026-09-24 → 2026-09-30 (+6d) | 28d → 23d |  |
| IB-L1M\S-1120 | Interior Signage | 2026-09-25 → 2026-10-01 (+6d) | 2026-09-25 → 2026-10-01 (+6d) | 28d → 23d |  |
| IB-L1M\S-1130 | MEPF Trim-Out | 2026-09-28 → 2026-10-02 (+4d) | 2026-09-30 → 2026-10-06 (+6d) | 28d → 23d |  |
| IB-L1M\S-1140 | Final Clean and Punchlist | 2026-10-01 → 2026-10-07 (+6d) | 2026-10-02 → 2026-10-08 (+6d) | 28d → 23d |  |
| IB-L1M\S-1150 | Punchlist Completion and Signoff | 2026-10-05 → 2026-10-09 (+4d) | 2026-10-09 → 2026-10-15 (+6d) | 285d → 23d |  |
| 1 | **Janus Scope** | 2026-08-19 → 2026-08-25 (+6d) | 2026-11-11 → 2026-11-17 (+6d) |  |  |
| IB-JNUS-1000 | Level 2 Install (Diamond Plate, Turkey Wire, Misc.) | 2026-08-19 → 2026-08-25 (+6d) | 2026-09-09 → 2026-09-15 (+6d) |  |  |
| IB-JNUS-1010 | Level 3 Install (Diamond Plate, Turkey Wire, Misc.) | 2026-09-10 → 2026-09-16 (+6d) | 2026-09-30 → 2026-10-06 (+6d) |  |  |
| IB-JNUS-1020 | Level 4 Install (Diamond Plate, Turkey Wire, Misc.) | 2026-10-01 → 2026-10-07 (+6d) | 2026-10-21 → 2026-10-27 (+6d) |  |  |
| IB-JNUS-1030 | Level 1 Install (Diamond Plate, Turkey Wire, Misc.) | 2026-10-22 → 2026-10-28 (+6d) | 2026-11-11 → 2026-11-17 (+6d) |  |  |
| 2 | **Elevator Installation** | 2026-08-26 → 2026-09-01 (+6d) | 2026-10-14 → 2026-10-20 (+6d) |  |  |
| EL-INST-1000 | Evelvator Installation (incl. Equipment Room Buildout) | 2026-08-26 → 2026-09-01 (+6d) | 2026-10-14 → 2026-10-20 (+6d) |  |  |
| 4 | **Stairwells** | 2026-03-03 → 2026-04-09 (+37d) | 2026-05-05 → 2026-06-11 (+37d) |  |  |
| IB-STAR-1000 | Install Stairs & Railings | 2026-03-03 → 2026-04-09 (+37d) | 2026-03-30 → 2026-05-06 (+37d) | 83d → 60d | FS-LVL1-1020 → FS-LVL1-1020, FS-LVL1-1040, FS-LVL1-1050 |
| IB-STAR-1010 | Install Signage & Lighting | 2026-03-31 → 2026-05-07 (+37d) | 2026-04-08 → 2026-05-15 (+37d) | 138d → 115d |  |
| IB-STAR-1020 | Install Doors & Hardware | 2026-04-09 → 2026-05-18 (+39d) | 2026-04-14 → 2026-05-21 (+37d) | 138d → 115d |  |
| IB-STAR-1030 | Paint Stairs and Railings | 2026-04-15 → 2026-05-22 (+37d) | 2026-04-21 → 2026-05-28 (+37d) | 141d → 118d |  |
| IB-STAR-1040 | Clean Stairwells and Punchlist | 2026-04-22 → 2026-05-29 (+37d) | 2026-04-28 → 2026-06-04 (+37d) | 141d → 118d |  |
| IB-STAR-1050 | Punchlist and Signoff on Stairwells | 2026-04-29 → 2026-06-05 (+37d) | 2026-05-05 → 2026-06-11 (+37d) | 185d → 162d |  |
| 4 | **Outside Primary Footprint** | 2026-07-13 → 2026-07-17 (+4d) | 2026-11-03 → 2026-11-09 (+6d) |  |  |

| ID | Task | Start | Finish | Predecessors |
| --- | --- | --- | --- | --- |
| 2 | **Sitework Finishes** | 2026-07-13 → 2026-07-17 (+4d) | 2026-10-07 → 2026-10-13 (+6d) |  |
| SW-FIN-1040 | Finish Grade Site (incl. bio ponds) | 2026-07-13 → 2026-07-17 (+4d) | 2026-07-17 → 2026-07-23 (+6d) |  |
| SW-FIN-1050 | Install Irrigation Sleeves (inc. bio ponds) | 2026-07-20 → 2026-07-24 (+4d) | 2026-07-21 → 2026-07-27 (+6d) |  |
| SW-FIN-1060 | Electrical Rough (Light Poles) | 2026-07-22 → 2026-07-28 (+6d) | 2026-07-28 → 2026-08-03 (+6d) |  |
| SW-FIN-1100 | Install Bollards (including footings) | 2026-07-29 → 2026-08-04 (+6d) | 2026-08-04 → 2026-08-10 (+6d) |  |
| SW-FIN-1130 | FRP Concrete (Hardscape & Sidewalks) | 2026-08-05 → 2026-08-11 (+6d) | 2026-08-13 → 2026-08-19 (+6d) |  |
| SW-FIN-1140 | Install Irrigation | 2026-08-14 → 2026-08-20 (+6d) | 2026-08-27 → 2026-09-02 (+6d) |  |
| SW-FIN-1150 | Install Asphalt (Final Coat) | 2026-08-28 → 2026-09-03 (+6d) | 2026-08-28 → 2026-09-03 (+6d) |  |
| SW-FIN-1170 | Planting | 2026-08-31 → 2026-09-04 (+4d) | 2026-09-14 → 2026-09-18 (+4d) |  |
| SW-FIN-1171 | FRP Dumpster Enclosure | 2026-09-15 → 2026-09-21 (+6d) | 2026-09-23 → 2026-09-29 (+6d) |  |
| SW-FIN-1180 | Site Furnishings & Signage | 2026-09-24 → 2026-09-30 (+6d) | 2026-09-30 → 2026-10-06 (+6d) |  |
| SW-FIN-1190 | Final Clean and Punchlist Sitework | 2026-10-01 → 2026-10-07 (+6d) | 2026-10-02 → 2026-10-08 (+6d) |  |
| SW-FIN-1200 | Punch List Completion and Signoff | 2026-10-05 → 2026-10-09 (+4d) | 2026-10-07 → 2026-10-13 (+6d) |  |
| 1 | **Rutland Drive Improvements** | 2026-08-07 → 2026-08-13 (+6d) | 2026-11-03 → 2026-11-09 (+6d) |  |
| SW-RTLN-1000 | EPSC Install (Silt Fence, Inlet Protection) | 2026-08-07 → 2026-08-13 (+6d) | 2026-08-11 → 2026-08-17 (+6d) |  |
| SW-RTLN-1010 | Sawcut Asphalt & Demo Existing Curb | 2026-08-12 → 2026-08-18 (+6d) | 2026-08-14 → 2026-08-20 (+6d) |  |
| SW-RTLN-1020 | Temp Traffic Control Setup | 2026-08-17 → 2026-08-21 (+4d) | 2026-08-19 → 2026-08-25 (+6d) |  |
| SW-RTLN-1030 | Relocate Mailbox / Signs / Remove Conflicts | 2026-08-20 → 2026-08-26 (+6d) | 2026-08-21 → 2026-08-27 (+6d) |  |
| SW-RTLN-1040 | Trench & Install Storm Pipe | 2026-08-24 → 2026-08-28 (+4d) | 2026-09-02 → 2026-09-09 (+7d) |  |
| SW-RTLN-1050 | Set Curb Inlets, Junction Boxes, Headwalls | 2026-09-03 → 2026-09-10 (+7d) | 2026-09-11 → 2026-09-17 (+6d) |  |
| SW-RTLN-1060 | Backfill / Compact Drain Trenches | 2026-09-14 → 2026-09-18 (+4d) | 2026-09-16 → 2026-09-22 (+6d) |  |
| SW-RTLN-1070 | Subgrade Proofrool & Undercut / Backfill (if needed) | 2026-09-17 → 2026-09-23 (+6d) | 2026-09-21 → 2026-09-25 (+4d) |  |
| SW-RTLN-1080 | Place Aggregate Base | 2026-09-22 → 2026-09-28 (+6d) | 2026-09-25 → 2026-10-01 (+6d) |  |
| SW-RTLN-1090 | City Inspections (Proofrool, Storm, Curbs) | 2026-09-28 → 2026-10-02 (+4d) | 2026-09-29 → 2026-10-05 (+6d) |  |
| SW-RTLN-1100 | Install Curb & Gutter | 2026-09-30 → 2026-10-06 (+6d) | 2026-10-06 → 2026-10-12 (+6d) |  |
| SW-RTLN-1110 | Sidewalks & ADA Ramps | 2026-10-07 → 2026-10-13 (+6d) | 2026-10-12 → 2026-10-16 (+4d) |  |
| SW-RTLN-1120 | First Lift Asphalt (Binder Course) | 2026-10-13 → 2026-10-19 (+6d) | 2026-10-14 → 2026-10-20 (+6d) |  |
| SW-RTLN-1130 | Final Grading | 2026-10-15 → 2026-10-21 (+6d) | 2026-10-16 → 2026-10-22 (+6d) |  |
| SW-RTLN-1140 | Final Asphalt Surface Course | 2026-10-19 → 2026-10-23 (+4d) | 2026-10-19 → 2026-10-23 (+4d) |  |
| SW-RTLN-1150 | Permanent Signs & Striping | 2026-10-20 → 2026-10-26 (+6d) | 2026-10-21 → 2026-10-27 (+6d) |  |
| SW-RTLN-1160 | Site Cleanup & Final EPSC Removal | 2026-10-22 → 2026-10-28 (+6d) | 2026-10-23 → 2026-10-29 (+6d) |  |
| SW-RTLN-1170 | Rutland Drive Punchlist Walk | 2026-10-26 → 2026-10-30 (+4d) | 2026-10-27 → 2026-11-02 (+6d) |  |
| SW-RTLN-1180 | Rutland Drive Punchlist Completion and Signoff | 2026-10-28 → 2026-11-03 (+6d) | 2026-11-03 → 2026-11-09 (+6d) |  |
| Closeout | **Closeout** | 2026-07-27 → 2026-07-31 (+4d) | 2026-11-12 → 2026-11-18 (+6d) |  |
| Commisioning | **Commissioning** | 2026-09-08 → 2026-09-14 (+6d) | 2026-09-21 → 2026-09-25 (+4d) |  |
| CO-CM-1000 | Start-Up & Testing | 2026-09-08 → 2026-09-14 (+6d) | 2026-09-21 → 2026-09-25 (+4d) |  |
| Building Finals | **Building Finals** | 2026-07-27 → 2026-07-31 (+4d) | 2026-11-12 → 2026-11-18 (+6d) |  |
| CO-BF-1000 | Rough Fire Sprinkler Inspection | 2026-07-27 → 2026-07-31 (+4d) | 2026-07-27 → 2026-07-31 (+4d) |  |
| CO-BF-1010 | Final Fire Sprinkler Inspection | 2026-09-22 → 2026-09-28 (+6d) | 2026-09-22 → 2026-09-28 (+6d) |  |
| CO-BF-1020 | Electrical Final Inspection | 2026-09-23 → 2026-09-29 (+6d) | 2026-09-23 → 2026-09-29 (+6d) |  |
| CO-BF-1030 | Plumbing Final Inspection | 2026-09-24 → 2026-09-30 (+6d) | 2026-09-24 → 2026-09-30 (+6d) |  |
| CO-BF-1040 | Mechanical Final Inspection | 2026-09-25 → 2026-10-01 (+6d) | 2026-09-25 → 2026-10-01 (+6d) |  |
| CO-BF-1050 | Fire Alarm Final Inspection | 2026-09-28 → 2026-10-02 (+4d) | 2026-09-28 → 2026-10-02 (+4d) |  |
| CO-BF-1060 | Building Final Occupancy Inspection (Substantial Completion) | 2026-11-12 → 2026-11-18 (+6d) | 2026-11-12 → 2026-11-18 (+6d) | EE-WEST-1110, EE-NRTH-1160, EE-EAST-1110, EE-SOTH-1130, IB-L2IN-1110, IB-L3IN-1110, IB-L4IN-1110, IB-L1IN-1110, IB-JNUS-1020, IB-JNUS-1010, IB-JNUS-1000, SW-FIN-1190, IB-STAR-1040, IB-STAR-1020, IB-L3UN-1100, IB-L1RR-1100, IB-L1M\S-1140, PS-CMIL-1140, EL-INST-1000, IB-JNUS-1030, EE-ROOF-1200, IB-L4IN-1100, SW-FIN-1180, SW-RTLN-1160, CO-BF-1050 → CO-BF-1050, SW-RTLN-1160, SW-FIN-1180, IB-L4IN-1100, EE-ROOF-1200, IB-JNUS-1030, EL-INST-1000, PS-CMIL-1140, IB-L1M\S-1140, IB-L1RR-1100, IB-L3UN-1100, IB-STAR-1020, IB-STAR-1040, SW-FIN-1190, IB-JNUS-1000, IB-JNUS-1010, IB-JNUS-1020, IB-L1IN-1110, IB-L4IN-1110, IB-L3IN-1110, IB-L2IN-1110, EE-SOTH-1130, EE-EAST-1110, EE-NRTH-1160, EE-WEST-1110, IB-L1RR-1110, IB-L1M\S-1150 |
| 2 | **Warranty Work** | 2026-12-02 → 2026-12-08 (+6d) | 2027-11-12 → 2027-11-18 (+6d) |  |
| WW-WARR-1000 | 1st Quarter HVAC Maintenance | 2026-12-02 → 2026-12-08 (+6d) | 2027-03-02 → 2027-03-08 (+6d) |  |
| WW-WARR-1010 | 1st Quarter Landscape Maintenance | 2026-12-02 → 2026-12-08 (+6d) | 2027-03-02 → 2027-03-08 (+6d) |  |
| WW-WARR-1030 | 2nd Quarter HVAC Maintenance | 2027-03-03 → 2027-03-09 (+6d) | 2027-05-25 → 2027-06-01 (+7d) |  |
| WW-WARR-1040 | 2nd Quarter Landscape Maintenance | 2027-03-03 → 2027-03-09 (+6d) | 2027-05-25 → 2027-06-01 (+7d) |  |
| WW-WARR-1050 | 3rd Quarter HVAC Maintenance | 2027-05-26 → 2027-06-02 (+7d) | 2027-08-19 → 2027-08-25 (+6d) |  |
| WW-WARR-1060 | 3rd Quarter Landscape Maintenance | 2027-05-26 → 2027-06-02 (+7d) | 2027-08-19 → 2027-08-25 (+6d) |  |
| WW-WARR-1070 | 4th Quarter HVAC Maintenance | 2027-08-20 → 2027-08-26 (+6d) | 2027-11-12 → 2027-11-18 (+6d) |  |
| WW-WARR-1080 | 4th Quarter Landscape Maintenance | 2027-08-20 → 2027-08-26 (+6d) | 2027-11-12 → 2027-11-18 (+6d) |  |
| WW-WARR-1020 | 11-Month Warranty Walk | 2027-10-01 → 2027-10-07 (+6d) | 2027-10-07 → 2027-10-13 (+6d) |  |
| x.WI-WTHR-1010 | Weather Impact No. 01 - Rain Delay (1 Work Day) |  |  | none → SU-STWK-1000 |
