# 12.8.25 master.owner.updated

How a schedule from MS Project changed from version to version. A marks actual dates.

## Version 1 (data date 2025-12-08, saved 2026-03-05, file baseline.mpp)

Note of the change: Add all project schedule files to buckets - 13 projects, MPP+XER, baseline+updates

| ID | WBS | Task | Duration | Start | Finish | Predecessors | Total float | Constraint |
| --- | --- | --- | --- | --- | --- | --- | --- | --- |
| 1 | 1 | **Public Storage Selma, NC** | 263d | 2025-10-06 | 2026-10-09 |  | 0d |  |
| 2 |  | Award Contract | 0d | 2025-10-06 | 2025-10-06 |  | 0d | start no earlier than 2025-10-06 |
| 3 | 1.2 | **Mobilization** | 6d | 2025-12-01 | 2025-12-08 |  |  |  |
| 4 |  | Mobilization (Site Fence, Layout, Barricades, Etc.) | 1d | 2026-01-05 | 2026-01-05 | 2SS+63d | 0d |  |
| 5 |  | SWPPP | 5d | 2025-12-15 | 2025-12-19 | 4FS-16d | 0d |  |
| 6 | 1.3 | **Demo/Site Work** | 84d | 2026-01-05 | 2026-04-30 | 5FS+10d | 0d |  |
| 7 |  | Clearing and Grubbing | 10d | 2026-01-05 | 2026-01-16 | 5FS-6d | 0d |  |
| 8 |  | Dewatering | 5d | 2026-01-19 | 2026-01-23 | 7 | 0d |  |
| 9 |  | Rough Grading | 18d | 2026-01-19 | 2026-02-11 | 8SS | 0d |  |
| 10 |  | Storm System | 21d | 2026-02-12 | 2026-03-12 | 9 | 6d |  |
| 11 |  | Sanitary Sewer | 5d | 2026-03-13 | 2026-03-19 | 10 | 6d |  |
| 12 |  | Water | 10d | 2026-03-20 | 2026-04-02 | 11 | 6d |  |
| 13 |  | Site Electrical | 10d | 2026-04-03 | 2026-04-16 | 12 | 6d |  |
| 14 |  | Building Tie In | 10d | 2026-04-17 | 2026-04-30 | 12, 13 | 6d |  |
| 15 | 1.4 | **Building A** | 139d | 2026-02-05 | 2026-08-18 |  | 0d |  |
| 16 | 1.4.1 | **Structure** | 109d | 2026-02-05 | 2026-07-07 |  | 0d |  |
| 17 | 1.4.1.1 | **First Floor** | 59d | 2026-02-05 | 2026-04-28 |  | 0d |  |
| 18 |  | Building Pad Delivery (Bldg A) | 5d | 2026-02-05 | 2026-02-11 | 9FS-5d | 0d |  |
| 19 |  | Elevator Pit - Excavate | 5d | 2026-02-12 | 2026-02-18 | 18 | 157d |  |
| 20 |  | Elevator Pit - Form and Pour | 10d | 2026-02-19 | 2026-03-04 | 19 | 157d |  |
| 21 |  | FRP Foundations / Foundation CMU - Area 1 | 7d | 2026-02-12 | 2026-02-20 | 18 | 0d |  |
| 22 |  | Concrete Retaining Walls | 10d | 2026-02-23 | 2026-03-06 | 21 | 0d |  |
| 23 |  | FRP Foundations/Foundation Area 2 | 7d | 2026-03-09 | 2026-03-17 | 22 | 0d |  |
| 24 |  | Under Slab MEP | 10d | 2026-03-04 | 2026-03-17 | 23FS-10d | 0d |  |
| 25 |  | Slab #1 Prep / Pour (North Half) | 10d | 2026-03-11 | 2026-03-24 | 24FS-5d, 21FS-5d | 0d |  |
| 26 |  | CMU shafts | 15d | 2026-03-25 | 2026-04-14 | 25 | 128d |  |
| 27 |  | Slab #2 Prep / Pour (South Half) | 10d | 2026-03-25 | 2026-04-07 | 25 | 133d |  |
| 28 |  | Janus Framing System (North Half) | 15d | 2026-03-25 | 2026-04-14 | 25 | 0d |  |
| 29 |  | Janus Framing System (South Half) | 10d | 2026-04-15 | 2026-04-28 | 28 | 0d |  |
| 30 | 1.4.1.2 | **Second Floor** | 40d | 2026-04-15 | 2026-06-09 |  | 5d |  |
| 31 |  | Elevated Slab #1 (North Half) Prep/Pour | 5d | 2026-04-15 | 2026-04-21 | 29FS-10d | 10d |  |
| 32 |  | Elevated Slab #2 (South Half) Prep/Pour | 5d | 2026-04-29 | 2026-05-05 | 29, 31 | 15d |  |
| 33 |  | Janus Framing System (North Half) | 15d | 2026-04-29 | 2026-05-19 | 31, 29 | 5d |  |
| 34 |  | Janus Framing System (South Half) | 10d | 2026-05-20 | 2026-06-02 | 33, 32 | 5d |  |
| 35 |  | Roof Decking - Building A | 5d | 2026-06-03 | 2026-06-09 | 34 | 5d |  |
| 36 | 1.4.1.3 | **Stairs** | 20d | 2026-06-10 | 2026-07-07 |  | 68d |  |
| 37 |  | Stair #1 | 10d | 2026-06-10 | 2026-06-23 | 35 | 68d |  |
| 38 |  | Stair #2 | 10d | 2026-06-24 | 2026-07-07 | 37 | 68d |  |
| 39 | 1.4.1.4 | **Roof** | 10d | 2026-06-10 | 2026-06-23 |  | 15d |  |
| 40 |  | Metal Roofing - Building A | 10d | 2026-06-10 | 2026-06-23 | 35 | 15d |  |
| 41 | 1.4.2 | **Framing and MEP** | 80d | 2026-04-29 | 2026-08-18 |  | 0d |  |
| 42 | 1.4.2.1 | **First Floor** | 65d | 2026-04-29 | 2026-07-28 |  | 0d |  |
| 43 |  | Interior Framing | 5d | 2026-04-29 | 2026-05-05 | 29 | 0d |  |
| 44 |  | 1st Floor MEP Rough-In Area 1 | 20d | 2026-05-06 | 2026-06-02 | 43 | 0d |  |
| 45 |  | 1st Floor MEP Rough-In Area 2 | 15d | 2026-06-03 | 2026-06-23 | 44 | 0d |  |
| 46 |  | 1st Floor MEP Trim Out Area 1 | 10d | 2026-07-08 | 2026-07-21 | 156, 44 | 3d |  |
| 47 |  | 1st Floor MEP Trim Out Area 2 | 5d | 2026-07-22 | 2026-07-28 | 46 | 3d |  |
| 48 | 1.4.2.2 | **Second Floor** | 50d | 2026-06-10 | 2026-08-18 |  | 3d |  |
| 49 |  | Interior Framing | 5d | 2026-06-10 | 2026-06-16 | 32, 35, 81, 107, 127 | 5d |  |
| 50 |  | 2nd Floor MEP Rough-In Area 2 | 15d | 2026-06-24 | 2026-07-14 | 44, 49, 45, 87, 112, 132 | 0d |  |
| 51 |  | 2nd Floor MEP Rough-In Area 2 | 15d | 2026-07-15 | 2026-08-04 | 50 | 0d |  |
| 52 |  | 2nd Floor MEP Trim Out Area 1 - Building A | 10d | 2026-07-29 | 2026-08-11 | 47 | 3d |  |
| 53 |  | 2nd Floor MEP Trim Out Area 2 - Building A | 5d | 2026-08-12 | 2026-08-18 | 52 | 3d |  |
| 54 | 1.4.3 | **Elevator** | 30d | 2026-06-23 | 2026-08-04 |  | 28d |  |
| 55 |  | Delivery | 0d | 2026-06-23 | 2026-06-23 | 40, 83, 109, 129 | 28d |  |
| 56 |  | Elevator 1 - First Floor | 5d | 2026-06-24 | 2026-06-30 | 55SS | 28d |  |
| 57 |  | Elevator 1 - Second Floor | 5d | 2026-07-01 | 2026-07-07 | 56 | 28d |  |
| 58 |  | Elevator 2 - First Floor | 5d | 2026-07-08 | 2026-07-14 | 57 | 28d |  |
| 59 |  | Elevator 2 - Second Floor | 5d | 2026-07-15 | 2026-07-21 | 58 | 28d |  |
| 60 |  | Infill Doors | 5d | 2026-07-15 | 2026-07-21 | 59FS-5d | 28d |  |
| 61 |  | Test / Adjust | 5d | 2026-07-22 | 2026-07-28 | 60 | 28d |  |
| 62 |  | State Inspection | 5d | 2026-07-29 | 2026-08-04 | 61 | 28d |  |
| 63 | 1.4.4 | **Exterior Finishes** | 50d | 2026-05-06 | 2026-07-14 |  | 28d |  |
| 64 |  | Masonry Veneer | 15d | 2026-05-06 | 2026-05-26 | 43, 86 | 28d |  |
| 65 |  | Metal Panels Completion - Building A | 15d | 2026-05-27 | 2026-06-16 | 64 | 28d |  |
| 66 |  | Sheetmetal Work (Coping, Gutters, & Downspouts) | 10d | 2026-06-17 | 2026-06-30 | 65 | 38d |  |
| 67 |  | Automatic Entrance Door | 5d | 2026-05-27 | 2026-06-02 | 64 | 93d |  |
| 68 |  | Exterior Paint | 10d | 2026-06-17 | 2026-06-30 | 65 | 28d |  |
| 69 |  | Exterior Signage Install | 10d | 2026-07-01 | 2026-07-14 | 68 | 28d |  |
| 70 |  | Canopy | 10d | 2026-07-01 | 2026-07-14 | 69SS | 28d |  |

| ID | WBS | Task | Duration | Start | Finish | Predecessors | Total float |
| --- | --- | --- | --- | --- | --- | --- | --- |
| 71 | 1.5 | **Building B** | 85d | 2026-02-12 | 2026-06-10 |  | 14d |
| 72 | 1.5.1 | **Structure** | 55d | 2026-02-12 | 2026-04-29 |  | 14d |
| 73 | 1.5.1.1 | **First Floor** | 50d | 2026-02-12 | 2026-04-22 |  | 14d |
| 74 |  | Building Pad Delivery (Bldg B) | 5d | 2026-02-12 | 2026-02-18 | 18 | 14d |
| 75 |  | FRP Foundations / Foundation CMU - Area 1 | 5d | 2026-02-19 | 2026-02-25 | 74 | 14d |
| 76 |  | FRP Foundations/Foundation Area 2 | 5d | 2026-02-26 | 2026-03-04 | 75 | 14d |
| 77 |  | Under Slab MEP | 5d | 2026-03-05 | 2026-03-11 | 76 | 14d |
| 78 |  | Slab Prep / Pour | 5d | 2026-03-12 | 2026-03-18 | 77 | 14d |
| 79 |  | CMU Walls | 10d | 2026-03-19 | 2026-04-01 | 78 | 14d |
| 80 |  | Janus Framing System | 10d | 2026-04-02 | 2026-04-15 | 79 | 34d |
| 81 |  | Roof Decking | 5d | 2026-04-16 | 2026-04-22 | 80 | 39d |
| 82 | 1.5.1.2 | **Roof** | 5d | 2026-04-23 | 2026-04-29 |  | 67d |
| 83 |  | Metal Roofing | 5d | 2026-04-23 | 2026-04-29 | 81 | 67d |
| 84 | 1.5.2 | **Framing and MEP** | 30d | 2026-04-16 | 2026-05-27 |  | 34d |
| 85 | 1.5.2.1 | **First Floor** | 30d | 2026-04-16 | 2026-05-27 |  | 34d |
| 86 |  | Interior Framing | 5d | 2026-04-16 | 2026-04-22 | 80 | 34d |
| 87 |  | 1st Floor MEP Rough-In Area 1 | 10d | 2026-04-23 | 2026-05-06 | 86 | 34d |
| 88 |  | Finishes | 10d | 2026-04-30 | 2026-05-13 | 83, 86 | 97d |
| 89 |  | 1st Floor MEP Trim Out Area 1 | 10d | 2026-05-14 | 2026-05-27 | 88 | 97d |
| 90 | 1.5.3 | **Exterior Finishes** | 35d | 2026-04-23 | 2026-06-10 |  | 52d |
| 91 |  | Metal Panels Completion | 15d | 2026-04-23 | 2026-05-13 | 81 | 52d |
| 92 |  | Sheetmetal Work (Coping, Gutters, & Downspouts) | 10d | 2026-05-14 | 2026-05-27 | 91 | 62d |
| 93 |  | Automatic Entrance Door | 5d | 2026-05-14 | 2026-05-20 | 91 | 102d |
| 94 |  | Exterior Paint | 10d | 2026-05-14 | 2026-05-27 | 91 | 52d |
| 95 |  | Exterior Signage Install | 10d | 2026-05-28 | 2026-06-10 | 94 | 52d |
| 96 |  | Canopy | 10d | 2026-05-28 | 2026-06-10 | 95SS | 52d |
| 97 | 1.6 | **Building C** | 85d | 2026-02-19 | 2026-06-17 |  | 19d |
| 98 | 1.6.1 | **Structure** | 55d | 2026-02-19 | 2026-05-06 |  | 19d |
| 99 | 1.6.1.1 | **First Floor** | 50d | 2026-02-19 | 2026-04-29 |  | 19d |
| 100 |  | Building Pad Delivery (Bldg C) | 5d | 2026-02-19 | 2026-02-25 | 74 | 19d |
| 101 |  | FRP Foundations / Foundation CMU - Area 1 | 5d | 2026-02-26 | 2026-03-04 | 100 | 19d |
| 102 |  | FRP Foundations/Foundation Area 2 | 5d | 2026-03-05 | 2026-03-11 | 101 | 19d |
| 103 |  | Under Slab MEP | 5d | 2026-03-12 | 2026-03-18 | 102 | 19d |
| 104 |  | Slab Prep / Pour | 5d | 2026-03-19 | 2026-03-25 | 103 | 19d |
| 105 |  | CMU Walls | 10d | 2026-04-02 | 2026-04-15 | 104, 79 | 14d |
| 106 |  | Janus Framing System | 5d | 2026-04-16 | 2026-04-22 | 105 | 24d |
| 107 |  | Roof Decking | 5d | 2026-04-23 | 2026-04-29 | 106 | 24d |
| 108 | 1.6.1.2 | **Roof** | 5d | 2026-04-30 | 2026-05-06 |  | 24d |
| 109 |  | Metal Roofing | 5d | 2026-04-30 | 2026-05-06 | 107 | 24d |
| 110 | 1.6.2 | **Framing and MEP** | 20d | 2026-05-07 | 2026-06-03 |  | 24d |
| 111 | 1.6.2.1 | **First Floor** | 20d | 2026-05-07 | 2026-06-03 |  | 24d |
| 112 |  | 1st Floor MEP Rough-In Area 1 | 10d | 2026-05-07 | 2026-05-20 | 109 | 24d |
| 113 |  | 1st Floor MEP Trim Out Area 1 | 10d | 2026-05-21 | 2026-06-03 | 112 | 92d |
| 114 | 1.6.3 | **Exterior Finishes** | 25d | 2026-05-14 | 2026-06-17 |  | 82d |
| 115 |  | Metal Panels Completion | 15d | 2026-05-14 | 2026-06-03 | 107, 91 | 82d |
| 116 |  | Exterior Signage Install | 10d | 2026-06-04 | 2026-06-17 | 115 | 82d |
| 117 | 1.7 | **Building D** | 80d | 2026-02-26 | 2026-06-17 |  | 24d |
| 118 | 1.7.1 | **Structure** | 60d | 2026-02-26 | 2026-05-20 |  | 14d |
| 119 | 1.7.1.1 | **First Floor** | 55d | 2026-02-26 | 2026-05-13 |  | 14d |
| 120 |  | Building Pad Delivery (Bldg D) | 5d | 2026-02-26 | 2026-03-04 | 100 | 24d |
| 121 |  | FRP Foundations / Foundation CMU - Area 1 | 5d | 2026-03-05 | 2026-03-11 | 120 | 24d |
| 122 |  | FRP Foundations/Foundation Area 2 | 5d | 2026-03-12 | 2026-03-18 | 121 | 24d |
| 123 |  | Under Slab MEP | 5d | 2026-03-19 | 2026-03-25 | 122 | 24d |
| 124 |  | Slab Prep / Pour | 5d | 2026-03-26 | 2026-04-01 | 123 | 24d |
| 125 |  | CMU Walls | 10d | 2026-04-16 | 2026-04-29 | 124, 79, 105 | 14d |
| 126 |  | Janus Framing System | 5d | 2026-04-30 | 2026-05-06 | 125 | 14d |
| 127 |  | Roof Decking | 5d | 2026-05-07 | 2026-05-13 | 126 | 14d |
| 128 | 1.7.1.2 | **Roof** | 5d | 2026-05-14 | 2026-05-20 |  | 14d |
| 129 |  | Metal Roofing | 5d | 2026-05-14 | 2026-05-20 | 127 | 14d |
| 130 | 1.7.2 | **Framing and MEP** | 20d | 2026-05-21 | 2026-06-17 |  | 14d |
| 131 | 1.7.2.1 | **First Floor** | 20d | 2026-05-21 | 2026-06-17 |  | 14d |
| 132 |  | 1st Floor MEP Rough-In Area 1 | 10d | 2026-05-21 | 2026-06-03 | 129 | 14d |
| 133 |  | 1st Floor MEP Trim Out Area 1 | 10d | 2026-06-04 | 2026-06-17 | 132 | 82d |
| 134 | 1.7.3 | **Exterior Finishes** | 25d | 2026-05-14 | 2026-06-17 |  | 82d |
| 135 |  | Metal Panels Completion | 15d | 2026-05-14 | 2026-06-03 | 127, 91 | 82d |
| 136 |  | Exterior Signage Install | 10d | 2026-06-04 | 2026-06-17 | 135 | 82d |
| 137 | 1.8 | **Site Finishes** | 90d | 2026-05-01 | 2026-09-03 |  | 6d |
| 138 |  | Site Fine Grading | 10d | 2026-05-01 | 2026-05-14 | 14 | 6d |
| 139 |  | Stone Base | 10d | 2026-05-08 | 2026-05-21 | 138FS-5d | 6d |
| 140 |  | Curb / Sidewalks | 10d | 2026-05-15 | 2026-05-28 | 139FS-5d | 6d |

| ID | WBS | Task | Duration | Start | Finish | Predecessors | Total float |
| --- | --- | --- | --- | --- | --- | --- | --- |
| 141 |  | Binder Course Asphalt - Area 1 | 5d | 2026-05-29 | 2026-06-04 | 140 | 6d |
| 142 |  | Binder Course Asphalt - Area 2 | 5d | 2026-06-05 | 2026-06-11 | 141 | 6d |
| 143 |  | Landscaping - Area 1 | 10d | 2026-06-12 | 2026-06-25 | 142 | 6d |
| 144 |  | Landscaping - Area 2 | 10d | 2026-06-26 | 2026-07-09 | 143 | 6d |
| 145 |  | Final Pavement | 10d | 2026-07-10 | 2026-07-23 | 144 | 6d |
| 146 |  | Line Marking/Signage | 5d | 2026-07-24 | 2026-07-30 | 145 | 6d |
| 147 |  | As-Builts Complete & Submitted to AHJ | 5d | 2026-07-31 | 2026-08-06 | 146 | 6d |
| 148 |  | As-Built/City Review | 20d | 2026-08-07 | 2026-09-03 | 147 | 6d |
| 149 | 1.9 | **Interior Upfit** | 78d | 2026-06-24 | 2026-10-09 |  | 0d |
| 150 |  | 1st Floor - Janus Unit Install | 15d | 2026-06-24 | 2026-07-14 | 44, 45, 87, 112, 132, 40 | 15d |
| 151 |  | 2nd Floor - Janus Unit Install | 15d | 2026-08-05 | 2026-08-25 | 50, 51, 150 | 0d |
| 152 |  | Bldg B Janus Install | 5d | 2026-08-26 | 2026-09-01 | 151 | 0d |
| 153 |  | Bldg C Janus Install | 5d | 2026-09-02 | 2026-09-08 | 152 | 18d |
| 154 |  | Bldg D Janus Install | 5d | 2026-09-09 | 2026-09-15 | 153 | 18d |
| 155 |  | Drywall Hanging | 5d | 2026-06-24 | 2026-06-30 | 44, 45, 87, 112, 132 | 3d |
| 156 |  | Drywall Finishing | 10d | 2026-06-24 | 2026-07-07 | 155FS-5d | 3d |
| 157 |  | Paint | 5d | 2026-07-08 | 2026-07-14 | 156 | 31d |
| 158 |  | Millwork | 5d | 2026-07-14 | 2026-07-20 | 157FS-1d | 31d |
| 159 |  | Floor Sealer - 2nd Floor | 5d | 2026-07-21 | 2026-07-27 | 158 | 39d |
| 160 |  | Floor Sealer / Polish - 1st Floor and drive ups | 15d | 2026-07-28 | 2026-08-17 | 159 | 39d |
| 161 | 1.9.12 | **Closeout** | 38d | 2026-08-19 | 2026-10-09 |  | 0d |
| 162 |  | Final Clean - Bldg A | 8d | 2026-09-02 | 2026-09-11 | 158, 152 | 0d |
| 163 |  | Final Clean - Bldg B | 5d | 2026-09-14 | 2026-09-18 | 162 | 10d |
| 164 |  | Final Clean - Bldg C and D | 5d | 2026-09-21 | 2026-09-25 | 163 | 10d |
| 165 |  | MEP Final Inspections | 10d | 2026-08-19 | 2026-09-01 | 66, 70, 68, 146, 52, 53, 92, 94, 96, 50, 44 | 3d |
| 166 |  | Building Final Inspections | 5d | 2026-09-02 | 2026-09-08 | 165 | 3d |
| 167 |  | Weather Days Included (20 Days) | 20d | 2026-09-14 | 2026-10-09 | 148, 62, 162, 166 | 0d |
| 168 | 1.9.13 | **Substantial Completion** | 0d | 2026-10-09 | 2026-10-09 |  | 0d |
| 169 |  | Substantial Completion | 0d | 2026-10-09 | 2026-10-09 | 167FF | 0d |

## Version 2 (data date 2026-03-05, saved 2026-03-05, file update_2.mpp)

Note of the change: Add all project schedule files to buckets - 13 projects, MPP+XER, baseline+updates

Last finish stays 2026-10-09.

Added:

| ID | Task | Duration | Start | Finish | Predecessors |
| --- | --- | --- | --- | --- | --- |
| 18 | Weather Delay( Snow & Ice) | 12d | 2026-01-27 | 2026-02-11 | 9FS-12d |

Removed: 35 Roof Decking - Building A; 76 FRP Foundations/Foundation Area 2; 81 Roof Decking; 107 Roof Decking; 127 Roof Decking

Changed:

| ID | Task | Start | Finish | Duration | Total float | Predecessors | Other |
| --- | --- | --- | --- | --- | --- | --- | --- |
| 6 | **Demo/Site Work** |  | 2026-04-30 → 2026-05-05 (+5d) | 84d → 87d |  |  |  |
| 10 | Storm System | 2026-02-12 → 2026-03-02 (+18d) | 2026-03-12 → 2026-03-30 (+18d) |  | 6d → 12d | 9 → 9FS+12d |  |
| 11 | Sanitary Sewer | 2026-03-13 → 2026-03-31 (+18d) | 2026-03-19 → 2026-04-06 (+18d) |  | 6d → 12d |  |  |
| 12 | Water |  |  |  | 6d → 12d | 11 → 11FS-12d |  |
| 13 | Site Electrical | 2026-04-03 → 2026-04-08 (+5d) | 2026-04-16 → 2026-04-21 (+5d) |  | 6d → 12d | 12 → 12FS+3d |  |
| 14 | Building Tie In | 2026-04-17 → 2026-04-22 (+5d) | 2026-04-30 → 2026-05-05 (+5d) |  | 6d → 12d |  |  |
| 15 | **Building A** | 2026-02-05 → 2026-01-27 (-9d) | 2026-08-18 → 2026-08-21 (+3d) | 139d → 149d | 0d → 17d |  |  |
| 16 | **Structure** | 2026-02-05 → 2026-01-27 (-9d) | 2026-07-07 → 2026-07-30 (+23d) | 109d → 133d | 0d → 17d |  |  |
| 17 | **First Floor** | 2026-02-05 → 2026-01-27 (-9d) | 2026-04-28 → 2026-06-04 (+37d) | 59d → 93d | 0d → 17d |  |  |
| 19 | Building Pad Delivery (Bldg A) | 2026-02-05 → 2026-03-09 (+32d) | 2026-02-11 → 2026-03-13 (+30d) |  |  | 9FS-5d → 9FS+17d, 18 |  |
| 20 | Elevator Pit - Excavate | 2026-02-12 → 2026-03-09 (+25d) | 2026-02-18 → 2026-03-10 (+20d) | 5d → 2d | 157d → 144d | 19 → 19FS-5d |  |
| 21 | Elevator Pit - Form and Pour | 2026-02-19 → 2026-03-10 (+19d) | 2026-03-04 → 2026-03-23 (+19d) |  | 157d → 144d | 20 → 20FS-1d |  |
| 22 | FRP Foundations / Foundation CMU - Area 1 | 2026-02-12 → 2026-03-16 (+32d) | 2026-02-20 → 2026-03-24 (+32d) |  |  |  |  |
| 23 | Concrete Retaining Walls | 2026-02-23 → 2026-03-25 (+30d) | 2026-03-06 → 2026-04-07 (+32d) |  |  |  |  |
| 24 | FRP Foundations/Foundation Area 2 | 2026-03-09 → 2026-04-08 (+30d) | 2026-03-17 → 2026-04-16 (+30d) |  |  |  |  |
| 25 | Under Slab MEP | 2026-03-04 → 2026-04-03 (+30d) | 2026-03-17 → 2026-04-16 (+30d) |  |  |  |  |
| 26 | Slab #1 Prep / Pour (North Half) | 2026-03-11 → 2026-04-10 (+30d) | 2026-03-24 → 2026-04-23 (+30d) |  |  |  |  |
| 27 | CMU shafts | 2026-03-25 → 2026-04-24 (+30d) | 2026-04-14 → 2026-05-14 (+30d) |  | 128d → 86d |  |  |
| 28 | Slab #2 Prep / Pour (South Half) | 2026-03-25 → 2026-04-24 (+30d) | 2026-04-07 → 2026-05-07 (+30d) |  | 133d → 111d |  |  |
| 29 | Janus Framing System (North Half) | 2026-03-25 → 2026-04-24 (+30d) | 2026-04-14 → 2026-05-14 (+30d) |  |  |  |  |
| 30 | Janus Framing System (South Half) | 2026-04-15 → 2026-05-15 (+30d) | 2026-04-28 → 2026-06-04 (+37d) | 10d → 15d |  |  |  |
| 31 | **Second Floor** | 2026-04-15 → 2026-05-22 (+37d) | 2026-06-09 → 2026-07-16 (+37d) |  |  |  |  |
| 32 | Elevated Slab #1 (North Half) Prep/Pour | 2026-04-15 → 2026-05-22 (+37d) | 2026-04-21 → 2026-05-28 (+37d) |  | 10d → 5d |  |  |
| 33 | Elevated Slab #2 (South Half) Prep/Pour | 2026-04-29 → 2026-05-29 (+30d) | 2026-05-05 → 2026-06-04 (+30d) |  | 15d → 5d | 30, 32 → 32 |  |
| 34 | Janus Framing System (North Half) | 2026-04-29 → 2026-06-05 (+37d) | 2026-05-19 → 2026-06-25 (+37d) |  |  | 32, 30 → 32, 30, 33 |  |
| 35 | Janus Framing System (South Half) | 2026-05-20 → 2026-06-26 (+37d) | 2026-06-02 → 2026-07-16 (+44d) | 10d → 15d |  |  |  |
| 36 | **Stairs** | 2026-06-10 → 2026-05-15 (-26d) | 2026-07-07 → 2026-06-11 (-26d) |  | 68d → 86d |  |  |
| 37 | Stair #1 | 2026-06-10 → 2026-05-15 (-26d) | 2026-06-23 → 2026-05-28 (-26d) |  | 68d → 86d | Roof Decking - Building A → 27 |  |
| 38 | Stair #2 | 2026-06-24 → 2026-05-29 (-26d) | 2026-07-07 → 2026-06-11 (-26d) |  | 68d → 86d |  |  |
| 39 | **Roof** | 2026-06-10 → 2026-07-17 (+37d) | 2026-06-23 → 2026-07-30 (+37d) |  | 15d → 5d |  |  |
| 40 | Metal Roofing | 2026-06-10 → 2026-07-17 (+37d) | 2026-06-23 → 2026-07-30 (+37d) |  | 15d → 5d | Roof Decking - Building A → 35 | was named Metal Roofing - Building A |
| 41 | **Framing and MEP** | 2026-04-29 → 2026-05-29 (+30d) | 2026-08-18 → 2026-08-06 (-12d) | 80d → 50d | 0d → 5d |  |  |
| 42 | **First Floor** | 2026-04-29 → 2026-05-29 (+30d) | 2026-07-28 → 2026-07-16 (-12d) | 65d → 35d | 0d → 5d |  |  |
| 43 | Interior Framing | 2026-04-29 → 2026-06-05 (+37d) | 2026-05-05 → 2026-06-11 (+37d) |  |  |  |  |
| 44 | 1st Floor MEP Rough-In Area 1 | 2026-05-06 → 2026-05-29 (+23d) | 2026-06-02 → 2026-06-25 (+23d) |  | 0d → 10d | 43 → 32 |  |
| 45 | 1st Floor MEP Rough-In Area 2 | 2026-06-03 → 2026-06-05 (+2d) | 2026-06-23 → 2026-06-25 (+2d) |  | 0d → 25d | 44 → 33 |  |
| 46 | 1st Floor MEP Trim Out Area 1 | 2026-07-08 → 2026-06-26 (-12d) | 2026-07-21 → 2026-07-09 (-12d) |  | 3d → 10d |  |  |
| 47 | 1st Floor MEP Trim Out Area 2 | 2026-07-22 → 2026-07-10 (-12d) | 2026-07-28 → 2026-07-16 (-12d) |  | 3d → 10d |  |  |
| 48 | **Second Floor** | 2026-06-10 → 2026-06-05 (-5d) | 2026-08-18 → 2026-08-06 (-12d) | 50d → 45d | 3d → 31d |  |  |
| 49 | Interior Framing | 2026-06-10 → 2026-06-05 (-5d) | 2026-06-16 → 2026-06-11 (-5d) |  | 5d → 35d | 33, Roof Decking - Building A, Roof Decking, Roof Decking, Roof Decking → 33 |  |
| 50 | 2nd Floor MEP Rough-In Area 2 | 2026-06-24 → 2026-06-26 (+2d) | 2026-07-14 → 2026-07-16 (+2d) |  | 0d → 25d |  |  |
| 51 | 2nd Floor MEP Rough-In Area 2 | 2026-07-15 → 2026-07-17 (+2d) | 2026-08-04 → 2026-08-06 (+2d) |  | 0d → 31d |  |  |
| 52 | 2nd Floor MEP Trim Out Area 1 - Building A | 2026-07-29 → 2026-07-17 (-12d) | 2026-08-11 → 2026-07-30 (-12d) |  | 3d → 10d |  |  |
| 53 | 2nd Floor MEP Trim Out Area 2 - Building A | 2026-08-12 → 2026-07-31 (-12d) | 2026-08-18 → 2026-08-06 (-12d) |  | 3d → 10d |  |  |
| 54 | **Elevator** | 2026-06-23 → 2026-07-13 (+20d) | 2026-08-04 → 2026-08-21 (+17d) |  | 28d → 17d |  |  |
| 55 | Delivery | 2026-06-23 → 2026-07-13 (+20d) | 2026-06-23 → 2026-07-13 (+20d) |  | 28d → 17d | 40, 81, 106, 125 → 40FS-14d |  |
| 56 | Elevator 1 - First Floor | 2026-06-24 → 2026-07-13 (+19d) | 2026-06-30 → 2026-07-17 (+17d) |  | 28d → 17d |  |  |
| 57 | Elevator 1 - Second Floor | 2026-07-01 → 2026-07-20 (+19d) | 2026-07-07 → 2026-07-24 (+17d) |  | 28d → 17d |  |  |
| 58 | Elevator 2 - First Floor | 2026-07-08 → 2026-07-27 (+19d) | 2026-07-14 → 2026-07-31 (+17d) |  | 28d → 17d |  |  |
| 59 | Elevator 2 - Second Floor | 2026-07-15 → 2026-08-03 (+19d) | 2026-07-21 → 2026-08-07 (+17d) |  | 28d → 17d |  |  |
| 60 | Infill Doors | 2026-07-15 → 2026-08-03 (+19d) | 2026-07-21 → 2026-08-07 (+17d) |  | 28d → 27d |  |  |
| 61 | Test / Adjust | 2026-07-22 → 2026-08-10 (+19d) | 2026-07-28 → 2026-08-14 (+17d) |  | 28d → 27d |  |  |
| 62 | State Inspection | 2026-07-29 → 2026-08-17 (+19d) | 2026-08-04 → 2026-08-21 (+17d) |  | 28d → 27d |  |  |
| 63 | **Exterior Finishes** | 2026-05-06 → 2026-06-12 (+37d) | 2026-07-14 → 2026-08-20 (+37d) |  | 28d → 0d |  |  |
| 64 | Masonry Veneer | 2026-05-06 → 2026-06-12 (+37d) | 2026-05-26 → 2026-07-02 (+37d) |  | 28d → 0d |  |  |
| 65 | Metal Panels Completion - Building A | 2026-05-27 → 2026-07-03 (+37d) | 2026-06-16 → 2026-07-23 (+37d) |  | 28d → 0d |  |  |
| 66 | Sheetmetal Work (Coping, Gutters, & Downspouts) | 2026-06-17 → 2026-07-31 (+44d) | 2026-06-30 → 2026-08-13 (+44d) |  | 38d → 5d | 65 → 40 |  |
| 67 | Automatic Entrance Door | 2026-05-27 → 2026-07-03 (+37d) | 2026-06-02 → 2026-07-09 (+37d) |  | 93d → 66d |  |  |
| 68 | Exterior Paint | 2026-06-17 → 2026-07-24 (+37d) | 2026-06-30 → 2026-08-06 (+37d) |  | 28d → 0d |  |  |
| 69 | Exterior Signage Install | 2026-07-01 → 2026-08-07 (+37d) | 2026-07-14 → 2026-08-20 (+37d) |  | 28d → 0d |  |  |
| 70 | Canopy | 2026-07-01 → 2026-08-07 (+37d) | 2026-07-14 → 2026-08-20 (+37d) |  | 28d → 0d |  |  |
| 71 | **Building B** | 2026-02-12 → 2026-03-04 (+20d) | 2026-06-10 → 2026-06-16 (+6d) | 85d → 75d | 14d → 19d |  |  |
| 72 | **Structure** | 2026-02-12 → 2026-03-04 (+20d) | 2026-04-29 → 2026-04-21 (-8d) | 55d → 35d | 14d → 19d |  |  |
| 73 | **First Floor** | 2026-02-12 → 2026-03-04 (+20d) | 2026-04-22 → 2026-04-14 (-8d) | 50d → 30d | 14d → 19d |  |  |
| 74 | Building Pad Delivery (Bldg B) | 2026-02-12 → 2026-03-04 (+20d) | 2026-02-18 → 2026-03-06 (+16d) | 5d → 3d | 14d → 19d | 19 → 19FS-8d |  |
| 75 | FRP Foundations / Foundation CMU - Area 1 | 2026-02-19 → 2026-03-09 (+18d) | 2026-02-25 → 2026-03-13 (+16d) |  | 14d → 19d |  |  |
| 76 | Under Slab MEP | 2026-03-05 → 2026-03-09 (+4d) | 2026-03-11 → 2026-03-13 (+2d) |  | 14d → 150d | FRP Foundations/Foundation Area 2 → 74 |  |
| 77 | Slab Prep / Pour |  |  |  | 14d → 19d | 76 → 75FS-2d |  |
| 78 | CMU Walls | 2026-03-19 → 2026-03-25 (+6d) | 2026-04-01 → 2026-04-07 (+6d) |  | 14d → 19d | 77 → 77FS+4d |  |
| 79 | Janus Framing System | 2026-04-02 → 2026-04-08 (+6d) | 2026-04-15 → 2026-04-14 (-1d) | 10d → 5d | 34d → 19d |  |  |

| ID | Task | Start | Finish | Duration | Total float | Predecessors |
| --- | --- | --- | --- | --- | --- | --- |
| 80 | **Roof** | 2026-04-23 → 2026-04-06 (-17d) | 2026-04-29 → 2026-04-10 (-19d) |  | 67d → none | none → 79 |
| 81 | Metal Roofing | 2026-04-23 → 2026-04-15 (-8d) | 2026-04-29 → 2026-04-21 (-8d) |  | 67d → 103d | Roof Decking → 79 |
| 82 | **Framing and MEP** | 2026-04-16 → 2026-04-15 (-1d) | 2026-05-27 → 2026-05-19 (-8d) | 30d → 25d | 34d → 19d |  |
| 83 | **First Floor** | 2026-04-16 → 2026-04-15 (-1d) | 2026-05-27 → 2026-05-19 (-8d) | 30d → 25d | 34d → 19d |  |
| 84 | Interior Framing | 2026-04-16 → 2026-04-15 (-1d) | 2026-04-22 → 2026-04-21 (-1d) |  | 34d → 19d |  |
| 85 | 1st Floor MEP Rough-In Area 1 | 2026-04-23 → 2026-04-22 (-1d) | 2026-05-06 → 2026-05-05 (-1d) |  | 34d → 19d |  |
| 86 | Finishes | 2026-04-30 → 2026-04-22 (-8d) | 2026-05-13 → 2026-05-05 (-8d) |  | 97d → 103d |  |
| 87 | 1st Floor MEP Trim Out Area 1 | 2026-05-14 → 2026-05-06 (-8d) | 2026-05-27 → 2026-05-19 (-8d) |  | 97d → 103d |  |
| 88 | **Exterior Finishes** | 2026-04-23 → 2026-05-13 (+20d) | 2026-06-10 → 2026-06-16 (+6d) | 35d → 25d | 52d → 47d | none → 79FS+20d |
| 89 | Metal Panels Completion | 2026-04-23 → 2026-05-13 (+20d) | 2026-05-13 → 2026-05-19 (+6d) | 15d → 5d | 52d → 47d | Roof Decking → none |
| 90 | Sheetmetal Work (Coping, Gutters, & Downspouts) | 2026-05-14 → 2026-05-20 (+6d) | 2026-05-27 → 2026-05-22 (-5d) | 10d → 3d | 62d → 64d |  |
| 91 | Automatic Entrance Door | 2026-05-14 → 2026-05-20 (+6d) | 2026-05-20 → 2026-05-26 (+6d) |  | 102d → 98d |  |
| 92 | Exterior Paint | 2026-05-14 → 2026-05-20 (+6d) | 2026-05-27 → 2026-06-02 (+6d) |  | 52d → 47d |  |
| 93 | Exterior Signage Install | 2026-05-28 → 2026-06-03 (+6d) | 2026-06-10 → 2026-06-16 (+6d) |  | 52d → 47d |  |
| 94 | Canopy | 2026-05-28 → 2026-06-03 (+6d) | 2026-06-10 → 2026-06-16 (+6d) |  | 52d → 47d |  |
| 95 | **Building C** | 2026-02-19 → 2026-03-02 (+11d) | 2026-06-17 → 2026-05-06 (-42d) | 85d → 48d | 19d → none |  |
| 96 | **Structure** | 2026-02-19 → 2026-03-02 (+11d) | 2026-05-06 → 2026-04-17 (-19d) | 55d → 35d | 19d → 44d |  |
| 97 | **First Floor** | 2026-02-19 → 2026-03-02 (+11d) | 2026-04-29 → 2026-04-10 (-19d) | 50d → 30d | 19d → 44d |  |
| 98 | Building Pad Delivery (Bldg C) | 2026-02-19 → 2026-03-02 (+11d) | 2026-02-25 → 2026-03-06 (+9d) |  | 19d → 44d | 74 → 74FS-5d |
| 99 | FRP Foundations / Foundation CMU - Area 1 | 2026-02-26 → 2026-03-04 (+6d) | 2026-03-04 → 2026-03-10 (+6d) |  | 19d → 72d | 98 → 98FS-3d |
| 100 | FRP Foundations/Foundation Area 2 | 2026-03-05 → 2026-03-11 (+6d) | 2026-03-11 → 2026-03-17 (+6d) |  | 19d → 72d |  |
| 101 | Under Slab MEP | 2026-03-12 → 2026-03-11 (-1d) | 2026-03-18 → 2026-03-17 (-1d) |  | 19d → 72d | 100 → 100SS |
| 102 | Slab Prep / Pour | 2026-03-19 → 2026-03-11 (-8d) | 2026-03-25 → 2026-03-17 (-8d) |  | 19d → 72d | 101 → 101FS-5d |
| 103 | CMU Walls | 2026-04-02 → 2026-03-23 (-10d) | 2026-04-15 → 2026-04-03 (-12d) |  | 14d → 72d | 102, 78 → 102FS+3d |
| 104 | Janus Framing System | 2026-04-16 → 2026-04-06 (-10d) | 2026-04-22 → 2026-04-10 (-12d) |  | 24d → 72d |  |
| 105 | **Roof** | 2026-04-30 → 2026-04-13 (-17d) | 2026-05-06 → 2026-04-17 (-19d) |  | 24d → 72d | none → 104 |
| 106 | Metal Roofing | 2026-04-30 → 2026-04-13 (-17d) | 2026-05-06 → 2026-04-17 (-19d) |  | 24d → 72d | Roof Decking → 104 |
| 107 | **Framing and MEP** | 2026-05-07 → 2026-04-20 (-17d) | 2026-06-03 → 2026-04-23 (-41d) | 20d → 4d | 24d → 72d |  |
| 108 | **First Floor** | 2026-05-07 → 2026-04-20 (-17d) | 2026-06-03 → 2026-04-23 (-41d) | 20d → 4d | 24d → 72d |  |
| 109 | 1st Floor MEP Rough-In Area 1 | 2026-05-07 → 2026-04-20 (-17d) | 2026-05-20 → 2026-04-21 (-29d) | 10d → 2d | 24d → 72d |  |
| 110 | 1st Floor MEP Trim Out Area 1 | 2026-05-21 → 2026-04-22 (-29d) | 2026-06-03 → 2026-04-23 (-41d) | 10d → 2d | 92d → 111d |  |
| 111 | **Exterior Finishes** | 2026-05-14 → 2026-04-20 (-24d) | 2026-06-17 → 2026-05-06 (-42d) | 25d → 13d | 82d → 112d |  |
| 112 | Metal Panels Completion | 2026-05-14 → 2026-04-20 (-24d) | 2026-06-03 → 2026-04-22 (-42d) | 15d → 3d | 82d → 112d | Roof Decking, 89 → 106 |
| 113 | Exterior Signage Install | 2026-06-04 → 2026-04-23 (-42d) | 2026-06-17 → 2026-05-06 (-42d) |  | 82d → 112d |  |
| 114 | **Building D** | 2026-02-26 → 2026-03-09 (+11d) | 2026-06-17 → 2026-06-12 (-5d) | 80d → 70d | 24d → none |  |
| 115 | **Structure** | 2026-02-26 → 2026-03-09 (+11d) | 2026-05-20 → 2026-05-15 (-5d) | 60d → 50d | 14d → 44d |  |
| 116 | **First Floor** | 2026-02-26 → 2026-03-09 (+11d) | 2026-05-13 → 2026-05-12 (-1d) | 55d → 47d | 14d → 44d |  |
| 117 | Building Pad Delivery (Bldg D) | 2026-02-26 → 2026-03-09 (+11d) | 2026-03-04 → 2026-03-13 (+9d) |  | 24d → 44d |  |
| 118 | FRP Foundations / Foundation CMU - Area 1 | 2026-03-05 → 2026-03-23 (+18d) | 2026-03-11 → 2026-03-27 (+16d) |  | 24d → 44d | 117 → 117FS+5d |
| 119 | FRP Foundations/Foundation Area 2 | 2026-03-12 → 2026-03-30 (+18d) | 2026-03-18 → 2026-04-03 (+16d) |  | 24d → 44d |  |
| 120 | Under Slab MEP | 2026-03-19 → 2026-04-06 (+18d) | 2026-03-25 → 2026-04-10 (+16d) |  | 24d → 44d |  |
| 121 | Slab Prep / Pour | 2026-03-26 → 2026-04-13 (+18d) | 2026-04-01 → 2026-04-17 (+16d) |  | 24d → 125d |  |
| 122 | CMU Walls | 2026-04-16 → 2026-04-22 (+6d) | 2026-04-29 → 2026-05-05 (+6d) |  | 14d → 44d | 121, 78, 103 → 120FS+7d |
| 123 | Janus Framing System | 2026-04-30 → 2026-05-06 (+6d) | 2026-05-06 → 2026-05-12 (+6d) |  | 14d → 44d |  |
| 124 | **Roof** | 2026-05-14 → 2026-05-13 (-1d) | 2026-05-20 → 2026-05-15 (-5d) | 5d → 3d | 14d → 44d |  |
| 125 | Metal Roofing | 2026-05-14 → 2026-05-13 (-1d) | 2026-05-20 → 2026-05-15 (-5d) | 5d → 3d | 14d → 44d | Roof Decking → 123 |
| 126 | **Framing and MEP** | 2026-05-21 → 2026-05-18 (-3d) | 2026-06-17 → 2026-06-12 (-5d) |  | 14d → 44d |  |
| 127 | **First Floor** | 2026-05-21 → 2026-05-18 (-3d) | 2026-06-17 → 2026-06-12 (-5d) |  | 14d → 44d |  |
| 128 | 1st Floor MEP Rough-In Area 1 | 2026-05-21 → 2026-05-18 (-3d) | 2026-06-03 → 2026-05-29 (-5d) |  | 14d → 44d |  |
| 129 | 1st Floor MEP Trim Out Area 1 | 2026-06-04 → 2026-06-01 (-3d) | 2026-06-17 → 2026-06-12 (-5d) |  | 82d → 75d |  |
| 130 | **Exterior Finishes** | 2026-05-14 → 2026-05-18 (+4d) | 2026-06-17 → 2026-06-03 (-14d) | 25d → 13d | 82d → 92d |  |
| 131 | Metal Panels Completion | 2026-05-14 → 2026-05-18 (+4d) | 2026-06-03 → 2026-05-20 (-14d) | 15d → 3d | 82d → 92d | Roof Decking, 89 → 125 |
| 132 | Exterior Signage Install | 2026-06-04 → 2026-05-21 (-14d) | 2026-06-17 → 2026-06-03 (-14d) |  | 82d → 92d |  |
| 133 | **Site Finishes** | 2026-05-01 → 2026-05-06 (+5d) | 2026-09-03 → 2026-09-08 (+5d) |  | 6d → 12d |  |
| 134 | Site Fine Grading | 2026-05-01 → 2026-05-06 (+5d) | 2026-05-14 → 2026-05-19 (+5d) |  | 6d → 12d |  |
| 135 | Stone Base | 2026-05-08 → 2026-05-13 (+5d) | 2026-05-21 → 2026-05-26 (+5d) |  | 6d → 12d |  |
| 136 | Curb / Sidewalks | 2026-05-15 → 2026-05-20 (+5d) | 2026-05-28 → 2026-06-02 (+5d) |  | 6d → 12d |  |
| 137 | Binder Course Asphalt - Area 1 | 2026-05-29 → 2026-06-03 (+5d) | 2026-06-04 → 2026-06-09 (+5d) |  | 6d → 12d |  |
| 138 | Binder Course Asphalt - Area 2 | 2026-06-05 → 2026-06-10 (+5d) | 2026-06-11 → 2026-06-16 (+5d) |  | 6d → 12d |  |
| 139 | Landscaping - Area 1 | 2026-06-12 → 2026-06-17 (+5d) | 2026-06-25 → 2026-06-30 (+5d) |  | 6d → 12d |  |
| 140 | Landscaping - Area 2 | 2026-06-26 → 2026-07-01 (+5d) | 2026-07-09 → 2026-07-14 (+5d) |  | 6d → 12d |  |
| 141 | Final Pavement | 2026-07-10 → 2026-07-15 (+5d) | 2026-07-23 → 2026-07-28 (+5d) |  | 6d → 12d |  |
| 142 | Line Marking/Signage | 2026-07-24 → 2026-07-29 (+5d) | 2026-07-30 → 2026-08-04 (+5d) |  | 6d → 12d |  |
| 143 | As-Builts Complete & Submitted to AHJ | 2026-07-31 → 2026-08-05 (+5d) | 2026-08-06 → 2026-08-11 (+5d) |  | 6d → 15d |  |
| 144 | As-Built/City Review | 2026-08-07 → 2026-08-12 (+5d) | 2026-09-03 → 2026-09-08 (+5d) |  | 6d → 15d |  |
| 145 | **Interior Upfit** | 2026-06-24 → 2026-04-24 (-61d) |  | 78d → 121d |  |  |
| 146 | 1st Floor - Janus Unit Install | 2026-06-24 → 2026-06-26 (+2d) | 2026-07-14 → 2026-07-16 (+2d) |  | 15d → 46d | 44, 45, 85, 109, 128, 40 → 44, 45 |
| 147 | 2nd Floor - Janus Unit Install | 2026-08-05 → 2026-08-07 (+2d) | 2026-08-25 → 2026-08-27 (+2d) |  | 0d → 31d |  |
| 148 | Bldg B Janus Install | 2026-08-26 → 2026-05-06 (-112d) | 2026-09-01 → 2026-05-12 (-112d) |  | 0d → 108d | 147 → 85 |
| 149 | Bldg C Janus Install | 2026-09-02 → 2026-04-24 (-131d) | 2026-09-08 → 2026-04-30 (-131d) |  | 18d → 111d | 148 → 112, 110 |

| ID | Task | Start | Finish | Duration | Total float | Predecessors |
| --- | --- | --- | --- | --- | --- | --- |
| 150 | Bldg D Janus Install | 2026-09-09 → 2026-06-15 (-86d) | 2026-09-15 → 2026-06-19 (-88d) |  | 18d → 75d | 149 → 129 |
| 151 | Drywall Hanging | 2026-06-24 → 2026-05-06 (-49d) | 2026-06-30 → 2026-05-12 (-49d) |  | 3d → 19d | 44, 45, 85, 109, 128 → 85 |
| 152 | Drywall Finishing | 2026-06-24 → 2026-05-13 (-42d) | 2026-07-07 → 2026-05-26 (-42d) |  | 3d → 19d | 151FS-5d → 151 |
| 153 | Paint | 2026-07-08 → 2026-05-27 (-42d) | 2026-07-14 → 2026-06-02 (-42d) |  | 31d → 19d |  |
| 154 | Millwork | 2026-07-14 → 2026-06-02 (-42d) | 2026-07-20 → 2026-06-08 (-42d) |  | 31d → 19d |  |
| 155 | Floor Sealer - 2nd Floor | 2026-07-21 → 2026-06-09 (-42d) | 2026-07-27 → 2026-06-15 (-42d) |  | 39d → 19d |  |
| 156 | Floor Sealer / Polish - 1st Floor and drive ups | 2026-07-28 → 2026-06-16 (-42d) | 2026-08-17 → 2026-07-06 (-42d) |  | 39d → 19d |  |
| 157 | **Closeout** | 2026-08-19 → 2026-08-21 (+2d) |  | 38d → 36d |  |  |
| 158 | Final Clean - Bldg A | 2026-09-02 → 2026-09-07 (+5d) | 2026-09-11 → 2026-09-16 (+5d) |  | 0d → 17d | 154, 148 → 59FS+20d |
| 159 | Final Clean - Bldg B | 2026-09-14 → 2026-09-01 (-13d) | 2026-09-18 → 2026-09-07 (-11d) |  | 10d → 19d | 158 → 156FS+40d |
| 160 | Final Clean - Bldg C and D | 2026-09-21 → 2026-09-08 (-13d) | 2026-09-25 → 2026-09-14 (-11d) |  | 10d → 19d | 159 → 159, 149, 150 |
| 161 | MEP Final Inspections | 2026-08-19 → 2026-08-21 (+2d) | 2026-09-01 → 2026-09-10 (+9d) | 10d → 15d | 3d → 0d |  |
| 162 | Building Final Inspections | 2026-09-02 → 2026-09-11 (+9d) | 2026-09-08 → 2026-09-29 (+21d) | 5d → 13d | 3d → 0d |  |
| 163 | Weather Days Included (20 Days) | 2026-09-14 → 2026-09-30 (+16d) |  | 20d → 8d |  | 144, 62, 158, 162 → 144, 62, 162 |
