# PS Willis - Preliminary Schedule - 01.05.26

How a schedule from MS Project changed from version to version. A marks actual dates.

## Version 1 (data date 2026-01-05, saved 2026-01-07, file baseline.mpp)

Note of the change: Add all project schedule files to buckets - 13 projects, MPP+XER, baseline+updates

| ID | WBS | Task | Duration | Start | Finish | Predecessors | Total float | Constraint |
| --- | --- | --- | --- | --- | --- | --- | --- | --- |
| 1 | 1 | **Public Storage Willis - TX 24198** | 207d | 2025-09-25 | 2026-07-10 |  | 15d |  |
| 2 | 1.1 | **Pre-Construction** | 133d | 2025-09-25 | 2026-03-30 |  | 77d |  |
| 3 |  | Contract Signed | 1d | 2025-09-25 | 2025-09-25 |  | 219d | start no earlier than 2025-09-25 |
| 4 |  | Building Permit | 1d | 2026-01-09 | 2026-01-09 |  | 143d | start no earlier than 2026-01-09 |
| 5 |  | Fire Tank Permit | 1d | 2026-03-30 | 2026-03-30 |  | 58d | start no earlier than 2026-03-30 |
| 6 |  | NTP - From PS | 1d | 2026-01-12 | 2026-01-12 |  | 0d | start no earlier than 2026-01-12 |
| 7 |  | Approval to go Vertical by AHJ | 1d | 2026-03-04 | 2026-03-04 | 23 | 107d |  |
| 8 | 1.2 | **Procurament** | 70d | 2026-02-17 | 2026-05-25 |  | 49d |  |
| 9 |  | Building Structure | 2d | 2026-02-17 | 2026-02-19 | 51SF-5d | 117d |  |
| 10 |  | Hallway System | 2d | 2026-05-19 | 2026-05-21 | 68SF-5d | 52d |  |
| 11 |  | Fire Tank Delivery | 1d | 2026-05-25 | 2026-05-25 |  | 18d | start no earlier than 2026-05-25 |
| 12 | 1.3 | **Site Work** | 100d | 2026-01-13 | 2026-06-01 |  | 0d |  |
| 13 | 1.3.1 | **Earthwork** | 17d | 2026-01-13 | 2026-02-04 |  | 0d |  |
| 14 |  | Erosion Control / BMPs | 3d | 2026-01-13 | 2026-01-15 | 6 | 0d |  |
| 15 |  | Demolition & Haul Off - For Bldg Pad | 4d | 2026-01-16 | 2026-01-21 | 14 | 0d |  |
| 16 |  | Grading / Cut & Fill | 5d | 2026-01-22 | 2026-01-28 | 15 | 0d |  |
| 17 |  | Bulding Pad Preparation | 5d | 2026-01-29 | 2026-02-04 | 16 | 0d |  |
| 18 | 1.3.2 | **Site Utilities** | 93d | 2026-01-22 | 2026-06-01 |  | 44d |  |
| 19 |  | Re-adjust existing storm | 3d | 2026-01-22 | 2026-01-26 | 15 | 132d |  |
| 20 |  | Storm Sewer | 5d | 2026-02-05 | 2026-02-11 | 17 | 86d |  |
| 21 |  | Sanitary Sewer | 6d | 2026-02-12 | 2026-02-19 | 20 | 86d |  |
| 22 |  | Water Line | 6d | 2026-02-20 | 2026-02-27 | 21 | 86d |  |
| 23 |  | Utility Approval by AHJ | 2d | 2026-03-02 | 2026-03-03 | 22 | 105d |  |
| 24 | 1.3.2.6 | **Fire Tank (By Others)** | 5d | 2026-05-26 | 2026-06-01 |  | 20d |  |
| 25 |  | Fire Tank Installation | 5d | 2026-05-26 | 2026-06-01 | 11, 5 | 18d |  |
| 26 | 1.3.3 | **Exterior Improvements** | 66d | 2026-03-02 | 2026-06-01 |  | 44d |  |
| 27 | 1.3.3.1 | **Site Paving** | 22d | 2026-03-02 | 2026-03-31 |  | 88d |  |
| 28 |  | Paving Subgrade Prep | 8d | 2026-03-02 | 2026-03-11 | 22 | 86d |  |
| 29 |  | Fire Lane Concrete Paving | 8d | 2026-03-12 | 2026-03-23 | 28 | 86d |  |
| 30 |  | Light Duty Concrete Paving | 6d | 2026-03-24 | 2026-03-31 | 29 | 86d |  |
| 31 | 1.3.3.2 | **Detention Pond Work** | 9d | 2026-03-12 | 2026-03-24 |  | 93d |  |
| 32 |  | Grading / Cut | 5d | 2026-03-12 | 2026-03-18 | 28 | 91d |  |
| 33 |  | Storm Sewer | 4d | 2026-03-19 | 2026-03-24 | 32 | 91d |  |
| 34 | 1.3.3.3 | **Landscape & Irrigation** | 11d | 2026-05-11 | 2026-05-25 |  | 44d |  |
| 35 |  | Irrigation Installation | 6d | 2026-05-11 | 2026-05-18 | 78 | 44d |  |
| 36 |  | Landscape Installation | 5d | 2026-05-19 | 2026-05-25 | 35 | 44d |  |
| 37 | 1.3.3.4 | **Gates & Fences** | 5d | 2026-05-26 | 2026-06-01 |  | 44d |  |
| 38 |  | Chain Link Fence | 3d | 2026-05-26 | 2026-05-28 | 36 | 44d |  |
| 39 |  | Double Swing Gate | 2d | 2026-05-29 | 2026-06-01 | 38 | 44d |  |
| 40 | 1.4 | **Building Work** | 107d | 2026-02-05 | 2026-07-03 |  | 0d |  |
| 41 | 1.4.1 | **SOG / Foundation** | 12d | 2026-02-05 | 2026-02-20 |  | 0d |  |
| 42 |  | Form Board | 1d | 2026-02-05 | 2026-02-05 | 17 | 0d |  |
| 43 |  | Plumbing UG Rough-In | 1d | 2026-02-06 | 2026-02-06 | 42 | 0d |  |
| 44 |  | Electrical UFER & Service | 1d | 2026-02-09 | 2026-02-09 | 43 | 0d |  |
| 45 |  | Grade Beam Excavation | 3d | 2026-02-10 | 2026-02-12 | 44 | 0d |  |
| 46 |  | Set Poly & Termite Control | 1d | 2026-02-13 | 2026-02-13 | 45 | 0d |  |
| 47 |  | Set Rebar for GB & SOG | 2d | 2026-02-16 | 2026-02-17 | 46 | 0d |  |
| 48 |  | Pour & Finish SOG | 2d | 2026-02-18 | 2026-02-19 | 47 | 0d |  |
| 49 |  | Joint Control Saw Cutting | 1d | 2026-02-20 | 2026-02-20 | 48 | 0d |  |
| 50 | 1.4.2 | **Steel Structure (By Others)** | 38d | 2026-02-26 | 2026-04-20 |  | 0d |  |
| 51 |  | Framing & Interior Partitions | 12d | 2026-02-26 | 2026-03-13 | 49FS+3d | 0d |  |
| 52 |  | Standing Seam Metal Roofing System | 10d | 2026-03-16 | 2026-03-27 | 51 | 0d |  |
| 53 |  | Exterior Wall Assembly | 10d | 2026-03-30 | 2026-04-10 | 52 | 74d |  |
| 54 |  | Gutter, Coping & Downpsouts | 6d | 2026-04-13 | 2026-04-20 | 53 | 74d |  |
| 55 | 1.4.3 | **Masonry** | 4d | 2026-04-13 | 2026-04-16 |  | 76d |  |
| 56 |  | Fire Pump Room | 4d | 2026-04-13 | 2026-04-16 | 53 | 76d |  |
| 57 | 1.4.4 | **Fire Sprinkler System** | 45d | 2026-04-06 | 2026-06-05 |  | 0d |  |
| 58 |  | Sprinkler Installation | 12d | 2026-04-06 | 2026-04-21 | 52FS+5d | 0d |  |
| 59 |  | Final Adjustment and Testing | 4d | 2026-06-02 | 2026-06-05 | 58, 25 | 18d |  |
| 60 | 1.4.5 | **Fire Alarm** | 19d | 2026-04-22 | 2026-05-18 |  | 34d |  |
| 61 |  | Fire Alarm Installation | 15d | 2026-04-22 | 2026-05-12 | 58 | 34d |  |
| 62 |  | Final Adjustment & Testing | 4d | 2026-05-13 | 2026-05-18 | 61 | 34d |  |
| 63 | 1.4.6 | **ERCCS - TBD subject to AHJ Review** | 17d | 2026-06-11 | 2026-07-03 |  | 0d |  |
| 64 |  | ERCCS Testing | 2d | 2026-06-11 | 2026-06-12 | 68, 83 | 0d |  |
| 65 |  | Submittal and Approval by AHJ | 10d | 2026-06-15 | 2026-06-26 | 64 | 0d |  |
| 66 |  | ERCCS Installation | 5d | 2026-06-29 | 2026-07-03 | 65 | 0d |  |
| 67 | 1.4.7 | **Hallway System (By Others)** | 15d | 2026-05-28 | 2026-06-17 |  | 0d |  |
| 68 |  | Hallway System & Roll Up Doors | 10d | 2026-05-28 | 2026-06-10 | 70, 75, 80 | 0d |  |
| 69 |  | Wire Mesh | 5d | 2026-06-11 | 2026-06-17 | 58, 61, 72, 68 | 18d |  |
| 70 | 1.4.8 | **Mechanical** | 26d | 2026-04-22 | 2026-05-27 |  | 0d |  |

| ID | WBS | Task | Duration | Start | Finish | Predecessors | Total float |
| --- | --- | --- | --- | --- | --- | --- | --- |
| 71 |  | Line Sets & Rough In | 8d | 2026-04-22 | 2026-05-01 | 58 | 0d |
| 72 |  | AHUs & Duct Work | 10d | 2026-05-04 | 2026-05-15 | 71 | 0d |
| 73 |  | Dehumidifiers | 3d | 2026-05-18 | 2026-05-20 | 72 | 0d |
| 74 |  | Condensers & Final Connection | 5d | 2026-05-21 | 2026-05-27 | 73 | 0d |
| 75 | 1.4.9 | **Electrical** | 38d | 2026-03-30 | 2026-05-20 |  | 5d |
| 76 |  | Conduit, Wire | 3d | 2026-03-30 | 2026-04-01 | 52 | 5d |
| 77 |  | Light Installation | 15d | 2026-04-02 | 2026-04-22 | 76 | 5d |
| 78 |  | Gear & Riser Room Assembly | 12d | 2026-04-23 | 2026-05-08 | 77 | 5d |
| 79 |  | Wall Packs | 8d | 2026-05-11 | 2026-05-20 | 78 | 5d |
| 80 | 1.4.10 | **Plumbing** | 5d | 2026-05-18 | 2026-05-22 |  | 3d |
| 81 |  | Condensate Drain & Vents | 5d | 2026-05-18 | 2026-05-22 | 72 | 3d |
| 82 | 1.4.11 | **Openings** | 18d | 2026-03-23 | 2026-04-15 |  | 55d |
| 83 |  | HM Frames | 3d | 2026-03-23 | 2026-03-25 | 52SS+5d | 55d |
| 84 |  | HM Doors & Hardware | 3d | 2026-04-13 | 2026-04-15 | 53 | 77d |
| 85 | 1.4.12 | **Finish-Out** | 68d | 2026-03-26 | 2026-06-29 |  | 24d |
| 86 |  | Light Gauge Framing / Electrical, Riser | 5d | 2026-03-26 | 2026-04-01 | 83 | 83d |
| 87 |  | Drywall Assembly | 4d | 2026-05-11 | 2026-05-14 | 86, 78 | 56d |
| 88 |  | Seal Concrete in Corridors | 8d | 2026-06-18 | 2026-06-29 | 67, 70, 75 | 18d |
| 89 | 1.5 | **Post-Construction** | 9d | 2026-06-30 | 2026-07-10 |  | 4d |
| 90 |  | Final Clean-Up | 5d | 2026-06-30 | 2026-07-06 | 88 | 18d |
| 91 |  | Punch List - TBD - Proposed Date | 1d | 2026-07-07 | 2026-07-07 | 90 | 18d |
| 92 |  | Final Inspections | 3d | 2026-07-06 | 2026-07-08 | 57, 60, 63, 70, 75, 80 | 0d |
| 93 |  | CO/TCO | 1d | 2026-07-09 | 2026-07-09 | 92 | 0d |
| 94 |  | Substantial Completion | 1d | 2026-07-10 | 2026-07-10 | 93 | 0d |
| 96 |  | 15 Weather Days in Contract | 15d | 2026-07-13 | 2026-07-31 | 94 | 0d |

## Version 2 (saved 2026-02-05, file update_1.mpp)

Note of the change: Add all project schedule files to buckets - 13 projects, MPP+XER, baseline+updates

Last finish 2026-07-31 → 2026-08-03 (+3d). Complete tasks 0 → 4.

Removed: 96 15 Weather Days in Contract

Changed:

| ID | Task | Start | Finish | Duration | Complete | Total float | Other |
| --- | --- | --- | --- | --- | --- | --- | --- |
| 1 | **Public Storage Willis - TX 24198** | 2025-09-25 A | 2026-07-10 → 2026-08-03 (+24d) | 207d → 223d | 0% → 2% | 15d → 0d |  |
| 2 | **Pre-Construction** | 2025-09-25 A |  |  | 0% → 60% | 77d → 90d |  |
| 3 | Contract Signed | 2025-09-25 A | 2025-09-25 A |  | 0% → 100% | 219d → none |  |
| 4 | Building Permit | 2026-01-09 A | 2026-01-09 A |  | 0% → 100% | 143d → none |  |
| 6 | NTP - From PS | 2026-01-12 A | 2026-01-12 A |  | 0% → 100% | 0d → none |  |
| 7 | Approval to go Vertical by AHJ | 2026-03-04 → 2026-03-26 (+22d) | 2026-03-04 → 2026-03-26 (+22d) |  |  | 107d → 92d |  |
| 8 | **Procurament** | 2026-02-17 → 2026-03-11 (+22d) | 2026-05-25 → 2026-06-12 (+18d) | 70d → 67d |  | 49d → 37d |  |
| 9 | Building Structure | 2026-02-17 → 2026-03-11 (+22d) | 2026-02-19 → 2026-03-13 (+22d) |  |  | 117d → 102d |  |
| 10 | Hallway System | 2026-05-19 → 2026-06-10 (+22d) | 2026-05-21 → 2026-06-12 (+22d) |  |  | 52d → 37d |  |
| 12 | **Site Work** | 2026-01-13 → 2026-02-02 A (+20d) | 2026-06-01 → 2026-06-23 (+22d) | 100d → 102d | 0% → 3% | 0d → 29d |  |
| 13 | **Earthwork** | 2026-01-13 → 2026-02-02 A (+20d) | 2026-02-04 → 2026-02-26 (+22d) | 17d → 19d | 0% → 18% |  |  |
| 14 | Erosion Control / BMPs | 2026-01-13 → 2026-02-02 A (+20d) | 2026-01-15 → 2026-02-04 A (+20d) |  | 0% → 100% | 0d → none | constraint none → start no earlier than 2026-02-02 |
| 15 | Demolition & Haul Off - For Bldg Pad | 2026-01-16 → 2026-02-09 (+24d) | 2026-01-21 → 2026-02-12 (+22d) |  |  |  | constraint none → start no earlier than 2026-02-09 |
| 16 | Grading / Cut & Fill | 2026-01-22 → 2026-02-13 (+22d) | 2026-01-28 → 2026-02-19 (+22d) |  |  |  |  |
| 17 | Bulding Pad Preparation | 2026-01-29 → 2026-02-20 (+22d) | 2026-02-04 → 2026-02-26 (+22d) |  |  |  |  |
| 18 | **Site Utilities** | 2026-01-22 → 2026-02-13 (+22d) |  | 93d → 77d |  | 44d → 45d |  |
| 19 | Re-adjust existing storm | 2026-01-22 → 2026-02-13 (+22d) | 2026-01-26 → 2026-02-17 (+22d) |  |  | 132d → 119d |  |
| 20 | Storm Sewer | 2026-02-05 → 2026-02-27 (+22d) | 2026-02-11 → 2026-03-05 (+22d) |  |  | 86d → 73d |  |
| 21 | Sanitary Sewer | 2026-02-12 → 2026-03-06 (+22d) | 2026-02-19 → 2026-03-13 (+22d) |  |  | 86d → 73d |  |
| 22 | Water Line | 2026-02-20 → 2026-03-16 (+24d) | 2026-02-27 → 2026-03-23 (+24d) |  |  | 86d → 73d |  |
| 23 | Utility Approval by AHJ | 2026-03-02 → 2026-03-24 (+22d) | 2026-03-03 → 2026-03-25 (+22d) |  |  | 105d → 92d |  |
| 26 | **Exterior Improvements** | 2026-03-02 → 2026-03-24 (+22d) | 2026-06-01 → 2026-06-23 (+22d) |  |  | 44d → 29d |  |
| 27 | **Site Paving** | 2026-03-02 → 2026-03-24 (+22d) | 2026-03-31 → 2026-04-22 (+22d) |  |  | 88d → 73d |  |
| 28 | Paving Subgrade Prep | 2026-03-02 → 2026-03-24 (+22d) | 2026-03-11 → 2026-04-02 (+22d) |  |  | 86d → 73d |  |
| 29 | Fire Lane Concrete Paving | 2026-03-12 → 2026-04-03 (+22d) | 2026-03-23 → 2026-04-14 (+22d) |  |  | 86d → 73d |  |
| 30 | Light Duty Concrete Paving | 2026-03-24 → 2026-04-15 (+22d) | 2026-03-31 → 2026-04-22 (+22d) |  |  | 86d → 73d |  |
| 31 | **Detention Pond Work** | 2026-03-12 → 2026-04-03 (+22d) | 2026-03-24 → 2026-04-15 (+22d) |  |  | 93d → 78d |  |
| 32 | Grading / Cut | 2026-03-12 → 2026-04-03 (+22d) | 2026-03-18 → 2026-04-09 (+22d) |  |  | 91d → 78d |  |
| 33 | Storm Sewer | 2026-03-19 → 2026-04-10 (+22d) | 2026-03-24 → 2026-04-15 (+22d) |  |  | 91d → 78d |  |
| 34 | **Landscape & Irrigation** | 2026-05-11 → 2026-06-02 (+22d) | 2026-05-25 → 2026-06-16 (+22d) |  |  | 44d → 29d |  |
| 35 | Irrigation Installation | 2026-05-11 → 2026-06-02 (+22d) | 2026-05-18 → 2026-06-09 (+22d) |  |  | 44d → 29d |  |
| 36 | Landscape Installation | 2026-05-19 → 2026-06-10 (+22d) | 2026-05-25 → 2026-06-16 (+22d) |  |  | 44d → 29d |  |
| 37 | **Gates & Fences** | 2026-05-26 → 2026-06-17 (+22d) | 2026-06-01 → 2026-06-23 (+22d) |  |  | 44d → 29d |  |
| 38 | Chain Link Fence | 2026-05-26 → 2026-06-17 (+22d) | 2026-05-28 → 2026-06-19 (+22d) |  |  | 44d → 29d |  |
| 39 | Double Swing Gate | 2026-05-29 → 2026-06-22 (+24d) | 2026-06-01 → 2026-06-23 (+22d) |  |  | 44d → 29d |  |
| 40 | **Building Work** | 2026-02-05 → 2026-02-27 (+22d) | 2026-07-03 → 2026-07-27 (+24d) |  |  |  |  |
| 41 | **SOG / Foundation** | 2026-02-05 → 2026-02-27 (+22d) | 2026-02-20 → 2026-03-16 (+24d) |  |  |  |  |
| 42 | Form Board | 2026-02-05 → 2026-02-27 (+22d) | 2026-02-05 → 2026-02-27 (+22d) |  |  |  |  |
| 43 | Plumbing UG Rough-In | 2026-02-06 → 2026-03-02 (+24d) | 2026-02-06 → 2026-03-02 (+24d) |  |  |  |  |
| 44 | Electrical UFER & Service | 2026-02-09 → 2026-03-03 (+22d) | 2026-02-09 → 2026-03-03 (+22d) |  |  |  |  |
| 45 | Grade Beam Excavation | 2026-02-10 → 2026-03-04 (+22d) | 2026-02-12 → 2026-03-06 (+22d) |  |  |  |  |
| 46 | Set Poly & Termite Control | 2026-02-13 → 2026-03-09 (+24d) | 2026-02-13 → 2026-03-09 (+24d) |  |  |  |  |
| 47 | Set Rebar for GB & SOG | 2026-02-16 → 2026-03-10 (+22d) | 2026-02-17 → 2026-03-11 (+22d) |  |  |  |  |
| 48 | Pour & Finish SOG | 2026-02-18 → 2026-03-12 (+22d) | 2026-02-19 → 2026-03-13 (+22d) |  |  |  |  |
| 49 | Joint Control Saw Cutting | 2026-02-20 → 2026-03-16 (+24d) | 2026-02-20 → 2026-03-16 (+24d) |  |  |  |  |
| 50 | **Steel Structure (Betco/Janus)** | 2026-02-26 → 2026-03-20 (+22d) | 2026-04-20 → 2026-05-12 (+22d) |  |  |  | was named Steel Structure (By Others) |
| 51 | Framing & Interior Partitions | 2026-02-26 → 2026-03-20 (+22d) | 2026-03-13 → 2026-04-06 (+24d) |  |  |  |  |
| 52 | Standing Seam Metal Roofing System | 2026-03-16 → 2026-04-07 (+22d) | 2026-03-27 → 2026-04-20 (+24d) |  |  |  |  |
| 53 | Exterior Wall Assembly | 2026-03-30 → 2026-04-21 (+22d) | 2026-04-10 → 2026-05-04 (+24d) |  |  | 74d → 59d |  |
| 54 | Gutter, Coping & Downpsouts | 2026-04-13 → 2026-05-05 (+22d) | 2026-04-20 → 2026-05-12 (+22d) |  |  | 74d → 59d |  |
| 55 | **Masonry** | 2026-04-13 → 2026-05-05 (+22d) | 2026-04-16 → 2026-05-08 (+22d) |  |  | 76d → 61d |  |
| 56 | Fire Pump Room | 2026-04-13 → 2026-05-05 (+22d) | 2026-04-16 → 2026-05-08 (+22d) |  |  | 76d → 61d |  |
| 57 | **Fire Sprinkler System** | 2026-04-06 → 2026-04-28 (+22d) |  | 45d → 29d |  |  |  |
| 58 | Sprinkler Installation | 2026-04-06 → 2026-04-28 (+22d) | 2026-04-21 → 2026-05-13 (+22d) |  |  |  |  |
| 60 | **Fire Alarm** | 2026-04-22 → 2026-05-14 (+22d) | 2026-05-18 → 2026-06-09 (+22d) |  |  | 34d → 24d |  |
| 61 | Fire Alarm Installation | 2026-04-22 → 2026-05-14 (+22d) | 2026-05-12 → 2026-06-03 (+22d) |  |  | 34d → 24d |  |
| 62 | Final Adjustment & Testing | 2026-05-13 → 2026-06-04 (+22d) | 2026-05-18 → 2026-06-09 (+22d) |  |  |  |  |
| 63 | **ERCCS - TBD subject to AHJ Review** | 2026-06-11 → 2026-07-03 (+22d) | 2026-07-03 → 2026-07-27 (+24d) |  |  |  |  |
| 64 | ERCCS Testing | 2026-06-11 → 2026-07-03 (+22d) | 2026-06-12 → 2026-07-06 (+24d) |  |  |  |  |
| 65 | Submittal and Approval by AHJ | 2026-06-15 → 2026-07-07 (+22d) | 2026-06-26 → 2026-07-20 (+24d) |  |  |  |  |
| 66 | ERCCS Installation | 2026-06-29 → 2026-07-21 (+22d) | 2026-07-03 → 2026-07-27 (+24d) |  |  |  |  |
| 67 | **Hallway System (Betco/Janus)** | 2026-05-28 → 2026-06-19 (+22d) | 2026-06-17 → 2026-07-09 (+22d) |  |  |  | was named Hallway System (By Others) |
| 68 | Hallway System & Roll Up Doors | 2026-05-28 → 2026-06-19 (+22d) | 2026-06-10 → 2026-07-02 (+22d) |  |  |  |  |
| 69 | Wire Mesh | 2026-06-11 → 2026-07-03 (+22d) | 2026-06-17 → 2026-07-09 (+22d) |  |  | 18d → 3d |  |
| 70 | **Mechanical** | 2026-04-22 → 2026-05-14 (+22d) | 2026-05-27 → 2026-06-18 (+22d) |  |  |  |  |
| 71 | Line Sets & Rough In | 2026-04-22 → 2026-05-14 (+22d) | 2026-05-01 → 2026-05-25 (+24d) |  |  |  |  |
| 72 | AHUs & Duct Work | 2026-05-04 → 2026-05-26 (+22d) | 2026-05-15 → 2026-06-08 (+24d) |  |  |  |  |
| 73 | Dehumidifiers | 2026-05-18 → 2026-06-09 (+22d) | 2026-05-20 → 2026-06-11 (+22d) |  |  |  |  |
| 74 | Condensers & Final Connection | 2026-05-21 → 2026-06-12 (+22d) | 2026-05-27 → 2026-06-18 (+22d) |  |  |  |  |
| 75 | **Electrical** | 2026-03-30 → 2026-04-21 (+22d) | 2026-05-20 → 2026-06-11 (+22d) |  |  |  |  |

| ID | Task | Start | Finish | Total float | Other |
| --- | --- | --- | --- | --- | --- |
| 76 | Conduit, Wire | 2026-03-30 → 2026-04-21 (+22d) | 2026-04-01 → 2026-04-23 (+22d) |  |  |
| 77 | Light Installation | 2026-04-02 → 2026-04-24 (+22d) | 2026-04-22 → 2026-05-14 (+22d) |  |  |
| 78 | Gear & Riser Room Assembly | 2026-04-23 → 2026-05-15 (+22d) | 2026-05-08 → 2026-06-01 (+24d) |  |  |
| 79 | Wall Packs | 2026-05-11 → 2026-06-02 (+22d) | 2026-05-20 → 2026-06-11 (+22d) |  |  |
| 80 | **Plumbing** | 2026-05-18 → 2026-06-09 (+22d) | 2026-05-22 → 2026-06-15 (+24d) |  |  |
| 81 | Condensate Drain & Vents | 2026-05-18 → 2026-06-09 (+22d) | 2026-05-22 → 2026-06-15 (+24d) |  |  |
| 82 | **Openings (Betco/Janus)** | 2026-03-23 → 2026-04-14 (+22d) | 2026-04-15 → 2026-05-07 (+22d) |  | was named Openings |
| 83 | HM Frames | 2026-03-23 → 2026-04-14 (+22d) | 2026-03-25 → 2026-04-16 (+22d) |  |  |
| 84 | HM Doors & Hardware | 2026-04-13 → 2026-05-05 (+22d) | 2026-04-15 → 2026-05-07 (+22d) | 77d → 62d |  |
| 85 | **Finish-Out** | 2026-03-26 → 2026-04-17 (+22d) | 2026-06-29 → 2026-07-21 (+22d) | 24d → 9d |  |
| 86 | Light Gauge Framing / Electrical, Riser | 2026-03-26 → 2026-04-17 (+22d) | 2026-04-01 → 2026-04-23 (+22d) | 83d → 68d |  |
| 87 | Drywall Assembly | 2026-05-11 → 2026-06-02 (+22d) | 2026-05-14 → 2026-06-05 (+22d) | 56d → 41d |  |
| 88 | Seal Concrete in Corridors | 2026-06-18 → 2026-07-10 (+22d) | 2026-06-29 → 2026-07-21 (+22d) | 18d → 3d |  |
| 89 | **Post-Construction** | 2026-06-30 → 2026-07-22 (+22d) | 2026-07-10 → 2026-08-03 (+24d) | 4d → 0d |  |
| 90 | Final Clean-Up | 2026-06-30 → 2026-07-22 (+22d) | 2026-07-06 → 2026-07-28 (+22d) | 18d → 3d |  |
| 91 | Punch List - TBD - Proposed Date | 2026-07-07 → 2026-07-29 (+22d) | 2026-07-07 → 2026-07-29 (+22d) | 18d → 3d |  |
| 92 | Final Inspections | 2026-07-06 → 2026-07-28 (+22d) | 2026-07-08 → 2026-07-30 (+22d) |  |  |
| 93 | CO/TCO | 2026-07-09 → 2026-07-31 (+22d) | 2026-07-09 → 2026-07-31 (+22d) |  |  |
| 94 | Substantial Completion | 2026-07-10 → 2026-08-03 (+24d) | 2026-07-10 → 2026-08-03 (+24d) |  |  |

## Version 3 (saved 2026-03-17, file update_2.mpp)

Note of the change: Add all project schedule files to buckets - 13 projects, MPP+XER, baseline+updates

Last finish 2026-08-03 → 2026-08-31 (+28d). Complete tasks 4 → 14.

Added:

| ID | Task | Duration | Start | Finish | Predecessors | Constraint |
| --- | --- | --- | --- | --- | --- | --- |
| 94 | 15 Weather Days in Contract | 15d | 2026-08-05 | 2026-08-25 | 92 |  |
| 96 | Contracted Finish Date 08.31 | 1d | 2026-08-31 | 2026-08-31 |  | start no earlier than 2026-08-31 |

Removed: 19 Re-adjust existing storm; 43 Plumbing UG Rough-In

Changed:

| ID | Task | Start | Finish | Duration | Complete | Total float | Predecessors | Other |
| --- | --- | --- | --- | --- | --- | --- | --- | --- |
| 1 | **Public Storage Willis - TX 24198** |  | 2026-08-03 → 2026-08-04 (+1d) | 223d → 224d | 2% → 9% | 0d → 19d |  |  |
| 7 | Approval to go Vertical by AHJ | 2026-03-26 → 2026-03-25 (-1d) | 2026-03-26 → 2026-03-25 (-1d) |  |  | 92d → 113d |  |  |
| 8 | **Procurament** | 2026-03-11 → 2026-03-31 (+20d) | 2026-06-12 → 2026-06-01 (-11d) | 67d → 44d |  | 37d → 66d |  |  |
| 9 | Building Structure | 2026-03-11 → 2026-03-31 (+20d) | 2026-03-13 → 2026-04-02 (+20d) |  |  | 102d → 108d |  |  |
| 10 | Hallway System | 2026-06-10 → 2026-05-28 (-13d) | 2026-06-12 → 2026-06-01 (-11d) |  |  | 37d → 66d |  |  |
| 12 | **Site Work** |  | 2026-06-23 → 2026-07-13 (+20d) | 102d → 116d | 3% → 20% | 29d → 35d |  |  |
| 13 | **Earthwork** |  | 2026-02-26 → 2026-02-24 A (-2d) | 19d → 17d | 18% → 100% | 0d → none |  |  |
| 15 | Demolition & Haul Off - For Bldg Pad | 2026-02-09 A | 2026-02-12 A |  | 0% → 100% | 0d → none |  |  |
| 16 | Grading / Cut & Fill | 2026-02-13 A | 2026-02-19 A |  | 0% → 100% | 0d → none |  |  |
| 17 | Bulding Pad Preparation | 2026-02-20 A | 2026-02-26 → 2026-02-24 A (-2d) | 5d → 3d | 0% → 100% | 0d → none |  |  |
| 18 | **Site Utilities** | 2026-02-13 → 2026-03-05 (+20d) |  | 77d → 63d |  | 45d → 4d |  |  |
| 19 | Storm Sewer | 2026-02-27 → 2026-03-05 (+6d) | 2026-03-05 → 2026-03-10 (+5d) | 5d → 4d |  | 73d → 4d | 17 → 17, 47 |  |
| 20 | Sanitary Sewer | 2026-03-06 → 2026-03-11 (+5d) | 2026-03-13 → 2026-03-16 (+3d) | 6d → 4d |  | 73d → 4d |  |  |
| 21 | Water Line | 2026-03-16 → 2026-03-17 (+1d) |  | 6d → 5d |  | 73d → 4d |  |  |
| 22 | Utility Approval by AHJ |  | 2026-03-25 → 2026-03-24 (-1d) | 2d → 1d |  | 92d → 113d |  |  |
| 25 | **Exterior Improvements** | 2026-03-24 → 2026-03-05 (-19d) | 2026-06-23 → 2026-07-13 (+20d) | 66d → 93d |  | 29d → 17d |  |  |
| 26 | **Site Paving** |  | 2026-04-22 → 2026-04-08 (-14d) | 22d → 12d |  | 73d → 4d |  |  |
| 27 | Paving Subgrade Prep |  | 2026-04-02 → 2026-03-31 (-2d) | 8d → 6d |  | 73d → 4d |  |  |
| 28 | Fire Lane Concrete Paving | 2026-04-03 → 2026-04-01 (-2d) | 2026-04-14 → 2026-04-06 (-8d) | 8d → 4d |  | 73d → 4d |  |  |
| 29 | Light Duty Concrete Paving | 2026-04-15 → 2026-04-07 (-8d) | 2026-04-22 → 2026-04-08 (-14d) | 6d → 2d |  | 73d → 4d |  |  |
| 30 | **Detention Pond Work** | 2026-04-03 → 2026-03-05 (-29d) | 2026-04-15 → 2026-03-24 (-22d) | 9d → 14d |  | 78d → 114d |  |  |
| 31 | Grading / Cut | 2026-04-03 → 2026-03-05 (-29d) | 2026-04-09 → 2026-03-18 (-22d) | 5d → 10d |  | 78d → 114d | 27 → 47 |  |
| 32 | Storm Sewer | 2026-04-10 → 2026-03-19 (-22d) | 2026-04-15 → 2026-03-24 (-22d) |  |  | 78d → 114d |  |  |
| 33 | **Landscape & Irrigation** | 2026-06-02 → 2026-06-22 (+20d) | 2026-06-16 → 2026-07-06 (+20d) |  |  | 29d → 35d |  |  |
| 34 | Irrigation Installation | 2026-06-02 → 2026-06-22 (+20d) | 2026-06-09 → 2026-06-29 (+20d) |  |  | 29d → 35d |  |  |
| 35 | Landscape Installation | 2026-06-10 → 2026-06-30 (+20d) | 2026-06-16 → 2026-07-06 (+20d) |  |  | 29d → 35d |  |  |
| 36 | **Gates & Fences** | 2026-06-17 → 2026-07-07 (+20d) | 2026-06-23 → 2026-07-13 (+20d) |  |  | 29d → 35d |  |  |
| 37 | Chain Link Fence | 2026-06-17 → 2026-07-07 (+20d) | 2026-06-19 → 2026-07-09 (+20d) |  |  | 29d → 35d |  |  |
| 38 | Double Swing Gate | 2026-06-22 → 2026-07-10 (+18d) | 2026-06-23 → 2026-07-13 (+20d) |  |  | 29d → 35d |  |  |
| 39 | **Building Work** | 2026-02-27 → 2026-02-25 A (-2d) | 2026-07-27 → 2026-07-28 (+1d) | 107d → 110d | 0% → 5% | 0d → 24d |  |  |
| 40 | **SOG / Foundation** | 2026-02-27 → 2026-02-25 A (-2d) | 2026-03-16 → 2026-03-04 A (-12d) | 12d → 6d | 0% → 100% | 0d → none |  |  |
| 41 | Form Board & Grade Beam Excavation | 2026-02-27 → 2026-02-25 A (-2d) | 2026-02-27 → 2026-02-25 A (-2d) |  | 0% → 100% | 0d → none |  | was named Form Board |
| 42 | Pest Control | 2026-03-03 → 2026-02-26 A (-5d) | 2026-03-03 → 2026-02-26 A (-5d) |  | 0% → 100% | 0d → none | Plumbing UG Rough-In → 41 | was named Electrical UFER & Service |
| 43 | Set Up Poly & Rebar - Phase 1 | 2026-03-04 → 2026-02-27 A (-5d) | 2026-03-06 → 2026-03-02 A (-4d) | 3d → 2d | 0% → 100% | 0d → none |  | was named Grade Beam Excavation |
| 44 | Place and Finish Slab - Phase 1 | 2026-03-09 → 2026-03-03 A (-6d) | 2026-03-09 → 2026-03-03 A (-6d) |  | 0% → 100% | 0d → none |  | was named Set Poly & Termite Control |
| 45 | Undeground Plumbing Rough In | 2026-03-10 → 2026-02-26 A (-12d) | 2026-03-11 → 2026-02-27 A (-12d) |  | 0% → 100% | 0d → none | 44 → 41 | was named Set Rebar for GB & SOG |
| 46 | Set Up Poly & Rebar - Phase 2 | 2026-03-12 → 2026-03-02 A (-10d) | 2026-03-13 → 2026-03-03 A (-10d) |  | 0% → 100% | 0d → none |  | was named Pour & Finish SOG |
| 47 | Joint Control Saw Cutting | 2026-03-16 → 2026-03-04 A (-12d) | 2026-03-16 → 2026-03-04 A (-12d) |  | 0% → 100% | 0d → none |  |  |
| 48 | **Steel Structure (Betco/Janus)** | 2026-03-20 → 2026-04-09 (+20d) | 2026-05-12 → 2026-06-01 (+20d) |  |  | 0d → 4d |  |  |
| 49 | Framing & Interior Partitions | 2026-03-20 → 2026-04-09 (+20d) | 2026-04-06 → 2026-04-24 (+18d) |  |  | 0d → 4d | 47FS+3d → 29 |  |
| 50 | Standing Seam Metal Roofing System | 2026-04-07 → 2026-04-27 (+20d) | 2026-04-20 → 2026-05-08 (+18d) |  |  | 0d → 23d |  |  |
| 51 | Exterior Wall Assembly | 2026-04-21 → 2026-05-11 (+20d) | 2026-05-04 → 2026-05-22 (+18d) |  |  | 59d → 65d |  |  |
| 52 | Gutter, Coping & Downpsouts | 2026-05-05 → 2026-05-25 (+20d) | 2026-05-12 → 2026-06-01 (+20d) |  |  | 59d → 65d |  |  |
| 53 | **Masonry** | 2026-05-05 → 2026-05-25 (+20d) | 2026-05-08 → 2026-05-28 (+20d) |  |  | 61d → 67d |  |  |
| 54 | Fire Pump Room | 2026-05-05 → 2026-05-25 (+20d) | 2026-05-08 → 2026-05-28 (+20d) |  |  | 61d → 67d |  |  |
| 55 | **Fire Sprinkler System** | 2026-04-28 → 2026-04-27 (-1d) |  | 29d → 30d |  | 0d → 4d |  |  |
| 56 | Sprinkler Installation | 2026-04-28 → 2026-04-27 (-1d) | 2026-05-13 → 2026-05-12 (-1d) |  |  | 0d → 4d | 50FS+5d → 49 |  |
| 58 | **Fire Alarm** | 2026-05-14 → 2026-05-13 (-1d) | 2026-06-09 → 2026-06-08 (-1d) |  |  | 24d → 40d |  |  |
| 59 | Fire Alarm Installation | 2026-05-14 → 2026-05-13 (-1d) | 2026-06-03 → 2026-06-02 (-1d) |  |  | 24d → 40d |  |  |
| 60 | Final Adjustment & Testing | 2026-06-04 → 2026-06-03 (-1d) | 2026-06-09 → 2026-06-08 (-1d) |  |  | 34d → 40d |  |  |
| 61 | **ERCCS - TBD subject to AHJ Review** | 2026-07-03 → 2026-07-06 (+3d) | 2026-07-27 → 2026-07-28 (+1d) |  |  | 0d → 4d |  |  |
| 62 | ERCCS Testing | 2026-07-03 → 2026-07-06 (+3d) | 2026-07-06 → 2026-07-07 (+1d) |  |  | 0d → 4d |  |  |
| 63 | Submittal and Approval by AHJ | 2026-07-07 → 2026-07-08 (+1d) | 2026-07-20 → 2026-07-21 (+1d) |  |  | 0d → 4d |  |  |
| 64 | ERCCS Installation | 2026-07-21 → 2026-07-22 (+1d) | 2026-07-27 → 2026-07-28 (+1d) |  |  | 0d → 4d |  |  |
| 65 | **Hallway System (Betco/Janus)** | 2026-06-19 → 2026-06-08 (-11d) | 2026-07-09 → 2026-07-10 (+1d) | 15d → 25d |  | 0d → 4d |  |  |
| 66 | Hallway System & Roll Up Doors | 2026-06-19 → 2026-06-08 (-11d) | 2026-07-02 → 2026-07-03 (+1d) | 10d → 20d |  | 0d → 4d | 68, 73, 78 → 56, 70 |  |
| 67 | Wire Mesh | 2026-07-03 → 2026-07-06 (+3d) | 2026-07-09 → 2026-07-10 (+1d) |  |  | 3d → 22d |  |  |
| 68 | **Mechanical** | 2026-05-14 → 2026-05-13 (-1d) | 2026-06-18 → 2026-06-17 (-1d) |  |  | 0d → 4d |  |  |
| 69 | Line Sets & Rough In | 2026-05-14 → 2026-05-13 (-1d) | 2026-05-25 → 2026-05-22 (-3d) |  |  | 0d → 4d |  |  |
| 70 | AHUs & Duct Work | 2026-05-26 → 2026-05-25 (-1d) | 2026-06-08 → 2026-06-05 (-3d) |  |  | 0d → 4d |  |  |
| 71 | Dehumidifiers | 2026-06-09 → 2026-06-08 (-1d) | 2026-06-11 → 2026-06-10 (-1d) |  |  | 0d → 33d |  |  |
| 72 | Condensers & Final Connection | 2026-06-12 → 2026-06-11 (-1d) | 2026-06-18 → 2026-06-17 (-1d) |  |  | 0d → 33d |  |  |
| 73 | **Electrical** | 2026-04-21 → 2026-05-11 (+20d) | 2026-06-11 → 2026-07-01 (+20d) |  |  | 5d → 23d |  |  |
| 74 | Conduit, Wire | 2026-04-21 → 2026-05-11 (+20d) | 2026-04-23 → 2026-05-13 (+20d) |  |  | 5d → 23d |  |  |
| 75 | Light Installation | 2026-04-24 → 2026-05-14 (+20d) | 2026-05-14 → 2026-06-03 (+20d) |  |  | 5d → 23d |  |  |
| 76 | Gear & Riser Room Assembly | 2026-05-15 → 2026-06-04 (+20d) | 2026-06-01 → 2026-06-19 (+18d) |  |  | 5d → 23d |  |  |
| 77 | Wall Packs | 2026-06-02 → 2026-06-22 (+20d) | 2026-06-11 → 2026-07-01 (+20d) |  |  | 5d → 23d |  |  |
| 78 | **Plumbing** | 2026-06-09 → 2026-06-08 (-1d) | 2026-06-15 → 2026-06-12 (-3d) |  |  | 3d → 36d |  |  |
| 79 | Condensate Drain & Vents | 2026-06-09 → 2026-06-08 (-1d) | 2026-06-15 → 2026-06-12 (-3d) |  |  | 3d → 36d |  |  |
| 80 | **Openings (Betco/Janus)** | 2026-04-14 → 2026-05-04 (+20d) | 2026-05-07 → 2026-05-27 (+20d) |  |  | 55d → 46d |  |  |

| ID | Task | Start | Finish | Duration | Total float |
| --- | --- | --- | --- | --- | --- |
| 81 | HM Frames | 2026-04-14 → 2026-05-04 (+20d) | 2026-04-16 → 2026-05-06 (+20d) |  | 55d → 46d |
| 82 | HM Doors & Hardware | 2026-05-05 → 2026-05-25 (+20d) | 2026-05-07 → 2026-05-27 (+20d) |  | 62d → 68d |
| 83 | **Finish-Out** | 2026-04-17 → 2026-05-07 (+20d) | 2026-07-21 → 2026-07-22 (+1d) | 68d → 55d | 9d → 28d |
| 84 | Light Gauge Framing / Electrical, Riser | 2026-04-17 → 2026-05-07 (+20d) | 2026-04-23 → 2026-05-13 (+20d) |  | 68d → 74d |
| 85 | Drywall Assembly | 2026-06-02 → 2026-06-22 (+20d) | 2026-06-05 → 2026-06-25 (+20d) |  | 41d → 47d |
| 86 | Seal Concrete in Corridors | 2026-07-10 → 2026-07-13 (+3d) | 2026-07-21 → 2026-07-22 (+1d) |  | 3d → 22d |
| 87 | **Post-Construction** | 2026-07-22 → 2026-07-23 (+1d) | 2026-08-03 → 2026-08-04 (+1d) |  | 0d → 8d |
| 88 | Final Clean-Up | 2026-07-22 → 2026-07-23 (+1d) | 2026-07-28 → 2026-07-29 (+1d) |  | 3d → 22d |
| 89 | Punch List - TBD - Proposed Date | 2026-07-29 → 2026-07-30 (+1d) | 2026-07-29 → 2026-07-30 (+1d) |  | 3d → 22d |
| 90 | Final Inspections | 2026-07-28 → 2026-07-29 (+1d) | 2026-07-30 → 2026-07-31 (+1d) |  | 0d → 4d |
| 91 | CO/TCO | 2026-07-31 → 2026-08-03 (+3d) | 2026-07-31 → 2026-08-03 (+3d) |  | 0d → 4d |
| 92 | Substantial Completion | 2026-08-03 → 2026-08-04 (+1d) | 2026-08-03 → 2026-08-04 (+1d) |  | 0d → 4d |
