# 12.8.25 master.owner.updated

How a schedule from MS Project changed from version to version. A marks actual dates.

## Version 1 (data date 2024-12-08, saved 2026-01-07, file Selma - 2025.12.08-BL01-AnthonysPC-ST.mpp)

Note of the change: Report mode: gpt-5.4, narrative engine, floor cascade, mitigation detector, prior verify PDFs, section redraft UI, system prompt upgrades

| ID | WBS | Task | Duration | Start | Finish | Predecessors | Total float | Constraint |
| --- | --- | --- | --- | --- | --- | --- | --- | --- |
| 1 | 1 | **Public Storage Selma, NC** | 263d | 2025-10-06 | 2026-10-09 |  | 0d |  |
| 2 |  | Award Contract | 0d | 2025-10-06 | 2025-10-06 |  | 0d | start no earlier than 2025-10-06 |
| 3 | 1.2 | **Mobilization** | 6d | 2025-12-01 | 2025-12-08 |  |  |  |
| 4 |  | Mobilization (Site Fence, Layout, Barricades, Etc.) | 1d | 2026-01-05 | 2026-01-05 | 2SS+63d | 0d |  |
| 5 |  | SWPPP | 5d | 2025-12-15 | 2025-12-19 | 4FS-16d | 0d |  |
| 6 | 1.3 | **Demo/Site Work** | 84d | 2026-01-05 | 2026-04-30 | 5FS+10d | 0d |  |
| 7 |  | Clearing and Grubbing | 10d | 2026-01-05 | 2026-01-16 | 5FS-6d | 0d |  |
| 8 |  | Dewatering | 5d | 2026-01-19 | 2026-01-23 | 7 | 0d |  |
| 9 |  | Rough Grading | 18d | 2026-01-19 | 2026-02-11 | 8SS | 0d |  |
| 10 |  | Storm System | 21d | 2026-02-12 | 2026-03-12 | 9 | 6d |  |
| 11 |  | Sanitary Sewer | 5d | 2026-03-13 | 2026-03-19 | 10 | 6d |  |
| 12 |  | Water | 10d | 2026-03-20 | 2026-04-02 | 11 | 6d |  |
| 13 |  | Site Electrical | 10d | 2026-04-03 | 2026-04-16 | 12 | 6d |  |
| 14 |  | Building Tie In | 10d | 2026-04-17 | 2026-04-30 | 12, 13 | 6d |  |
| 15 | 1.4 | **Building A** | 139d | 2026-02-05 | 2026-08-18 |  | 0d |  |
| 16 | 1.4.1 | **Structure** | 109d | 2026-02-05 | 2026-07-07 |  | 0d |  |
| 17 | 1.4.1.1 | **First Floor** | 59d | 2026-02-05 | 2026-04-28 |  | 0d |  |
| 18 |  | Building Pad Delivery (Bldg A) | 5d | 2026-02-05 | 2026-02-11 | 9FS-5d | 0d |  |
| 19 |  | Elevator Pit - Excavate | 5d | 2026-02-12 | 2026-02-18 | 18 | 157d |  |
| 20 |  | Elevator Pit - Form and Pour | 10d | 2026-02-19 | 2026-03-04 | 19 | 157d |  |
| 21 |  | FRP Foundations / Foundation CMU - Area 1 | 7d | 2026-02-12 | 2026-02-20 | 18 | 0d |  |
| 22 |  | Concrete Retaining Walls | 10d | 2026-02-23 | 2026-03-06 | 21 | 0d |  |
| 23 |  | FRP Foundations/Foundation Area 2 | 7d | 2026-03-09 | 2026-03-17 | 22 | 0d |  |
| 24 |  | Under Slab MEP | 10d | 2026-03-04 | 2026-03-17 | 23FS-10d | 0d |  |
| 25 |  | Slab #1 Prep / Pour (North Half) | 10d | 2026-03-11 | 2026-03-24 | 24FS-5d, 21FS-5d | 0d |  |
| 26 |  | CMU shafts | 15d | 2026-03-25 | 2026-04-14 | 25 | 128d |  |
| 27 |  | Slab #2 Prep / Pour (South Half) | 10d | 2026-03-25 | 2026-04-07 | 25 | 133d |  |
| 28 |  | Janus Framing System (North Half) | 15d | 2026-03-25 | 2026-04-14 | 25 | 0d |  |
| 29 |  | Janus Framing System (South Half) | 10d | 2026-04-15 | 2026-04-28 | 28 | 0d |  |
| 30 | 1.4.1.2 | **Second Floor** | 40d | 2026-04-15 | 2026-06-09 |  | 5d |  |
| 31 |  | Elevated Slab #1 (North Half) Prep/Pour | 5d | 2026-04-15 | 2026-04-21 | 29FS-10d | 10d |  |
| 32 |  | Elevated Slab #2 (South Half) Prep/Pour | 5d | 2026-04-29 | 2026-05-05 | 29, 31 | 15d |  |
| 33 |  | Janus Framing System (North Half) | 15d | 2026-04-29 | 2026-05-19 | 31, 29 | 5d |  |
| 34 |  | Janus Framing System (South Half) | 10d | 2026-05-20 | 2026-06-02 | 33, 32 | 5d |  |
| 35 |  | Roof Decking | 5d | 2026-06-03 | 2026-06-09 | 34 | 5d |  |
| 36 | 1.4.1.3 | **Stairs** | 20d | 2026-06-10 | 2026-07-07 |  | 68d |  |
| 37 |  | Stair #1 | 10d | 2026-06-10 | 2026-06-23 | 35 | 68d |  |
| 38 |  | Stair #2 | 10d | 2026-06-24 | 2026-07-07 | 37 | 68d |  |
| 39 | 1.4.1.4 | **Roof** | 10d | 2026-06-10 | 2026-06-23 |  | 15d |  |
| 40 |  | Metal Roofing | 10d | 2026-06-10 | 2026-06-23 | 35 | 15d |  |
| 41 | 1.4.2 | **Framing and MEP** | 80d | 2026-04-29 | 2026-08-18 |  | 0d |  |
| 42 | 1.4.2.1 | **First Floor** | 65d | 2026-04-29 | 2026-07-28 |  | 0d |  |
| 43 |  | Interior Framing | 5d | 2026-04-29 | 2026-05-05 | 29 | 0d |  |
| 44 |  | 1st Floor MEP Rough-In Area 1 | 20d | 2026-05-06 | 2026-06-02 | 43 | 0d |  |
| 45 |  | 1st Floor MEP Rough-In Area 2 | 15d | 2026-06-03 | 2026-06-23 | 44 | 0d |  |
| 46 |  | 1st Floor MEP Trim Out Area 1 | 10d | 2026-07-08 | 2026-07-21 | 156, 44 | 3d |  |
| 47 |  | 1st Floor MEP Trim Out Area 2 | 5d | 2026-07-22 | 2026-07-28 | 46 | 3d |  |
| 48 | 1.4.2.2 | **Second Floor** | 50d | 2026-06-10 | 2026-08-18 |  | 3d |  |
| 49 |  | Interior Framing | 5d | 2026-06-10 | 2026-06-16 | 32, 35, 81, 107, 127 | 5d |  |
| 50 |  | 2nd Floor MEP Rough-In Area 2 | 15d | 2026-06-24 | 2026-07-14 | 44, 49, 45, 87, 112, 132 | 0d |  |
| 51 |  | 2nd Floor MEP Rough-In Area 2 | 15d | 2026-07-15 | 2026-08-04 | 50 | 0d |  |
| 52 |  | 2nd Floor MEP Trim Out Area 1 | 10d | 2026-07-29 | 2026-08-11 | 47 | 3d |  |
| 53 |  | 2nd Floor MEP Trim Out Area 2 | 5d | 2026-08-12 | 2026-08-18 | 52 | 3d |  |
| 54 | 1.4.3 | **Elevator** | 30d | 2026-06-23 | 2026-08-04 |  | 28d |  |
| 55 |  | Delivery | 0d | 2026-06-23 | 2026-06-23 | 40, 83, 109, 129 | 28d |  |
| 56 |  | Elevator 1 - First Floor | 5d | 2026-06-24 | 2026-06-30 | 55SS | 28d |  |
| 57 |  | Elevator 1 - Second Floor | 5d | 2026-07-01 | 2026-07-07 | 56 | 28d |  |
| 58 |  | Elevator 2 - First Floor | 5d | 2026-07-08 | 2026-07-14 | 57 | 28d |  |
| 59 |  | Elevator 2 - Second Floor | 5d | 2026-07-15 | 2026-07-21 | 58 | 28d |  |
| 60 |  | Infill Doors | 5d | 2026-07-15 | 2026-07-21 | 59FS-5d | 28d |  |
| 61 |  | Test / Adjust | 5d | 2026-07-22 | 2026-07-28 | 60 | 28d |  |
| 62 |  | State Inspection | 5d | 2026-07-29 | 2026-08-04 | 61 | 28d |  |
| 63 | 1.4.4 | **Exterior Finishes** | 50d | 2026-05-06 | 2026-07-14 |  | 28d |  |
| 64 |  | Masonry Veneer | 15d | 2026-05-06 | 2026-05-26 | 43, 86 | 28d |  |
| 65 |  | Metal Panels Completion | 15d | 2026-05-27 | 2026-06-16 | 64 | 28d |  |
| 66 |  | Sheetmetal Work (Coping, Gutters, & Downspouts) | 10d | 2026-06-17 | 2026-06-30 | 65 | 38d |  |
| 67 |  | Automatic Entrance Door | 5d | 2026-05-27 | 2026-06-02 | 64 | 93d |  |
| 68 |  | Exterior Paint | 10d | 2026-06-17 | 2026-06-30 | 65 | 28d |  |
| 69 |  | Exterior Signage Install | 10d | 2026-07-01 | 2026-07-14 | 68 | 28d |  |
| 70 |  | Canopy | 10d | 2026-07-01 | 2026-07-14 | 69SS | 28d |  |

| ID | WBS | Task | Duration | Start | Finish | Predecessors | Total float |
| --- | --- | --- | --- | --- | --- | --- | --- |
| 71 | 1.5 | **Building B** | 85d | 2026-02-12 | 2026-06-10 |  | 14d |
| 72 | 1.5.1 | **Structure** | 55d | 2026-02-12 | 2026-04-29 |  | 14d |
| 73 | 1.5.1.1 | **First Floor** | 50d | 2026-02-12 | 2026-04-22 |  | 14d |
| 74 |  | Building Pad Delivery (Bldg B) | 5d | 2026-02-12 | 2026-02-18 | 18 | 14d |
| 75 |  | FRP Foundations / Foundation CMU - Area 1 | 5d | 2026-02-19 | 2026-02-25 | 74 | 14d |
| 76 |  | FRP Foundations/Foundation Area 2 | 5d | 2026-02-26 | 2026-03-04 | 75 | 14d |
| 77 |  | Under Slab MEP | 5d | 2026-03-05 | 2026-03-11 | 76 | 14d |
| 78 |  | Slab Prep / Pour | 5d | 2026-03-12 | 2026-03-18 | 77 | 14d |
| 79 |  | CMU Walls | 10d | 2026-03-19 | 2026-04-01 | 78 | 14d |
| 80 |  | Janus Framing System | 10d | 2026-04-02 | 2026-04-15 | 79 | 34d |
| 81 |  | Roof Decking | 5d | 2026-04-16 | 2026-04-22 | 80 | 39d |
| 82 | 1.5.1.2 | **Roof** | 5d | 2026-04-23 | 2026-04-29 |  | 67d |
| 83 |  | Metal Roofing | 5d | 2026-04-23 | 2026-04-29 | 81 | 67d |
| 84 | 1.5.2 | **Framing and MEP** | 30d | 2026-04-16 | 2026-05-27 |  | 34d |
| 85 | 1.5.2.1 | **First Floor** | 30d | 2026-04-16 | 2026-05-27 |  | 34d |
| 86 |  | Interior Framing | 5d | 2026-04-16 | 2026-04-22 | 80 | 34d |
| 87 |  | 1st Floor MEP Rough-In Area 1 | 10d | 2026-04-23 | 2026-05-06 | 86 | 34d |
| 88 |  | Finishes | 10d | 2026-04-30 | 2026-05-13 | 83, 86 | 97d |
| 89 |  | 1st Floor MEP Trim Out Area 1 | 10d | 2026-05-14 | 2026-05-27 | 88 | 97d |
| 90 | 1.5.3 | **Exterior Finishes** | 35d | 2026-04-23 | 2026-06-10 |  | 52d |
| 91 |  | Metal Panels Completion | 15d | 2026-04-23 | 2026-05-13 | 81 | 52d |
| 92 |  | Sheetmetal Work (Coping, Gutters, & Downspouts) | 10d | 2026-05-14 | 2026-05-27 | 91 | 62d |
| 93 |  | Automatic Entrance Door | 5d | 2026-05-14 | 2026-05-20 | 91 | 102d |
| 94 |  | Exterior Paint | 10d | 2026-05-14 | 2026-05-27 | 91 | 52d |
| 95 |  | Exterior Signage Install | 10d | 2026-05-28 | 2026-06-10 | 94 | 52d |
| 96 |  | Canopy | 10d | 2026-05-28 | 2026-06-10 | 95SS | 52d |
| 97 | 1.6 | **Building C** | 85d | 2026-02-19 | 2026-06-17 |  | 19d |
| 98 | 1.6.1 | **Structure** | 55d | 2026-02-19 | 2026-05-06 |  | 19d |
| 99 | 1.6.1.1 | **First Floor** | 50d | 2026-02-19 | 2026-04-29 |  | 19d |
| 100 |  | Building Pad Delivery (Bldg C) | 5d | 2026-02-19 | 2026-02-25 | 74 | 19d |
| 101 |  | FRP Foundations / Foundation CMU - Area 1 | 5d | 2026-02-26 | 2026-03-04 | 100 | 19d |
| 102 |  | FRP Foundations/Foundation Area 2 | 5d | 2026-03-05 | 2026-03-11 | 101 | 19d |
| 103 |  | Under Slab MEP | 5d | 2026-03-12 | 2026-03-18 | 102 | 19d |
| 104 |  | Slab Prep / Pour | 5d | 2026-03-19 | 2026-03-25 | 103 | 19d |
| 105 |  | CMU Walls | 10d | 2026-04-02 | 2026-04-15 | 104, 79 | 14d |
| 106 |  | Janus Framing System | 5d | 2026-04-16 | 2026-04-22 | 105 | 24d |
| 107 |  | Roof Decking | 5d | 2026-04-23 | 2026-04-29 | 106 | 24d |
| 108 | 1.6.1.2 | **Roof** | 5d | 2026-04-30 | 2026-05-06 |  | 24d |
| 109 |  | Metal Roofing | 5d | 2026-04-30 | 2026-05-06 | 107 | 24d |
| 110 | 1.6.2 | **Framing and MEP** | 20d | 2026-05-07 | 2026-06-03 |  | 24d |
| 111 | 1.6.2.1 | **First Floor** | 20d | 2026-05-07 | 2026-06-03 |  | 24d |
| 112 |  | 1st Floor MEP Rough-In Area 1 | 10d | 2026-05-07 | 2026-05-20 | 109 | 24d |
| 113 |  | 1st Floor MEP Trim Out Area 1 | 10d | 2026-05-21 | 2026-06-03 | 112 | 92d |
| 114 | 1.6.3 | **Exterior Finishes** | 25d | 2026-05-14 | 2026-06-17 |  | 82d |
| 115 |  | Metal Panels Completion | 15d | 2026-05-14 | 2026-06-03 | 107, 91 | 82d |
| 116 |  | Exterior Signage Install | 10d | 2026-06-04 | 2026-06-17 | 115 | 82d |
| 117 | 1.7 | **Building D** | 80d | 2026-02-26 | 2026-06-17 |  | 24d |
| 118 | 1.7.1 | **Structure** | 60d | 2026-02-26 | 2026-05-20 |  | 14d |
| 119 | 1.7.1.1 | **First Floor** | 55d | 2026-02-26 | 2026-05-13 |  | 14d |
| 120 |  | Building Pad Delivery (Bldg D) | 5d | 2026-02-26 | 2026-03-04 | 100 | 24d |
| 121 |  | FRP Foundations / Foundation CMU - Area 1 | 5d | 2026-03-05 | 2026-03-11 | 120 | 24d |
| 122 |  | FRP Foundations/Foundation Area 2 | 5d | 2026-03-12 | 2026-03-18 | 121 | 24d |
| 123 |  | Under Slab MEP | 5d | 2026-03-19 | 2026-03-25 | 122 | 24d |
| 124 |  | Slab Prep / Pour | 5d | 2026-03-26 | 2026-04-01 | 123 | 24d |
| 125 |  | CMU Walls | 10d | 2026-04-16 | 2026-04-29 | 124, 79, 105 | 14d |
| 126 |  | Janus Framing System | 5d | 2026-04-30 | 2026-05-06 | 125 | 14d |
| 127 |  | Roof Decking | 5d | 2026-05-07 | 2026-05-13 | 126 | 14d |
| 128 | 1.7.1.2 | **Roof** | 5d | 2026-05-14 | 2026-05-20 |  | 14d |
| 129 |  | Metal Roofing | 5d | 2026-05-14 | 2026-05-20 | 127 | 14d |
| 130 | 1.7.2 | **Framing and MEP** | 20d | 2026-05-21 | 2026-06-17 |  | 14d |
| 131 | 1.7.2.1 | **First Floor** | 20d | 2026-05-21 | 2026-06-17 |  | 14d |
| 132 |  | 1st Floor MEP Rough-In Area 1 | 10d | 2026-05-21 | 2026-06-03 | 129 | 14d |
| 133 |  | 1st Floor MEP Trim Out Area 1 | 10d | 2026-06-04 | 2026-06-17 | 132 | 82d |
| 134 | 1.7.3 | **Exterior Finishes** | 25d | 2026-05-14 | 2026-06-17 |  | 82d |
| 135 |  | Metal Panels Completion | 15d | 2026-05-14 | 2026-06-03 | 127, 91 | 82d |
| 136 |  | Exterior Signage Install | 10d | 2026-06-04 | 2026-06-17 | 135 | 82d |
| 137 | 1.8 | **Site Finishes** | 90d | 2026-05-01 | 2026-09-03 |  | 6d |
| 138 |  | Site Fine Grading | 10d | 2026-05-01 | 2026-05-14 | 14 | 6d |
| 139 |  | Stone Base | 10d | 2026-05-08 | 2026-05-21 | 138FS-5d | 6d |
| 140 |  | Curb / Sidewalks | 10d | 2026-05-15 | 2026-05-28 | 139FS-5d | 6d |

| ID | WBS | Task | Duration | Start | Finish | Predecessors | Total float |
| --- | --- | --- | --- | --- | --- | --- | --- |
| 141 |  | Binder Course Asphalt - Area 1 | 5d | 2026-05-29 | 2026-06-04 | 140 | 6d |
| 142 |  | Binder Course Asphalt - Area 2 | 5d | 2026-06-05 | 2026-06-11 | 141 | 6d |
| 143 |  | Landscaping - Area 1 | 10d | 2026-06-12 | 2026-06-25 | 142 | 6d |
| 144 |  | Landscaping - Area 2 | 10d | 2026-06-26 | 2026-07-09 | 143 | 6d |
| 145 |  | Final Pavement | 10d | 2026-07-10 | 2026-07-23 | 144 | 6d |
| 146 |  | Line Marking/Signage | 5d | 2026-07-24 | 2026-07-30 | 145 | 6d |
| 147 |  | As-Builts Complete & Submitted to AHJ | 5d | 2026-07-31 | 2026-08-06 | 146 | 6d |
| 148 |  | As-Built/City Review | 20d | 2026-08-07 | 2026-09-03 | 147 | 6d |
| 149 | 1.9 | **Interior Upfit** | 78d | 2026-06-24 | 2026-10-09 |  | 0d |
| 150 |  | 1st Floor - Janus Unit Install | 15d | 2026-06-24 | 2026-07-14 | 44, 45, 87, 112, 132, 40 | 15d |
| 151 |  | 2nd Floor - Janus Unit Install | 15d | 2026-08-05 | 2026-08-25 | 50, 51, 150 | 0d |
| 152 |  | Bldg B Janus Install | 5d | 2026-08-26 | 2026-09-01 | 151 | 0d |
| 153 |  | Bldg C Janus Install | 5d | 2026-09-02 | 2026-09-08 | 152 | 18d |
| 154 |  | Bldg D Janus Install | 5d | 2026-09-09 | 2026-09-15 | 153 | 18d |
| 155 |  | Drywall Hanging | 5d | 2026-06-24 | 2026-06-30 | 44, 45, 87, 112, 132 | 3d |
| 156 |  | Drywall Finishing | 10d | 2026-06-24 | 2026-07-07 | 155FS-5d | 3d |
| 157 |  | Paint | 5d | 2026-07-08 | 2026-07-14 | 156 | 31d |
| 158 |  | Millwork | 5d | 2026-07-14 | 2026-07-20 | 157FS-1d | 31d |
| 159 |  | Floor Sealer - 2nd Floor | 5d | 2026-07-21 | 2026-07-27 | 158 | 39d |
| 160 |  | Floor Sealer / Polish - 1st Floor and drive ups | 15d | 2026-07-28 | 2026-08-17 | 159 | 39d |
| 161 | 1.9.12 | **Closeout** | 38d | 2026-08-19 | 2026-10-09 |  | 0d |
| 162 |  | Final Clean - Bldg A | 8d | 2026-09-02 | 2026-09-11 | 158, 152 | 0d |
| 163 |  | Final Clean - Bldg B | 5d | 2026-09-14 | 2026-09-18 | 162 | 10d |
| 164 |  | Final Clean - Bldg C and D | 5d | 2026-09-21 | 2026-09-25 | 163 | 10d |
| 165 |  | MEP Final Inspections | 10d | 2026-08-19 | 2026-09-01 | 66, 70, 68, 146, 52, 53, 92, 94, 96, 50, 44 | 3d |
| 166 |  | Building Final Inspections | 5d | 2026-09-02 | 2026-09-08 | 165 | 3d |
| 167 |  | Weather Days Included (20 Days) | 20d | 2026-09-14 | 2026-10-09 | 148, 62, 162, 166 | 0d |
| 168 | 1.9.13 | **Substantial Completion** | 0d | 2026-10-09 | 2026-10-09 |  | 0d |
| 169 |  | Substantial Completion | 0d | 2026-10-09 | 2026-10-09 | 167FF | 0d |

## Version 2 (data date 2025-12-08, saved 2026-03-05, file Selma - 2025.12.08-BL01.xml)

Note of the change: Report mode: gpt-5.4, narrative engine, floor cascade, mitigation detector, prior verify PDFs, section redraft UI, system prompt upgrades

Last finish stays 2026-10-09.

Changed:

| ID | Task | Duration | Other |
| --- | --- | --- | --- |
| 3 | **Mobilization** | 6d → 16d |  |
| 35 | Roof Decking - Building A |  | was named Roof Decking |
| 40 | Metal Roofing - Building A |  | was named Metal Roofing |
| 52 | 2nd Floor MEP Trim Out Area 1 - Building A |  | was named 2nd Floor MEP Trim Out Area 1 |
| 53 | 2nd Floor MEP Trim Out Area 2 - Building A |  | was named 2nd Floor MEP Trim Out Area 2 |
| 65 | Metal Panels Completion - Building A |  | was named Metal Panels Completion |
