# Selma Master 3.27.26 Updated Percent Complete.1

How a schedule from MS Project XML changed from version to version. A marks actual dates.

## Version 1 (data date 2024-12-09, saved 2026-03-30, file Selma, NC - 2026.03.27 - UP03.xml)

Note of the change: Report mode: gpt-5.4, narrative engine, floor cascade, mitigation detector, prior verify PDFs, section redraft UI, system prompt upgrades

| ID | WBS | Task | Duration | Start | Finish | Predecessors | Complete | Total float | Constraint |
| --- | --- | --- | --- | --- | --- | --- | --- | --- | --- |
| 1 | 1 | **Public Storage Selma, NC** | 263d | 2025-10-06 A | 2026-10-09 |  | 14% | 0d |  |
| 2 |  | Award Contract | 0d | 2025-10-06 A | 2025-10-06 A |  | 100% |  | start no earlier than 2025-10-06 |
| 3 | 1.2 | **Mobilization** | 16d | 2025-12-01 | 2025-12-08 |  | 100% |  |  |
| 4 |  | Mobilization (Site Fence, Layout, Barricades, Etc.) | 1d | 2026-01-05 A | 2026-01-05 A | 2SS+63d | 100% |  |  |
| 5 |  | SWPPP | 5d | 2025-12-15 A | 2025-12-19 A | 4FS-16d | 100% |  |  |
| 6 | 1.3 | **Demo/Site Work** | 87d | 2026-01-05 A | 2026-05-05 | 5FS+10d | 74% | 12d |  |
| 7 |  | Clearing and Grubbing | 10d | 2026-01-05 A | 2026-01-16 A | 5FS-6d | 100% |  |  |
| 8 |  | Dewatering | 5d | 2026-01-19 A | 2026-01-23 A | 7 | 100% |  |  |
| 9 |  | Rough Grading | 18d | 2026-01-19 A | 2026-02-11 A | 8SS | 100% |  |  |
| 10 |  | Storm System | 21d | 2026-03-02 A | 2026-03-30 | 9FS+12d | 85% | 4.5d |  |
| 11 |  | Sanitary Sewer | 5d | 2026-03-31 A | 2026-04-06 | 10 | 90% | 9.5d |  |
| 12 |  | Water | 10d | 2026-03-20 A | 2026-04-02 | 11FS-12d | 95% | 0.8d |  |
| 13 |  | Site Electrical | 10d | 2026-04-08 A | 2026-04-21 | 12FS+3d | 8% | 0.5d |  |
| 14 |  | Building Tie In | 10d | 2026-04-22 A | 2026-05-05 | 12, 13 | 5% | 12d |  |
| 15 | 1.4 | **Building A** | 149d | 2026-01-27 A | 2026-08-21 |  | 6% | 35d |  |
| 16 | 1.4.1 | **Structure** | 133d | 2026-01-27 A | 2026-07-30 |  | 13% | 51d |  |
| 17 | 1.4.1.1 | **First Floor** | 93d | 2026-01-27 A | 2026-06-04 |  | 20% | 91d |  |
| 18 |  | Weather Delay( Snow & Ice) | 12d | 2026-01-27 A | 2026-02-11 A | 9FS-12d | 100% |  |  |
| 19 |  | Building Pad Delivery (Bldg A) | 5d | 2026-03-09 A | 2026-03-13 | 9FS+17d, 18 | 95% | 0d |  |
| 20 |  | Elevator Pit - Excavate | 2d | 2026-03-09 A | 2026-03-10 A | 19FS-5d | 100% |  |  |
| 21 |  | Elevator Pit - Form and Pour | 10d | 2026-03-20 A | 2026-04-02 | 20FS+7d | 50% | 136d |  |
| 22 |  | FRP Foundations / Foundation CMU - Area 1 | 7d | 2026-03-30 | 2026-04-07 | 19FS+10d |  | 0d |  |
| 23 |  | Concrete Retaining Walls | 10d | 2026-04-08 | 2026-04-21 | 22 |  | 0d |  |
| 24 |  | FRP Foundations/Foundation Area 2 | 7d | 2026-04-22 | 2026-04-30 | 23 |  | 0d |  |
| 25 |  | Under Slab MEP | 10d | 2026-04-17 | 2026-04-30 | 24FS-10d |  | 0d |  |
| 26 |  | Slab #1 Prep / Pour (North Half) | 10d | 2026-04-24 | 2026-05-07 | 25FS-5d, 22FS-5d |  | 0d |  |
| 27 |  | CMU shafts | 15d | 2026-05-08 | 2026-05-28 | 26 |  | 76d |  |
| 28 |  | Slab #2 Prep / Pour (South Half) | 10d | 2026-05-08 | 2026-05-21 | 26 |  | 101d |  |
| 29 |  | Janus Framing System (North Half) | 10d | 2026-05-08 | 2026-05-21 | 26 |  | 0d |  |
| 30 |  | Janus Framing System (South Half) | 10d | 2026-05-22 | 2026-06-04 | 29 |  | 0d |  |
| 31 | 1.4.1.2 | **Second Floor** | 40d | 2026-05-22 | 2026-07-16 |  |  | 5d |  |
| 32 |  | Elevated Slab #1 (North Half) Prep/Pour | 5d | 2026-05-22 | 2026-05-28 | 30FS-10d |  | 5d |  |
| 33 |  | Elevated Slab #2 (South Half) Prep/Pour | 5d | 2026-05-29 | 2026-06-04 | 32 |  | 5d |  |
| 34 |  | Janus Framing System (North Half) | 15d | 2026-06-05 | 2026-06-25 | 32, 30, 33 |  | 5d |  |
| 35 |  | Janus Framing System (South Half) | 15d | 2026-06-26 | 2026-07-16 | 34, 33 |  | 5d |  |
| 36 | 1.4.1.3 | **Stairs** | 20d | 2026-05-29 | 2026-06-25 |  |  | 76d |  |
| 37 |  | Stair #1 | 10d | 2026-05-29 | 2026-06-11 | 27 |  | 76d |  |
| 38 |  | Stair #2 | 10d | 2026-06-12 | 2026-06-25 | 37 |  | 76d |  |
| 39 | 1.4.1.4 | **Roof** | 10d | 2026-07-17 | 2026-07-30 |  |  | 0d |  |
| 40 |  | Metal Roofing - Building A | 10d | 2026-07-17 | 2026-07-30 | 35 |  |  |  |
| 41 | 1.4.2 | **Framing and MEP** | 51d | 2026-05-29 | 2026-08-07 |  |  | 5d |  |
| 42 | 1.4.2.1 | **First Floor** | 35d | 2026-05-29 | 2026-07-16 |  |  | 5d |  |
| 43 |  | Interior Framing | 5d | 2026-06-05 | 2026-06-11 | 30 |  | 0d |  |
| 44 |  | 1st Floor MEP Rough-In Area 1 | 20d | 2026-05-29 | 2026-06-25 | 32 |  | 10d |  |
| 45 |  | 1st Floor MEP Rough-In Area 2 | 15d | 2026-06-05 | 2026-06-25 | 33 |  | 25d |  |
| 46 |  | 1st Floor MEP Trim Out Area 1 | 10d | 2026-06-26 | 2026-07-09 | 152, 44 |  | 10d |  |
| 47 |  | 1st Floor MEP Trim Out Area 2 | 5d | 2026-07-10 | 2026-07-16 | 46 |  | 10d |  |
| 48 | 1.4.2.2 | **Second Floor** | 46d | 2026-06-05 | 2026-08-07 |  |  | 30d |  |
| 49 |  | Interior Framing | 5d | 2026-06-05 | 2026-06-11 | 33 |  | 35d |  |
| 50 |  | 2nd Floor MEP Rough-In Area 2 | 15d | 2026-06-29 | 2026-07-17 | 44, 49, 45, 85, 109, 128 |  | 24d |  |
| 51 |  | 2nd Floor MEP Rough-In Area 2 | 15d | 2026-07-20 | 2026-08-07 | 50 |  | 30d |  |
| 52 |  | 2nd Floor MEP Trim Out Area 1 - Building A | 10d | 2026-07-17 | 2026-07-30 | 47 |  | 10d |  |
| 53 |  | 2nd Floor MEP Trim Out Area 2 - Building A | 5d | 2026-07-31 | 2026-08-06 | 52 |  | 10d |  |
| 54 | 1.4.3 | **Elevator** | 30d | 2026-07-13 | 2026-08-21 |  |  | 17d |  |
| 55 |  | Delivery | 0d | 2026-07-13 | 2026-07-13 | 40FS-14d |  | 17d |  |
| 56 |  | Elevator 1 - First Floor | 5d | 2026-07-13 | 2026-07-17 | 55SS |  | 17d |  |
| 57 |  | Elevator 1 - Second Floor | 5d | 2026-07-20 | 2026-07-24 | 56 |  | 17d |  |
| 58 |  | Elevator 2 - First Floor | 5d | 2026-07-27 | 2026-07-31 | 57 |  | 17d |  |
| 59 |  | Elevator 2 - Second Floor | 5d | 2026-08-03 | 2026-08-07 | 58 |  | 17d |  |
| 60 |  | Infill Doors | 5d | 2026-08-03 | 2026-08-07 | 59FS-5d |  | 27d |  |
| 61 |  | Test / Adjust | 5d | 2026-08-10 | 2026-08-14 | 60 |  | 27d |  |
| 62 |  | State Inspection | 5d | 2026-08-17 | 2026-08-21 | 61 |  | 27d |  |
| 63 | 1.4.4 | **Exterior Finishes** | 50d | 2026-06-12 | 2026-08-20 |  |  | 0d |  |
| 64 |  | Masonry Veneer | 15d | 2026-06-12 | 2026-07-02 | 43, 84 |  | 0d |  |
| 65 |  | Metal Panels Completion - Building A | 15d | 2026-07-03 | 2026-07-23 | 64 |  | 0d |  |
| 66 |  | Sheetmetal Work (Coping, Gutters, & Downspouts) | 10d | 2026-07-31 | 2026-08-13 | 40 |  | 5d |  |
| 67 |  | Automatic Entrance Door | 5d | 2026-07-03 | 2026-07-09 | 64 |  | 66d |  |
| 68 |  | Exterior Paint | 10d | 2026-07-24 | 2026-08-06 | 65 |  | 0d |  |
| 69 |  | Exterior Signage Install | 10d | 2026-08-07 | 2026-08-20 | 68 |  | 0d |  |
| 70 |  | Canopy | 10d | 2026-08-07 | 2026-08-20 | 69SS |  | 0d |  |

| ID | WBS | Task | Duration | Start | Finish | Predecessors | Complete | Total float |
| --- | --- | --- | --- | --- | --- | --- | --- | --- |
| 71 | 1.5 | **Building B** | 78d | 2026-03-04 A | 2026-06-19 |  | 16% | 80d |
| 72 | 1.5.1 | **Structure** | 38d | 2026-03-04 A | 2026-04-24 |  | 55% | 100d |
| 73 | 1.5.1.1 | **First Floor** | 33d | 2026-03-04 A | 2026-04-17 |  | 64% | 16d |
| 74 |  | Building Pad Delivery (Bldg B) | 3d | 2026-03-04 A | 2026-03-06 A | 19FS-8d | 100% |  |
| 75 |  | FRP Foundations / Foundation CMU - Area 1 | 5d | 2026-03-09 A | 2026-03-13 A | 74 | 100% |  |
| 76 |  | Under Slab MEP | 5d | 2026-03-09 A | 2026-03-13 A | 74 | 100% |  |
| 77 |  | Slab Prep / Pour | 5d | 2026-03-23 A | 2026-03-27 A | 75FS+5d | 100% |  |
| 78 |  | CMU Walls | 5d | 2026-04-03 | 2026-04-09 | 77FS+4d |  | 16d |
| 79 |  | Janus Framing System | 5d | 2026-04-13 | 2026-04-17 | 78FS+1d |  | 16d |
| 80 | 1.5.1.2 | **Roof** | 5d | 2026-04-06 | 2026-04-10 | 79 |  |  |
| 81 |  | Metal Roofing | 5d | 2026-04-20 | 2026-04-24 | 79 |  | 100d |
| 82 | 1.5.2 | **Framing and MEP** | 25d | 2026-04-20 | 2026-05-22 |  |  | 16d |
| 83 | 1.5.2.1 | **First Floor** | 25d | 2026-04-20 | 2026-05-22 |  |  | 16d |
| 84 |  | Interior Framing | 5d | 2026-04-20 | 2026-04-24 | 79 |  | 16d |
| 85 |  | 1st Floor MEP Rough-In Area 1 | 10d | 2026-04-27 | 2026-05-08 | 84 |  | 16d |
| 86 |  | Finishes | 10d | 2026-04-27 | 2026-05-08 | 81, 84 |  | 100d |
| 87 |  | 1st Floor MEP Trim Out Area 1 | 10d | 2026-05-11 | 2026-05-22 | 86 |  | 100d |
| 88 | 1.5.3 | **Exterior Finishes** | 25d | 2026-05-18 | 2026-06-19 | 79FS+20d |  | 44d |
| 89 |  | Metal Panels Completion | 5d | 2026-05-18 | 2026-05-22 |  |  | 44d |
| 90 |  | Sheetmetal Work (Coping, Gutters, & Downspouts) | 3d | 2026-05-25 | 2026-05-27 | 89 |  | 61d |
| 91 |  | Automatic Entrance Door | 5d | 2026-05-25 | 2026-05-29 | 89 |  | 95d |
| 92 |  | Exterior Paint | 10d | 2026-05-25 | 2026-06-05 | 89 |  | 44d |
| 93 |  | Exterior Signage Install | 10d | 2026-06-08 | 2026-06-19 | 92 |  | 44d |
| 94 |  | Canopy | 10d | 2026-06-08 | 2026-06-19 | 93SS |  | 44d |
| 95 | 1.6 | **Building C** | 58d | 2026-03-02 A | 2026-05-06 |  | 40% |  |
| 96 | 1.6.1 | **Structure** | 45d | 2026-03-02 A | 2026-05-01 |  | 56% | 62d |
| 97 | 1.6.1.1 | **First Floor** | 40d | 2026-03-02 A | 2026-04-24 |  | 63% | 62d |
| 98 |  | Building Pad Delivery (Bldg C) | 5d | 2026-03-02 A | 2026-03-06 A | 74FS-5d | 100% |  |
| 99 |  | FRP Foundations / Foundation CMU - Area 1 | 5d | 2026-03-04 A | 2026-03-10 A | 98FS-3d | 100% |  |
| 100 |  | FRP Foundations/Foundation Area 2 | 5d | 2026-03-11 A | 2026-03-17 A | 99 | 100% |  |
| 101 |  | Under Slab MEP | 5d | 2026-03-11 A | 2026-03-17 A | 100SS | 100% |  |
| 102 |  | Slab Prep / Pour | 5d | 2026-03-16 A | 2026-03-20 A | 101FS-2d | 100% |  |
| 103 |  | CMU Walls | 10d | 2026-04-01 | 2026-04-14 | 102FS+7d |  | 62d |
| 104 |  | Janus Framing System | 5d | 2026-04-20 | 2026-04-24 | 103FS+3d |  | 62d |
| 105 | 1.6.1.2 | **Roof** | 5d | 2026-04-27 | 2026-05-01 | 104 |  | 62d |
| 106 |  | Metal Roofing | 5d | 2026-04-27 | 2026-05-01 | 104 |  | 62d |
| 107 | 1.6.2 | **Framing and MEP** | 4d | 2026-05-04 | 2026-05-07 |  |  | 62d |
| 108 | 1.6.2.1 | **First Floor** | 4d | 2026-05-04 | 2026-05-07 |  |  | 62d |
| 109 |  | 1st Floor MEP Rough-In Area 1 | 2d | 2026-05-04 | 2026-05-05 | 106 |  | 62d |
| 110 |  | 1st Floor MEP Trim Out Area 1 | 2d | 2026-05-06 | 2026-05-07 | 109 |  | 101d |
| 111 | 1.6.3 | **Exterior Finishes** | 13d | 2026-05-04 | 2026-05-20 |  |  | 102d |
| 112 |  | Metal Panels Completion | 3d | 2026-05-04 | 2026-05-06 | 106 |  | 102d |
| 113 |  | Exterior Signage Install | 10d | 2026-05-07 | 2026-05-20 | 112 |  | 102d |
| 114 | 1.7 | **Building D** | 70d | 2026-03-09 | 2026-06-12 |  | 6% |  |
| 115 | 1.7.1 | **Structure** | 50d | 2026-04-06 A | 2026-06-12 |  | 10% | 85d |
| 116 | 1.7.1.1 | **First Floor** | 47d | 2026-04-06 A | 2026-06-09 |  | 11% | 88d |
| 117 |  | Building Pad Delivery (Bldg D) | 5d | 2026-04-06 A | 2026-04-10 | 98FS+20d | 90% | 24d |
| 118 |  | FRP Foundations / Foundation CMU - Area 1 | 5d | 2026-04-20 | 2026-04-24 | 117FS+5d |  | 24d |
| 119 |  | FRP Foundations/Foundation Area 2 | 5d | 2026-04-27 | 2026-05-01 | 118 |  | 24d |
| 120 |  | Under Slab MEP | 5d | 2026-05-04 | 2026-05-08 | 119 |  | 24d |
| 121 |  | Slab Prep / Pour | 5d | 2026-05-11 | 2026-05-15 | 120 |  | 105d |
| 122 |  | CMU Walls | 10d | 2026-05-20 | 2026-06-02 | 120FS+7d |  | 24d |
| 123 |  | Janus Framing System | 5d | 2026-06-03 | 2026-06-09 | 122 |  | 24d |
| 124 | 1.7.1.2 | **Roof** | 3d | 2026-06-10 | 2026-06-12 |  |  | 24d |
| 125 |  | Metal Roofing | 3d | 2026-06-10 | 2026-06-12 | 123 |  | 24d |
| 126 | 1.7.2 | **Framing and MEP** | 20d | 2026-06-15 | 2026-07-10 |  |  | 24d |
| 127 | 1.7.2.1 | **First Floor** | 20d | 2026-06-15 | 2026-07-10 |  |  | 24d |
| 128 |  | 1st Floor MEP Rough-In Area 1 | 10d | 2026-06-15 | 2026-06-26 | 125 |  | 24d |
| 129 |  | 1st Floor MEP Trim Out Area 1 | 10d | 2026-06-29 | 2026-07-10 | 128 |  | 55d |
| 130 | 1.7.3 | **Exterior Finishes** | 13d | 2026-06-15 | 2026-07-01 |  |  | 72d |
| 131 |  | Metal Panels Completion | 3d | 2026-06-15 | 2026-06-17 | 125 |  | 72d |
| 132 |  | Exterior Signage Install | 10d | 2026-06-18 | 2026-07-01 | 131 |  | 72d |
| 133 | 1.8 | **Site Finishes** | 90d | 2026-05-06 | 2026-09-08 |  |  | 12d |
| 134 |  | Site Fine Grading | 10d | 2026-05-06 | 2026-05-19 | 14 |  | 12d |
| 135 |  | Stone Base | 10d | 2026-05-13 | 2026-05-26 | 134FS-5d |  | 12d |
| 136 |  | Curb / Sidewalks | 10d | 2026-05-20 | 2026-06-02 | 135FS-5d |  | 12d |
| 137 |  | Binder Course Asphalt - Area 1 | 5d | 2026-06-03 | 2026-06-09 | 136 |  | 12d |
| 138 |  | Binder Course Asphalt - Area 2 | 5d | 2026-06-10 | 2026-06-16 | 137 |  | 12d |
| 139 |  | Landscaping - Area 1 | 10d | 2026-06-17 | 2026-06-30 | 138 |  | 12d |
| 140 |  | Landscaping - Area 2 | 10d | 2026-07-01 | 2026-07-14 | 139 |  | 12d |

| ID | WBS | Task | Duration | Start | Finish | Predecessors | Total float |
| --- | --- | --- | --- | --- | --- | --- | --- |
| 141 |  | Final Pavement | 10d | 2026-07-15 | 2026-07-28 | 140 | 12d |
| 142 |  | Line Marking/Signage | 5d | 2026-07-29 | 2026-08-04 | 141 | 12d |
| 143 |  | As-Builts Complete & Submitted to AHJ | 5d | 2026-08-05 | 2026-08-11 | 142 | 15d |
| 144 |  | As-Built/City Review | 20d | 2026-08-12 | 2026-09-08 | 143 | 15d |
| 145 | 1.9 | **Interior Upfit** | 111d | 2026-05-08 | 2026-10-09 |  | 0d |
| 146 |  | 1st Floor - Janus Unit Install | 15d | 2026-06-26 | 2026-07-16 | 44, 45 | 46d |
| 147 |  | 2nd Floor - Janus Unit Install | 15d | 2026-08-10 | 2026-08-28 | 50, 51, 146 | 30d |
| 148 |  | Bldg B Janus Install | 5d | 2026-05-11 | 2026-05-15 | 85 | 105d |
| 149 |  | Bldg C Janus Install | 5d | 2026-05-08 | 2026-05-14 | 112, 110 | 101d |
| 150 |  | Bldg D Janus Install | 5d | 2026-07-13 | 2026-07-17 | 129 | 55d |
| 151 |  | Drywall Hanging | 5d | 2026-05-11 | 2026-05-15 | 85 | 16d |
| 152 |  | Drywall Finishing | 10d | 2026-05-18 | 2026-05-29 | 151 | 16d |
| 153 |  | Paint | 5d | 2026-06-01 | 2026-06-05 | 152 | 16d |
| 154 |  | Millwork | 5d | 2026-06-05 | 2026-06-11 | 153FS-1d | 16d |
| 155 |  | Floor Sealer - 2nd Floor | 5d | 2026-06-12 | 2026-06-18 | 154 | 16d |
| 156 |  | Floor Sealer / Polish - 1st Floor and drive ups | 15d | 2026-06-19 | 2026-07-09 | 155 | 16d |
| 157 | 1.9.12 | **Closeout** | 36d | 2026-08-21 | 2026-10-09 |  | 0d |
| 158 |  | Final Clean - Bldg A | 8d | 2026-09-07 | 2026-09-16 | 59FS+20d | 17d |
| 159 |  | Final Clean - Bldg B | 5d | 2026-09-04 | 2026-09-10 | 156FS+40d | 16d |
| 160 |  | Final Clean - Bldg C and D | 5d | 2026-09-11 | 2026-09-17 | 159, 149, 150 | 16d |
| 161 |  | MEP Final Inspections | 15d | 2026-08-21 | 2026-09-10 | 66, 70, 68, 142, 52, 53, 90, 92, 94, 50, 44 | 0d |
| 162 |  | Building Final Inspections | 13d | 2026-09-11 | 2026-09-29 | 161 | 0d |
| 163 |  | Weather Days Included (20 Days) | 8d | 2026-09-30 | 2026-10-09 | 144, 62, 162 | 0d |
| 164 | 1.9.13 | **Substantial Completion** | 0d | 2026-10-09 | 2026-10-09 |  | 0d |
| 165 |  | Substantial Completion | 0d | 2026-10-09 | 2026-10-09 | 163FF | 0d |

## Version 2 (data date 2026-03-27, saved 2026-03-30, file Selma, NC - 2026.03.27 - UP03.mpp)

Note of the change: Report mode: gpt-5.4, narrative engine, floor cascade, mitigation detector, prior verify PDFs, section redraft UI, system prompt upgrades

Last finish stays 2026-10-09.

Changed:

| ID | Task | Duration |
| --- | --- | --- |
| 3 | **Mobilization** | 16d → 6d |
| 95 | **Building C** | 58d → 48d |
