# Schedule 2017-02-17 baseline - Final

How a schedule from MS Project changed from version to version. A marks actual dates.

## Version 1 (saved 2025-10-24, file Public Storage CONTRACT Master Schedule R4 2025-10-24.mpp)

Note of the change: Report mode: gpt-5.4, narrative engine, floor cascade, mitigation detector, prior verify PDFs, section redraft UI, system prompt upgrades

| ID | WBS | Task | Duration | Start | Finish | Predecessors | Total float | Constraint |
| --- | --- | --- | --- | --- | --- | --- | --- | --- |
| 1 | 1 | **GENERAL REQUIREMENTS AND CONDITIONS** | 222d | 2025-09-08 | 2026-07-22 |  | -44d |  |
| 2 |  | Notice to Proceed | 1d | 2025-09-08 | 2025-09-08 |  | -16d | start no earlier than 2025-09-08 |
| 3 |  | DELAY - PERMIT DELAY | 32d | 2025-09-09 | 2025-10-22 | 2 | -16d |  |
| 4 |  | Obtain Building Permit | 0d | 2025-10-22 | 2025-10-22 | 2, 3 | -16d | start no earlier than 2025-10-22 |
| 5 |  | ACHD ROW Permit | 0d | 2025-10-29 | 2025-10-29 | 4FS+5d | 65d |  |
| 6 |  | Obtain LDIR Approval to Proceed | 0d | 2025-10-27 | 2025-10-27 | 4FS+3d | 49d |  |
| 7 |  | Receive CAD Base Files from Public Storage | 10d | 2025-09-09 | 2025-09-22 | 2 | 210d | finish no earlier than 2024-08-31 |
| 8 |  | Procure Early Work Subcontractors | 5d | 2025-09-09 | 2025-09-15 | 2 | -20d |  |
| 9 |  | Procure Remaining Subcontractors | 20d | 2025-09-16 | 2025-10-13 | 8 | 65d |  |
| 10 |  | Submittals (SWPPP/NOI) | 10d | 2025-09-16 | 2025-09-29 | 8 | 205d |  |
| 11 |  | Submittals (SES /Switchgear) | 10d | 2025-09-16 | 2025-09-29 | 8 | -6d |  |
| 12 |  | Submittals (numerous) | 70d | 2025-10-14 | 2026-01-23 | 9 | 65d |  |
| 13 |  | PUBLIC STORAGE Fab/Delv Framing & Panels BLDG B | 40d | 2025-09-09 | 2025-11-03 | 2 | -6d |  |
| 14 |  | PUBLIC STORAGE Fab/Delv Framing & Panels BLDG A | 40d | 2025-09-23 | 2025-11-17 | 13SS+10d | 32d |  |
| 15 |  | Procure SES's/Switchgears (6 mos ~ 130 WD) | 130d | 2025-09-30 | 2026-04-03 | 11 | -6d |  |
| 16 |  | Fire Sprinkler Design and Approval | 40d | 2025-10-14 | 2025-12-10 | 2, 9 | 155d |  |
| 17 |  | Fire Alarm System Design and Approval | 40d | 2025-10-14 | 2025-12-10 | 2, 9 | 92d |  |
| 18 |  | ASPHALT BATCH PLANT SHUTDOWN | 70d | 2025-11-17 | 2026-02-26 |  | 0d | must start on 2025-11-17 |
| 19 |  | TWENTY WORKING DAYS OF WEATHER DELAY | 20d | 2026-06-24 | 2026-07-22 | 78, 81, 103, 129, 132, 154, 26, 39, 47, 48, 49, 28, 73, 74, 82, 83, 90, 91, 124, 125, 133, 134, 130, 137, 142, 145, 141, 79, 86, 94, 25, 22 | -44d |  |
| 20 |  | Substantial Completion | 0d | 2026-07-22 | 2026-07-22 | 78, 81, 103, 129, 132, 154, 26, 39, 47, 48, 49, 28, 73, 74, 82, 83, 90, 91, 124, 125, 133, 134, 130, 137, 142, 145, 141, 79, 86, 94, 25, 19 | -44d |  |
| 21 |  | Clean Up and Project Close Out | 5d | 2026-06-12 | 2026-06-18 | 104 | -44d |  |
| 22 |  | Demobilize | 3d | 2026-06-19 | 2026-06-23 | 21 | -44d |  |
| 23 | 2 | **SITEWORK** | 155d | 2025-09-09 | 2026-04-17 |  | -15d |  |
| 24 |  | Mobilization | 5d | 2025-09-09 | 2025-09-15 | 2 | -15d | start no earlier than 2024-09-09 |
| 25 |  | Construction Staking & Surveying | 70d | 2025-09-09 | 2025-12-17 | 24SS, 8SS | -15d |  |
| 26 |  | Inspections and Testing | 100d | 2025-09-23 | 2026-02-13 | 27 | 67d |  |
| 27 |  | Erosion Control & SWPP | 5d | 2025-09-16 | 2025-09-22 | 8 | 67d |  |
| 28 |  | Maintain Erosion Control | 100d | 2025-09-23 | 2026-02-13 | 27 | 67d |  |
| 29 |  | Structure Demo (Partial Building & RV Storage ) | 5d | 2025-09-09 | 2025-09-15 | 24SS | 49d | start no earlier than 2025-09-08 |
| 30 |  | Site Demolition (Trees,Sawcut, Asphalt, Base ) | 5d | 2025-09-16 | 2025-09-22 | 24SS, 8 | -20d | start no earlier than 2017-03-06 |
| 31 |  | Pothole/Verify Existing SS and Water | 2d | 2025-10-13 | 2025-10-14 | 30SS, 25SS, 8SS+1d | 99d | start no earlier than 2025-10-13 |
| 32 |  | Clear/Grub & Overlot Grading | 5d | 2025-09-16 | 2025-09-22 | 30SS, 25SS | -20d |  |
| 33 |  | Site - Sewer Lines and Devices | 15d | 2025-11-07 | 2025-12-01 | 32, 3, 4, 5, 36FS-6d, 6 | 65d |  |
| 34 |  | Storm Drain Lines and Devices | 15d | 2026-01-29 | 2026-02-18 | 31, 32, 33, 55, 57, 108 | 27d |  |
| 35 |  | Site - IRR Piping | 10d | 2025-12-02 | 2025-12-15 | 33, 29 | 77d |  |
| 36 |  | Site - Water Line and Devices | 10d | 2025-11-03 | 2025-11-14 | 5FS+2d, 6 | 65d |  |
| 37 |  | Site - Fire Line and Devices | 15d | 2025-12-04 | 2025-12-24 | 33FS+2d | 65d |  |
| 38 |  | Complete Utility Lines Tie-ins to Building A | 5d | 2026-02-19 | 2026-02-25 | 34, 88, 96, 37, 139, 147 | 27d |  |
| 39 |  | Gravel Road | 5d | 2026-02-26 | 2026-03-04 | 38 | 54d |  |
| 40 |  | BLDG A Foundation Excavation | 5d | 2025-11-13 | 2025-11-19 | 41, 55SS+10d, 4 | -7d |  |
| 41 |  | BLDG B Foundation Excavation | 5d | 2025-10-23 | 2025-10-29 | 32SS+3d, 4 | -16d | start no earlier than 2025-09-15 |
| 42 |  | BLDG A Backfill Foundations | 10d | 2025-12-22 | 2026-01-06 | 57, 106, 107 | -16d |  |
| 43 |  | BLDG B Backfill Foundations | 12d | 2025-12-22 | 2026-01-08 | 55, 56, 57 | 136d |  |
| 44 |  | BLDG A SOG Prep | 3d | 2026-01-07 | 2026-01-09 | 42 | -16d |  |
| 45 |  | BLDG B SOG Prep | 4d | 2025-10-30 | 2025-11-04 | 41 | -5d |  |
| 46 |  | Site Flatwork and Curb & Gutter | 15d | 2026-02-26 | 2026-03-18 | 38, 36, 33, 34, 35 | 27d |  |
| 47 |  | Landscaping and Irrigation | 15d | 2026-03-23 | 2026-04-10 | 46, 12, 48 | 27d |  |
| 48 |  | Asphalt Paving | 2d | 2026-03-19 | 2026-03-20 | 46, 12, 18 | 27d |  |
| 49 |  | Pavement Markings, Signage & Bumpers | 2d | 2026-03-23 | 2026-03-24 | 46, 48 | 40d |  |
| 50 |  | Site Fencing Chainlink | 5d | 2026-03-23 | 2026-03-27 | 39, 48 | 65d |  |
| 51 |  | Site Fencing Vinyl | 10d | 2026-03-30 | 2026-04-10 | 39, 48, 50 | 65d |  |
| 52 |  | Site Fencing Rod Iron and Gates | 5d | 2026-04-13 | 2026-04-17 | 39, 48, 51 | 65d |  |
| 53 | 3 | **BUILDING B** | 143d | 2025-10-30 | 2026-05-22 |  | -44d |  |
| 54 | 3.1 | **CONCRETE WORK** | 35d | 2025-10-30 | 2025-12-19 |  | -44d |  |
| 55 |  | BLDG B Foundation | 15d | 2025-10-30 | 2025-11-19 | 41 | -16d |  |
| 56 |  | BLDG B Dampproofing | 2d | 2025-11-20 | 2025-11-21 | 41, 55 | 154d |  |
| 57 |  | BLDG B Slab On Grade | 20d | 2025-11-20 | 2025-12-19 | 55, 96FF, 88FF, 45 | -16d |  |
| 58 |  | BLDG B Slab On Grade Complete | 0d | 2025-12-19 | 2025-12-19 | 57 | 148d |  |
| 59 | 3.2 | **STEEL AND METALS** | 96d | 2025-12-01 | 2026-04-15 |  | -44d |  |
| 60 |  | Frame & Panel Load Bearing & Shear Walls (JANUS) | 25d | 2025-12-01 | 2026-01-06 | 57SS+5d, 13, 29 | -3d |  |
| 61 |  | Frame & Panel Partition & Corridor Walls (JANUS) | 20d | 2026-03-19 | 2026-04-15 | 60, 119 | -16d |  |
| 62 |  | Canopy Install | 8d | 2026-01-07 | 2026-01-16 | 60 | -3d |  |
| 63 | 3.3 | **WOOD & FRP** | 5d | 2026-03-16 | 2026-03-20 |  | 86d |  |
| 64 |  | Misc Finish Carpentry | 5d | 2026-03-16 | 2026-03-20 | 76 | 85d |  |
| 65 | 3.4 | **ROOF & SIDING** | 45d | 2026-01-19 | 2026-03-20 |  | -23d |  |
| 66 |  | Exterior Sheathing, Weather Barrier & Rigid Insulation | 10d | 2026-01-19 | 2026-01-30 | 60, 62 | -3d |  |
| 67 |  | CMU Veneer | 15d | 2026-01-19 | 2026-02-06 | 66SS | -3d |  |
| 68 |  | Exterior Metal Panels (JANUS) | 10d | 2026-01-19 | 2026-01-30 | 67SS | -3d |  |
| 69 |  | Install Roof & Roof Insulation (JANUS) | 10d | 2026-02-02 | 2026-02-13 | 68 | -3d |  |
| 70 |  | BLDG B Roofing Complete | 0d | 2026-02-13 | 2026-02-13 | 69 | 110d |  |

| ID | WBS | Task | Duration | Start | Finish | Predecessors | Total float |
| --- | --- | --- | --- | --- | --- | --- | --- |
| 71 |  | Fireproofing | 5d | 2026-03-16 | 2026-03-20 | 76 | 85d |
| 72 | 3.5 | **DOORS & WINDOWS** | 20d | 2026-04-16 | 2026-05-13 |  | -44d |
| 73 |  | F&I Storage Unit Doors (JANUS) | 20d | 2026-04-16 | 2026-05-13 | 68, 119, 61 | -16d |
| 74 |  | F&I HM Doors and Hardware (JANUS) | 15d | 2026-04-16 | 2026-05-06 | 73SS, 76 | -11d |
| 75 | 3.6 | **FINISHES** | 40d | 2026-02-16 | 2026-04-10 |  | 2d |
| 76 |  | Install Gypsum Board | 20d | 2026-02-16 | 2026-03-13 | 69, 60 | 22d |
| 77 |  | Bathroom Tile | 5d | 2026-03-16 | 2026-03-20 | 76 | 22d |
| 78 |  | Flooring | 5d | 2026-03-23 | 2026-03-27 | 76, 77 | 24d |
| 79 |  | Painting | 10d | 2026-03-30 | 2026-04-10 | 78 | 24d |
| 80 | 3.7 | **SPECIALTIES** | 23d | 2026-03-16 | 2026-04-15 |  | 4d |
| 81 |  | Install Misc Equipment & Lockers | 20d | 2026-03-16 | 2026-04-10 | 76 | 27d |
| 82 |  | Bathroom Accessories | 2d | 2026-03-23 | 2026-03-24 | 77 | 40d |
| 83 |  | Building Interior Signage | 3d | 2026-04-13 | 2026-04-15 | 79SS+10d | 24d |
| 84 | 3.8 | **FIRE SPRINKLERS** | 30d | 2026-02-16 | 2026-03-27 |  | 17d |
| 85 |  | Fire Sprinkler System Rough In | 15d | 2026-02-16 | 2026-03-06 | 69 | 37d |
| 86 |  | Fire Sprinkler System Trim Out | 15d | 2026-03-09 | 2026-03-27 | 85 | 37d |
| 87 | 3.9 | **PLUMBING** | 113d | 2025-11-06 | 2026-04-17 |  | -19d |
| 88 |  | Plumbing Rough-in Underground | 5d | 2025-11-06 | 2025-11-12 | 55SS+5d | -19d |
| 89 |  | Gas, Water, Sewer Lines | 15d | 2026-02-16 | 2026-03-06 | 69 | 32d |
| 90 |  | Bathroom Fixtures | 10d | 2026-03-23 | 2026-04-03 | 76, 77, 89 | 22d |
| 91 |  | Other Plumbing Fixtures | 10d | 2026-04-06 | 2026-04-17 | 90 | 22d |
| 92 | 3.10 | **HVAC** | 30d | 2026-02-16 | 2026-03-27 |  | 2d |
| 93 |  | HVAC Installation | 25d | 2026-02-16 | 2026-03-20 | 69 | 22d |
| 94 |  | HVAC Commisioning | 5d | 2026-03-23 | 2026-03-27 | 93 | 37d |
| 95 | 3.11 | **ELECTRICAL** | 138d | 2025-11-06 | 2026-05-22 |  | -19d |
| 96 |  | Building Rough-in Underground | 5d | 2025-11-06 | 2025-11-12 | 55SS+5d | -19d |
| 97 |  | Elect Rough-In | 25d | 2026-02-16 | 2026-03-20 | 69 | -3d |
| 98 |  | New Service Equipment Install, Wire & Inspect | 10d | 2026-04-06 | 2026-04-17 | 42, 15 | 65d |
| 99 |  | Install and Wire Panels | 15d | 2026-03-16 | 2026-04-03 | 76 | 27d |
| 100 |  | Permanent Power On | 0d | 2026-04-17 | 2026-04-17 | 98, 99, 15 | 65d |
| 101 |  | Electric Lights, Devices and Trim | 55d | 2026-03-02 | 2026-05-15 | 97SS+10d | -3d |
| 102 |  | Fire Alarm System | 15d | 2026-03-23 | 2026-04-10 | 93, 17, 76 | 22d |
| 103 |  | Electrical Commissioning | 5d | 2026-05-18 | 2026-05-22 | 96, 97, 99, 101, 102 | -3d |
| 104 | 4 | **BUILDING A** | 141d | 2025-11-20 | 2026-06-11 |  | -44d |
| 105 | 4.1 | **CONCRETE WORK** | 46d | 2025-11-20 | 2026-01-28 |  | -35d |
| 106 |  | BLDG A Foundation | 10d | 2025-11-20 | 2025-12-05 | 40 | -7d |
| 107 |  | BLDG A Dampproofing | 1d | 2025-12-08 | 2025-12-08 | 106, 40 | -7d |
| 108 |  | BLDG A Slab On Grade | 15d | 2026-01-08 | 2026-01-28 | 106, 147FF, 139FF, 44SS+1d | -16d |
| 109 |  | BLDG A Slab On Grade Complete | 0d | 2026-01-28 | 2026-01-28 | 108 | 122d |
| 110 | 4.2 | **STEEL AND METALS** | 90d | 2026-01-29 | 2026-06-04 |  | -44d |
| 111 |  | Frame & Panel Load Bearing & Shear Walls (JANUS) | 25d | 2026-01-29 | 2026-03-04 | 108, 14 | -16d |
| 112 |  | Frame & Panel Partition & Corridor Walls (JANUS) | 15d | 2026-05-14 | 2026-06-04 | 111, 73 | -16d |
| 113 |  | Canopy Install | 8d | 2026-03-05 | 2026-03-16 | 111 | 89d |
| 114 | 4.3 | **WOOD & FRP** | 5d | 2026-04-23 | 2026-04-29 |  | -14d |
| 115 |  | Misc Finish Carpentry | 5d | 2026-04-23 | 2026-04-29 | 127 | -14d |
| 116 | 4.4 | **ROOF & SIDING** | 40d | 2026-03-05 | 2026-04-29 |  | -44d |
| 117 |  | Exterior Sheathing, Weather Barrier & Rigid Insulation | 10d | 2026-03-05 | 2026-03-18 | 111 | -16d |
| 118 |  | CMU Veneer | 15d | 2026-03-05 | 2026-03-25 | 117SS | -16d |
| 119 |  | Exterior Metal Panels (JANUS) | 10d | 2026-03-05 | 2026-03-18 | 118SS | -16d |
| 120 |  | Install Roof & Roof Insulation (JANUS) | 5d | 2026-03-19 | 2026-03-25 | 119 | -8d |
| 121 |  | BLDG A Roofing Complete | 0d | 2026-03-25 | 2026-03-25 | 120 | 82d |
| 122 |  | Fireproofing | 5d | 2026-04-23 | 2026-04-29 | 127 | -14d |
| 123 | 4.5 | **DOORS & WINDOWS** | 5d | 2026-06-05 | 2026-06-11 |  | -44d |
| 124 |  | F&I Storage Unit Doors (JANUS) | 5d | 2026-06-05 | 2026-06-11 | 112 | -16d |
| 125 |  | F&I HM Doors and Hardware (JANUS) | 5d | 2026-06-05 | 2026-06-11 | 124SS, 127 | -16d |
| 126 | 4.6 | **FINISHES** | 40d | 2026-03-26 | 2026-05-20 |  | -34d |
| 127 |  | Install Gypsum Board | 20d | 2026-03-26 | 2026-04-22 | 111, 120 | -6d |
| 128 |  | Bathroom Tile | 5d | 2026-04-23 | 2026-04-29 | 127 | -6d |
| 129 |  | Flooring | 5d | 2026-04-30 | 2026-05-06 | 127, 128 | -4d |
| 130 |  | Painting | 10d | 2026-05-07 | 2026-05-20 | 129 | -4d |
| 131 | 4.7 | **SPECIALTIES** | 23d | 2026-04-23 | 2026-05-26 |  | -32d |
| 132 |  | Install Misc Equipment & Lockers | 20d | 2026-04-23 | 2026-05-20 | 127 | -1d |
| 133 |  | Bathroom Accessories | 2d | 2026-04-30 | 2026-05-01 | 128 | -16d |
| 134 |  | Building Interior Signage | 3d | 2026-05-21 | 2026-05-26 | 130SS+10d | -4d |
| 135 | 4.8 | **FIRE SPRINKLERS** | 30d | 2026-03-26 | 2026-05-06 |  | -19d |
| 136 |  | Fire Sprinkler System Rough In | 15d | 2026-03-26 | 2026-04-15 | 120 | -19d |
| 137 |  | Fire Sprinkler System Trim Out | 15d | 2026-04-16 | 2026-05-06 | 136 | -19d |
| 138 | 4.9 | **PLUMBING** | 126d | 2025-12-01 | 2026-05-28 |  | -34d |
| 139 |  | Plumbing Rough-in Underground | 5d | 2025-12-01 | 2025-12-05 | 106SS+5d | -8d |
| 140 |  | Gas, Water, Sewer Lines | 15d | 2026-03-26 | 2026-04-15 | 120 | -24d |

| ID | WBS | Task | Duration | Start | Finish | Predecessors | Total float |
| --- | --- | --- | --- | --- | --- | --- | --- |
| 141 |  | Bathroom Fixtures | 10d | 2026-04-30 | 2026-05-13 | 127, 128, 140 | -6d |
| 142 |  | Other Plumbing Fixtures | 10d | 2026-05-14 | 2026-05-28 | 141 | -6d |
| 143 | 4.10 | **HVAC** | 30d | 2026-03-26 | 2026-05-06 |  | -29d |
| 144 |  | HVAC Installation | 20d | 2026-03-26 | 2026-04-22 | 120 | -1d |
| 145 |  | HVAC Commisioning | 10d | 2026-04-23 | 2026-05-06 | 144 | -19d |
| 146 | 4.11 | **ELECTRICAL** | 133d | 2025-12-01 | 2026-06-08 |  | -41d |
| 147 |  | Building Rough-in Underground | 5d | 2025-12-01 | 2025-12-05 | 106SS+5d | -8d |
| 148 |  | Elect Rough-In | 25d | 2026-03-19 | 2026-04-22 | 119 | -13d |
| 149 |  | New Service Equipment Install, Wire & Inspect | 10d | 2026-04-06 | 2026-04-17 | 42, 15 | -6d |
| 150 |  | Install and Wire Panels | 15d | 2026-04-23 | 2026-05-13 | 127 | -1d |
| 151 |  | Permanent Power On | 0d | 2026-05-13 | 2026-05-13 | 149, 150, 15 | -24d |
| 152 |  | Electric Lights, Devices and Trim | 42d | 2026-04-02 | 2026-06-01 | 148SS+10d, 120 | -13d |
| 153 |  | Fire Alarm System | 15d | 2026-04-23 | 2026-05-13 | 127, 144, 17 | -1d |
| 154 |  | Electrical Commissioning | 5d | 2026-06-02 | 2026-06-08 | 147, 148, 150, 152, 153 | -13d |

## Version 2 (data date 2026-01-08, saved 2026-02-11, file Meridian - 2026.01.08-BL01.mpp)

Note of the change: Report mode: gpt-5.4, narrative engine, floor cascade, mitigation detector, prior verify PDFs, section redraft UI, system prompt upgrades

Last finish 2026-07-22 → 2026-08-18 (+27d). Complete tasks 0 → 19.

Added:

| ID | Task | Duration | Start | Finish | Predecessors | Constraint | Resources |
| --- | --- | --- | --- | --- | --- | --- | --- |
| 31 | Re-Mobilization | 4d | 2025-10-23 A | 2025-10-28 A | 4 |  |  |
| 33 | FRAGNET - CITY PRE-CON & 7 DAY NOTICE | 7d | 2025-10-29 A | 2025-11-06 A |  | start no earlier than 2025-10-29 |  |
| 36 | Storm Drain Lines South | 6d | 2025-12-22 A | 2025-12-30 A |  | finish no earlier than 2026-01-09 | ATD |
| 37 | DELAY - GIRR License Agreement Approval to Proceed | 6d | 2025-12-05 | 2025-12-12 | 34 |  |  |
| 38 | DELAY - RFI #14 - GIRR Separation | 4d | 2025-12-15 | 2025-12-18 | 37 |  |  |
| 41 | Site - Water Line & Fire Lines/Hydrants and Devices Remaining | 12d | 2026-01-08 | 2026-01-23 | 34, 39SS+5d |  | ATD |
| 45 | DELAY - BUILDING B FOOTING OVER-EX | 4d | 2025-10-31 A | 2025-11-05 A |  | start no earlier than 2025-10-31 | ATD |
| 48 | BLDG A - Exterior Backfill Foundations | 3d | 2026-02-23 | 2026-02-25 | 115 |  | ATD |
| 52 | FRAGNET - Bldg B Soft Spot Repair | 8d | 2025-12-04 A | 2025-12-15 A |  | start no earlier than 2025-12-04 |  |
| 60 | WEATHER DELAY - Rain and High Winds | 2d | 2025-12-17 A | 2025-12-18 A |  | start no earlier than 2025-12-17 |  |
| 61 | WEATHER DELAY - Rain | 1d | 2025-12-22 A | 2025-12-22 A |  | start no earlier than 2025-12-22 |  |
| 115 | BLDG A Exterior Footing Insulation | 3d | 2026-02-18 | 2026-02-20 | 114 |  |  |

Removed: 31 Pothole/Verify Existing SS and Water; 37 Site - Fire Line and Devices; 62 Canopy Install; 71 Fireproofing; 122 Fireproofing

Changed:

| ID | Task | Start | Finish | Duration | Complete | Total float | Predecessors | Other |
| --- | --- | --- | --- | --- | --- | --- | --- | --- |
| 1 | **GENERAL REQUIREMENTS AND CONDITIONS** | 2025-09-08 A | 2026-07-22 → 2026-08-18 (+27d) | 222d → 241d |  | -44d → 0d |  |  |
| 16 | Fire Sprinkler Design and Approval | 2025-10-14 A | 2025-12-10 → 2026-01-02 (+23d) | 40d → 55d |  | 155d → 74d |  |  |
| 19 | TWENTY WORKING DAYS OF WEATHER DELAY | 2026-06-24 → 2026-07-27 (+33d) | 2026-07-22 → 2026-08-18 (+27d) | 20d → 17d |  | -44d → -14d |  |  |
| 20 | Substantial Completion | 2026-07-22 → 2026-08-18 (+27d) | 2026-07-22 → 2026-08-18 (+27d) |  |  | -44d → -14d |  | constraint none → start no earlier than 2026-07-29 |
| 21 | Clean Up and Project Close Out | 2026-06-12 → 2026-07-15 (+33d) | 2026-06-18 → 2026-07-21 (+33d) |  |  | -44d → -14d |  |  |
| 22 | Demobilize | 2026-06-19 → 2026-07-22 (+33d) | 2026-06-23 → 2026-07-24 (+31d) |  |  | -44d → -14d |  |  |
| 23 | **SITEWORK** | 2025-09-09 → 2025-09-08 A (-1d) | 2026-04-17 → 2026-06-15 (+59d) | 155d → 196d | 0% → 16% | -15d → 45d |  |  |
| 24 | Mobilization | 2025-09-09 → 2025-09-08 A (-1d) | 2025-09-15 A |  | 0% → 100% | -15d → none |  |  |
| 25 | Construction Staking & Surveying | 2025-09-09 → 2025-09-08 A (-1d) |  |  |  | -15d → 139d |  |  |
| 26 | Inspections and Testing | 2025-09-23 → 2025-09-12 A (-11d) |  |  |  | 67d → 99d |  |  |
| 27 | Erosion Control & SWPP | 2025-09-16 A | 2025-09-22 A |  | 0% → 100% | 67d → none |  |  |
| 28 | Maintain Erosion Control | 2025-09-23 A |  |  |  | 67d → 99d |  |  |
| 29 | Structure Demo (Partial Building & RV Storage ) | 2025-09-09 → 2025-11-03 A (+55d) | 2025-09-15 → 2025-11-07 A (+53d) |  | 0% → 100% | 49d → none |  |  |
| 30 | Site Demolition (Trees,Sawcut, Asphalt, Base ) | 2025-09-16 → 2025-09-08 A (-8d) | 2025-09-22 → 2025-09-12 A (-10d) | 5d → 0d | 0% → 100% | -20d → none |  |  |
| 32 | Clear/Grub & Overlot Grading | 2025-09-16 → 2025-09-08 A (-8d) | 2025-09-22 → 2025-09-23 A (+1d) | 5d → 12d | 0% → 100% | -20d → none |  |  |
| 34 | Site - Sewer Lines and Devices/Ten Mile Tie-In | 2025-11-07 → 2025-11-14 A (+7d) | 2025-12-01 → 2025-12-04 A (+3d) | 15d → 13d | 0% → 100% | 65d → none | 32, 3, 4, 5, 40FS-6d, 6 → 32, 3, 4, 5, 40FS-6d, 6, 33 | was named Site - Sewer Lines and Devices; resources none → ATD |
| 35 | Storm Drain Lines and Devices | 2026-01-29 → 2026-03-26 (+56d) | 2026-02-18 → 2026-04-15 (+56d) |  |  | 27d → 19d | Pothole/Verify Existing SS and Water, 32, 34, 64, 66, 116 → 32, 34, 64, 66, 116 | resources none → ATD |
| 39 | Site - GIRR Piping & Devices | 2025-12-02 → 2025-12-31 (+29d) | 2025-12-15 → 2026-01-14 (+30d) |  |  | 77d → -14d | 34, 29 → 34, 29, 36, 37, 38 | was named Site - IRR Piping; resources none → ATD |
| 40 | Site - Water Line Ten Mile Tie-In | 2025-11-03 → 2025-11-08 A (+5d) | 2025-11-14 → 2025-11-11 A (-3d) | 10d → 2d | 0% → 100% | 65d → none | 5FS+2d, 6 → 5FS+2d, 6, 33 | was named Site - Water Line and Devices; resources none → ATD |
| 42 | Complete Utility Lines Tie-ins to Building A | 2026-02-19 → 2026-04-16 (+56d) | 2026-02-25 → 2026-04-22 (+56d) |  |  | 27d → 19d | 35, 95, 103, Site - Fire Line and Devices, 146, 154 → 35, 95, 103, 154, 41 |  |
| 43 | Gravel Road | 2026-02-26 → 2026-01-26 (-31d) | 2026-03-04 → 2026-01-30 (-33d) |  |  | 54d → 109d | 42 → 41 | resources none → ATD |
| 44 | BLDG A Foundation Excavation | 2025-11-13 → 2026-01-26 (+74d) | 2025-11-19 → 2026-01-30 (+72d) |  |  | -7d → -14d | 46, 64SS+10d, 4 → 46, 64SS+10d, 4, 31, 52, 41 | resources none → ATD |
| 46 | BLDG B Foundation Excavation | 2025-10-23 → 2025-10-29 A (+6d) | 2025-10-29 → 2025-11-05 A (+7d) | 5d → 6d | 0% → 100% | -16d → none | 32SS+3d, 4 → 32SS+3d, 4, 31, 45FF | resources none → ATD |
| 47 | BLDG A - Interoir Backfill Foundations | 2025-12-22 → 2026-02-16 (+56d) | 2026-01-06 → 2026-02-18 (+43d) | 10d → 3d |  | -16d → -14d | 66, 113, 114 → 66, 113, 114SS | was named BLDG A Backfill Foundations; resources none → ATD |
| 49 | BLDG B Backfill Foundations | 2025-12-22 → 2025-12-15 (-7d) | 2026-01-08 → 2026-01-09 (+1d) | 12d → 18d |  | 136d → 155d | 64, 65, 66 → 64, 65, 66SS | resources none → ATD |
| 50 | BLDG A SOG Prep | 2026-01-07 → 2026-02-26 (+50d) | 2026-01-09 → 2026-03-04 (+54d) | 3d → 5d |  | -16d → -14d | 47 → 47, 146, 154, 48 | resources none → ATD |
| 51 | BLDG B SOG Prep | 2025-10-30 → 2025-12-01 A (+32d) | 2025-11-04 → 2025-12-01 A (+27d) | 4d → 0d | 0% → 100% | -5d → none | 46 → 46, 103, 52FF | resources none → ATD |
| 53 | Site Flatwork and Curb & Gutter | 2026-02-26 → 2026-04-23 (+56d) | 2026-03-18 → 2026-05-13 (+56d) |  |  | 27d → 19d |  |  |
| 54 | Landscaping and Irrigation | 2026-03-23 → 2026-05-18 (+56d) | 2026-04-10 → 2026-06-08 (+59d) |  |  | 27d → 19d |  |  |
| 55 | Asphalt Paving | 2026-03-19 → 2026-05-14 (+56d) | 2026-03-20 → 2026-05-15 (+56d) |  |  | 27d → 19d |  |  |
| 56 | Pavement Markings, Signage & Bumpers | 2026-03-23 → 2026-05-18 (+56d) | 2026-03-24 → 2026-05-19 (+56d) |  |  | 40d → 32d |  |  |
| 57 | Site Fencing Chainlink | 2026-03-23 → 2026-05-18 (+56d) | 2026-03-27 → 2026-05-22 (+56d) |  |  | 65d → 45d |  |  |
| 58 | Site Fencing Vinyl | 2026-03-30 → 2026-05-26 (+57d) | 2026-04-10 → 2026-06-08 (+59d) |  |  | 65d → 45d |  |  |
| 59 | Site Fencing Rod Iron and Gates | 2026-04-13 → 2026-06-09 (+57d) | 2026-04-17 → 2026-06-15 (+59d) |  |  | 65d → 45d |  |  |
| 62 | **BUILDING B** | 2025-10-30 → 2025-11-06 A (+7d) | 2026-05-22 → 2026-06-19 (+28d) | 143d → 157d | 0% → 3% | -44d → 41d |  |  |
| 63 | **CONCRETE WORK** | 2025-10-30 → 2025-11-06 A (+7d) | 2025-12-19 → 2026-01-08 (+20d) | 35d → 42d | 0% → 47% | -44d → 156d |  |  |
| 64 | BLDG B Foundation | 2025-10-30 → 2025-11-06 A (+7d) | 2025-11-19 → 2025-11-25 A (+6d) | 15d → 14d | 0% → 100% | -16d → none | 46 → 46, 45 |  |
| 65 | BLDG B Dampproofing | 2025-11-20 → 2025-11-18 A (-2d) | 2025-11-21 → 2025-11-26 A (+5d) | 2d → 1d | 0% → 100% | 154d → none |  |  |
| 66 | BLDG B Slab On Grade | 2025-11-20 → 2025-12-15 A (+25d) | 2025-12-19 → 2026-01-08 (+20d) | 20d → 17d |  | -16d → 12d | 64, 103FF, 95FF, 51 → 64, 103, 95FF, 51, 52FF, 60FF, 61FF |  |
| 67 | BLDG B Slab On Grade Complete | 2025-12-19 → 2026-01-08 (+20d) | 2025-12-19 → 2026-01-08 (+20d) |  |  | 148d → 156d |  |  |
| 68 | **STEEL AND METALS** | 2025-12-01 → 2026-01-09 (+39d) | 2026-04-15 → 2026-04-30 (+15d) | 96d → 80d |  | -44d → 20d |  |  |
| 69 | Frame & Panel Load Bearing & Shear Walls (JANUS) | 2025-12-01 → 2026-01-09 (+39d) | 2026-01-06 → 2026-02-12 (+37d) |  |  | -3d → 20d | 66SS+5d, 13, 29 → 66, 13, 29 |  |
| 70 | Frame & Panel Partition & Corridor Walls (JANUS) | 2026-03-19 → 2026-04-03 (+15d) | 2026-04-15 → 2026-04-30 (+15d) |  |  | -16d → 25d | 69, 127 → 74, 77, 92, 104 |  |
| 71 | **WOOD & FRP** | 2026-03-16 → 2026-03-13 (-3d) | 2026-03-20 → 2026-03-19 (-1d) |  |  | 86d → 106d |  |  |
| 72 | Misc Finish Carpentry | 2026-03-16 → 2026-03-13 (-3d) | 2026-03-20 → 2026-03-19 (-1d) |  |  | 85d → 106d |  |  |
| 73 | **ROOF & SIDING** | 2026-01-19 → 2026-02-13 (+25d) | 2026-03-20 → 2026-03-26 (+6d) | 45d → 30d |  | -23d → 20d |  |  |
| 74 | Exterior Sheathing, Weather Barrier & Rigid Insulation | 2026-01-19 → 2026-02-27 (+39d) | 2026-01-30 → 2026-03-12 (+41d) |  |  | -3d → 40d | 69, Canopy Install → 69, 77 |  |
| 75 | CMU Veneer | 2026-01-19 → 2026-02-27 (+39d) | 2026-02-06 → 2026-03-19 (+41d) |  |  | -3d → 60d |  |  |
| 76 | Exterior Metal Panels (JANUS) | 2026-01-19 → 2026-03-13 (+53d) | 2026-01-30 → 2026-03-26 (+55d) |  |  | -3d → 50d | 75SS → 75SS, 74 |  |
| 77 | Install Roof & Roof Insulation (JANUS) | 2026-02-02 → 2026-02-13 (+11d) | 2026-02-13 → 2026-02-26 (+13d) |  |  | -3d → 20d | 76 → 69 |  |
| 78 | BLDG B Roofing Complete | 2026-02-13 → 2026-02-26 (+13d) | 2026-02-13 → 2026-02-26 (+13d) |  |  | 110d → 20d |  |  |
| 79 | **DOORS & WINDOWS** | 2026-04-16 → 2026-05-22 (+36d) | 2026-05-13 → 2026-06-19 (+37d) |  |  | -44d → 10d |  |  |
| 80 | F&I Storage Unit Doors (JANUS) | 2026-04-16 → 2026-05-22 (+36d) | 2026-05-13 → 2026-06-19 (+37d) |  |  | -16d → 10d |  |  |
| 81 | F&I HM Doors and Hardware (JANUS) | 2026-04-16 → 2026-05-22 (+36d) | 2026-05-06 → 2026-06-12 (+37d) |  |  | -11d → 15d |  |  |
| 82 | **FINISHES** | 2026-02-16 → 2026-02-27 (+11d) | 2026-04-10 → 2026-04-09 (-1d) | 40d → 30d |  | 2d → 55d |  |  |
| 83 | Install Gypsum Board | 2026-02-16 → 2026-02-27 (+11d) | 2026-03-13 → 2026-03-12 (-1d) | 20d → 10d |  | 22d → 55d | 77, 69 → 77, 69, 78 |  |
| 84 | Bathroom Tile | 2026-03-16 → 2026-03-13 (-3d) | 2026-03-20 → 2026-03-19 (-1d) |  |  | 22d → 55d |  |  |
| 85 | Flooring | 2026-03-23 → 2026-03-20 (-3d) | 2026-03-27 → 2026-03-26 (-1d) |  |  | 24d → 57d |  |  |
| 86 | Painting | 2026-03-30 → 2026-03-27 (-3d) | 2026-04-10 → 2026-04-09 (-1d) |  |  | 24d → 57d |  |  |
| 87 | **SPECIALTIES** | 2026-03-16 → 2026-03-13 (-3d) | 2026-04-15 → 2026-04-14 (-1d) |  |  | 4d → 57d |  |  |
| 88 | Install Misc Equipment & Lockers | 2026-03-16 → 2026-03-13 (-3d) | 2026-04-10 → 2026-04-09 (-1d) |  |  | 27d → 60d |  |  |
| 89 | Bathroom Accessories | 2026-03-23 → 2026-03-20 (-3d) | 2026-03-24 → 2026-03-23 (-1d) |  |  | 40d → 73d |  |  |
| 90 | Building Interior Signage | 2026-04-13 → 2026-04-10 (-3d) | 2026-04-15 → 2026-04-14 (-1d) |  |  | 24d → 57d |  |  |
| 91 | **FIRE SPRINKLERS** | 2026-02-16 → 2026-02-27 (+11d) | 2026-03-27 → 2026-04-09 (+13d) |  |  | 17d → 35d |  |  |
| 92 | Fire Sprinkler System Rough In | 2026-02-16 → 2026-02-27 (+11d) | 2026-03-06 → 2026-03-19 (+13d) |  |  | 37d → 35d | 77 → 77, 16 |  |
| 93 | Fire Sprinkler System Trim Out | 2026-03-09 → 2026-03-20 (+11d) | 2026-03-27 → 2026-04-09 (+13d) |  |  | 37d → 60d |  |  |
| 94 | **PLUMBING** | 2025-11-06 → 2025-11-13 (+7d) | 2026-04-17 → 2026-04-16 (-1d) | 113d → 107d |  | -19d → 44d |  |  |
| 95 | Plumbing Rough-in Underground | 2025-11-06 → 2025-11-13 (+7d) | 2025-11-12 → 2025-11-19 (+7d) |  |  | -19d → 44d |  |  |
| 96 | Gas, Water, Sewer Lines | 2026-02-16 → 2026-02-27 (+11d) | 2026-03-06 → 2026-03-19 (+13d) |  |  | 32d → 55d |  |  |
| 97 | Bathroom Fixtures | 2026-03-23 → 2026-03-20 (-3d) | 2026-04-03 → 2026-04-02 (-1d) |  |  | 22d → 55d |  |  |

| ID | Task | Start | Finish | Duration | Complete | Total float | Predecessors | Other |
| --- | --- | --- | --- | --- | --- | --- | --- | --- |
| 98 | Other Plumbing Fixtures | 2026-04-06 → 2026-04-03 (-3d) | 2026-04-17 → 2026-04-16 (-1d) |  |  | 22d → 55d |  |  |
| 99 | **HVAC** | 2026-02-16 → 2026-02-27 (+11d) | 2026-03-27 → 2026-04-09 (+13d) |  |  | 2d → 55d |  |  |
| 100 | HVAC Installation | 2026-02-16 → 2026-02-27 (+11d) | 2026-03-20 → 2026-04-02 (+13d) |  |  | 22d → 55d | 77 → 77, 78 |  |
| 101 | HVAC Commisioning | 2026-03-23 → 2026-04-03 (+11d) | 2026-03-27 → 2026-04-09 (+13d) |  |  | 37d → 60d |  |  |
| 102 | **ELECTRICAL** | 2025-11-06 → 2025-11-20 A (+14d) | 2026-05-22 → 2026-06-05 (+14d) | 138d → 137d |  | -19d → 51d |  |  |
| 103 | Building Rough-in Underground | 2025-11-06 → 2025-11-20 A (+14d) | 2025-11-12 → 2025-11-25 A (+13d) | 5d → 0d | 0% → 100% | -19d → none | 64SS+5d → 48 |  |
| 104 | Elect Rough-In | 2026-02-16 → 2026-02-27 (+11d) | 2026-03-20 → 2026-04-02 (+13d) |  |  | -3d → 20d | 77 → 77, 78 |  |
| 106 | Install and Wire Panels | 2026-03-16 → 2026-03-13 (-3d) | 2026-04-03 → 2026-04-02 (-1d) |  |  | 27d → 60d |  |  |
| 108 | Electric Lights, Devices and Trim | 2026-03-02 → 2026-03-13 (+11d) | 2026-05-15 → 2026-05-29 (+14d) |  |  | -3d → 20d |  |  |
| 109 | Fire Alarm System | 2026-03-23 → 2026-04-03 (+11d) | 2026-04-10 → 2026-04-09 (-1d) | 15d → 5d |  | 22d → 55d |  |  |
| 110 | Electrical Commissioning | 2026-05-18 → 2026-06-01 (+14d) | 2026-05-22 → 2026-06-05 (+14d) |  |  | -3d → 20d |  |  |
| 111 | **BUILDING A** | 2025-11-20 → 2026-02-02 (+74d) | 2026-06-11 → 2026-07-14 (+33d) | 141d → 115d |  | -44d → -14d |  |  |
| 112 | **CONCRETE WORK** | 2025-11-20 → 2026-02-02 (+74d) | 2026-01-28 → 2026-03-25 (+56d) | 46d → 38d |  | -35d → -14d |  |  |
| 113 | BLDG A Foundation | 2025-11-20 → 2026-02-02 (+74d) | 2025-12-05 → 2026-02-13 (+70d) |  |  | -7d → -14d | 44 → 44, 41, 39 | constraint none → start no earlier than 2026-01-05 |
| 114 | BLDG A Dampproofing | 2025-12-08 → 2026-02-16 (+70d) | 2025-12-08 → 2026-02-17 (+71d) | 1d → 2d |  | -7d → -14d |  |  |
| 116 | BLDG A Slab On Grade | 2026-01-08 → 2026-03-05 (+56d) | 2026-01-28 → 2026-03-25 (+56d) |  |  | -16d → -14d | 113, 154FF, 146FF, 50SS+1d → 113, 50 |  |
| 117 | BLDG A Slab On Grade Complete | 2026-01-28 → 2026-03-25 (+56d) | 2026-01-28 → 2026-03-25 (+56d) |  |  | 122d → 63d |  |  |
| 118 | **STEEL AND METALS** | 2026-01-29 → 2026-03-17 (+47d) | 2026-06-04 → 2026-05-15 (-20d) | 90d → 44d |  | -44d → -14d |  |  |
| 119 | Frame & Panel Load Bearing & Shear Walls (JANUS) | 2026-01-29 → 2026-03-17 (+47d) | 2026-03-04 → 2026-04-20 (+47d) |  |  | -16d → -14d | 116, 14 → 116SS+8d, 14 |  |
| 120 | Frame & Panel Partition & Corridor Walls (JANUS) | 2026-05-14 → 2026-04-21 (-23d) | 2026-06-04 → 2026-05-11 (-24d) |  |  | -16d → 25d | 119, 80 → 119 |  |
| 121 | Canopy Install | 2026-03-05 → 2026-05-06 (+62d) | 2026-03-16 → 2026-05-15 (+60d) |  |  | 89d → 26d | 119 → 119, 125 |  |
| 122 | **WOOD & FRP** | 2026-04-23 → 2026-05-20 (+27d) | 2026-04-29 → 2026-05-27 (+28d) |  |  | -14d → 19d |  |  |
| 123 | Misc Finish Carpentry | 2026-04-23 → 2026-05-20 (+27d) | 2026-04-29 → 2026-05-27 (+28d) |  |  | -14d → 19d |  |  |
| 124 | **ROOF & SIDING** | 2026-03-05 → 2026-04-21 (+47d) | 2026-04-29 → 2026-05-27 (+28d) | 40d → 26d |  | -44d → -14d |  |  |
| 125 | Exterior Sheathing, Weather Barrier & Rigid Insulation | 2026-03-05 → 2026-04-22 (+48d) | 2026-03-18 → 2026-05-05 (+48d) |  |  | -16d → 2d | 119 → 119, 128SS+1d |  |
| 126 | CMU Veneer | 2026-03-05 → 2026-05-06 (+62d) | 2026-03-25 → 2026-05-27 (+63d) |  |  | -16d → 10d | 125SS → 125 |  |
| 127 | Exterior Metal Panels (JANUS) | 2026-03-05 → 2026-05-08 (+64d) | 2026-03-18 → 2026-05-21 (+64d) |  |  | -16d → 10d | 126SS → 126SS+2d, 125 |  |
| 128 | Install Roof & Roof Insulation (JANUS) | 2026-03-19 → 2026-04-21 (+33d) | 2026-03-25 → 2026-04-27 (+33d) |  |  | -8d → -14d | 127 → 119 |  |
| 129 | BLDG A Roofing Complete | 2026-03-25 → 2026-04-27 (+33d) | 2026-03-25 → 2026-04-27 (+33d) |  |  | 82d → -7d |  |  |
| 130 | **DOORS & WINDOWS** | 2026-06-05 → 2026-05-12 (-24d) | 2026-06-11 → 2026-05-27 (-15d) | 5d → 11d |  | -44d → 19d |  |  |
| 131 | F&I Storage Unit Doors (JANUS) | 2026-06-05 → 2026-05-12 (-24d) | 2026-06-11 → 2026-05-18 (-24d) |  |  | -16d → 25d |  |  |
| 132 | F&I HM Doors and Hardware (JANUS) | 2026-06-05 → 2026-05-20 (-16d) | 2026-06-11 → 2026-05-27 (-15d) |  |  | -16d → 19d |  |  |
| 133 | **FINISHES** | 2026-03-26 → 2026-05-06 (+41d) | 2026-05-20 → 2026-06-17 (+28d) | 40d → 30d |  | -34d → 2d |  |  |
| 134 | Install Gypsum Board | 2026-03-26 → 2026-05-06 (+41d) | 2026-04-22 → 2026-05-19 (+27d) | 20d → 10d |  | -6d → 2d | 119, 128 → 119, 128, 125 |  |
| 135 | Painting | 2026-05-07 → 2026-05-20 (+13d) | 2026-05-20 → 2026-06-03 (+14d) |  |  | -4d → 2d | 136 → 134 |  |
| 136 | Flooring Polished Conc. | 2026-04-30 → 2026-06-04 (+35d) | 2026-05-06 → 2026-06-10 (+35d) |  |  | -4d → 2d | 134, 137 → 134, 135 | was named Flooring |
| 137 | FRP & Vinyl Base | 2026-04-23 → 2026-06-11 (+49d) | 2026-04-29 → 2026-06-17 (+49d) |  |  | -6d → 2d | 134 → 135, 136 | was named Bathroom Tile |
| 138 | **SPECIALTIES** | 2026-04-23 → 2026-05-20 (+27d) | 2026-05-26 → 2026-06-19 (+24d) | 23d → 22d |  | -32d → 2d |  |  |
| 139 | Install Misc Equipment & Lockers | 2026-04-23 → 2026-05-20 (+27d) | 2026-05-20 → 2026-06-17 (+28d) |  |  | -1d → 4d |  |  |
| 140 | Bathroom Accessories- Building A | 2026-04-30 → 2026-06-18 (+49d) | 2026-05-01 → 2026-06-19 (+49d) |  |  | -16d → 2d |  | was named Bathroom Accessories |
| 141 | Building Interior Signage | 2026-05-21 → 2026-06-04 (+14d) | 2026-05-26 → 2026-06-08 (+13d) |  |  | -4d → 11d |  |  |
| 142 | **FIRE SPRINKLERS** | 2026-03-26 → 2026-04-28 (+33d) | 2026-05-06 → 2026-06-09 (+34d) |  |  | -19d → 10d |  |  |
| 143 | Fire Sprinkler System Rough In | 2026-03-26 → 2026-04-28 (+33d) | 2026-04-15 → 2026-05-18 (+33d) |  |  | -19d → 10d |  |  |
| 144 | Fire Sprinkler System Trim Out | 2026-04-16 → 2026-05-19 (+33d) | 2026-05-06 → 2026-06-09 (+34d) |  |  | -19d → 10d |  |  |
| 145 | **PLUMBING** | 2025-12-01 → 2026-02-19 (+80d) | 2026-05-28 → 2026-06-17 (+20d) | 126d → 84d |  | -34d → -14d |  |  |
| 146 | Plumbing Rough-in Underground | 2025-12-01 → 2026-02-19 (+80d) | 2025-12-05 → 2026-02-25 (+82d) |  |  | -8d → -14d | 113SS+5d → 47 |  |
| 147 | Gas, Water, Sewer Lines | 2026-03-26 → 2026-04-28 (+33d) | 2026-04-15 → 2026-05-18 (+33d) |  |  | -24d → 5d |  |  |
| 148 | Bathroom Fixtures | 2026-04-30 → 2026-05-20 (+20d) | 2026-05-13 → 2026-06-03 (+21d) |  |  | -6d → 4d | 134, 137, 147 → 134, 147 |  |
| 149 | Other Plumbing Fixtures | 2026-05-14 → 2026-06-04 (+21d) | 2026-05-28 → 2026-06-17 (+20d) |  |  | -6d → 4d |  |  |
| 150 | **HVAC** | 2026-03-26 → 2026-04-28 (+33d) | 2026-05-06 → 2026-06-09 (+34d) |  |  | -29d → 10d |  |  |
| 151 | HVAC Installation | 2026-03-26 → 2026-04-28 (+33d) | 2026-04-22 → 2026-05-26 (+34d) |  |  | -1d → 10d | 128 → 128, 129 |  |
| 152 | HVAC Commisioning | 2026-04-23 → 2026-05-27 (+34d) | 2026-05-06 → 2026-06-09 (+34d) |  |  | -19d → 10d |  |  |
| 153 | **ELECTRICAL** | 2025-12-01 → 2026-02-19 (+80d) | 2026-06-08 → 2026-07-14 (+36d) | 133d → 102d |  | -41d → -14d |  |  |
| 154 | Building Rough-in Underground | 2025-12-01 → 2026-02-19 (+80d) | 2025-12-05 → 2026-02-25 (+82d) |  |  | -8d → -14d | 113SS+5d → 47 |  |
| 155 | Elect Rough-In | 2026-03-19 → 2026-04-23 (+35d) | 2026-04-22 → 2026-05-28 (+36d) |  |  | -13d → -14d | 127 → 128SS+2d |  |
| 156 | New Service Equipment Install, Wire & Inspect | 2026-04-06 → 2026-04-23 (+17d) | 2026-04-17 → 2026-05-06 (+19d) |  |  | -6d → 33d | 47, 15 → 47, 15, 155SS |  |
| 157 | Install and Wire Panels | 2026-04-23 → 2026-05-20 (+27d) | 2026-05-13 → 2026-06-10 (+28d) |  |  | -1d → 4d |  |  |
| 158 | Permanent Power On- Building A | 2026-05-13 → 2026-06-10 (+28d) | 2026-05-13 → 2026-06-10 (+28d) |  |  | -24d → 9d |  | was named Permanent Power On |
| 159 | Electric Lights, Devices and Trim | 2026-04-02 → 2026-05-07 (+35d) | 2026-06-01 → 2026-07-07 (+36d) |  |  | -13d → -14d | 155SS+10d, 128 → 155SS+10d, 128, 129 |  |
| 160 | Fire Alarm System | 2026-04-23 → 2026-05-27 (+34d) | 2026-05-13 → 2026-06-02 (+20d) | 15d → 5d |  | -1d → 10d |  |  |
| 161 | Electrical Commissioning | 2026-06-02 → 2026-07-08 (+36d) | 2026-06-08 → 2026-07-14 (+36d) |  |  | -13d → -14d |  |  |

## Version 3 (saved 2026-02-17, file Meridian - 2025.10.24-RBL01.xml)

Note of the change: Report mode: gpt-5.4, narrative engine, floor cascade, mitigation detector, prior verify PDFs, section redraft UI, system prompt upgrades

Last finish 2026-08-18 → 2026-07-22 (-27d). Complete tasks 19 → 0.

Added:

| ID | Task | Duration | Start | Finish | Predecessors | Constraint |
| --- | --- | --- | --- | --- | --- | --- |
| 31 | Pothole/Verify Existing SS and Water | 2d | 2025-10-13 | 2025-10-14 | 30SS, 25SS, 8SS+1d | start no earlier than 2025-10-13 |
| 37 | Site - Fire Line and Devices | 15d | 2025-12-04 | 2025-12-24 | 33FS+2d |  |
| 62 | Canopy Install | 8d | 2026-01-07 | 2026-01-16 | 60 |  |
| 71 | Fireproofing | 5d | 2026-03-16 | 2026-03-20 | 76 |  |
| 122 | Fireproofing | 5d | 2026-04-23 | 2026-04-29 | 127 |  |

Removed: 31 Re-Mobilization; 33 FRAGNET - CITY PRE-CON & 7 DAY NOTICE; 36 Storm Drain Lines South; 37 DELAY - GIRR License Agreement Approval to Proceed; 38 DELAY - RFI #14 - GIRR Separation; 41 Site - Water Line & Fire Lines/Hydrants and Devices Remaining; 45 DELAY - BUILDING B FOOTING OVER-EX; 48 BLDG A - Exterior Backfill Foundations; 52 FRAGNET - Bldg B Soft Spot Repair; 60 WEATHER DELAY - Rain and High Winds; 61 WEATHER DELAY - Rain; 115 BLDG A Exterior Footing Insulation

Changed:

| ID | Task | Start | Finish | Duration | Complete | Total float | Predecessors | Other |
| --- | --- | --- | --- | --- | --- | --- | --- | --- |
| 1 | **GENERAL REQUIREMENTS AND CONDITIONS** | 2025-09-08 A → 2025-09-08 | 2026-08-18 → 2026-07-22 (-27d) | 241d → 222d |  | 0d → -44d |  |  |
| 16 | Fire Sprinkler Design and Approval | 2025-10-14 A → 2025-10-14 | 2026-01-02 → 2025-12-10 (-23d) | 55d → 40d |  | 74d → 156d |  |  |
| 19 | TWENTY WORKING DAYS OF WEATHER DELAY | 2026-07-27 → 2026-06-24 (-33d) | 2026-08-18 → 2026-07-22 (-27d) | 17d → 20d |  | -14d → -44d |  |  |
| 20 | Substantial Completion | 2026-08-18 → 2026-07-22 (-27d) | 2026-08-18 → 2026-07-22 (-27d) |  |  | -14d → -44d |  | constraint start no earlier than 2026-07-29 → none |
| 21 | Clean Up and Project Close Out | 2026-07-15 → 2026-06-12 (-33d) | 2026-07-21 → 2026-06-18 (-33d) |  |  | -14d → -44d |  |  |
| 22 | Demobilize | 2026-07-22 → 2026-06-19 (-33d) | 2026-07-24 → 2026-06-23 (-31d) |  |  | -14d → -44d |  |  |
| 23 | **SITEWORK** | 2025-09-08 A → 2025-09-09 (+1d) | 2026-06-15 → 2026-04-17 (-59d) | 196d → 155d | 16% → 0% | 45d → -15d |  |  |
| 24 | Mobilization | 2025-09-08 A → 2025-09-09 (+1d) | 2025-09-15 A → 2025-09-15 |  | 100% → 0% | none → -15d |  |  |
| 25 | Construction Staking & Surveying | 2025-09-08 A → 2025-09-09 (+1d) |  |  |  | 139d → -15d |  |  |
| 26 | Inspections and Testing | 2025-09-12 A → 2025-09-23 (+11d) |  |  |  | 99d → 47d |  |  |
| 27 | Erosion Control & SWPP | 2025-09-16 A → 2025-09-16 | 2025-09-22 A → 2025-09-22 |  | 100% → 0% | none → 47d |  |  |
| 28 | Maintain Erosion Control | 2025-09-23 A → 2025-09-23 |  |  |  | 99d → 47d |  |  |
| 29 | Structure Demo (Partial Building & RV Storage ) | 2025-11-03 A → 2025-09-09 (-55d) | 2025-11-07 A → 2025-09-15 (-53d) |  | 100% → 0% | none → 29d |  |  |
| 30 | Site Demolition (Trees,Sawcut, Asphalt, Base ) | 2025-09-08 A → 2025-09-16 (+8d) | 2025-09-12 A → 2025-09-22 (+10d) | 0d → 5d | 100% → 0% | none → -20d |  |  |
| 32 | Clear/Grub & Overlot Grading | 2025-09-08 A → 2025-09-16 (+8d) | 2025-09-23 A → 2025-09-22 (-1d) | 12d → 5d | 100% → 0% | none → -20d |  |  |
| 33 | Site - Sewer Lines and Devices | 2025-11-14 A → 2025-11-07 (-7d) | 2025-12-04 A → 2025-12-01 (-3d) | 13d → 15d | 100% → 0% | none → 45d | 32, 3, 4, 5, 36FS-6d, 6, FRAGNET - CITY PRE-CON & 7 DAY NOTICE → 32, 3, 4, 5, 36FS-6d, 6 | was named Site - Sewer Lines and Devices/Ten Mile Tie-In; resources ATD → none |
| 34 | Storm Drain Lines and Devices | 2026-03-26 → 2026-01-29 (-56d) | 2026-04-15 → 2026-02-18 (-56d) |  |  | 19d → 7d | 32, 33, 55, 57, 108 → 31, 32, 33, 55, 57, 108 | resources ATD → none |
| 35 | Site - IRR Piping | 2025-12-31 → 2025-12-02 (-29d) | 2026-01-14 → 2025-12-15 (-30d) |  |  | -14d → 57d | 33, 29, Storm Drain Lines South, DELAY - GIRR License Agreement Approval to Proceed, DELAY - RFI #14 - GIRR Separation → 33, 29 | was named Site - GIRR Piping & Devices; resources ATD → none |
| 36 | Site - Water Line and Devices | 2025-11-08 A → 2025-11-03 (-5d) | 2025-11-11 A → 2025-11-14 (+3d) | 2d → 10d | 100% → 0% | none → 45d | 5FS+2d, 6, FRAGNET - CITY PRE-CON & 7 DAY NOTICE → 5FS+2d, 6 | was named Site - Water Line Ten Mile Tie-In; resources ATD → none |
| 38 | Complete Utility Lines Tie-ins to Building A | 2026-04-16 → 2026-02-19 (-56d) | 2026-04-22 → 2026-02-25 (-56d) |  |  | 19d → 7d | 34, 88, 96, 147, Site - Water Line & Fire Lines/Hydrants and Devices Remaining → 34, 88, 96, 37, 139, 147 |  |
| 39 | Gravel Road | 2026-01-26 → 2026-02-26 (+31d) | 2026-01-30 → 2026-03-04 (+33d) |  |  | 109d → 34d | Site - Water Line & Fire Lines/Hydrants and Devices Remaining → 38 | resources ATD → none |
| 40 | BLDG A Foundation Excavation | 2026-01-26 → 2025-11-13 (-74d) | 2026-01-30 → 2025-11-19 (-72d) |  |  | -14d → -35d | 41, 55SS+10d, 4, Re-Mobilization, FRAGNET - Bldg B Soft Spot Repair, Site - Water Line & Fire Lines/Hydrants and Devices Remaining → 41, 55SS+10d, 4 | resources ATD → none |
| 41 | BLDG B Foundation Excavation | 2025-10-29 A → 2025-10-23 (-6d) | 2025-11-05 A → 2025-10-29 (-7d) | 6d → 5d | 100% → 0% | none → -44d | 32SS+3d, 4, Re-Mobilization, DELAY - BUILDING B FOOTING OVER-EXFF → 32SS+3d, 4 | resources ATD → none |
| 42 | BLDG A Backfill Foundations | 2026-02-16 → 2025-12-22 (-56d) | 2026-02-18 → 2026-01-06 (-43d) | 3d → 10d |  | -14d → -44d | 57, 106, 107SS → 57, 106, 107 | was named BLDG A - Interoir Backfill Foundations; resources ATD → none |
| 43 | BLDG B Backfill Foundations | 2025-12-15 → 2025-12-22 (+7d) | 2026-01-09 → 2026-01-08 (-1d) | 18d → 12d |  | 155d → 137d | 55, 56, 57SS → 55, 56, 57 | resources ATD → none |
| 44 | BLDG A SOG Prep | 2026-02-26 → 2026-01-07 (-50d) | 2026-03-04 → 2026-01-09 (-54d) | 5d → 3d |  | -14d → -44d | 42, 139, 147, BLDG A - Exterior Backfill Foundations → 42 | resources ATD → none |
| 45 | BLDG B SOG Prep | 2025-12-01 A → 2025-10-30 (-32d) | 2025-12-01 A → 2025-11-04 (-27d) | 0d → 4d | 100% → 0% | none → -33d | 41, 96, FRAGNET - Bldg B Soft Spot RepairFF → 41 | resources ATD → none |
| 46 | Site Flatwork and Curb & Gutter | 2026-04-23 → 2026-02-26 (-56d) | 2026-05-13 → 2026-03-18 (-56d) |  |  | 19d → 7d |  |  |
| 47 | Landscaping and Irrigation | 2026-05-18 → 2026-03-23 (-56d) | 2026-06-08 → 2026-04-10 (-59d) |  |  | 19d → 7d |  |  |
| 48 | Asphalt Paving | 2026-05-14 → 2026-03-19 (-56d) | 2026-05-15 → 2026-03-20 (-56d) |  |  | 19d → 7d |  |  |
| 49 | Pavement Markings, Signage & Bumpers | 2026-05-18 → 2026-03-23 (-56d) | 2026-05-19 → 2026-03-24 (-56d) |  |  | 32d → 20d |  |  |
| 50 | Site Fencing Chainlink | 2026-05-18 → 2026-03-23 (-56d) | 2026-05-22 → 2026-03-27 (-56d) |  |  | 45d → 66d |  |  |
| 51 | Site Fencing Vinyl | 2026-05-26 → 2026-03-30 (-57d) | 2026-06-08 → 2026-04-10 (-59d) |  |  | 45d → 66d |  |  |
| 52 | Site Fencing Rod Iron and Gates | 2026-06-09 → 2026-04-13 (-57d) | 2026-06-15 → 2026-04-17 (-59d) |  |  | 45d → 66d |  |  |
| 53 | **BUILDING B** | 2025-11-06 A → 2025-10-30 (-7d) | 2026-06-19 → 2026-05-22 (-28d) | 157d → 143d | 3% → 0% | 41d → -44d |  |  |
| 54 | **CONCRETE WORK** | 2025-11-06 A → 2025-10-30 (-7d) | 2026-01-08 → 2025-12-19 (-20d) | 42d → 35d | 47% → 0% | 156d → -44d |  |  |
| 55 | BLDG B Foundation | 2025-11-06 A → 2025-10-30 (-7d) | 2025-11-25 A → 2025-11-19 (-6d) | 14d → 15d | 100% → 0% | none → -44d | 41, DELAY - BUILDING B FOOTING OVER-EX → 41 |  |
| 56 | BLDG B Dampproofing | 2025-11-18 A → 2025-11-20 (+2d) | 2025-11-26 A → 2025-11-21 (-5d) | 1d → 2d | 100% → 0% | none → 155d |  |  |
| 57 | BLDG B Slab On Grade | 2025-12-15 A → 2025-11-20 (-25d) | 2026-01-08 → 2025-12-19 (-20d) | 17d → 20d |  | 12d → -44d | 55, 96, 88FF, 45, FRAGNET - Bldg B Soft Spot RepairFF, WEATHER DELAY - Rain and High WindsFF, WEATHER DELAY - RainFF → 55, 96FF, 88FF, 45 |  |
| 58 | BLDG B Slab On Grade Complete | 2026-01-08 → 2025-12-19 (-20d) | 2026-01-08 → 2025-12-19 (-20d) |  |  | 156d → 149d |  |  |
| 59 | **STEEL AND METALS** | 2026-01-09 → 2025-12-01 (-39d) | 2026-04-30 → 2026-04-15 (-15d) | 80d → 96d |  | 20d → -44d |  |  |
| 60 | Frame & Panel Load Bearing & Shear Walls (JANUS) | 2026-01-09 → 2025-12-01 (-39d) | 2026-02-12 → 2026-01-06 (-37d) |  |  | 20d → -23d | 57, 13, 29 → 57SS+5d, 13, 29 |  |
| 61 | Frame & Panel Partition & Corridor Walls (JANUS) | 2026-04-03 → 2026-03-19 (-15d) | 2026-04-30 → 2026-04-15 (-15d) |  |  | 25d → -44d | 66, 69, 85, 97 → 60, 119 |  |
| 63 | **WOOD & FRP** | 2026-03-13 → 2026-03-16 (+3d) | 2026-03-19 → 2026-03-20 (+1d) |  |  | 106d → 86d |  |  |
| 64 | Misc Finish Carpentry | 2026-03-13 → 2026-03-16 (+3d) | 2026-03-19 → 2026-03-20 (+1d) |  |  | 106d → 86d |  |  |
| 65 | **ROOF & SIDING** | 2026-02-13 → 2026-01-19 (-25d) | 2026-03-26 → 2026-03-20 (-6d) | 30d → 45d |  | 20d → -23d |  |  |
| 66 | Exterior Sheathing, Weather Barrier & Rigid Insulation | 2026-02-27 → 2026-01-19 (-39d) | 2026-03-12 → 2026-01-30 (-41d) |  |  | 40d → -23d | 60, 69 → 60, 62 |  |
| 67 | CMU Veneer | 2026-02-27 → 2026-01-19 (-39d) | 2026-03-19 → 2026-02-06 (-41d) |  |  | 60d → -23d |  |  |
| 68 | Exterior Metal Panels (JANUS) | 2026-03-13 → 2026-01-19 (-53d) | 2026-03-26 → 2026-01-30 (-55d) |  |  | 50d → -23d | 67SS, 66 → 67SS |  |
| 69 | Install Roof & Roof Insulation (JANUS) | 2026-02-13 → 2026-02-02 (-11d) | 2026-02-26 → 2026-02-13 (-13d) |  |  | 20d → -23d | 60 → 68 |  |
| 70 | BLDG B Roofing Complete | 2026-02-26 → 2026-02-13 (-13d) | 2026-02-26 → 2026-02-13 (-13d) |  |  | 20d → 111d |  |  |
| 72 | **DOORS & WINDOWS** | 2026-05-22 → 2026-04-16 (-36d) | 2026-06-19 → 2026-05-13 (-37d) |  |  | 10d → -44d |  |  |
| 73 | F&I Storage Unit Doors (JANUS) | 2026-05-22 → 2026-04-16 (-36d) | 2026-06-19 → 2026-05-13 (-37d) |  |  | 10d → -44d |  |  |
| 74 | F&I HM Doors and Hardware (JANUS) | 2026-05-22 → 2026-04-16 (-36d) | 2026-06-12 → 2026-05-06 (-37d) |  |  | 15d → -11d |  |  |
| 75 | **FINISHES** | 2026-02-27 → 2026-02-16 (-11d) | 2026-04-09 → 2026-04-10 (+1d) | 30d → 40d |  | 55d → 2d |  |  |
| 76 | Install Gypsum Board | 2026-02-27 → 2026-02-16 (-11d) | 2026-03-12 → 2026-03-13 (+1d) | 10d → 20d |  | 55d → 2d | 69, 60, 70 → 69, 60 |  |
| 77 | Bathroom Tile | 2026-03-13 → 2026-03-16 (+3d) | 2026-03-19 → 2026-03-20 (+1d) |  |  | 55d → 2d |  |  |
| 78 | Flooring | 2026-03-20 → 2026-03-23 (+3d) | 2026-03-26 → 2026-03-27 (+1d) |  |  | 57d → 4d |  |  |
| 79 | Painting | 2026-03-27 → 2026-03-30 (+3d) | 2026-04-09 → 2026-04-10 (+1d) |  |  | 57d → 4d |  |  |
| 80 | **SPECIALTIES** | 2026-03-13 → 2026-03-16 (+3d) | 2026-04-14 → 2026-04-15 (+1d) |  |  | 57d → 4d |  |  |
| 81 | Install Misc Equipment & Lockers | 2026-03-13 → 2026-03-16 (+3d) | 2026-04-09 → 2026-04-10 (+1d) |  |  | 60d → 7d |  |  |
| 82 | Bathroom Accessories | 2026-03-20 → 2026-03-23 (+3d) | 2026-03-23 → 2026-03-24 (+1d) |  |  | 73d → 20d |  |  |
| 83 | Building Interior Signage | 2026-04-10 → 2026-04-13 (+3d) | 2026-04-14 → 2026-04-15 (+1d) |  |  | 57d → 4d |  |  |
| 84 | **FIRE SPRINKLERS** | 2026-02-27 → 2026-02-16 (-11d) | 2026-04-09 → 2026-03-27 (-13d) |  |  | 35d → 17d |  |  |
| 85 | Fire Sprinkler System Rough In | 2026-02-27 → 2026-02-16 (-11d) | 2026-03-19 → 2026-03-06 (-13d) |  |  | 35d → 17d | 69, 16 → 69 |  |
| 86 | Fire Sprinkler System Trim Out | 2026-03-20 → 2026-03-09 (-11d) | 2026-04-09 → 2026-03-27 (-13d) |  |  | 60d → 17d |  |  |
| 87 | **PLUMBING** | 2025-11-13 → 2025-11-06 (-7d) | 2026-04-16 → 2026-04-17 (+1d) | 107d → 113d |  | 44d → -19d |  |  |
| 88 | Plumbing Rough-in Underground | 2025-11-13 → 2025-11-06 (-7d) | 2025-11-19 → 2025-11-12 (-7d) |  |  | 44d → -19d |  |  |
| 89 | Gas, Water, Sewer Lines | 2026-02-27 → 2026-02-16 (-11d) | 2026-03-19 → 2026-03-06 (-13d) |  |  | 55d → 12d |  |  |
| 90 | Bathroom Fixtures | 2026-03-20 → 2026-03-23 (+3d) | 2026-04-02 → 2026-04-03 (+1d) |  |  | 55d → 2d |  |  |

| ID | Task | Start | Finish | Duration | Complete | Total float | Predecessors | Other |
| --- | --- | --- | --- | --- | --- | --- | --- | --- |
| 91 | Other Plumbing Fixtures | 2026-04-03 → 2026-04-06 (+3d) | 2026-04-16 → 2026-04-17 (+1d) |  |  | 55d → 2d |  |  |
| 92 | **HVAC** | 2026-02-27 → 2026-02-16 (-11d) | 2026-04-09 → 2026-03-27 (-13d) |  |  | 55d → 2d |  |  |
| 93 | HVAC Installation | 2026-02-27 → 2026-02-16 (-11d) | 2026-04-02 → 2026-03-20 (-13d) |  |  | 55d → 2d | 69, 70 → 69 |  |
| 94 | HVAC Commisioning | 2026-04-03 → 2026-03-23 (-11d) | 2026-04-09 → 2026-03-27 (-13d) |  |  | 60d → 17d |  |  |
| 95 | **ELECTRICAL** | 2025-11-20 A → 2025-11-06 (-14d) | 2026-06-05 → 2026-05-22 (-14d) | 137d → 138d |  | 51d → -19d |  |  |
| 96 | Building Rough-in Underground | 2025-11-20 A → 2025-11-06 (-14d) | 2025-11-25 A → 2025-11-12 (-13d) | 0d → 5d | 100% → 0% | none → -19d | BLDG A - Exterior Backfill Foundations → 55SS+5d |  |
| 97 | Elect Rough-In | 2026-02-27 → 2026-02-16 (-11d) | 2026-04-02 → 2026-03-20 (-13d) |  |  | 20d → -23d | 69, 70 → 69 |  |
| 99 | Install and Wire Panels | 2026-03-13 → 2026-03-16 (+3d) | 2026-04-02 → 2026-04-03 (+1d) |  |  | 60d → 7d |  |  |
| 101 | Electric Lights, Devices and Trim | 2026-03-13 → 2026-03-02 (-11d) | 2026-05-29 → 2026-05-15 (-14d) |  |  | 20d → -23d |  |  |
| 102 | Fire Alarm System | 2026-04-03 → 2026-03-23 (-11d) | 2026-04-09 → 2026-04-10 (+1d) | 5d → 15d |  | 55d → 2d |  |  |
| 103 | Electrical Commissioning | 2026-06-01 → 2026-05-18 (-14d) | 2026-06-05 → 2026-05-22 (-14d) |  |  | 20d → -23d |  |  |
| 104 | **BUILDING A** | 2026-02-02 → 2025-11-20 (-74d) | 2026-07-14 → 2026-06-11 (-33d) | 115d → 141d |  | -14d → -44d |  |  |
| 105 | **CONCRETE WORK** | 2026-02-02 → 2025-11-20 (-74d) | 2026-03-25 → 2026-01-28 (-56d) | 38d → 46d |  | -14d → -35d |  |  |
| 106 | BLDG A Foundation | 2026-02-02 → 2025-11-20 (-74d) | 2026-02-13 → 2025-12-05 (-70d) |  |  | -14d → -35d | 40, Site - Water Line & Fire Lines/Hydrants and Devices Remaining, 35 → 40 | constraint start no earlier than 2026-01-05 → none |
| 107 | BLDG A Dampproofing | 2026-02-16 → 2025-12-08 (-70d) | 2026-02-17 → 2025-12-08 (-71d) | 2d → 1d |  | -14d → -35d |  |  |
| 108 | BLDG A Slab On Grade | 2026-03-05 → 2026-01-08 (-56d) | 2026-03-25 → 2026-01-28 (-56d) |  |  | -14d → -44d | 106, 44 → 106, 147FF, 139FF, 44SS+1d |  |
| 109 | BLDG A Slab On Grade Complete | 2026-03-25 → 2026-01-28 (-56d) | 2026-03-25 → 2026-01-28 (-56d) |  |  | 63d → 51d |  |  |
| 110 | **STEEL AND METALS** | 2026-03-17 → 2026-01-29 (-47d) | 2026-05-15 → 2026-06-04 (+20d) | 44d → 90d |  | -14d → -44d |  |  |
| 111 | Frame & Panel Load Bearing & Shear Walls (JANUS) | 2026-03-17 → 2026-01-29 (-47d) | 2026-04-20 → 2026-03-04 (-47d) |  |  | -14d → -44d | 108SS+8d, 14 → 108, 14 |  |
| 112 | Frame & Panel Partition & Corridor Walls (JANUS) | 2026-04-21 → 2026-05-14 (+23d) | 2026-05-11 → 2026-06-04 (+24d) |  |  | 25d → -44d | 111 → 111, 73 |  |
| 113 | Canopy Install | 2026-05-06 → 2026-03-05 (-62d) | 2026-05-15 → 2026-03-16 (-60d) |  |  | 26d → 18d | 111, 117 → 111 |  |
| 114 | **WOOD & FRP** | 2026-05-20 → 2026-04-23 (-27d) | 2026-05-27 → 2026-04-29 (-28d) |  |  | 19d → -14d |  |  |
| 115 | Misc Finish Carpentry | 2026-05-20 → 2026-04-23 (-27d) | 2026-05-27 → 2026-04-29 (-28d) |  |  | 19d → -14d |  |  |
| 116 | **ROOF & SIDING** | 2026-04-21 → 2026-03-05 (-47d) | 2026-05-27 → 2026-04-29 (-28d) | 26d → 40d |  | -14d → -44d |  |  |
| 117 | Exterior Sheathing, Weather Barrier & Rigid Insulation - Building A | 2026-04-22 → 2026-03-05 (-48d) | 2026-05-05 → 2026-03-18 (-48d) |  |  | 2d → -44d | 111, 120SS+1d → 111 | was named Exterior Sheathing, Weather Barrier & Rigid Insulation |
| 118 | CMU Veneer | 2026-05-06 → 2026-03-05 (-62d) | 2026-05-27 → 2026-03-25 (-63d) |  |  | 10d → -44d | 117 → 117SS |  |
| 119 | Exterior Metal Panels (JANUS) | 2026-05-08 → 2026-03-05 (-64d) | 2026-05-21 → 2026-03-18 (-64d) |  |  | 10d → -44d | 118SS+2d, 117 → 118SS |  |
| 120 | Install Roof & Roof Insulation (JANUS) | 2026-04-21 → 2026-03-19 (-33d) | 2026-04-27 → 2026-03-25 (-33d) |  |  | -14d → -36d | 111 → 119 |  |
| 121 | BLDG A Roofing Complete | 2026-04-27 → 2026-03-25 (-33d) | 2026-04-27 → 2026-03-25 (-33d) |  |  | -7d → 11d |  |  |
| 123 | **DOORS & WINDOWS** | 2026-05-12 → 2026-06-05 (+24d) | 2026-05-27 → 2026-06-11 (+15d) | 11d → 5d |  | 19d → -44d |  |  |
| 124 | F&I Storage Unit Doors (JANUS) | 2026-05-12 → 2026-06-05 (+24d) | 2026-05-18 → 2026-06-11 (+24d) |  |  | 25d → -44d |  |  |
| 125 | F&I HM Doors and Hardware (JANUS) | 2026-05-20 → 2026-06-05 (+16d) | 2026-05-27 → 2026-06-11 (+15d) |  |  | 19d → -44d |  |  |
| 126 | **FINISHES** | 2026-05-06 → 2026-03-26 (-41d) | 2026-06-17 → 2026-05-20 (-28d) | 30d → 40d |  | 2d → -34d |  |  |
| 127 | Install Gypsum Board | 2026-05-06 → 2026-03-26 (-41d) | 2026-05-19 → 2026-04-22 (-27d) | 10d → 20d |  | 2d → -34d | 111, 120, 117 → 111, 120 |  |
| 128 | Bathroom Tile | 2026-06-11 → 2026-04-23 (-49d) | 2026-06-17 → 2026-04-29 (-49d) |  |  | 2d → -34d | 130, 129 → 127 | was named FRP & Vinyl Base |
| 129 | Flooring | 2026-06-04 → 2026-04-30 (-35d) | 2026-06-10 → 2026-05-06 (-35d) |  |  | 2d → -32d | 127, 130 → 127, 128 | was named Flooring Polished Conc. |
| 130 | Painting | 2026-05-20 → 2026-05-07 (-13d) | 2026-06-03 → 2026-05-20 (-14d) |  |  | 2d → -32d | 127 → 129 |  |
| 131 | **SPECIALTIES** | 2026-05-20 → 2026-04-23 (-27d) | 2026-06-19 → 2026-05-26 (-24d) | 22d → 23d |  | 2d → -32d |  |  |
| 132 | Install Misc Equipment & Lockers | 2026-05-20 → 2026-04-23 (-27d) | 2026-06-17 → 2026-05-20 (-28d) |  |  | 4d → -29d |  |  |
| 133 | Bathroom Accessories- Building A | 2026-06-18 → 2026-04-30 (-49d) | 2026-06-19 → 2026-05-01 (-49d) |  |  | 2d → -16d |  |  |
| 134 | Building Interior Signage | 2026-06-04 → 2026-05-21 (-14d) | 2026-06-08 → 2026-05-26 (-13d) |  |  | 11d → -32d |  |  |
| 135 | **FIRE SPRINKLERS** | 2026-04-28 → 2026-03-26 (-33d) | 2026-06-09 → 2026-05-06 (-34d) |  |  | 10d → -19d |  |  |
| 136 | Fire Sprinkler System Rough In | 2026-04-28 → 2026-03-26 (-33d) | 2026-05-18 → 2026-04-15 (-33d) |  |  | 10d → -19d |  |  |
| 137 | Fire Sprinkler System Trim Out | 2026-05-19 → 2026-04-16 (-33d) | 2026-06-09 → 2026-05-06 (-34d) |  |  | 10d → -19d |  |  |
| 138 | **PLUMBING** | 2026-02-19 → 2025-12-01 (-80d) | 2026-06-17 → 2026-05-28 (-20d) | 84d → 126d |  | -14d → -34d |  |  |
| 139 | Plumbing Rough-in Underground | 2026-02-19 → 2025-12-01 (-80d) | 2026-02-25 → 2025-12-05 (-82d) |  |  | -14d → -8d | 42 → 106SS+5d |  |
| 140 | Gas, Water, Sewer Lines | 2026-04-28 → 2026-03-26 (-33d) | 2026-05-18 → 2026-04-15 (-33d) |  |  | 5d → -24d |  |  |
| 141 | Bathroom Fixtures | 2026-05-20 → 2026-04-30 (-20d) | 2026-06-03 → 2026-05-13 (-21d) |  |  | 4d → -34d | 127, 140 → 127, 128, 140 |  |
| 142 | Other Plumbing Fixtures | 2026-06-04 → 2026-05-14 (-21d) | 2026-06-17 → 2026-05-28 (-20d) |  |  | 4d → -34d |  |  |
| 143 | **HVAC** | 2026-04-28 → 2026-03-26 (-33d) | 2026-06-09 → 2026-05-06 (-34d) |  |  | 10d → -29d |  |  |
| 144 | HVAC Installation | 2026-04-28 → 2026-03-26 (-33d) | 2026-05-26 → 2026-04-22 (-34d) |  |  | 10d → -29d | 120, 121 → 120 |  |
| 145 | HVAC Commisioning - Building A | 2026-05-27 → 2026-04-23 (-34d) | 2026-06-09 → 2026-05-06 (-34d) |  |  | 10d → -19d |  | was named HVAC Commisioning |
| 146 | **ELECTRICAL** | 2026-02-19 → 2025-12-01 (-80d) | 2026-07-14 → 2026-06-08 (-36d) | 102d → 133d |  | -14d → -41d |  |  |
| 147 | Building Rough-in Underground | 2026-02-19 → 2025-12-01 (-80d) | 2026-02-25 → 2025-12-05 (-82d) |  |  | -14d → -8d | 42 → 106SS+5d |  |
| 148 | Elect Rough-In | 2026-04-23 → 2026-03-19 (-35d) | 2026-05-28 → 2026-04-22 (-36d) |  |  | -14d → -41d | 120SS+2d → 119 |  |
| 149 | New Service Equipment Install, Wire & Inspect | 2026-04-23 → 2026-04-06 (-17d) | 2026-05-06 → 2026-04-17 (-19d) |  |  | 33d → -6d | 42, 15, 148SS → 42, 15 |  |
| 150 | Install and Wire Panels | 2026-05-20 → 2026-04-23 (-27d) | 2026-06-10 → 2026-05-13 (-28d) |  |  | 4d → -29d |  |  |
| 151 | Permanent Power On | 2026-06-10 → 2026-05-13 (-28d) | 2026-06-10 → 2026-05-13 (-28d) |  |  | 9d → -24d |  | was named Permanent Power On- Building A |
| 152 | Electric Lights, Devices and Trim | 2026-05-07 → 2026-04-02 (-35d) | 2026-07-07 → 2026-06-01 (-36d) |  |  | -14d → -41d | 148SS+10d, 120, 121 → 148SS+10d, 120 |  |
| 153 | Fire Alarm System | 2026-05-27 → 2026-04-23 (-34d) | 2026-06-02 → 2026-05-13 (-20d) | 5d → 15d |  | 10d → -29d |  |  |
| 154 | Electrical Commissioning | 2026-07-08 → 2026-06-02 (-36d) | 2026-07-14 → 2026-06-08 (-36d) |  |  | -14d → -41d |  |  |
