# Schedule 2017-02-17 baseline - Final

How a schedule from MS Project changed from version to version. A marks actual dates.

## Version 1 (data date 2026-01-30, saved 2026-02-03, file Meridian, ID - 2026.01.30 - UP01-AnthonysPC-ST.mpp)

Note of the change: Report mode: gpt-5.4, narrative engine, floor cascade, mitigation detector, prior verify PDFs, section redraft UI, system prompt upgrades

| ID | WBS | Task | Duration | Start | Finish | Predecessors | Complete | Total float | Constraint |
| --- | --- | --- | --- | --- | --- | --- | --- | --- | --- |
| 1 | 1 | **GENERAL REQUIREMENTS AND CONDITIONS** | 241d | 2025-09-08 A | 2026-08-18 |  | 48% | -14d |  |
| 2 |  | Notice to Proceed | 1d | 2025-09-08 A | 2025-09-08 A |  | 100% |  | start no earlier than 2025-09-08 |
| 3 |  | DELAY - PERMIT DELAY | 32d | 2025-09-09 A | 2025-10-22 A | 2 | 100% |  |  |
| 4 |  | Obtain Building Permit | 0d | 2025-10-22 A | 2025-10-22 A | 2, 3 | 100% |  | start no earlier than 2025-10-22 |
| 5 |  | ACHD ROW Permit | 0d | 2025-10-29 A | 2025-10-29 A | 4FS+5d | 100% |  |  |
| 6 |  | Obtain LDIR Approval to Proceed | 0d | 2025-10-27 A | 2025-10-27 A | 4FS+3d | 100% |  |  |
| 7 |  | Receive CAD Base Files from Public Storage | 10d | 2025-09-09 A | 2025-09-22 A | 2 | 100% |  | finish no earlier than 2024-08-31 |
| 8 |  | Procure Early Work Subcontractors | 5d | 2025-09-09 A | 2025-09-15 A | 2 | 100% |  |  |
| 9 |  | Procure Remaining Subcontractors | 20d | 2025-09-16 A | 2025-10-13 A | 8 | 100% |  |  |
| 10 |  | Submittals (SWPPP/NOI) | 10d | 2025-09-16 A | 2025-09-29 A | 8 | 100% |  |  |
| 11 |  | Submittals (SES /Switchgear) | 34d | 2025-09-16 A | 2025-10-31 A | 8 | 100% |  |  |
| 12 |  | Submittals (numerous) | 90d | 2025-10-14 A | 2026-02-20 | 9 | 39% | 80d |  |
| 13 |  | PUBLIC STORAGE Fab/Delv Framing & Panels BLDG B | 40d | 2025-10-23 A | 2025-12-19 | 2, 4 | 50% | 14d |  |
| 14 |  | PUBLIC STORAGE Fab/Delv Framing & Panels BLDG A | 40d | 2025-11-06 A | 2026-01-06 | 13SS+10d | 25% | 38d |  |
| 15 |  | Procure SES's/Switchgears (6 mos ~ 130 WD) | 70d | 2025-11-03 A | 2026-02-12 | 11 | 50% | 75d |  |
| 16 |  | Light Fixture Submittal Review and Approval | 10d | 2026-01-26 A | 2026-02-06 |  | 25% | 7d | start no earlier than 2026-01-26 |
| 17 |  | Light Fixture Package Alternate - Fab and Deliver | 10d | 2026-02-09 | 2026-02-20 | 16 |  | 37d |  |
| 18 |  | Light Fixture Package Spec'd - Fab and Deliver | 8w | 2026-02-09 | 2026-04-03 | 16 |  | 7d |  |
| 19 |  | Fire Sprinkler Design and Approval | 65d | 2025-10-14 A | 2026-01-16 | 2, 9 |  | 67d |  |
| 20 |  | Fire Alarm System Design and Approval | 40d | 2025-10-14 A | 2025-12-10 A | 2, 9 | 100% |  |  |
| 21 |  | ASPHALT BATCH PLANT SHUTDOWN | 70d | 2025-11-17 A | 2026-02-26 |  | 50% | 0d | must start on 2025-11-17 |
| 22 |  | TWENTY WORKING DAYS OF WEATHER DELAY | 14d | 2026-07-30 | 2026-08-18 | 98, 101, 123, 152, 155, 177, 32, 50, 68, 66, 67, 34, 93, 94, 102, 103, 110, 111, 147, 148, 156, 157, 151, 160, 165, 168, 164, 99, 106, 114, 31, 28 |  | -14d |  |
| 23 |  | WEATHER DELAY - Rain and High Winds - Imapct SOG B | 2d | 2025-12-17 A | 2025-12-18 A |  | 100% |  | start no earlier than 2025-12-17 |
| 24 |  | WEATHER DELAY - Rain - Impact SOG B | 1d | 2025-12-22 A | 2025-12-22 A |  | 100% |  | start no earlier than 2025-12-22 |
| 25 |  | WEATHER DELAY - Rain - Impact SOG B | 3d | 2026-01-08 | 2026-01-12 | 76FF, 75 |  | 0d |  |
| 26 |  | Substantial Completion | 0d | 2026-08-18 | 2026-08-18 | 98, 101, 123, 152, 155, 177, 32, 50, 68, 66, 67, 34, 93, 94, 102, 103, 110, 111, 147, 148, 156, 157, 151, 160, 165, 168, 164, 99, 106, 114, 31, 22, 71 |  | -14d | start no earlier than 2026-07-29 |
| 27 |  | Clean Up and Project Close Out | 5d | 2026-07-20 | 2026-07-24 | 124 |  | -14d |  |
| 28 |  | Demobilize | 3d | 2026-07-27 | 2026-07-29 | 27 |  | -14d |  |
| 29 | 2 | **SITEWORK** | 197d | 2025-09-08 A | 2026-06-16 |  | 49% | 30d |  |
| 30 |  | Mobilization | 5d | 2025-09-08 A | 2025-09-15 A | 2 | 100% |  | start no earlier than 2024-09-09 |
| 31 |  | Construction Staking & Surveying | 90d | 2025-09-08 A | 2026-01-16 | 30SS, 8SS | 75% | 87d |  |
| 32 |  | Inspections and Testing | 100d | 2025-09-12 A | 2026-02-13 | 33 |  | 85d |  |
| 33 |  | Erosion Control & SWPP | 5d | 2025-09-16 A | 2025-09-22 A | 8 | 100% |  |  |
| 34 |  | Maintain Erosion Control | 120d | 2025-09-23 A | 2026-03-13 | 33 | 50% | 82d |  |
| 35 |  | Structure Demo (Partial Building & RV Storage ) | 5d | 2025-11-03 A | 2025-11-07 A | 30SS | 100% |  | start no earlier than 2025-09-08 |
| 36 |  | Site Demolition (Trees,Sawcut, Asphalt, Base ) | 0d | 2025-09-08 A | 2025-09-12 A | 30SS, 8 | 100% |  | start no earlier than 2017-03-06 |
| 37 |  | Re-Mobilization | 4d | 2025-10-23 A | 2025-10-28 A | 4 | 100% |  |  |
| 38 |  | Clear/Grub & Overlot Grading | 12d | 2025-09-08 A | 2025-09-23 A | 36SS, 31SS | 100% |  |  |
| 39 |  | FRAGNET - CITY PRE-CON & 7 DAY NOTICE | 7d | 2025-10-29 A | 2025-11-06 A |  | 100% |  | start no earlier than 2025-10-29 |
| 40 |  | Site - Sewer Lines and Devices/Ten Mile Tie-In | 13d | 2025-11-14 A | 2025-12-04 A | 38, 3, 4, 5, 47FS-6d, 6, 39 | 100% |  |  |
| 41 |  | Storm Drain Lines and Devices - North & South of Buildings | 15d | 2026-03-24 | 2026-04-13 | 38, 40, 74, 76, 129 |  | 21d |  |
| 42 |  | Storm Drain Lines South | 6d | 2025-12-22 A | 2025-12-30 A |  | 100% |  | finish no earlier than 2026-01-09 |
| 43 |  | DELAY - GIRR License Agreement Approval to Proceed | 6d | 2025-12-05 A | 2025-12-12 A | 40 | 100% |  |  |
| 44 |  | DELAY - RFI #14 - GIRR Separation | 4d | 2025-12-15 A | 2025-12-18 A | 43 | 100% |  |  |
| 45 |  | Site - GIRR Piping & Devices | 16d | 2026-01-12 A | 2026-02-02 A | 40, 35, 42, 43, 44, 48SS+5d | 100% |  |  |
| 46 |  | TP DELAY - Site - GIRR Box Delivery and Placement | 6d | 2026-01-26 A | 2026-02-02 A | 45FF | 100% |  |  |
| 47 |  | Site - Water Line Ten Mile Tie-In | 2d | 2025-11-08 A | 2025-11-11 A | 5FS+2d, 6, 39 | 100% |  |  |
| 48 |  | Site - Water Line & Fire Lines/Hydrants and Devices Remaining | 18d | 2026-01-05 A | 2026-01-28 A | 40, 42 | 100% |  |  |
| 49 |  | Complete Utility Lines Tie-ins to Building A | 5d | 2026-04-14 | 2026-04-20 | 41, 108, 116, 170, 48 |  | 21d |  |
| 50 |  | Gravel Road Finish Grade Prep | 5d | 2026-04-14 | 2026-04-20 | 48, 41 |  | 39d |  |
| 51 |  | Gravel Road Rough Grade Prep | 8d | 2025-12-08 A | 2025-12-17 A | 55SS+2d | 100% |  |  |
| 52 |  | BLDG B Foundation Excavation | 6d | 2025-10-29 A | 2025-11-05 A | 38SS+3d, 4, 37, 53FF | 100% |  | start no earlier than 2025-09-15 |
| 53 |  | DELAY - BLDG B FOOTING OVER-EX | 4d | 2025-10-31 A | 2025-11-05 A |  | 100% |  | start no earlier than 2025-10-31 |
| 54 |  | BLDG B SOG Prep | 5d | 2025-11-26 A | 2025-12-04 A | 52, 116 | 100% |  |  |
| 55 |  | FRAGNET - Bldg B Soft Spot Repair | 8d | 2025-12-04 A | 2025-12-15 A |  | 100% |  | start no earlier than 2025-12-04 |
| 56 |  | BLDG B Backfill Foundations | 18d | 2025-12-15 A | 2026-01-09 A | 74, 75, 76SS, 25 | 100% |  |  |
| 57 |  | BLDG A Foundation Excavation | 5d | 2026-01-26 A | 2026-01-30 | 52, 74SS+10d, 4, 37, 55 |  | -14d |  |
| 58 |  | FRAGNET - BLDG A Footing Seepage Bed Over Ex. | 1d | 2026-02-02 | 2026-02-02 | 57 |  | -14d |  |
| 59 |  | BLDG A - Interoir Backfill Foundations | 5d | 2026-02-17 | 2026-02-23 | 76, 126, 57 |  | -14d |  |
| 60 |  | FRAGNET - BLDG A Seepage Bed Pad Over Ex. | 3d | 2026-02-24 | 2026-02-26 | 126, 59 |  | -12d |  |
| 61 |  | BLDG A - Exterior Backfill Foundations | 2d | 2026-02-24 | 2026-02-25 | 57, 127, 53, 128 |  | 59d |  |
| 62 |  | BLDG A SOG Prep | 5d | 2026-03-03 | 2026-03-09 | 59, 162, 170, 60 |  | -14d |  |
| 63 |  | Site - Base Course Asphalt Prep & Flatwork Prep | 8d | 2026-03-24 | 2026-04-02 | 130 |  | 33d |  |
| 64 |  | Site Flatwork and Curb and Gutter | 15d | 2026-04-21 | 2026-05-11 | 49, 47, 40, 41, 45, 61, 46, 31, 63 |  | 21d |  |
| 65 |  | Site - Fine Grade Asphalt Prep | 3d | 2026-05-12 | 2026-05-14 | 64 |  | 21d |  |
| 66 |  | Asphalt Paving | 2d | 2026-05-15 | 2026-05-18 | 64, 12, 21, 65, 50, 32 |  | 21d |  |
| 67 |  | Pavement Markings, Signage & Bumpers | 2d | 2026-05-19 | 2026-05-20 | 64, 66, 50 |  | 34d |  |
| 68 |  | Landscaping and Irrigation | 15d | 2026-05-19 | 2026-06-09 | 64, 12, 66 |  | 21d |  |
| 69 |  | Site Fencing Chainlink | 5d | 2026-05-19 | 2026-05-26 | 50, 66 |  | 30d |  |
| 70 |  | Site Fencing Vinyl | 10d | 2026-05-27 | 2026-06-09 | 50, 66, 69 |  | 30d |  |

| ID | WBS | Task | Duration | Start | Finish | Predecessors | Complete | Total float | Constraint |
| --- | --- | --- | --- | --- | --- | --- | --- | --- | --- |
| 71 |  | Site Fencing Rod Iron and Gates | 5d | 2026-06-10 | 2026-06-16 | 50, 66, 70 |  | 30d |  |
| 72 | 3 | **BUILDING B** | 163d | 2025-11-06 A | 2026-06-29 |  | 9% | 7d |  |
| 73 | 3.1 | **CONCRETE WORK** | 44d | 2025-11-06 A | 2026-01-12 A |  | 100% |  |  |
| 74 |  | BLDG B Foundation | 14d | 2025-11-06 A | 2025-11-25 A | 52, 53 | 100% |  |  |
| 75 |  | BLDG B Dampproofing | 1d | 2025-11-18 A | 2025-11-26 A | 52, 74 | 100% |  |  |
| 76 |  | BLDG B Slab On Grade | 19d | 2025-12-15 A | 2026-01-12 A | 74, 116, 108FF, 54, 55FF, 23FF, 24FF | 100% |  |  |
| 77 |  | BLDG B Slab On Grade Complete | 0d | 2026-01-12 A | 2026-01-12 A | 76, 25 | 100% |  |  |
| 78 | 3.2 | **STEEL AND METALS** | 81d | 2026-01-12 A | 2026-05-04 |  |  | 26d |  |
| 79 |  | Frame & Panel Load Bearing & Shear Walls (JANUS) | 25d | 2026-01-12 A | 2026-02-16 | 76, 13, 35, 25 |  | 21d |  |
| 80 |  | Frame & Panel Partition & Corridor Walls (JANUS) | 20d | 2026-04-07 | 2026-05-04 | 84, 90, 105, 117, 113 |  | 26d |  |
| 81 | 3.3 | **WOOD & FRP** | 5d | 2026-03-17 | 2026-03-23 |  |  | 63d |  |
| 82 |  | Misc Finish Carpentry | 5d | 2026-03-17 | 2026-03-23 | 96 |  | 63d |  |
| 83 | 3.4 | **ROOF & SIDING** | 35d | 2026-01-30 | 2026-03-19 |  |  | 33d |  |
| 84 |  | Exterior Sheathing | 10d | 2026-01-30 | 2026-02-12 | 79FS-12d |  | 60d |  |
| 85 |  | Weather Barrier | 10d | 2026-02-06 | 2026-02-19 | 84FS-5d |  | 60d |  |
| 86 |  | Rigid Insulation Behind CMU | 5d | 2026-02-20 | 2026-02-26 | 85 |  | 60d |  |
| 87 |  | Rigid Insulation Behind Metal Panels | 3d | 2026-02-27 | 2026-03-03 | 86 |  | 60d |  |
| 88 |  | CMU Veneer | 15d | 2026-02-27 | 2026-03-19 | 84, 85, 86 |  | 63d |  |
| 89 |  | Exterior Metal Panels (JANUS) | 10d | 2026-03-04 | 2026-03-17 | 88SS, 84, 87 |  | 60d |  |
| 90 |  | Install Roof & Roof Insulation (JANUS) | 10d | 2026-02-17 | 2026-03-02 | 79 |  | 21d |  |
| 91 |  | BLDG B Roofing Complete | 0d | 2026-03-02 | 2026-03-02 | 90 |  | 21d |  |
| 92 | 3.5 | **DOORS & WINDOWS** | 20d | 2026-05-27 | 2026-06-23 |  |  | 11d |  |
| 93 |  | F&I Storage Unit Doors (JANUS) | 20d | 2026-05-27 | 2026-06-23 | 89, 143, 80 |  | 11d |  |
| 94 |  | F&I HM Doors and Hardware (JANUS) | 15d | 2026-05-27 | 2026-06-16 | 93SS, 96 |  | 16d |  |
| 95 | 3.6 | **FINISHES** | 30d | 2026-03-03 | 2026-04-13 |  |  | 48d |  |
| 96 |  | Install Gypsum Board | 10d | 2026-03-03 | 2026-03-16 | 90, 79, 91 |  | 48d |  |
| 97 |  | Flooring Polished Concrete | 5d | 2026-03-17 | 2026-03-23 | 96 |  | 58d |  |
| 98 |  | FRP / Vinyl Base | 5d | 2026-03-24 | 2026-03-30 | 96, 97 |  | 58d |  |
| 99 |  | Painting | 10d | 2026-03-31 | 2026-04-13 | 98, 82 |  | 58d |  |
| 100 | 3.7 | **SPECIALTIES** | 23d | 2026-03-17 | 2026-04-16 |  |  | 58d |  |
| 101 |  | Install Misc Equipment & Lockers | 20d | 2026-03-17 | 2026-04-13 | 96 |  | 61d |  |
| 102 |  | Bathroom Accessories | 2d | 2026-03-24 | 2026-03-25 | 97 |  | 74d |  |
| 103 |  | Building Interior Signage | 3d | 2026-04-14 | 2026-04-16 | 99SS+10d |  | 58d |  |
| 104 | 3.8 | **FIRE SPRINKLERS** | 30d | 2026-03-03 | 2026-04-13 |  |  | 36d |  |
| 105 |  | Fire Sprinkler System Rough In | 15d | 2026-03-03 | 2026-03-23 | 90, 19 |  | 36d |  |
| 106 |  | Fire Sprinkler System Trim Out | 15d | 2026-03-24 | 2026-04-13 | 105 |  | 61d |  |
| 107 | 3.9 | **PLUMBING** | 87d | 2025-11-20 A | 2026-03-26 |  | 16% | 73d |  |
| 108 |  | Plumbing Rough-in Underground | 4d | 2025-11-20 A | 2025-11-25 A | 74SS+5d | 100% |  |  |
| 109 |  | Drains, Water, Sewer Lines | 15d | 2026-03-03 | 2026-03-23 | 90 |  | 73d |  |
| 110 |  | Bathroom Fixtures | 3d | 2026-03-24 | 2026-03-26 | 96, 97, 109 |  | 73d |  |
| 111 |  | Other Plumbing Fixtures | 3d | 2026-03-24 | 2026-03-26 | 110SS |  | 73d |  |
| 112 | 3.10 | **HVAC** | 30d | 2026-03-03 | 2026-04-13 |  |  | 26d |  |
| 113 |  | HVAC Installation | 25d | 2026-03-03 | 2026-04-06 | 90, 91 |  | 26d |  |
| 114 |  | HVAC Commisioning & T&B | 5d | 2026-04-07 | 2026-04-13 | 113, 120 |  | 61d |  |
| 115 | 3.11 | **ELECTRICAL** | 153d | 2025-11-20 A | 2026-06-29 |  |  | 7d |  |
| 116 |  | Building Rough-in Underground | 0d | 2025-11-20 A | 2025-11-25 A | 61 | 100% |  |  |
| 117 |  | Elect Rough-In | 25d | 2026-03-03 | 2026-04-06 | 90, 91 |  | 21d |  |
| 118 |  | New Service Equipment Install, Wire & Inspect | 10d | 2026-02-24 | 2026-03-09 | 59, 15 |  | 68d |  |
| 119 |  | Install and Wire Panels | 15d | 2026-03-17 | 2026-04-06 | 96 |  | 48d |  |
| 120 |  | Permanent Power On | 0d | 2026-04-06 | 2026-04-06 | 118, 119, 15 |  | 48d |  |
| 121 |  | Electric Lights, Devices and Trim | 55d | 2026-04-06 | 2026-06-22 | 117SS+10d, 18, 17 |  | 7d |  |
| 122 |  | Fire Alarm System | 3d | 2026-04-07 | 2026-04-09 | 113, 20, 96 |  | 58d |  |
| 123 |  | Electrical Commissioning | 5d | 2026-06-23 | 2026-06-29 | 116, 117, 119, 121, 122 |  | 7d |  |
| 124 | 4 | **BUILDING A** | 117d | 2026-02-03 | 2026-07-17 |  |  | -14d |  |
| 125 | 4.1 | **CONCRETE WORK** | 35d | 2026-02-03 | 2026-03-23 |  |  | -14d |  |
| 126 |  | BLDG A Foundation | 10d | 2026-02-03 | 2026-02-16 | 57, 48, 45, 58 |  | -14d | start no earlier than 2026-01-05 |
| 127 |  | BLDG A Dampproofing | 2d | 2026-02-17 | 2026-02-18 | 126, 57 |  | 59d |  |
| 128 |  | BLDG A Exterior Footing Insulation | 3d | 2026-02-19 | 2026-02-23 | 127 |  | 59d |  |
| 129 |  | BLDG A Slab On Grade | 10d | 2026-03-10 | 2026-03-23 | 126, 62, 60 |  | -14d |  |
| 130 |  | BLDG A Slab On Grade Complete | 0d | 2026-03-23 | 2026-03-23 | 129 |  | 33d |  |
| 131 | 4.2 | **STEEL AND METALS** | 67d | 2026-03-20 | 2026-06-23 |  |  | -14d |  |
| 132 |  | Frame & Panel Load Bearing & Shear Walls (JANUS) | 25d | 2026-03-20 | 2026-04-23 | 129SS+8d, 14 |  | -14d |  |
| 133 |  | Frame & Panel Partition & Corridor Walls (JANUS) | 15d | 2026-06-03 | 2026-06-23 | 132, 105, 171, 113 |  | -2d |  |
| 134 |  | Canopy Install | 8d | 2026-04-24 | 2026-05-05 | 132, 138 |  | 37d |  |
| 135 | 4.3 | **WOOD & FRP** | 5d | 2026-05-15 | 2026-05-21 |  |  | 25d |  |
| 136 |  | Misc Finish Carpentry | 5d | 2026-05-15 | 2026-05-21 | 150 |  | 25d |  |
| 137 | 4.4 | **ROOF & SIDING** | 35d | 2026-04-10 | 2026-05-29 |  |  | -4d |  |
| 138 |  | Exterior Sheathing | 10d | 2026-04-10 | 2026-04-23 | 132FS-10d |  | 11d |  |
| 139 |  | Weather Barrier | 10d | 2026-04-17 | 2026-04-30 | 138FS-5d |  | 11d |  |
| 140 |  | Rigid Insulation Behind CMU | 5d | 2026-05-01 | 2026-05-07 | 139 |  | 11d |  |

| ID | WBS | Task | Duration | Start | Finish | Predecessors | Total float |
| --- | --- | --- | --- | --- | --- | --- | --- |
| 141 |  | CMU Veneer | 15d | 2026-05-08 | 2026-05-29 | 138, 139, 140 | 11d |
| 142 |  | Rigid Insulation Behind Metal Panels | 3d | 2026-05-01 | 2026-05-05 | 139 | 15d |
| 143 |  | Exterior Metal Panels (JANUS) | 10d | 2026-05-12 | 2026-05-26 | 141SS+2d, 138, 142 | 11d |
| 144 |  | Install Roof & Roof Insulation (JANUS) | 5d | 2026-04-24 | 2026-04-30 | 132 | -14d |
| 145 |  | BLDG A Roofing Complete | 0d | 2026-04-30 | 2026-04-30 | 144 | -7d |
| 146 | 4.5 | **DOORS & WINDOWS** | 5d | 2026-06-24 | 2026-06-30 |  | -2d |
| 147 |  | F&I Storage Unit Doors (JANUS) | 5d | 2026-06-24 | 2026-06-30 | 133 | -2d |
| 148 |  | F&I HM Doors and Hardware (JANUS) | 5d | 2026-06-24 | 2026-06-30 | 147SS, 150 | -2d |
| 149 | 4.6 | **FINISHES** | 30d | 2026-05-01 | 2026-06-12 |  | 8d |
| 150 |  | Install Gypsum Board | 10d | 2026-05-01 | 2026-05-14 | 132, 144, 138 | 8d |
| 151 |  | Painting | 10d | 2026-05-15 | 2026-05-29 | 150 | 8d |
| 152 |  | Flooring Polished Conc. | 5d | 2026-06-01 | 2026-06-05 | 150, 151 | 8d |
| 153 |  | FRP & Vinyl Base | 5d | 2026-06-08 | 2026-06-12 | 151, 152 | 8d |
| 154 | 4.7 | **SPECIALTIES** | 22d | 2026-05-15 | 2026-06-16 |  | 8d |
| 155 |  | Install Misc Equipment & Lockers | 20d | 2026-05-15 | 2026-06-12 | 150 | 10d |
| 156 |  | Bathroom Accessories | 2d | 2026-06-15 | 2026-06-16 | 153 | 8d |
| 157 |  | Building Interior Signage | 3d | 2026-06-01 | 2026-06-03 | 151SS+10d | 17d |
| 158 | 4.8 | **FIRE SPRINKLERS** | 30d | 2026-05-01 | 2026-06-12 |  | 10d |
| 159 |  | Fire Sprinkler System Rough In | 15d | 2026-05-01 | 2026-05-21 | 144 | 10d |
| 160 |  | Fire Sprinkler System Trim Out | 15d | 2026-05-22 | 2026-06-12 | 159 | 10d |
| 161 | 4.9 | **PLUMBING** | 83d | 2026-02-24 | 2026-06-19 |  | -14d |
| 162 |  | Plumbing Rough-in Underground | 5d | 2026-02-24 | 2026-03-02 | 59 | -14d |
| 163 |  | Drains, Water, Sewer Lines | 15d | 2026-05-01 | 2026-05-21 | 144 | 5d |
| 164 |  | Bathroom Fixtures | 10d | 2026-05-22 | 2026-06-05 | 150, 163 | 5d |
| 165 |  | Other Plumbing Fixtures | 10d | 2026-06-08 | 2026-06-19 | 164 | 5d |
| 166 | 4.10 | **HVAC** | 30d | 2026-05-01 | 2026-06-12 |  | 10d |
| 167 |  | HVAC Installation | 20d | 2026-05-01 | 2026-05-29 | 144, 145 | 10d |
| 168 |  | HVAC Commisioning & T& B | 10d | 2026-06-01 | 2026-06-12 | 167, 120 | 10d |
| 169 | 4.11 | **ELECTRICAL** | 102d | 2026-02-24 | 2026-07-17 |  | -14d |
| 170 |  | Building Rough-in Underground | 5d | 2026-02-24 | 2026-03-02 | 59 | -14d |
| 171 |  | Electrical Rough-In | 25d | 2026-04-28 | 2026-06-02 | 144SS+2d | -14d |
| 172 |  | New Service Equipment Install, Wire & Inspect | 10d | 2026-04-28 | 2026-05-11 | 59, 15, 171SS | 33d |
| 173 |  | Install and Wire Panels | 15d | 2026-05-15 | 2026-06-05 | 150 | 10d |
| 174 |  | Permanent Power On | 0d | 2026-06-05 | 2026-06-05 | 172, 173, 15 | 15d |
| 175 |  | Electric Lights, Devices and Trim | 42d | 2026-05-12 | 2026-07-10 | 171SS+10d, 144, 145, 18, 17 | -14d |
| 176 |  | Fire Alarm System | 5d | 2026-06-01 | 2026-06-05 | 150, 167, 20 | 10d |
| 177 |  | Electrical Commissioning | 5d | 2026-07-13 | 2026-07-17 | 170, 171, 173, 175, 176 | -14d |

## Version 2 (data date 2026-01-30, saved 2026-02-17, file Meridian, ID - 2026.01.30 - UP01.xml)

Note of the change: Report mode: gpt-5.4, narrative engine, floor cascade, mitigation detector, prior verify PDFs, section redraft UI, system prompt upgrades

Last finish stays 2026-08-18.

Changed:

| ID | Task | Other |
| --- | --- | --- |
| 139 | Exterior Sheathing, Weather Barrier & Rigid Insulation - Building A | was named Weather Barrier |
| 156 | Bathroom Accessories- Building A | was named Bathroom Accessories |
| 164 | Bathroom Fixtures- Building A | was named Bathroom Fixtures |
| 168 | HVAC Commisioning - Building A | was named HVAC Commisioning & T& B |
| 174 | Permanent Power On- Building A | was named Permanent Power On |

## Version 3 (data date 2026-01-30, saved 2026-02-19, file Meridian, ID - 2026.01.30 - UP01.mpp)

Note of the change: Report mode: gpt-5.4, narrative engine, floor cascade, mitigation detector, prior verify PDFs, section redraft UI, system prompt upgrades

Last finish stays 2026-08-18.

Added:

| ID | Task | Duration | Start | Finish | Predecessors |
| --- | --- | --- | --- | --- | --- |
| 30 | **Level of Effort** | 131d | 2025-09-08 A | 2026-03-13 |  |
| 42 | Work Week Restriction | 5d | 2025-11-07 | 2025-11-13 | 40 |

Changed:

| ID | Task | Start | Duration | Complete | Total float | Predecessors | Other |
| --- | --- | --- | --- | --- | --- | --- | --- |
| 29 | **SITEWORK** |  |  | 49% → 47% | 30d → 44d |  |  |
| 36 | Site Demolition (Trees,Sawcut, Asphalt, Base ) |  |  |  |  |  | constraint start no earlier than 2017-03-06 → none |
| 40 | FRAGNET - CITY PRE-CON & 7 DAY NOTICE |  |  |  |  | none → 4, 5, 6 |  |
| 43 | Site - Sewer Lines and Devices/Ten Mile Tie-In |  |  |  |  | 37, 3, 4, 5, 41FS-6d, 6, 40 → 37, 3, 4, 5, 41FS-6d, 6, 40, 42 |  |
| 46 | Storm Drain Lines South |  |  |  |  | none → 67 |  |
| 63 | **BUILDING B** | 2025-11-06 A → 2025-10-29 A (-8d) | 163d → 169d | 9% → 17% |  |  |  |
| 120 | **BUILDING A** | 2026-02-03 → 2026-01-26 A (-8d) | 117d → 123d |  |  |  |  |
