# Schedule 2017-02-17 baseline - Final

How a schedule from MS Project changed from version to version. A marks actual dates.

## Version 1 (data date 2026-03-26, saved 2026-04-02, file Meridian, ID - 2026.04.02 - UP04.mpp)

Note of the change: Report mode: gpt-5.4, narrative engine, floor cascade, mitigation detector, prior verify PDFs, section redraft UI, system prompt upgrades

| ID | WBS | Task | Duration | Start | Finish | Predecessors | Complete | Total float | Constraint |
| --- | --- | --- | --- | --- | --- | --- | --- | --- | --- |
| 1 | 1 | **GENERAL REQUIREMENTS AND CONDITIONS** | 255d | 2025-09-08 A | 2026-09-07 |  | 67% | 0d |  |
| 2 |  | Notice to Proceed | 1d | 2025-09-08 A | 2025-09-08 A |  | 100% |  | start no earlier than 2025-09-08 |
| 3 |  | DELAY - PERMIT DELAY | 32d | 2025-09-09 A | 2025-10-22 A | 2 | 100% |  |  |
| 4 |  | Obtain Building Permit | 0d | 2025-10-22 A | 2025-10-22 A | 2, 3 | 100% |  | start no earlier than 2025-10-22 |
| 5 |  | ACHD ROW Permit | 0d | 2025-10-29 A | 2025-10-29 A | 4FS+5d | 100% |  |  |
| 6 |  | Obtain LDIR Approval to Proceed | 0d | 2025-10-27 A | 2025-10-27 A | 4FS+3d | 100% |  |  |
| 7 |  | Receive CAD Base Files from Public Storage | 10d | 2025-09-09 A | 2025-09-22 A | 2 | 100% |  | finish no earlier than 2024-08-31 |
| 8 |  | Procure Early Work Subcontractors | 5d | 2025-09-09 A | 2025-09-15 A | 2 | 100% |  |  |
| 9 |  | Procure Remaining Subcontractors | 20d | 2025-09-16 A | 2025-10-13 A | 8 | 100% |  |  |
| 10 |  | Submittals (SWPPP/NOI) | 10d | 2025-09-16 A | 2025-09-29 A | 8 | 100% |  |  |
| 11 |  | Submittals (SES /Switchgear) | 125d | 2025-09-16 A | 2026-03-13 A | 8 | 100% |  |  |
| 12 |  | Submittals (numerous) | 150d | 2025-10-14 A | 2026-05-15 | 9 | 57% | 24d |  |
| 13 |  | PUBLIC STORAGE Fab/Delv Framing & Panels BLDG B | 124d | 2025-10-23 A | 2026-04-20 | 2, 4 | 16% | 98d |  |
| 14 |  | PUBLIC STORAGE Fab/Delv Framing & Panels BLDG A | 110d | 2025-11-06 A | 2026-04-14 | 13SS+10d | 9% | -28d |  |
| 15 |  | Procure SES's/Switchgears (6 mos ~ 130 WD) | 56d | 2025-11-03 A | 2026-01-23 A | 11 | 100% |  |  |
| 16 |  | Light Fixture Submittal Review and Approval | 10d | 2026-01-26 A | 2026-02-06 A |  | 100% |  | start no earlier than 2026-01-26 |
| 17 |  | Light Fixture Package Alternate - Fab and Deliver | 10d | 2026-02-09 A | 2026-02-20 A | 16 | 100% |  | finish no earlier than 2026-02-20 |
| 18 |  | Fire Sprinkler Design and Approval | 78d | 2025-10-14 A | 2026-02-04 A | 2, 9 | 100% |  |  |
| 19 |  | Fire Alarm System Design and Approval | 40d | 2025-10-14 A | 2025-12-10 A | 2, 9 | 100% |  |  |
| 20 |  | ASPHALT BATCH PLANT SHUTDOWN | 70d | 2025-11-17 A | 2026-02-26 A |  | 100% |  | must start on 2025-11-17 |
| 21 |  | TWENTY WORKING DAYS OF WEATHER DELAY | 10d | 2026-08-25 | 2026-09-07 | 118, 121, 158, 212, 215, 237, 33, 79, 80, 76, 77, 34, 113, 114, 122, 123, 130, 131, 207, 208, 216, 217, 211, 220, 225, 228, 224, 119, 126, 147, 32, 29 |  | -28d |  |
| 22 |  | WEATHER DELAY - Rain and High Winds - Imapct SOG B | 2d | 2025-12-17 A | 2025-12-18 A |  | 100% |  | start no earlier than 2025-12-17 |
| 23 |  | WEATHER DELAY - Rain - Impact SOG B | 1d | 2025-12-22 A | 2025-12-22 A |  | 100% |  | start no earlier than 2025-12-22 |
| 24 |  | WEATHER DELAY - Rain - Impact SOG B | 3d | 2026-01-08 A | 2026-01-12 A | 92FF, 91 | 100% |  |  |
| 25 |  | WEATHER DELAY - Rain - Impact Footing Bldg A | 2d | 2026-02-17 A | 2026-02-18 A |  | 100% |  | finish no earlier than 2026-02-18 |
| 26 |  | WEATHER DELAY - Rain - Impact Footing Bldg A | 2d | 2026-02-24 A | 2026-02-25 A |  | 100% |  | start no earlier than 2026-02-24 |
| 27 |  | Substantial Completion | 0d | 2026-09-07 | 2026-09-07 | 118, 121, 158, 212, 215, 237, 33, 79, 80, 76, 77, 34, 113, 114, 122, 123, 130, 131, 207, 208, 216, 217, 211, 220, 225, 228, 224, 119, 126, 147, 32, 21, 82, 139 |  | -28d | start no earlier than 2026-07-29 |
| 28 |  | Clean Up and Project Close Out | 5d | 2026-08-13 | 2026-08-19 | 237 |  | -28d |  |
| 29 |  | Demobilize | 3d | 2026-08-20 | 2026-08-24 | 28 |  | -28d |  |
| 30 | 2 | **SITEWORK** | 219d | 2025-09-08 A | 2026-07-17 |  | 50% | 36d |  |
| 31 | 2.1 | **Level of Effort** | 131d | 2025-09-08 A | 2026-03-13 |  | 42% | 86d |  |
| 32 |  | Construction Staking & Surveying | 90d | 2025-09-08 A | 2026-01-16 | 36SS, 8SS | 75% | 91d |  |
| 33 |  | Inspections and Testing | 100d | 2025-09-12 A | 2026-02-13 | 35 |  | 89d |  |
| 34 |  | Maintain Erosion Control | 120d | 2025-09-23 A | 2026-03-13 | 35 | 50% | 86d |  |
| 35 |  | Erosion Control & SWPP | 5d | 2025-09-16 A | 2025-09-22 A | 8 | 100% |  |  |
| 36 |  | Mobilization | 5d | 2025-09-08 A | 2025-09-15 A | 2 | 100% |  | start no earlier than 2024-09-09 |
| 37 |  | Site Demolition (Trees,Sawcut, Asphalt, Base ) | 0d | 2025-09-08 A | 2025-09-12 A | 36SS, 8 | 100% |  |  |
| 38 |  | Clear/Grub & Overlot Grading | 12d | 2025-09-08 A | 2025-09-23 A | 37SS, 32SS | 100% |  |  |
| 39 |  | Structure Demo (Partial Building & RV Storage ) | 5d | 2025-11-03 A | 2025-11-07 A | 36SS | 100% |  | start no earlier than 2025-09-08 |
| 40 |  | Re-Mobilization | 4d | 2025-10-23 A | 2025-10-28 A | 4 | 100% |  |  |
| 41 |  | FRAGNET - CITY PRE-CON & 7 DAY NOTICE | 7d | 2025-10-29 A | 2025-11-06 A | 4, 5, 6 | 100% |  | start no earlier than 2025-10-29 |
| 42 |  | Site - Water Line Ten Mile Tie-In | 2d | 2025-11-08 A | 2025-11-11 A | 5FS+2d, 6, 41 | 100% |  |  |
| 43 |  | Work Week Restriction | 5d | 2025-11-07 A | 2025-11-13 A | 41 | 100% |  |  |
| 44 |  | Site - Sewer Lines and Devices/Ten Mile Tie-In | 13d | 2025-11-14 A | 2025-12-04 A | 38, 3, 4, 5, 42FS-6d, 6, 41, 43 | 100% |  |  |
| 45 |  | DELAY - GIRR License Agreement Approval to Proceed | 6d | 2025-12-05 A | 2025-12-12 A | 44 | 100% |  |  |
| 46 |  | DELAY - RFI #14 - GIRR Separation | 4d | 2025-12-15 A | 2025-12-18 A | 45 | 100% |  |  |
| 47 |  | Storm Drain Lines South | 6d | 2025-12-22 A | 2025-12-30 A | 87 | 100% |  | finish no earlier than 2026-01-09 |
| 48 |  | Site - Water Line & Fire Lines/Hydrants and Devices Remaining | 18d | 2026-01-05 A | 2026-01-28 A | 44, 47 | 100% |  |  |
| 49 |  | Site - GIRR Piping & Devices | 16d | 2026-01-12 A | 2026-02-02 A | 44, 39, 47, 45, 46, 48SS+5d | 100% |  |  |
| 50 |  | TP DELAY - Site - GIRR Box Delivery and Placement | 6d | 2026-01-26 A | 2026-02-02 A | 49FF | 100% |  |  |
| 51 |  | Complete UG Utility Lines, SD Turn Ups, to Building A | 1d | 2026-03-27 | 2026-03-27 | 128, 149, 230, 48 |  | 41d |  |
| 52 |  | Gravel Road Rough Grade Prep | 8d | 2025-12-08 A | 2025-12-17 A | 87SS+2d | 100% |  |  |
| 53 | 2.19 | **FRAGNET - Site - Drive Aisle Unsuitable Soils** | 74d | 2026-02-03 A | 2026-05-15 |  | 74% | 79d |  |
| 54 |  | FRAGNET - Site - Drive Aisle Over Ex Unsuitable Soil Identified | 1d | 2026-02-03 A | 2026-02-03 A | 49 | 100% |  |  |
| 55 |  | FRAGNET - Site - Drive Aisle Over Ex Discussion and Confirmation on Solution | 2d | 2026-02-04 A | 2026-02-05 A | 54 | 100% |  |  |
| 56 |  | FRAGNET - Site - Idaho Power - Pivot to Moblize and Peform the UG JT in Drive Aisle | 15d | 2026-02-06 A | 2026-02-26 A | 55 | 100% |  |  |
| 57 |  | FRAGNET - Site - Owner Review of Impact and Discussion with Geo Tech to Identify Alternative Solutions More Econamical | 5d | 2026-02-19 A | 2026-02-25 A | 55 | 100% |  | finish no earlier than 2026-02-25 |
| 58 |  | FRAGNET - Prepare and Submit Pricing for Approval | 13d | 2026-02-27 A | 2026-03-17 A |  | 100% |  |  |
| 59 |  | FRAGNET - Owner Issued CCD 07 Directive for Driveisle and Soft Spots | 1d | 2026-03-09 A | 2026-03-09 A | 58SS+6d | 100% |  |  |
| 60 |  | FRAGNET - Mobilize Crew, Rough Grade Prep, Scarify and Air Dry | 2d | 2026-03-20 A | 2026-03-23 A | 57SS, 176 | 100% |  |  |
| 61 |  | FRAGNET - Re-Prep, Proof Roll, Confirm Soft Spot Magnitude | 1d | 2026-03-23 A | 2026-03-23 A | 57SS, 176, 60 | 100% |  |  |
| 62 |  | FRAGNET - Site - Partial Soft Spot Repair Examination of Pit Run to Proceed. If failed, provide geo grid per RFI 33 | 3d | 2026-05-05 | 2026-05-07 | 57, 61, 71, 69 |  | -2d |  |
| 63 |  | (TOTAL MAGNITUDE, TBD) FRAGNET - Site - Drive Aisle Over Ex Start | 1d | 2026-05-08 | 2026-05-08 | 56, 62, 57, 67, 61, 60, 71, 69 |  | -2d |  |
| 64 |  | (TOTAL MAGNITUDE, TBD) FRAGNET - Site - Drive Aisle Over Ex Finish South Bld A | 5d | 2026-05-11 | 2026-05-15 | 56, 63 |  | 79d |  |
| 65 |  | (TOTAL MAGNITUDE, TBD) FRAGNET - Site - Drive Aisle Over Ex Finish South Bld B | 5d | 2026-05-11 | 2026-05-15 | 56, 63 |  | -2d |  |
| 66 |  | Site - Idaho Power Boring | 2d | 2026-02-26 A | 2026-02-27 A | 56 | 100% |  |  |
| 67 |  | Site - Idaho Power Trench, Conduit and Backfill | 5d | 2026-03-09 A | 2026-03-13 A | 66 | 100% |  |  |
| 68 |  | Site - Idaho Power Transformer Set and Make Live | 0d | 2026-03-13 A | 2026-03-13 A | 56, 66, 67 | 100% |  |  |
| 69 |  | Storm Drain Lines and Devices - South of Buildings (E-W) | 7d | 2026-04-15 | 2026-04-23 | 38, 44, 90, 92, 188 |  | -2d |  |
| 70 |  | Site - Flatwork Sidewalk Prep | 8d | 2026-04-15 | 2026-04-24 | 189, 69SS |  | 21d |  |

| ID | WBS | Task | Duration | Start | Finish | Predecessors | Complete | Total float | Constraint |
| --- | --- | --- | --- | --- | --- | --- | --- | --- | --- |
| 71 |  | Storm Drain Lines and Devices - North of Buildings (E-W) | 7d | 2026-04-24 | 2026-05-04 | 38, 44, 90, 92, 188, 69 |  | -2d |  |
| 72 |  | Site - Curb and Gutter Prep | 8d | 2026-05-18 | 2026-05-28 | 189, 69SS, 65 |  | -2d |  |
| 73 |  | Site - Base Course Asphalt Prep | 8d | 2026-05-18 | 2026-05-28 | 189, 69, 65 |  | -2d |  |
| 74 |  | Site Flatwork and Curb and Gutter - (E-W) | 15d | 2026-05-29 | 2026-06-18 | 51, 42, 44, 71, 49, 170, 50, 32, 73, 69, 72, 70 |  | -2d |  |
| 75 |  | Site - Fine Grade Asphalt Prep | 3d | 2026-06-19 | 2026-06-23 | 74 |  | -2d |  |
| 76 |  | Asphalt Paving | 2d | 2026-06-24 | 2026-06-25 | 12, 20, 75, 33, 74 |  | -2d |  |
| 77 |  | Pavement Markings, Signage & Bumpers | 2d | 2026-06-26 | 2026-06-29 | 76, 74 |  | 11d |  |
| 78 |  | Site Fencing Chainlink | 5d | 2026-05-20 | 2026-05-27 | 109 |  | 29d |  |
| 79 |  | Gravel Road Finish Grading | 5d | 2026-05-28 | 2026-06-03 | 71, 78 |  | 29d |  |
| 80 |  | Landscaping and Irrigation | 15d | 2026-06-26 | 2026-07-17 | 12, 76, 74 |  | -2d |  |
| 81 |  | Site Fencing Vinyl | 10d | 2026-06-26 | 2026-07-10 | 76, 78 |  | 18d |  |
| 82 |  | Site Fencing Rod Iron and Gates | 5d | 2026-06-26 | 2026-07-02 | 76, 81SS |  | 18d |  |
| 83 | 3 | **BUILDING B** | 191d | 2025-10-29 A | 2026-07-30 |  | 37% | -1d |  |
| 84 |  | BLDG B Foundation Excavation | 6d | 2025-10-29 A | 2025-11-05 A | 38SS+3d, 4, 40, 85FF | 100% |  | start no earlier than 2025-09-15 |
| 85 |  | DELAY - BLDG B FOOTING OVER-EX | 4d | 2025-10-31 A | 2025-11-05 A |  | 100% |  | start no earlier than 2025-10-31 |
| 86 |  | BLDG B SOG Prep | 5d | 2025-11-26 A | 2025-12-04 A | 84, 149 | 100% |  |  |
| 87 |  | FRAGNET - Bldg B Soft Spot Repair | 8d | 2025-12-04 A | 2025-12-15 A |  | 100% |  | start no earlier than 2025-12-04 |
| 88 |  | BLDG B Backfill Foundations | 18d | 2025-12-15 A | 2026-01-09 A | 90, 91, 92SS, 24 | 100% |  |  |
| 89 | 3.6 | **CONCRETE WORK** | 44d | 2025-11-06 A | 2026-01-12 A |  | 100% |  |  |
| 90 |  | BLDG B Foundation | 14d | 2025-11-06 A | 2025-11-25 A | 84, 85 | 100% |  |  |
| 91 |  | BLDG B Dampproofing | 1d | 2025-11-18 A | 2025-11-26 A | 84, 90 | 100% |  |  |
| 92 |  | BLDG B Slab On Grade | 19d | 2025-12-15 A | 2026-01-12 A | 90, 149, 128FF, 86, 87FF, 22FF, 23FF | 100% |  |  |
| 93 |  | BLDG B Slab On Grade Complete | 0d | 2026-01-12 A | 2026-01-12 A | 92, 24 | 100% |  |  |
| 94 | 3.7 | **STEEL AND METALS** | 76d | 2026-01-12 A | 2026-04-27 |  | 63% | 35d |  |
| 95 |  | Frame Load Bearing Shear Walls, Interior Partitions, & Corridors (JANUS) | 20d | 2026-01-12 A | 2026-02-09 A | 92, 13, 39, 24 | 100% |  |  |
| 96 |  | FRAGNET - Extended Shear Wall Durations (JANUS) | 12d | 2026-02-10 A | 2026-02-25 A | 95 | 100% |  |  |
| 97 |  | Panel Shear Walls, Interior Partition, & Corridor Walls (JANUS) | 20d | 2026-02-26 A | 2026-03-25 | 95, 96 | 65% | 58d |  |
| 98 |  | Perimeter Panel Interior Walls (JANUS) | 20d | 2026-03-31 | 2026-04-27 | 150 |  | 35d |  |
| 99 | 3.8 | **WOOD & FRP** | 5d | 2026-04-09 | 2026-04-15 |  |  | 50d |  |
| 100 |  | Misc Finish Carpentry | 5d | 2026-04-09 | 2026-04-15 | 116 |  | 50d |  |
| 101 | 3.9 | **ROOF & SIDING** | 78d | 2026-01-30 A | 2026-05-19 |  | 54% | 19d |  |
| 102 |  | Exterior Sheathing | 0d | 2026-01-30 A | 2026-02-16 A | 95FS-12d, 96FS-12d | 100% |  |  |
| 103 |  | Weather Barrier Fluid Applied | 8d | 2026-02-06 A | 2026-02-19 A | 102FS-5d | 100% |  |  |
| 104 |  | Weather Barrier Tyvek | 10d | 2026-03-04 A | 2026-03-17 A | 102FS-5d | 100% |  |  |
| 105 |  | CMU Veneer Base Course & Grout | 15d | 2026-03-03 A | 2026-04-07 | 102, 104, 103 | 80% | 19d |  |
| 106 |  | Rigid Insulation Behind CMU | 5d | 2026-04-08 | 2026-04-14 | 104, 103, 105 |  | 19d |  |
| 107 |  | Rigid Insulation Behind Metal Panels | 3d | 2026-04-15 | 2026-04-17 | 106 |  | 31d |  |
| 108 |  | CMU Veneer Remaining | 15d | 2026-04-15 | 2026-05-05 | 105, 106 |  | 19d |  |
| 109 |  | Exterior Metal Panels (JANUS) | 10d | 2026-05-06 | 2026-05-19 | 102, 107, 108 |  | 19d |  |
| 110 |  | Install Roof & Roof Insulation (JANUS) | 12d | 2026-02-25 A | 2026-03-25 A | 95 | 100% |  |  |
| 111 |  | BLDG B Roofing Complete | 0d | 2026-03-25 A | 2026-03-25 A | 110 | 100% |  |  |
| 112 | 3.10 | **DOORS & WINDOWS** | 20d | 2026-07-02 | 2026-07-30 |  |  | -11d |  |
| 113 |  | F&I Storage Unit Doors (JANUS) | 20d | 2026-07-02 | 2026-07-30 | 109, 203, 98, 97 |  | -11d |  |
| 114 |  | F&I HM Doors and Hardware (JANUS) | 15d | 2026-07-02 | 2026-07-23 | 113SS, 116 |  | -6d |  |
| 115 | 3.11 | **FINISHES** | 30d | 2026-03-26 | 2026-05-06 |  |  | 45d |  |
| 116 |  | Install Gypsum Board | 10d | 2026-03-26 | 2026-04-08 | 110, 95, 111, 96 |  | 45d |  |
| 117 |  | Flooring Polished Concrete | 5d | 2026-04-09 | 2026-04-15 | 116 |  | 45d |  |
| 118 |  | FRP / Vinyl Base | 5d | 2026-04-16 | 2026-04-22 | 116, 117 |  | 45d |  |
| 119 |  | Painting | 10d | 2026-04-23 | 2026-05-06 | 118, 100 |  | 45d |  |
| 120 | 3.12 | **SPECIALTIES** | 23d | 2026-04-09 | 2026-05-11 |  |  | 45d |  |
| 121 |  | Install Misc Equipment & Lockers | 20d | 2026-04-09 | 2026-05-06 | 116 |  | 48d |  |
| 122 |  | Bathroom Accessories | 2d | 2026-04-16 | 2026-04-17 | 117 |  | 61d |  |
| 123 |  | Building Interior Signage | 3d | 2026-05-07 | 2026-05-11 | 119SS+10d |  | 45d |  |
| 124 | 3.13 | **FIRE SPRINKLERS** | 36.25d | 2026-02-23 A | 2026-04-14 |  | 89% | 64.75d |  |
| 125 |  | Fire Sprinkler System Rough In | 18d | 2026-02-23 A | 2026-03-27 A | 110SS+5d, 18 | 100% |  |  |
| 126 |  | Fire Sprinkler System Trim Out | 15d | 2026-03-02 A | 2026-04-14 | 125 | 75% | 64.75d |  |
| 127 | 3.14 | **PLUMBING** | 104d | 2025-11-20 A | 2026-04-20 |  | 16% | 60d |  |
| 128 |  | Plumbing Rough-in Underground | 4d | 2025-11-20 A | 2025-11-25 A | 90SS+5d | 100% |  |  |
| 129 |  | Drains, Water, Sewer Lines | 15d | 2026-03-26 | 2026-04-15 | 110 |  | 60d |  |
| 130 |  | Bathroom Fixtures | 3d | 2026-04-16 | 2026-04-20 | 116, 117, 129 |  | 60d |  |
| 131 |  | Other Plumbing Fixtures | 3d | 2026-04-16 | 2026-04-20 | 130SS |  | 60d |  |
| 132 | 3.15 | **HVAC** | 94d | 2026-03-16 A | 2026-07-27 |  | 9% | 2d |  |
| 133 |  | HVAC Installation - Start/Partial | 4d | 2026-03-23 A | 2026-03-31 A | 110, 111 | 100% |  |  |
| 134 | 3.15.2 | **FRAGNET - RFI 38 Condenser Unit Relocations** | 63d | 2026-03-23 A | 2026-06-18 |  | 3% | 28d |  |
| 135 |  | FRAGNET - RFI 38 Submitted, Reviewed, Responded, Confirmed Direction | 10d | 2026-03-23 A | 2026-04-08 |  | 40% | -22d |  |
| 136 |  | FRAGNET - RFI 38 - Cost Impact, Collect, Submit, Confirm CO | 10d | 2026-04-09 | 2026-04-22 | 135 |  | -22d |  |
| 137 |  | FRAGNET - RFI 38 - Procurement, Re-Route Electrical | 15d | 2026-04-23 | 2026-05-13 | 136 |  | -22d |  |
| 138 |  | TBD FRAGNET - RFI 38 - HVAC Set Units, Duct Procurement & Install | 40d | 2026-04-23 | 2026-06-18 | 136 |  | -11d |  |
| 139 |  | TBD FRAGNET - RFI 38 - Screen Wall Procurement and Install | 40d | 2026-04-23 | 2026-06-18 | 136 |  | 28d |  |
| 140 | 3.15.3 | **FRAGNET - RFI 37 - Duct Conflicts** | 57d | 2026-03-16 A | 2026-06-03 |  | 20% | -9d |  |

| ID | WBS | Task | Duration | Start | Finish | Predecessors | Complete | Total float | Constraint |
| --- | --- | --- | --- | --- | --- | --- | --- | --- | --- |
| 141 |  | RFI 37 - Initiated and Responded | 8d | 2026-03-16 A | 2026-03-25 A |  | 100% |  | start no earlier than 2026-03-15 |
| 142 |  | RFI 37 - Further Clarification Required, Caught Design Decrepency | 2d | 2026-04-01 A | 2026-04-02 A | 141, 133 | 100% |  |  |
| 143 |  | RFI 37 - Review and Responsed, Close as Directed | 3d | 2026-04-03 A | 2026-04-07 | 141, 142, 133 | 17% | 0d |  |
| 144 |  | TBD RFI 37 - Cost Impact Collection and Submission | 10d | 2026-04-08 | 2026-04-21 | 141, 143, 133 |  | -9d |  |
| 145 |  | TBD RFI 37 - Procure Additional Matierals? | 30d | 2026-04-22 | 2026-06-03 | 141, 143, 144, 133 |  | -9d |  |
| 146 |  | HVAC Installation - Remaining | 21d | 2026-06-19 | 2026-07-20 | 110, 111, 145, 138 |  | -11d |  |
| 147 |  | HVAC Commisioning & T&B | 5d | 2026-07-21 | 2026-07-27 | 154, 146, 133, 138 |  | -8d |  |
| 148 | 3.16 | **ELECTRICAL** | 175d | 2025-11-20 A | 2026-07-30 |  | 39% | -11d |  |
| 149 |  | Building Rough-in Underground | 0d | 2025-11-20 A | 2025-11-25 A | 170 | 100% |  |  |
| 150 |  | Elect Rough-In Start/Partial | 19d | 2026-03-02 A | 2026-03-30 A | 110SS+5d | 100% |  |  |
| 151 |  | Install, Wire & Inspect - Start/Partial | 5d | 2026-03-25 A | 2026-04-01 A | 162, 15, 110 | 100% |  |  |
| 152 |  | Install Wire & Inspect - Remaining | 5d | 2026-05-14 | 2026-05-20 | 162, 15, 110, 137 |  | 25d |  |
| 153 |  | Install and Wire Panels | 3d | 2026-06-19 | 2026-06-23 | 116, 152, 138 |  | 5d |  |
| 154 |  | Permanent Power On | 0d | 2026-06-23 | 2026-06-23 | 152, 153, 15, 151, 234SS |  | 5d |  |
| 155 |  | FRAGNET - RFI 35 - Light Fixture Mounting Height Clarification Submitted/Closed, | 3d | 2026-03-13 A | 2026-03-17 A |  | 100% |  | start no earlier than 2026-03-13 |
| 156 |  | Electric Lights, Devices and Trim | 55d | 2026-03-25 A | 2026-06-11 | 17, 155, 110, 150SS+10d | 20% | 18d |  |
| 157 |  | Fire Alarm System | 3d | 2026-07-21 | 2026-07-23 | 140, 19, 116, 146, 145, 141, 142, 143, 144, 133, 138 |  | -11d |  |
| 158 |  | Electrical Commissioning | 5d | 2026-07-24 | 2026-07-30 | 149, 153, 156, 157, 155, 150 |  | -11d |  |
| 159 | 4 | **BUILDING A** | 141d | 2026-01-26 A | 2026-08-12 |  | 22% | 18d |  |
| 160 |  | BLDG A Foundation Excavation | 24d | 2026-01-26 A | 2026-02-26 A | 84, 90SS+10d, 4, 40, 87 | 100% |  |  |
| 161 |  | FRAGNET - BLDG A Footing Seepage Bed Over Ex. | 1d | 2026-02-02 A | 2026-02-02 A | 160 | 100% |  |  |
| 162 |  | BLDG A - Interoir Backfill Foundations | 2d | 2026-02-26 A | 2026-03-03 A | 92, 183, 160 | 100% |  |  |
| 163 | 4.4 | **FRAGNET - BLDG A Seepage Bed Pad Over Ex.** | 11d | 2026-02-26 A | 2026-03-12 A |  | 100% |  |  |
| 164 |  | FRAGNET -Proposed direction received from Owner to perform BLDG A Seepage Bed Pad Over Ex. | 1d | 2026-02-26 A | 2026-02-26 A | 61SS, 60SS | 100% |  |  |
| 165 |  | FRAGNET - Prepare and Submit Pricing for Approval | 8d | 2026-02-27 A | 2026-03-10 A | 173 | 100% |  |  |
| 166 |  | FRAGNET - Owner Issued CCD 06 on Seepage Bed Cost Impact | 1d | 2026-03-09 A | 2026-03-09 A |  | 100% |  |  |
| 167 |  | FRAGNET - Mobilize Crew for BLDG A Seepage Bed Pad Over Ex. | 1d | 2026-03-10 A | 2026-03-10 A | 166 | 100% |  |  |
| 168 |  | FRAGNET - Start BLDG A Seepage Bed Pad Over Ex. | 1d | 2026-03-11 A | 2026-03-11 A | 183, 162, 167 | 100% |  |  |
| 169 |  | FRAGNET - Finish BLDG A Seepage Bed Pad Over Ex. | 1d | 2026-03-12 A | 2026-03-12 A | 168 | 100% |  |  |
| 170 |  | BLDG A - Exterior Backfill Foundations | 2d | 2026-03-10 A | 2026-03-11 A | 160, 184, 85, 185 | 100% |  |  |
| 171 |  | BLDG A SOG Rough Grade Prep | 2d | 2026-03-18 A | 2026-03-19 A | 162, 222SS, 163, 168 | 100% |  |  |
| 172 | 4.7 | **FRAGNET - BLDG A Soft Spot Over Ex** | 20d | 2026-02-26 A | 2026-03-25 A |  | 100% |  |  |
| 173 |  | FRAGNET - Proposed direction received from Owner to perform BLDG A Soft Spot Repairs Using Only Pit Run | 1d | 2026-02-26 A | 2026-02-26 A | 61SS, 60SS | 100% |  |  |
| 174 |  | FRAGNET - Prepare and Submit Pricing for Approval | 13d | 2026-02-27 A | 2026-03-17 A | 173 | 100% |  |  |
| 175 |  | FRAGNET - Owner Issued CCD 07 Directive for Driveisle and Soft Spots | 1d | 2026-03-09 A | 2026-03-09 A |  | 100% |  |  |
| 176 |  | FRAGNET - Mobilize Crew, SOG Rough Grade Prep, Scarify, Air Dry Pad A | 5d | 2026-03-13 A | 2026-03-19 A | 175, 169, 166 | 100% |  |  |
| 177 |  | FRAGNET - Air Dry Pad A, Re-Prep, Proof Roll to Idendify Soft Spots | 2d | 2026-03-20 A | 2026-03-23 A | 175, 169, 166, 176 | 100% |  |  |
| 178 |  | FRAGNET - Start Soft Spot Repairs | 0d | 2026-03-23 A | 2026-03-23 A | 175, 169, 166, 171, 177 | 100% |  |  |
| 179 |  | FRAGNET - Test and Review Compaction Results for Soft Spot - If Approved, Proceed with Direction Further | 1d | 2026-03-24 A | 2026-03-24 A | 178, 177, 176 | 100% |  |  |
| 180 |  | FRAGNET - Soft Spot Repairs East Area | 1d | 2026-03-24 A | 2026-03-24 A | 179SS | 100% |  |  |
| 181 |  | FRAGNET - Soft Spot Repairs West Area | 1d | 2026-03-25 A | 2026-03-25 A | 179, 61SS, 60SS | 100% |  |  |
| 182 | 4.8 | **CONCRETE WORK** | 50d | 2026-02-04 A | 2026-04-14 |  | 77% | 102d |  |
| 183 |  | BLDG A Foundation | 18d | 2026-02-04 A | 2026-02-27 A | 160SS+2d, 48, 49, 161, 25FF, 26FF-2d | 100% |  | start no earlier than 2026-01-05 |
| 184 |  | BLDG A Dampproofing | 4d | 2026-02-16 A | 2026-03-03 A | 183, 160 | 100% |  |  |
| 185 |  | BLDG A Exterior Footing Insulation | 5d | 2026-02-23 A | 2026-02-27 A | 184 | 100% |  |  |
| 186 |  | BLDG A SOG Fine Prep | 3d | 2026-03-27 A | 2026-03-31 A | 162, 222SS, 163, 168, 230, 177, 181 | 100% |  |  |
| 187 |  | BLDG A Slab On Grade (East) | 7d | 2026-03-31 A | 2026-04-09 | 171SS, 230, 186 | 50% | 105d |  |
| 188 |  | BLDG A Slab On Grade (West) | 10d | 2026-04-01 A | 2026-04-14 | 183, 186, 168, 169, 181, 222, 171, 180, 187SS+1d | 25% | -28d |  |
| 189 |  | BLDG A Slab On Grade Complete | 0d | 2026-04-14 | 2026-04-14 | 188 |  | 21d |  |
| 190 | 4.9 | **STEEL AND METALS** | 67d | 2026-04-15 | 2026-07-20 |  |  | -28d |  |
| 191 |  | Frame Load Bearing, Shear Walls, Partition & Corridor (JANUS) | 25d | 2026-04-15 | 2026-05-19 | 188, 14 |  | -28d |  |
| 192 |  | Panel Shear Wall, Interior Partition, & Corridor Walls (JANUS) | 15d | 2026-05-20 | 2026-06-10 | 191 |  | 19d |  |
| 193 |  | Perimeter Panel Interior Walls (JANUS) | 15d | 2026-06-29 | 2026-07-20 | 231 |  | -8d |  |
| 194 |  | Canopy Install | 8d | 2026-05-20 | 2026-06-01 | 198, 191 |  | 69d |  |
| 195 | 4.10 | **WOOD & FRP** | 5d | 2026-06-11 | 2026-06-17 |  |  | 57d |  |
| 196 |  | Misc Finish Carpentry | 5d | 2026-06-11 | 2026-06-17 | 210 |  | 57d |  |
| 197 | 4.11 | **ROOF & SIDING** | 40d | 2026-05-06 | 2026-07-01 |  |  | -18d |  |
| 198 |  | Exterior Sheathing | 10d | 2026-05-06 | 2026-05-19 | 191FS-10d |  | -11d |  |
| 199 |  | Exterior Sheathing, Weather Barrier & Rigid Insulation - Building A | 10d | 2026-05-13 | 2026-05-27 | 198FS-5d |  | -11d |  |
| 200 |  | Rigid Insulation Behind Metal Panels | 3d | 2026-05-28 | 2026-06-01 | 199 |  | 1d |  |
| 201 |  | Rigid Insulation Behind CMU | 5d | 2026-05-28 | 2026-06-03 | 199 |  | -11d |  |
| 202 |  | CMU Veneer | 15d | 2026-06-04 | 2026-06-24 | 198, 199, 201 |  | -11d |  |
| 203 |  | Exterior Metal Panels (JANUS) | 10d | 2026-06-18 | 2026-07-01 | 202FS-5d, 198, 200 |  | -11d |  |
| 204 |  | Install Roof & Roof Insulation (JANUS) | 5d | 2026-05-20 | 2026-05-27 | 191 |  | -28d |  |
| 205 |  | BLDG A Roofing Complete | 0d | 2026-05-27 | 2026-05-27 | 204 |  | -21d |  |
| 206 | 4.12 | **DOORS & WINDOWS** | 5d | 2026-07-21 | 2026-07-27 |  |  | -8d |  |
| 207 |  | F&I Storage Unit Doors (JANUS) | 5d | 2026-07-21 | 2026-07-27 | 193, 192 |  | -8d |  |
| 208 |  | F&I HM Doors and Hardware (JANUS) | 5d | 2026-07-21 | 2026-07-27 | 207SS, 210 |  | -8d |  |
| 209 | 4.13 | **FINISHES** | 30d | 2026-05-28 | 2026-07-09 |  |  | 2d |  |
| 210 |  | Install Gypsum Board | 10d | 2026-05-28 | 2026-06-10 | 204, 198, 191 |  | 2d |  |

| ID | WBS | Task | Duration | Start | Finish | Predecessors | Complete | Total float |
| --- | --- | --- | --- | --- | --- | --- | --- | --- |
| 211 |  | Painting | 10d | 2026-06-11 | 2026-06-24 | 210 |  | 2d |
| 212 |  | Flooring Polished Conc. | 5d | 2026-06-25 | 2026-07-01 | 210, 211 |  | 2d |
| 213 |  | FRP & Vinyl Base | 5d | 2026-07-02 | 2026-07-09 | 211, 212 |  | 2d |
| 214 | 4.14 | **SPECIALTIES** | 22d | 2026-06-11 | 2026-07-13 |  |  | 2d |
| 215 |  | Install Misc Equipment & Lockers | 20d | 2026-06-11 | 2026-07-09 | 210 |  | 4d |
| 216 |  | Bathroom Accessories- Building A | 2d | 2026-07-10 | 2026-07-13 | 213 |  | 2d |
| 217 |  | Building Interior Signage | 3d | 2026-06-25 | 2026-06-29 | 211SS+10d |  | 11d |
| 218 | 4.15 | **FIRE SPRINKLERS** | 30d | 2026-05-28 | 2026-07-09 |  |  | 4d |
| 219 |  | Fire Sprinkler System Rough In | 15d | 2026-05-28 | 2026-06-17 | 204 |  | 4d |
| 220 |  | Fire Sprinkler System Trim Out | 15d | 2026-06-18 | 2026-07-09 | 219 |  | 4d |
| 221 | 4.16 | **PLUMBING** | 92d | 2026-03-09 A | 2026-07-16 |  | 10% | -1d |
| 222 |  | Plumbing Rough-in Underground | 4d | 2026-03-09 A | 2026-03-12 A | 162 | 100% |  |
| 223 |  | Drains, Water, Sewer Lines | 15d | 2026-05-28 | 2026-06-17 | 204 |  | -1d |
| 224 |  | Bathroom Fixtures- Building A | 10d | 2026-06-18 | 2026-07-01 | 210, 223 |  | -1d |
| 225 |  | Other Plumbing Fixtures | 10d | 2026-07-02 | 2026-07-16 | 224 |  | -1d |
| 226 | 4.17 | **HVAC** | 30d | 2026-06-04 | 2026-07-16 |  |  | -9d |
| 227 |  | HVAC Installation | 20d | 2026-06-04 | 2026-07-01 | 204, 205, 145 |  | -9d |
| 228 |  | HVAC Commisioning - Building A | 10d | 2026-07-02 | 2026-07-16 | 227, 154 |  | -1d |
| 229 | 4.18 | **ELECTRICAL** | 100d | 2026-03-24 A | 2026-08-12 |  | 3% | -28d |
| 230 |  | Building Rough-in Underground | 3d | 2026-03-24 A | 2026-03-26 A | 162, 177 | 100% |  |
| 231 |  | Electrical Rough-In | 25d | 2026-05-22 | 2026-06-26 | 204SS+2d, 137 |  | -28d |
| 232 |  | New Service Equipment Install, Wire & Inspect | 10d | 2026-05-28 | 2026-06-10 | 162, 15, 231SS, 204 |  | 14d |
| 233 |  | Install and Wire Panels | 3d | 2026-06-18 | 2026-06-22 | 210, 227SS+10d |  | 3d |
| 234 |  | Permanent Power On- Building A | 0d | 2026-06-22 | 2026-06-22 | 232, 233, 15 |  | 6d |
| 235 |  | Electric Lights, Devices and Trim | 42d | 2026-06-08 | 2026-08-05 | 231SS+10d, 204, 205, 17 |  | -28d |
| 236 |  | Fire Alarm System | 5d | 2026-07-02 | 2026-07-09 | 210, 227, 19 |  | -9d |
| 237 |  | Electrical Commissioning | 5d | 2026-08-06 | 2026-08-12 | 230, 231, 233, 235, 236 |  | -28d |

## Version 2 (data date 2026-03-26, saved 2026-04-02, file Meridian, ID - 2026.03.26 - UP03.xml)

Note of the change: Report mode: gpt-5.4, narrative engine, floor cascade, mitigation detector, prior verify PDFs, section redraft UI, system prompt upgrades

Last finish 2026-09-07 → 2026-09-11 (+4d). Complete tasks 100 → 89.

Added:

| ID | Task | Duration | Start | Finish | Predecessors |
| --- | --- | --- | --- | --- | --- |
| 137 | Elect Rough-In | 25d | 2026-03-02 A | 2026-04-07 | 110SS+5d |
| 174 | BLDG A Slab On Grade (Center) | 3d | 2026-04-06 | 2026-04-08 | 173 |

Removed: 133 HVAC Installation - Start/Partial; 134 FRAGNET - RFI 38 Condenser Unit Relocations; 135 FRAGNET - RFI 38 Submitted, Reviewed, Responded, Confirmed Direction; 136 FRAGNET - RFI 38 - Cost Impact, Collect, Submit, Confirm CO; 137 FRAGNET - RFI 38 - Procurement, Re-Route Electrical; 138 TBD FRAGNET - RFI 38 - HVAC Set Units, Duct Procurement & Install; 139 TBD FRAGNET - RFI 38 - Screen Wall Procurement and Install; 141 RFI 37 - Initiated and Responded; 142 RFI 37 - Further Clarification Required, Caught Design Decrepency; 143 RFI 37 - Review and Responsed, Close as Directed; 144 TBD RFI 37 - Cost Impact Collection and Submission; 145 TBD RFI 37 - Procure Additional Matierals?; 146 HVAC Installation - Remaining; 150 Elect Rough-In Start/Partial; 151 Install, Wire & Inspect - Start/Partial

Changed:

| ID | Task | Start | Finish | Duration | Complete | Total float | Predecessors | Other |
| --- | --- | --- | --- | --- | --- | --- | --- | --- |
| 1 | **GENERAL REQUIREMENTS AND CONDITIONS** |  | 2026-09-07 → 2026-09-11 (+4d) | 255d → 259d | 67% → 89% |  |  |  |
| 12 | Submittals (numerous) |  | 2026-05-15 → 2026-02-20 (-84d) | 150d → 90d | 57% → 95% | 24d → 84d |  |  |
| 13 | PUBLIC STORAGE Fab/Delv Framing & Panels BLDG B |  | 2026-04-20 → 2025-12-19 (-122d) | 124d → 40d | 16% → 50% | 98d → 186d |  |  |
| 14 | PUBLIC STORAGE Fab/Delv Framing & Panels BLDG A |  | 2026-04-14 → 2026-01-06 (-98d) | 110d → 40d | 9% → 25% | -28d → 42d |  |  |
| 21 | TWENTY WORKING DAYS OF WEATHER DELAY | 2026-08-25 → 2026-08-31 (+6d) | 2026-09-07 → 2026-09-11 (+4d) |  |  | -28d → -32d |  |  |
| 27 | Substantial Completion | 2026-09-07 → 2026-09-11 (+4d) | 2026-09-07 → 2026-09-11 (+4d) |  |  | -28d → -32d | 118, 121, 144, 199, 202, 224, 33, 79, 80, 76, 77, 34, 113, 114, 122, 123, 130, 131, 194, 195, 203, 204, 198, 207, 212, 215, 211, 119, 126, 134, 32, 21, 82, TBD FRAGNET - RFI 38 - Screen Wall Procurement and Install → 118, 121, 144, 199, 202, 224, 33, 79, 80, 76, 77, 34, 113, 114, 122, 123, 130, 131, 194, 195, 203, 204, 198, 207, 212, 215, 211, 119, 126, 134, 32, 21, 82 |  |
| 28 | Clean Up and Project Close Out | 2026-08-13 → 2026-08-19 (+6d) | 2026-08-19 → 2026-08-25 (+6d) |  |  | -28d → -32d | 224 → 145 |  |
| 29 | Demobilize | 2026-08-20 → 2026-08-26 (+6d) | 2026-08-24 → 2026-08-28 (+4d) |  |  | -28d → -32d |  |  |
| 51 | Complete UG Utility Lines, SD Turn Ups, to Building A | 2026-03-27 → 2026-03-31 (+4d) | 2026-03-27 → 2026-03-31 (+4d) |  |  | 41d → 39d |  |  |
| 53 | **FRAGNET - Site - Drive Aisle Unsuitable Soils** |  |  |  | 74% → 73% | 79d → 83d |  |  |
| 60 | FRAGNET - Mobilize Crew, Rough Grade Prep, Scarify and Air Dry |  | 2026-03-23 A → 2026-03-20 (-3d) | 2d → 1d | 100% → 50% | none → 32d |  |  |
| 83 | **BUILDING B** |  | 2026-07-30 → 2026-08-05 (+6d) | 191d → 195d | 37% → 30% | -1d → -15d |  |  |
| 94 | **STEEL AND METALS** |  | 2026-04-27 → 2026-05-05 (+8d) | 76d → 82d |  | 35d → 29d |  |  |
| 98 | Perimeter Panel Interior Walls (JANUS) | 2026-03-31 → 2026-04-08 (+8d) | 2026-04-27 → 2026-05-05 (+8d) |  |  | 35d → 29d | Elect Rough-In Start/Partial → 137 |  |
| 99 | **WOOD & FRP** | 2026-04-09 → 2026-04-14 (+5d) | 2026-04-15 → 2026-04-20 (+5d) |  |  | 50d → 47d |  |  |
| 100 | Misc Finish Carpentry | 2026-04-09 → 2026-04-14 (+5d) | 2026-04-15 → 2026-04-20 (+5d) |  |  | 50d → 47d |  |  |
| 101 | **ROOF & SIDING** |  |  |  | 54% → 30% |  |  |  |
| 105 | CMU Veneer Base Course & Grout |  |  |  | 80% → 25% |  |  |  |
| 110 | Install Roof & Roof Insulation (JANUS) |  | 2026-03-25 A → 2026-03-30 (+5d) | 12d → 15d | 100% → 17% | none → 15d |  |  |
| 111 | BLDG B Roofing Complete | 2026-03-25 A → 2026-03-30 (+5d) | 2026-03-25 A → 2026-03-30 (+5d) |  | 100% → 0% | none → 32d |  |  |
| 112 | **DOORS & WINDOWS** | 2026-07-02 → 2026-07-09 (+7d) | 2026-07-30 → 2026-08-05 (+6d) |  |  | -11d → -15d |  |  |
| 113 | F&I Storage Unit Doors (JANUS) | 2026-07-02 → 2026-07-09 (+7d) | 2026-07-30 → 2026-08-05 (+6d) |  |  | -11d → -15d |  |  |
| 114 | F&I HM Doors and Hardware (JANUS) | 2026-07-02 → 2026-07-09 (+7d) | 2026-07-23 → 2026-07-29 (+6d) |  |  | -6d → -10d |  |  |
| 115 | **FINISHES** | 2026-03-26 → 2026-03-31 (+5d) | 2026-05-06 → 2026-05-11 (+5d) |  |  | 45d → 32d |  |  |
| 116 | Install Gypsum Board | 2026-03-26 → 2026-03-31 (+5d) | 2026-04-08 → 2026-04-13 (+5d) |  |  | 45d → 32d |  |  |
| 117 | Flooring Polished Concrete | 2026-04-09 → 2026-04-14 (+5d) | 2026-04-15 → 2026-04-20 (+5d) |  |  | 45d → 42d |  |  |
| 118 | FRP / Vinyl Base | 2026-04-16 → 2026-04-21 (+5d) | 2026-04-22 → 2026-04-27 (+5d) |  |  | 45d → 42d |  |  |
| 119 | Painting | 2026-04-23 → 2026-04-28 (+5d) | 2026-05-06 → 2026-05-11 (+5d) |  |  | 45d → 42d |  |  |
| 120 | **SPECIALTIES** | 2026-04-09 → 2026-04-14 (+5d) | 2026-05-11 → 2026-05-14 (+3d) |  |  | 45d → 42d |  |  |
| 121 | Install Misc Equipment & Lockers | 2026-04-09 → 2026-04-14 (+5d) | 2026-05-06 → 2026-05-11 (+5d) |  |  | 48d → 45d |  |  |
| 122 | Bathroom Accessories | 2026-04-16 → 2026-04-21 (+5d) | 2026-04-17 → 2026-04-22 (+5d) |  |  | 61d → 58d |  |  |
| 123 | Building Interior Signage | 2026-05-07 → 2026-05-12 (+5d) | 2026-05-11 → 2026-05-14 (+3d) |  |  | 45d → 42d |  |  |
| 124 | **FIRE SPRINKLERS** |  | 2026-04-14 → 2026-05-01 (+17d) | 36.25d → 50d | 89% → 13% | 64.75d → 51d |  |  |
| 125 | Fire Sprinkler System Rough In |  | 2026-03-27 A → 2026-04-10 (+14d) | 18d → 28d | 100% → 20% | none → 51d |  |  |
| 126 | Fire Sprinkler System Trim Out | 2026-03-02 A → 2026-04-13 (+42d) | 2026-04-14 → 2026-05-01 (+17d) |  | 75% → 0% | 64.75d → 51d |  |  |
| 127 | **PLUMBING** |  | 2026-04-20 → 2026-04-23 (+3d) | 104d → 107d |  | 60d → 57d |  |  |
| 129 | Drains, Water, Sewer Lines | 2026-03-26 → 2026-03-31 (+5d) | 2026-04-15 → 2026-04-20 (+5d) |  |  | 60d → 57d |  |  |
| 130 | Bathroom Fixtures | 2026-04-16 → 2026-04-21 (+5d) | 2026-04-20 → 2026-04-23 (+3d) |  |  | 60d → 57d |  |  |
| 131 | Other Plumbing Fixtures | 2026-04-16 → 2026-04-21 (+5d) | 2026-04-20 → 2026-04-23 (+3d) |  |  | 60d → 57d |  |  |
| 132 | **HVAC** | 2026-03-16 A → 2026-03-31 (+15d) | 2026-07-27 → 2026-05-11 (-77d) | 94d → 30d | 9% → 0% | 2d → 42d |  |  |
| 133 | HVAC Installation | 2026-03-16 A → 2026-03-31 (+15d) | 2026-06-03 → 2026-05-04 (-30d) | 57d → 25d | 20% → 0% | -9d → 42d | none → 110, 111 | was named FRAGNET - RFI 37 - Duct Conflicts |
| 134 | HVAC Commisioning & T&B | 2026-07-21 → 2026-05-05 (-77d) | 2026-07-27 → 2026-05-11 (-77d) |  |  | -8d → 45d | 140, HVAC Installation - Remaining, HVAC Installation - Start/Partial, TBD FRAGNET - RFI 38 - HVAC Set Units, Duct Procurement & Install → 133, 140 |  |
| 135 | **ELECTRICAL** |  | 2026-07-30 → 2026-06-23 (-37d) | 175d → 149d | 39% → 8% | -11d → 15d |  |  |
| 138 | New Service Equipment Install, Wire & Inspect | 2026-05-14 → 2026-03-31 (-44d) | 2026-05-20 → 2026-04-13 (-37d) | 5d → 10d |  | 25d → 47d | 148, 15, 110, FRAGNET - RFI 38 - Procurement, Re-Route Electrical → 148, 15, 110 | was named Install Wire & Inspect - Remaining |
| 139 | Install and Wire Panels | 2026-06-19 → 2026-04-14 (-66d) | 2026-06-23 → 2026-05-04 (-50d) | 3d → 15d |  | 5d → 32d | 116, 138, TBD FRAGNET - RFI 38 - HVAC Set Units, Duct Procurement & Install → 116 |  |
| 140 | Permanent Power On | 2026-06-23 → 2026-05-04 (-50d) | 2026-06-23 → 2026-05-04 (-50d) |  |  | 5d → 32d | 138, 139, 15, Install, Wire & Inspect - Start/Partial, 221SS → 138, 139, 15 |  |
| 142 | Electric Lights, Devices and Trim | 2026-03-25 A → 2026-03-31 (+6d) | 2026-06-11 → 2026-06-16 (+5d) |  | 20% → 0% | 18d → 15d | 17, 141, 110, Elect Rough-In Start/PartialSS+10d → 137SS+10d, 17, 141, 110 |  |
| 143 | Fire Alarm System | 2026-07-21 → 2026-05-05 (-77d) | 2026-07-23 → 2026-05-07 (-77d) |  |  | -11d → 42d | 133, 19, 116, HVAC Installation - Remaining, TBD RFI 37 - Procure Additional Matierals?, RFI 37 - Initiated and Responded, RFI 37 - Further Clarification Required, Caught Design Decrepency, RFI 37 - Review and Responsed, Close as Directed, TBD RFI 37 - Cost Impact Collection and Submission, HVAC Installation - Start/Partial, TBD FRAGNET - RFI 38 - HVAC Set Units, Duct Procurement & Install → 133, 19, 116 |  |
| 144 | Electrical Commissioning | 2026-07-24 → 2026-06-17 (-37d) | 2026-07-30 → 2026-06-23 (-37d) |  |  | -11d → 15d | 136, 139, 142, 143, 141, Elect Rough-In Start/Partial → 136, 137, 139, 142, 143, 141 |  |
| 145 | **BUILDING A** |  | 2026-08-12 → 2026-08-18 (+6d) | 141d → 145d | 22% → 20% | 18d → -32d |  |  |
| 168 | **CONCRETE WORK** |  |  |  | 77% → 71% | 102d → 21d |  |  |
| 172 | BLDG A SOG Fine Prep | 2026-03-27 A → 2026-03-31 (+4d) | 2026-03-31 A → 2026-03-31 | 3d → 1d | 100% → 0% | none → -32d |  |  |
| 173 | BLDG A Slab On Grade (East) | 2026-03-31 A → 2026-04-01 (+1d) | 2026-04-09 → 2026-04-03 (-6d) | 7d → 3d | 50% → 0% | 105d → -32d |  |  |
| 175 | BLDG A Slab On Grade (West) | 2026-04-01 A → 2026-04-09 (+8d) |  | 10d → 4d | 25% → 0% | -28d → -32d | 169, 172, 154, 155, 167, 209, 157, 166, 173SS+1d → 169, 172, 154, 155, 167, 209, 157, 166, 174 |  |
| 177 | **STEEL AND METALS** | 2026-04-15 → 2026-04-21 (+6d) | 2026-07-20 → 2026-07-24 (+4d) |  |  | -28d → -32d |  |  |
| 178 | Frame Load Bearing, Shear Walls, Partition & Corridor (JANUS) | 2026-04-15 → 2026-04-21 (+6d) | 2026-05-19 → 2026-05-26 (+7d) |  |  | -28d → -32d | 175, 14 → 175SS+8d, 14 |  |
| 179 | Panel Shear Wall, Interior Partition, & Corridor Walls (JANUS) | 2026-05-20 → 2026-05-27 (+7d) | 2026-06-10 → 2026-06-16 (+6d) |  |  | 19d → 7d |  |  |
| 180 | Perimeter Panel Interior Walls (JANUS) | 2026-06-29 → 2026-07-06 (+7d) | 2026-07-20 → 2026-07-24 (+4d) |  |  | -8d → -20d |  |  |
| 181 | Canopy Install | 2026-05-20 → 2026-05-27 (+7d) | 2026-06-01 → 2026-06-05 (+4d) |  |  | 69d → 19d |  |  |
| 182 | **WOOD & FRP** | 2026-06-11 → 2026-06-17 (+6d) | 2026-06-17 → 2026-06-23 (+6d) |  |  | 57d → 7d |  |  |
| 183 | Misc Finish Carpentry | 2026-06-11 → 2026-06-17 (+6d) | 2026-06-17 → 2026-06-23 (+6d) |  |  | 57d → 7d |  |  |
| 184 | **ROOF & SIDING** | 2026-05-06 → 2026-05-12 (+6d) | 2026-07-01 → 2026-07-08 (+7d) |  |  | -18d → -22d |  |  |
| 185 | Exterior Sheathing, Weather Barrier & Rigid Insulation - Building A | 2026-05-06 → 2026-05-12 (+6d) | 2026-05-19 → 2026-05-26 (+7d) |  |  | -11d → -15d |  | was named Exterior Sheathing |
| 186 | Exterior Sheathing, Weather Barrier & Rigid Insulation - Building A | 2026-05-13 → 2026-05-19 (+6d) | 2026-05-27 → 2026-06-02 (+6d) |  |  | -11d → -15d |  |  |
| 187 | Rigid Insulation Behind Metal Panels | 2026-05-28 → 2026-06-03 (+6d) | 2026-06-01 → 2026-06-05 (+4d) |  |  | 1d → -3d |  |  |
| 188 | Rigid Insulation Behind CMU | 2026-05-28 → 2026-06-03 (+6d) | 2026-06-03 → 2026-06-09 (+6d) |  |  | -11d → -15d |  |  |
| 189 | CMU Veneer | 2026-06-04 → 2026-06-10 (+6d) | 2026-06-24 → 2026-06-30 (+6d) |  |  | -11d → -15d |  |  |
| 190 | Exterior Metal Panels (JANUS) | 2026-06-18 → 2026-06-24 (+6d) | 2026-07-01 → 2026-07-08 (+7d) |  |  | -11d → -15d |  |  |
| 191 | Install Roof & Roof Insulation (JANUS) | 2026-05-20 → 2026-05-27 (+7d) | 2026-05-27 → 2026-06-02 (+6d) |  |  | -28d → -32d |  |  |
| 192 | BLDG A Roofing Complete | 2026-05-27 → 2026-06-02 (+6d) | 2026-05-27 → 2026-06-02 (+6d) |  |  | -21d → -25d |  |  |

| ID | Task | Start | Finish | Duration | Complete | Total float | Predecessors |
| --- | --- | --- | --- | --- | --- | --- | --- |
| 193 | **DOORS & WINDOWS** | 2026-07-21 → 2026-07-27 (+6d) | 2026-07-27 → 2026-07-31 (+4d) |  |  | -8d → -20d |  |
| 194 | F&I Storage Unit Doors (JANUS) | 2026-07-21 → 2026-07-27 (+6d) | 2026-07-27 → 2026-07-31 (+4d) |  |  | -8d → -20d |  |
| 195 | F&I HM Doors and Hardware (JANUS) | 2026-07-21 → 2026-07-27 (+6d) | 2026-07-27 → 2026-07-31 (+4d) |  |  | -8d → -20d |  |
| 196 | **FINISHES** | 2026-05-28 → 2026-06-03 (+6d) | 2026-07-09 → 2026-07-15 (+6d) |  |  | 2d → -10d |  |
| 197 | Install Gypsum Board | 2026-05-28 → 2026-06-03 (+6d) | 2026-06-10 → 2026-06-16 (+6d) |  |  | 2d → -10d |  |
| 198 | Painting | 2026-06-11 → 2026-06-17 (+6d) | 2026-06-24 → 2026-06-30 (+6d) |  |  | 2d → -10d |  |
| 199 | Flooring Polished Conc. | 2026-06-25 → 2026-07-01 (+6d) | 2026-07-01 → 2026-07-08 (+7d) |  |  | 2d → -10d |  |
| 200 | FRP & Vinyl Base | 2026-07-02 → 2026-07-09 (+7d) | 2026-07-09 → 2026-07-15 (+6d) |  |  | 2d → -10d |  |
| 201 | **SPECIALTIES** | 2026-06-11 → 2026-06-17 (+6d) | 2026-07-13 → 2026-07-17 (+4d) |  |  | 2d → -10d |  |
| 202 | Install Misc Equipment & Lockers | 2026-06-11 → 2026-06-17 (+6d) | 2026-07-09 → 2026-07-15 (+6d) |  |  | 4d → -8d |  |
| 203 | Bathroom Accessories- Building A | 2026-07-10 → 2026-07-16 (+6d) | 2026-07-13 → 2026-07-17 (+4d) |  |  | 2d → -10d |  |
| 204 | Building Interior Signage | 2026-06-25 → 2026-07-01 (+6d) | 2026-06-29 → 2026-07-06 (+7d) |  |  | 11d → -1d |  |
| 205 | **FIRE SPRINKLERS** | 2026-05-28 → 2026-06-03 (+6d) | 2026-07-09 → 2026-07-15 (+6d) |  |  | 4d → -8d |  |
| 206 | Fire Sprinkler System Rough In | 2026-05-28 → 2026-06-03 (+6d) | 2026-06-17 → 2026-06-23 (+6d) |  |  | 4d → -8d |  |
| 207 | Fire Sprinkler System Trim Out | 2026-06-18 → 2026-06-24 (+6d) | 2026-07-09 → 2026-07-15 (+6d) |  |  | 4d → -8d |  |
| 208 | **PLUMBING** |  | 2026-07-16 → 2026-07-22 (+6d) | 92d → 96d |  | -1d → -13d |  |
| 210 | Drains, Water, Sewer Lines | 2026-05-28 → 2026-06-03 (+6d) | 2026-06-17 → 2026-06-23 (+6d) |  |  | -1d → -13d |  |
| 211 | Bathroom Fixtures- Building A | 2026-06-18 → 2026-06-24 (+6d) | 2026-07-01 → 2026-07-08 (+7d) |  |  | -1d → -13d |  |
| 212 | Other Plumbing Fixtures | 2026-07-02 → 2026-07-09 (+7d) | 2026-07-16 → 2026-07-22 (+6d) |  |  | -1d → -13d |  |
| 213 | **HVAC** | 2026-06-04 → 2026-06-03 (-1d) | 2026-07-16 → 2026-07-15 (-1d) |  |  | -9d → -8d |  |
| 214 | HVAC Installation | 2026-06-04 → 2026-06-03 (-1d) | 2026-07-01 → 2026-06-30 (-1d) |  |  | -9d → -8d | 191, 192, TBD RFI 37 - Procure Additional Matierals? → 191, 192 |
| 215 | HVAC Commisioning - Building A | 2026-07-02 → 2026-07-01 (-1d) | 2026-07-16 → 2026-07-15 (-1d) |  |  | -1d → -8d |  |
| 216 | **ELECTRICAL** | 2026-03-24 A → 2026-03-24 | 2026-08-12 → 2026-08-18 (+6d) | 100d → 104d | 3% → 0% | -28d → -32d |  |
| 217 | Building Rough-in Underground | 2026-03-24 A → 2026-03-24 | 2026-03-26 A → 2026-03-30 (+4d) | 3d → 5d | 100% → 0% | none → -32d |  |
| 218 | Electrical Rough-In | 2026-05-22 → 2026-05-29 (+7d) | 2026-06-26 → 2026-07-02 (+6d) |  |  | -28d → -32d | 191SS+2d, FRAGNET - RFI 38 - Procurement, Re-Route Electrical → 191SS+2d |
| 219 | New Service Equipment Install, Wire & Inspect | 2026-05-28 → 2026-06-03 (+6d) | 2026-06-10 → 2026-06-16 (+6d) |  |  | 14d → 12d |  |
| 220 | Install and Wire Panels | 2026-06-18 → 2026-06-17 (-1d) | 2026-06-22 → 2026-07-08 (+16d) | 3d → 15d |  | 3d → -8d | 197, 214SS+10d → 197 |
| 221 | Permanent Power On- Building A | 2026-06-22 → 2026-07-08 (+16d) | 2026-06-22 → 2026-07-08 (+16d) |  |  | 6d → -3d |  |
| 222 | Electric Lights, Devices and Trim | 2026-06-08 → 2026-06-12 (+4d) | 2026-08-05 → 2026-08-11 (+6d) |  |  | -28d → -32d |  |
| 223 | Fire Alarm System | 2026-07-02 → 2026-07-01 (-1d) | 2026-07-09 → 2026-07-08 (-1d) |  |  | -9d → -8d |  |
| 224 | Electrical Commissioning | 2026-08-06 → 2026-08-12 (+6d) | 2026-08-12 → 2026-08-18 (+6d) |  |  | -28d → -32d |  |
